# QTS - PHX3 DC1 (54MW) Construction Schedule

Schedule from Primavera P6, 2024-11-13 to 2026-11-19, data date 2026-08-19, A marks actual dates.

| ID | WBS | Activity | Duration | Start | Finish | Predecessors | Complete | Planned start | Planned finish | Vendor Responsible Party | Layton Discipline | Location | CX Level | Equipment | Layton Super | Contract |
| --- | --- | --- | --- | --- | --- | --- | --- | --- | --- | --- | --- | --- | --- | --- | --- | --- |
|  | 03 | **DC1-DH1100-RPP-A11-03 Cx L3** |  | 2026-05-01 | 2026-07-24 |  |  |  |  |  |  |  |  |  |  |  |
| DC1-RPP-L3-CX-2030 |  | DC1-RPP-A11-03 A/B FTE | 1d | 2026-05-01 A | 2026-05-01 A | DC1-RPP-L2-2020, DC1-COD-L3-CX-2030 | 100% |  |  | ROS | Commissioning | DH1100 | L3 | RPP | Michael Guard |  |
| DC1-RPP-L3-CX-2040 |  | DC1-RPP-A11-03 A/B BMS/EPMS Programming | 1d | 2026-05-05 A | 2026-05-05 A | QTS-1007140 | 100% |  |  | PRM | Commissioning | DH1100 | L3 | RPP |  |  |
| DC1-RPP-L3-CX-2035 |  | DC1-RPP-A11-03 A/B L3 Startup | 2d | 2026-05-08 A | 2026-07-24 A | DC1-RPP-L3-CX-2030, QTS - 26611 | 100% | 2026-06-03 | 2026-06-04 | SQD | Commissioning | DH1100 | L3 | RPP |  | BAB |
|  | 04 | **DC1-DH1100-RPP-A11-04 Cx L3** |  | 2026-05-05 | 2026-07-24 |  |  |  |  |  |  |  |  |  |  |  |
| DC1-RPP-L3-CX-2055 |  | DC1-RPP-A11-04 A/B BMS/EPMS Programming | 1d | 2026-05-05 A | 2026-05-05 A | QTS-1007140 | 100% |  |  | PRM | Commissioning | DH1100 | L3 | RPP |  |  |
| DC1-RPP-L3-CX-2045 |  | DC1-RPP-A11-04 A/B FTE | 1d | 2026-05-07 A | 2026-05-07 A | DC1-RPP-L2-2030, DC1-COD-L3-CX-2045 | 100% | 2026-06-03 | 2026-06-03 | ROS | Commissioning | DH1100 | L3 | RPP |  |  |
| DC1-RPP-L3-CX-2050 |  | DC1-RPP-A11-04 A/B L3 Startup | 2d | 2026-05-08 A | 2026-07-24 A | DC1-RPP-L3-CX-2045, QTS - 26611 | 100% | 2026-06-04 | 2026-06-05 | SQD | Commissioning | DH1100 | L3 | RPP |  | BAB |
|  | 05 | **DC1-DH1100-RPP-A11-05 Cx L3** |  | 2026-05-05 | 2026-07-24 |  |  |  |  |  |  |  |  |  |  |  |
| DC1-RPP-L3-CX-2070 |  | DC1-RPP-A11-05 A/B BMS/EPMS Programming | 1d | 2026-05-05 A | 2026-05-05 A | QTS-1007140 | 100% |  |  | PRM | Commissioning | DH1100 | L3 | RPP |  |  |
| DC1-RPP-L3-CX-2060 |  | DC1-RPP-A11-05 A/B FTE | 1d | 2026-05-07 A | 2026-05-07 A | DC1-RPP-L2-2040, DC1-COD-L3-CX-2060 | 100% | 2026-06-03 | 2026-06-03 | ROS | Commissioning | DH1100 | L3 | RPP |  |  |
| DC1-RPP-L3-CX-2065 |  | DC1-RPP-A11-05 A/B L3 Startup | 2d | 2026-05-08 A | 2026-07-24 A | DC1-RPP-L3-CX-2060, QTS - 26611 | 100% | 2026-06-04 | 2026-06-05 | SQD | Commissioning | DH1100 | L3 | RPP |  | BAB |
|  | 06 | **DC1-DH1100-RPP-A11-06 Cx L3** |  | 2026-05-05 | 2026-07-24 |  |  |  |  |  |  |  |  |  |  |  |
| DC1-RPP-L3-CX-2085 |  | DC1-RPP-A11-06 A/B BMS/EPMS Programming | 1d | 2026-05-05 A | 2026-05-05 A | QTS-1007140 | 100% |  |  | PRM | Commissioning | DH1100 | L3 | RPP |  |  |
| DC1-RPP-L3-CX-2075 |  | DC1-RPP-A11-06 A/B FTE | 1d | 2026-05-07 A | 2026-05-07 A | DC1-RPP-L2-2050, DC1-COD-L3-CX-2075 | 100% | 2026-06-03 | 2026-06-03 | ROS | Commissioning | DH1100 | L3 | RPP |  |  |
| DC1-RPP-L3-CX-2080 |  | DC1-RPP-A11-06 A/B L3 Startup | 2d | 2026-05-08 A | 2026-07-24 A | DC1-RPP-L3-CX-2075, QTS - 26611 | 100% | 2026-06-04 | 2026-06-05 | SQD | Commissioning | DH1100 | L3 | RPP |  | BAB |
|  | 02 | **DC1-DH1100-RPP-B11 Cx L3** |  | 2026-05-05 | 2026-07-24 |  |  |  |  |  |  |  |  |  |  |  |
|  | 01 | **DC1-DH1100-RPP-B11-01 Cx L3** |  | 2026-05-05 | 2026-07-24 |  |  |  |  |  |  |  |  |  |  |  |
| DC1-RPP-L3-CX-2100 |  | DC1-RPP-B11-01 A/B BMS/EPMS Programming | 1d | 2026-05-05 A | 2026-05-05 A | QTS-1007140 | 100% |  |  | PRM | Commissioning | DH1100 | L3 | RPP |  |  |
| DC1-RPP-L3-CX-2090 |  | DC1-RPP-B11-01 A/B FTE | 1d | 2026-05-14 A | 2026-05-14 A | DC1-RPP-L2-2060, DC1-COD-L3-CX-2090 | 100% | 2026-06-03 | 2026-06-03 | ROS | Commissioning | DH1100 | L3 | RPP |  |  |
| DC1-RPP-L3-CX-2095 |  | DC1-RPP-B11-01 A/B L3 Startup | 2d | 2026-05-15 A | 2026-07-24 A | DC1-RPP-L3-CX-2090, QTS - 26611 | 100% | 2026-06-04 | 2026-06-05 | SQD | Commissioning | DH1100 | L3 | RPP |  | BAB |
|  | 02 | **DC1-DH1100-RPP-B11-02 Cx L3** |  | 2026-05-05 | 2026-07-24 |  |  |  |  |  |  |  |  |  |  |  |
| DC1-RPP-L3-CX-2115 |  | DC1-RPP-B11-02 A/B BMS/EPMS Programming | 1d | 2026-05-05 A | 2026-05-05 A | QTS-1007140 | 100% |  |  | PRM | Commissioning | DH1100 | L3 | RPP |  |  |
| DC1-RPP-L3-CX-2105 |  | DC1-RPP-B11-02 A/B FTE | 1d | 2026-05-14 A | 2026-05-14 A | DC1-RPP-L2-2070, DC1-COD-L3-CX-2105 | 100% | 2026-06-03 | 2026-06-03 | ROS | Commissioning | DH1100 | L3 | RPP |  |  |
| DC1-RPP-L3-CX-2110 |  | DC1-RPP-B11-02 A/B L3 Startup | 2d | 2026-05-15 A | 2026-07-24 A | DC1-RPP-L3-CX-2105, QTS - 26611 | 100% | 2026-06-04 | 2026-06-05 | SQD | Commissioning | DH1100 | L3 | RPP |  | BAB |

Notes:
- DC1-RPP-L3-CX-2035: Steps: EC Startup Report; Vendor Startup
- DC1-RPP-L3-CX-2050: Steps: EC Startup Report; Vendor Startup
- DC1-RPP-L3-CX-2065: Steps: EC Startup Report; Vendor Startup
- DC1-RPP-L3-CX-2080: Steps: EC Startup Report; Vendor Startup
- DC1-RPP-L3-CX-2095: Steps: EC Startup Report; Vendor Startup
- DC1-RPP-L3-CX-2110: Steps: EC Startup Report; Vendor Startup

| ID | WBS | Activity | Duration | Start | Finish | Predecessors | Complete | Planned start | Planned finish | Vendor Responsible Party | Layton Discipline | Location | CX Level | Equipment | Contract |
| --- | --- | --- | --- | --- | --- | --- | --- | --- | --- | --- | --- | --- | --- | --- | --- |
|  | 03 | **DC1-DH1100-RPP-B11-03 Cx L3** |  | 2026-05-05 | 2026-07-24 |  |  |  |  |  |  |  |  |  |  |
| DC1-RPP-L3-CX-2130 |  | DC1-RPP-B11-03 A/B BMS/EPMS Programming | 1d | 2026-05-05 A | 2026-05-05 A | QTS-1007140 | 100% |  |  | PRM | Commissioning | DH1100 | L3 | RPP |  |
| DC1-RPP-L3-CX-2120 |  | DC1-RPP-B11-03 A/B FTE | 1d | 2026-05-14 A | 2026-05-14 A | DC1-RPP-L2-2080, DC1-COD-L3-CX-2120 | 100% | 2026-06-03 | 2026-06-03 | ROS | Commissioning | DH1100 | L3 | RPP |  |
| DC1-RPP-L3-CX-2125 |  | DC1-RPP-B11-03 A/B L3 Startup | 2d | 2026-05-15 A | 2026-07-24 A | DC1-RPP-L3-CX-2120, QTS - 26611 | 100% | 2026-06-04 | 2026-06-05 | SQD | Commissioning | DH1100 | L3 | RPP | BAB |
|  | 04 | **DC1-DH1100-RPP-B11-04 Cx L3** |  | 2026-05-05 | 2026-07-24 |  |  |  |  |  |  |  |  |  |  |
| DC1-RPP-L3-CX-2145 |  | DC1-RPP-B11-04 A/B BMS/EPMS Programming | 1d | 2026-05-05 A | 2026-05-05 A | QTS-1007140 | 100% |  |  | PRM | Commissioning | DH1100 | L3 | RPP |  |
| DC1-RPP-L3-CX-2135 |  | DC1-RPP-B11-04 A/B FTE | 1d | 2026-05-14 A | 2026-05-14 A | DC1-RPP-L2-2090, DC1-COD-L3-CX-2135 | 100% | 2026-06-03 | 2026-06-03 | ROS | Commissioning | DH1100 | L3 | RPP |  |
| DC1-RPP-L3-CX-2140 |  | DC1-RPP-B11-04 A/B L3 Startup | 2d | 2026-05-15 A | 2026-07-24 A | DC1-RPP-L3-CX-2135, QTS - 26611 | 100% | 2026-06-04 | 2026-06-05 | SQD | Commissioning | DH1100 | L3 | RPP | BAB |
|  | 05 | **DC1-DH1100-RPP-B11-05 Cx L3** |  | 2026-05-05 | 2026-07-24 |  |  |  |  |  |  |  |  |  |  |
| DC1-RPP-L3-CX-2160 |  | DC1-RPP-B11-05 A/B BMS/EPMS Programming | 1d | 2026-05-05 A | 2026-05-05 A | QTS-1007140 | 100% |  |  | PRM | Commissioning | DH1100 | L3 | RPP |  |
| DC1-RPP-L3-CX-2150 |  | DC1-RPP-B11-05 A/B FTE | 1d | 2026-05-14 A | 2026-05-14 A | DC1-RPP-L2-2100, DC1-COD-L3-CX-2150 | 100% | 2026-06-03 | 2026-06-03 | ROS | Commissioning | DH1100 | L3 | RPP |  |
| DC1-RPP-L3-CX-2155 |  | DC1-RPP-B11-05 A/B L3 Startup | 2d | 2026-05-15 A | 2026-07-24 A | DC1-RPP-L3-CX-2150, QTS - 26611 | 100% | 2026-06-04 | 2026-06-05 | SQD | Commissioning | DH1100 | L3 | RPP | BAB |
|  | 06 | **DC1-DH1100-RPP-B11-06 Cx L3** |  | 2026-05-05 | 2026-07-24 |  |  |  |  |  |  |  |  |  |  |
| DC1-RPP-L3-CX-2175 |  | DC1-RPP-B11-06 A/B BMS/EPMS Programming | 1d | 2026-05-05 A | 2026-05-05 A | QTS-1007140 | 100% |  |  | PRM | Commissioning | DH1100 | L3 | RPP |  |
| DC1-RPP-L3-CX-2165 |  | DC1-RPP-B11-06 A/B FTE | 1d | 2026-05-14 A | 2026-05-14 A | DC1-RPP-L2-2110, DC1-COD-L3-CX-2165 | 100% | 2026-06-03 | 2026-06-03 | ROS | Commissioning | DH1100 | L3 | RPP |  |
| DC1-RPP-L3-CX-2170 |  | DC1-RPP-B11-06 A/B L3 Startup | 2d | 2026-05-15 A | 2026-07-24 A | DC1-RPP-L3-CX-2165, QTS - 26611 | 100% | 2026-06-04 | 2026-06-05 | SQD | Commissioning | DH1100 | L3 | RPP | BAB |
|  | 03 | **DC1-DH1100-RPP-C11 Cx L3** |  | 2026-05-12 | 2026-07-24 |  |  |  |  |  |  |  |  |  |  |
|  | 01 | **DC1-DH1100-RPP-C11-01 Cx L3** |  | 2026-05-12 | 2026-07-24 |  |  |  |  |  |  |  |  |  |  |
| DC1-RPP-L3-CX-2190 |  | DC1-RPP-C11-01 A/B BMS/EPMS Programming | 1d | 2026-05-12 A | 2026-05-12 A | QTS-1007140 | 100% | 2026-05-20 | 2026-05-20 | PRM | Commissioning | DH1100 | L3 | RPP |  |
| DC1-RPP-L3-CX-2180 |  | DC1-RPP-C11-01 A/B FTE | 1d | 2026-05-18 A | 2026-05-18 A | DC1-RPP-L2-2120, DC1-COD-L3-CX-2180 | 100% |  |  | ROS | Commissioning | DH1100 | L3 | RPP |  |
| DC1-RPP-L3-CX-2185 |  | DC1-RPP-C11-01 A/B L3 Startup | 2d | 2026-05-19 A | 2026-07-24 A | DC1-RPP-L3-CX-2180, QTS - 26611 | 100% | 2026-05-19 | 2026-05-20 | SQD | Commissioning | DH1100 | L3 | RPP | BAB |
|  | 02 | **DC1-DH1100-RPP-C11-02 Cx L3** |  | 2026-05-12 | 2026-07-24 |  |  |  |  |  |  |  |  |  |  |
| DC1-RPP-L3-CX-2205 |  | DC1-RPP-C11-02 A/B BMS/EPMS Programming | 1d | 2026-05-12 A | 2026-05-12 A | QTS-1007140 | 100% | 2026-05-20 | 2026-05-20 | PRM | Commissioning | DH1100 | L3 | RPP |  |
| DC1-RPP-L3-CX-2195 |  | DC1-RPP-C11-02 A/B FTE | 1d | 2026-05-18 A | 2026-05-18 A | DC1-RPP-L2-2130, DC1-COD-L3-CX-2195 | 100% |  |  | ROS | Commissioning | DH1100 | L3 | RPP |  |
| DC1-RPP-L3-CX-2200 |  | DC1-RPP-C11-02 A/B L3 Startup | 2d | 2026-05-19 A | 2026-07-24 A | DC1-RPP-L3-CX-2195, QTS - 26611 | 100% | 2026-05-19 | 2026-05-20 | SQD | Commissioning | DH1100 | L3 | RPP | BAB |

Notes:
- DC1-RPP-L3-CX-2125: Steps: EC Startup Report; Vendor Startup
- DC1-RPP-L3-CX-2140: Steps: EC Startup Report; Vendor Startup
- DC1-RPP-L3-CX-2155: Steps: EC Startup Report; Vendor Startup
- DC1-RPP-L3-CX-2170: Steps: EC Startup Report; Vendor Startup
- DC1-RPP-L3-CX-2185: Steps: EC Startup Report; Vendor Startup
- DC1-RPP-L3-CX-2200: Steps: EC Startup Report; Vendor Startup

| ID | WBS | Activity | Duration | Start | Finish | Predecessors | Complete | Planned start | Planned finish | Vendor Responsible Party | Layton Discipline | Location | CX Level | Equipment | Contract |
| --- | --- | --- | --- | --- | --- | --- | --- | --- | --- | --- | --- | --- | --- | --- | --- |
|  | 03 | **DC1-DH1100-RPP-C11-03 Cx L3** |  | 2026-05-12 | 2026-07-24 |  |  |  |  |  |  |  |  |  |  |
| DC1-RPP-L3-CX-2220 |  | DC1-RPP-C11-03 A/B BMS/EPMS Programming | 1d | 2026-05-12 A | 2026-05-12 A | QTS-1007140 | 100% | 2026-05-20 | 2026-05-20 | PRM | Commissioning | DH1100 | L3 | RPP |  |
| DC1-RPP-L3-CX-2210 |  | DC1-RPP-C11-03 A/B FTE | 1d | 2026-05-18 A | 2026-05-18 A | DC1-RPP-L2-2140, DC1-COD-L3-CX-2210 | 100% |  |  | ROS | Commissioning | DH1100 | L3 | RPP |  |
| DC1-RPP-L3-CX-2215 |  | DC1-RPP-C11-03 A/B L3 Startup | 2d | 2026-05-19 A | 2026-07-24 A | DC1-RPP-L3-CX-2210, QTS - 26611 | 100% | 2026-05-19 | 2026-05-20 | SQD | Commissioning | DH1100 | L3 | RPP | BAB |
|  | 04 | **DC1-DH1100-RPP-C11-04 Cx L3** |  | 2026-05-12 | 2026-07-24 |  |  |  |  |  |  |  |  |  |  |
| DC1-RPP-L3-CX-2235 |  | DC1-RPP-C11-04 A/B BMS/EPMS Programming | 1d | 2026-05-12 A | 2026-05-12 A | QTS-1007140 | 100% | 2026-05-20 | 2026-05-20 | PRM | Commissioning | DH1100 | L3 | RPP |  |
| DC1-RPP-L3-CX-2225 |  | DC1-RPP-C11-04 A/B FTE | 1d | 2026-05-18 A | 2026-05-18 A | DC1-RPP-L2-2150, DC1-COD-L3-CX-2225 | 100% |  |  | ROS | Commissioning | DH1100 | L3 | RPP |  |
| DC1-RPP-L3-CX-2230 |  | DC1-RPP-C11-04 A/B L3 Startup | 2d | 2026-05-19 A | 2026-07-24 A | DC1-RPP-L3-CX-2225, QTS - 26611 | 100% | 2026-05-19 | 2026-05-20 | SQD | Commissioning | DH1100 | L3 | RPP | BAB |
|  | 05 | **DC1-DH1100-RPP-C11-05 Cx L3** |  | 2026-05-12 | 2026-07-24 |  |  |  |  |  |  |  |  |  |  |
| DC1-RPP-L3-CX-2250 |  | DC1-RPP-C11-05 A/B BMS/EPMS Programming | 1d | 2026-05-12 A | 2026-05-12 A | QTS-1007140 | 100% | 2026-05-20 | 2026-05-20 | PRM | Commissioning | DH1100 | L3 | RPP |  |
| DC1-RPP-L3-CX-2240 |  | DC1-RPP-C11-05 A/B FTE | 1d | 2026-05-18 A | 2026-05-18 A | DC1-RPP-L2-2160, DC1-COD-L3-CX-2240 | 100% |  |  | ROS | Commissioning | DH1100 | L3 | RPP |  |
| DC1-RPP-L3-CX-2245 |  | DC1-RPP-C11-05 A/B L3 Startup | 2d | 2026-05-19 A | 2026-07-24 A | DC1-RPP-L3-CX-2240, QTS - 26611 | 100% | 2026-05-19 | 2026-05-20 | SQD | Commissioning | DH1100 | L3 | RPP | BAB |
|  | 06 | **DC1-DH1100-RPP-C11-06 Cx L3** |  | 2026-05-12 | 2026-07-24 |  |  |  |  |  |  |  |  |  |  |
| DC1-RPP-L3-CX-2265 |  | DC1-RPP-C11-06 A/B BMS/EPMS Programming | 1d | 2026-05-12 A | 2026-05-12 A | QTS-1007140 | 100% | 2026-05-20 | 2026-05-20 | PRM | Commissioning | DH1100 | L3 | RPP |  |
| DC1-RPP-L3-CX-2255 |  | DC1-RPP-C11-06 A/B FTE | 1d | 2026-05-18 A | 2026-05-18 A | DC1-RPP-L2-2170, DC1-COD-L3-CX-2255 | 100% |  |  | ROS | Commissioning | DH1100 | L3 | RPP |  |
| DC1-RPP-L3-CX-2260 |  | DC1-RPP-C11-06 A/B L3 Startup | 2d | 2026-05-19 A | 2026-07-24 A | DC1-RPP-L3-CX-2255, QTS - 26611 | 100% | 2026-05-19 | 2026-05-20 | SQD | Commissioning | DH1100 | L3 | RPP | BAB |
|  | 04 | **DC1-DH1100-RPP-D11 Cx L3** |  | 2026-05-12 | 2026-07-24 |  |  |  |  |  |  |  |  |  |  |
|  | 01 | **DC1-DH1100-RPP-D11-01 Cx L3** |  | 2026-05-12 | 2026-07-24 |  |  |  |  |  |  |  |  |  |  |
| DC1-RPP-L3-CX-2280 |  | DC1-RPP-D11-01 A/B BMS/EPMS Programming | 1d | 2026-05-12 A | 2026-05-12 A | QTS-1007140 | 100% | 2026-05-20 | 2026-05-20 | PRM | Commissioning | DH1100 | L3 | RPP |  |
| DC1-RPP-L3-CX-2270 |  | DC1-RPP-D11-01 A/B FTE | 1d | 2026-05-18 A | 2026-05-18 A | DC1-RPP-L2-2180, DC1-COD-L3-CX-2270 | 100% |  |  | ROS | Commissioning | DH1100 | L3 | RPP |  |
| DC1-RPP-L3-CX-2275 |  | DC1-RPP-D11-01 A/B L3 Startup | 2d | 2026-05-19 A | 2026-07-24 A | DC1-RPP-L3-CX-2270, QTS - 26611 | 100% | 2026-05-19 | 2026-05-20 | SQD | Commissioning | DH1100 | L3 | RPP | BAB |
|  | 02 | **DC1-DH1100-RPP-D11-02 Cx L3** |  | 2026-05-12 | 2026-07-24 |  |  |  |  |  |  |  |  |  |  |
| DC1-RPP-L3-CX-2295 |  | DC1-RPP-D11-02 A/B BMS/EPMS Programming | 1d | 2026-05-12 A | 2026-05-12 A | QTS-1007140 | 100% | 2026-05-20 | 2026-05-20 | PRM | Commissioning | DH1100 | L3 | RPP |  |
| DC1-RPP-L3-CX-2285 |  | DC1-RPP-D11-02 A/B FTE | 1d | 2026-05-18 A | 2026-05-18 A | DC1-RPP-L2-2190, DC1-COD-L3-CX-2285 | 100% |  |  | ROS | Commissioning | DH1100 | L3 | RPP |  |
| DC1-RPP-L3-CX-2290 |  | DC1-RPP-D11-02 A/B L3 Startup | 2d | 2026-05-19 A | 2026-07-24 A | DC1-RPP-L3-CX-2285, QTS - 26611 | 100% | 2026-06-04 | 2026-06-05 | SQD | Commissioning | DH1100 | L3 | RPP | BAB |

Notes:
- DC1-RPP-L3-CX-2215: Steps: EC Startup Report; Vendor Startup
- DC1-RPP-L3-CX-2230: Steps: EC Startup Report; Vendor Startup
- DC1-RPP-L3-CX-2245: Steps: EC Startup Report; Vendor Startup
- DC1-RPP-L3-CX-2260: Steps: EC Startup Report; Vendor Startup
- DC1-RPP-L3-CX-2275: Steps: EC Startup Report; Vendor Startup
- DC1-RPP-L3-CX-2290: Steps: EC Startup Report; Vendor Startup

| ID | WBS | Activity | Duration | Start | Finish | Predecessors | Complete | Planned start | Planned finish | Vendor Responsible Party | Layton Discipline | Location | CX Level | Equipment | Contract |
| --- | --- | --- | --- | --- | --- | --- | --- | --- | --- | --- | --- | --- | --- | --- | --- |
|  | 03 | **DC1-DH1100-RPP-D11-03 Cx L3** |  | 2026-05-12 | 2026-07-24 |  |  |  |  |  |  |  |  |  |  |
| DC1-RPP-L3-CX-2310 |  | DC1-RPP-D11-03 A/B BMS/EPMS Programming | 1d | 2026-05-12 A | 2026-05-12 A | QTS-1007140 | 100% | 2026-05-20 | 2026-05-20 | PRM | Commissioning | DH1100 | L3 | RPP |  |
| DC1-RPP-L3-CX-2300 |  | DC1-RPP-D11-03 A/B FTE | 1d | 2026-05-18 A | 2026-05-18 A | DC1-RPP-L2-2200, DC1-COD-L3-CX-2300 | 100% |  |  | ROS | Commissioning | DH1100 | L3 | RPP |  |
| DC1-RPP-L3-CX-2305 |  | DC1-RPP-D11-03 A/B L3 Startup | 2d | 2026-05-19 A | 2026-07-24 A | DC1-RPP-L3-CX-2300, QTS - 26611 | 100% | 2026-06-04 | 2026-06-05 | SQD | Commissioning | DH1100 | L3 | RPP | BAB |
|  | 04 | **DC1-DH1100-RPP-D11-04 Cx L3** |  | 2026-05-12 | 2026-07-24 |  |  |  |  |  |  |  |  |  |  |
| DC1-RPP-L3-CX-2325 |  | DC1-RPP-D11-04 A/B BMS/EPMS Programming | 1d | 2026-05-12 A | 2026-05-12 A | QTS-1007140 | 100% | 2026-05-20 | 2026-05-20 | PRM | Commissioning | DH1100 | L3 | RPP |  |
| DC1-RPP-L3-CX-2315 |  | DC1-RPP-D11-04 A/B FTE | 1d | 2026-05-18 A | 2026-05-18 A | DC1-RPP-L2-2210, DC1-COD-L3-CX-2315 | 100% |  |  | ROS | Commissioning | DH1100 | L3 | RPP |  |
| DC1-RPP-L3-CX-2320 |  | DC1-RPP-D11-04 A/B L3 Startup | 2d | 2026-05-19 A | 2026-07-24 A | DC1-RPP-L3-CX-2315, QTS - 26611 | 100% | 2026-06-04 | 2026-06-05 | SQD | Commissioning | DH1100 | L3 | RPP | BAB |
|  | 05 | **DC1-DH1100-RPP-D11-05 Cx L3** |  | 2026-05-12 | 2026-07-24 |  |  |  |  |  |  |  |  |  |  |
| DC1-RPP-L3-CX-2340 |  | DC1-RPP-D11-05 A/B BMS/EPMS Programming | 1d | 2026-05-12 A | 2026-05-12 A | QTS-1007140 | 100% | 2026-05-20 | 2026-05-20 | PRM | Commissioning | DH1100 | L3 | RPP |  |
| DC1-RPP-L3-CX-2330 |  | DC1-RPP-D11-05 A/B FTE | 1d | 2026-05-18 A | 2026-05-18 A | DC1-RPP-L2-2220, DC1-COD-L3-CX-2330 | 100% |  |  | ROS | Commissioning | DH1100 | L3 | RPP |  |
| DC1-RPP-L3-CX-2335 |  | DC1-RPP-D11-05 A/B L3 Startup | 2d | 2026-05-19 A | 2026-07-24 A | DC1-RPP-L3-CX-2330, QTS - 26611 | 100% | 2026-06-04 | 2026-06-05 | SQD | Commissioning | DH1100 | L3 | RPP | BAB |
|  | 06 | **DC1-DH1100-RPP-D11-06 Cx L3** |  | 2026-05-12 | 2026-07-24 |  |  |  |  |  |  |  |  |  |  |
| DC1-RPP-L3-CX-2355 |  | DC1-RPP-D11-06 A/B BMS/EPMS Programming | 1d | 2026-05-12 A | 2026-05-12 A | QTS-1007140 | 100% | 2026-05-20 | 2026-05-20 | PRM | Commissioning | DH1100 | L3 | RPP |  |
| DC1-RPP-L3-CX-2345 |  | DC1-RPP-D11-06 A/B FTE | 1d | 2026-05-18 A | 2026-05-18 A | DC1-RPP-L2-2230, DC1-COD-L3-CX-2345 | 100% |  |  | ROS | Commissioning | DH1100 | L3 | RPP |  |
| DC1-RPP-L3-CX-2350 |  | DC1-RPP-D11-06 A/B L3 Startup | 2d | 2026-05-19 A | 2026-07-24 A | DC1-RPP-L3-CX-2345, QTS - 26611 | 100% | 2026-06-04 | 2026-06-05 | SQD | Commissioning | DH1100 | L3 | RPP | BAB |
|  | 05 | **DC1-DH1100-RPP-E11 Cx L3** |  | 2026-05-12 | 2026-07-24 |  |  |  |  |  |  |  |  |  |  |
|  | 01 | **DC1-DH1100-RPP-E11-01 Cx L3** |  | 2026-05-12 | 2026-07-24 |  |  |  |  |  |  |  |  |  |  |
| DC1-RPP-L3-CX-2370 |  | DC1-RPP-E11-01 A/B BMS/EPMS Programming | 1d | 2026-05-12 A | 2026-05-12 A | QTS-1007140 | 100% | 2026-05-20 | 2026-05-20 | PRM | Commissioning | DH1100 | L3 | RPP |  |
| DC1-RPP-L3-CX-2360 |  | DC1-RPP-E11-01 A/B FTE | 1d | 2026-05-18 A | 2026-05-18 A | DC1-RPP-L2-2240, DC1-COD-L3-CX-2360 | 100% |  |  | ROS | Commissioning | DH1100 | L3 | RPP |  |
| DC1-RPP-L3-CX-2365 |  | DC1-RPP-E11-01 A/B L3 Startup | 2d | 2026-05-19 A | 2026-07-24 A | DC1-RPP-L3-CX-2360, QTS - 26611 | 100% | 2026-05-19 | 2026-05-20 | SQD | Commissioning | DH1100 | L3 | RPP | BAB |
|  | 02 | **DC1-DH1100-RPP-E11-02 Cx L3** |  | 2026-05-12 | 2026-07-24 |  |  |  |  |  |  |  |  |  |  |
| DC1-RPP-L3-CX-2385 |  | DC1-RPP-E11-02 A/B BMS/EPMS Programming | 1d | 2026-05-12 A | 2026-05-12 A | QTS-1007140 | 100% | 2026-05-20 | 2026-05-20 | PRM | Commissioning | DH1100 | L3 | RPP |  |
| DC1-RPP-L3-CX-2375 |  | DC1-RPP-E11-02 A/B FTE | 1d | 2026-05-18 A | 2026-05-18 A | DC1-RPP-L2-2250, DC1-COD-L3-CX-2375 | 100% |  |  | ROS | Commissioning | DH1100 | L3 | RPP |  |
| DC1-RPP-L3-CX-2380 |  | DC1-RPP-E11-02 A/B L3 Startup | 2d | 2026-05-19 A | 2026-07-24 A | DC1-RPP-L3-CX-2375, QTS - 26611 | 100% | 2026-06-04 | 2026-06-05 | SQD | Commissioning | DH1100 | L3 | RPP | BAB |

Notes:
- DC1-RPP-L3-CX-2305: Steps: EC Startup Report; Vendor Startup
- DC1-RPP-L3-CX-2320: Steps: EC Startup Report; Vendor Startup
- DC1-RPP-L3-CX-2335: Steps: EC Startup Report; Vendor Startup
- DC1-RPP-L3-CX-2350: Steps: EC Startup Report; Vendor Startup
- DC1-RPP-L3-CX-2365: Steps: EC Startup Report; Vendor Startup
- DC1-RPP-L3-CX-2380: Steps: EC Startup Report; Vendor Startup

| ID | WBS | Activity | Duration | Start | Finish | Predecessors | Complete | Planned start | Planned finish | Vendor Responsible Party | Layton Discipline | Location | CX Level | Equipment | Contract |
| --- | --- | --- | --- | --- | --- | --- | --- | --- | --- | --- | --- | --- | --- | --- | --- |
|  | 03 | **DC1-DH1100-RPP-E11-03 Cx L3** |  | 2026-05-12 | 2026-07-24 |  |  |  |  |  |  |  |  |  |  |
| DC1-RPP-L3-CX-2400 |  | DC1-RPP-E11-03 A/B BMS/EPMS Programming | 1d | 2026-05-12 A | 2026-05-12 A | QTS-1007140 | 100% | 2026-05-20 | 2026-05-20 | PRM | Commissioning | DH1100 | L3 | RPP |  |
| DC1-RPP-L3-CX-2390 |  | DC1-RPP-E11-03 A/B FTE | 1d | 2026-05-18 A | 2026-05-18 A | DC1-RPP-L2-2260, DC1-COD-L3-CX-2390 | 100% |  |  | ROS | Commissioning | DH1100 | L3 | RPP |  |
| DC1-RPP-L3-CX-2395 |  | DC1-RPP-E11-03 A/B L3 Startup | 2d | 2026-05-19 A | 2026-07-24 A | DC1-RPP-L3-CX-2390, QTS - 26611 | 100% | 2026-06-04 | 2026-06-05 | SQD | Commissioning | DH1100 | L3 | RPP | BAB |
|  | 04 | **DC1-DH1100-RPP-E11-04 Cx L3** |  | 2026-05-12 | 2026-07-24 |  |  |  |  |  |  |  |  |  |  |
| DC1-RPP-L3-CX-2415 |  | DC1-RPP-E11-04 A/B BMS/EPMS Programming | 1d | 2026-05-12 A | 2026-05-12 A | QTS-1007140 | 100% | 2026-05-20 | 2026-05-20 | PRM | Commissioning | DH1100 | L3 | RPP |  |
| DC1-RPP-L3-CX-2405 |  | DC1-RPP-E11-04 A/B FTE | 1d | 2026-05-18 A | 2026-05-18 A | DC1-RPP-L2-2270, DC1-COD-L3-CX-2405 | 100% |  |  | ROS | Commissioning | DH1100 | L3 | RPP |  |
| DC1-RPP-L3-CX-2410 |  | DC1-RPP-E11-04 A/B L3 Startup | 2d | 2026-05-19 A | 2026-07-24 A | DC1-RPP-L3-CX-2405, QTS - 26611 | 100% | 2026-06-04 | 2026-06-05 | SQD | Commissioning | DH1100 | L3 | RPP | BAB |
|  | 05 | **DC1-DH1100-RPP-E11-05 Cx L3** |  | 2026-05-12 | 2026-07-24 |  |  |  |  |  |  |  |  |  |  |
| DC1-RPP-L3-CX-2430 |  | DC1-RPP-E11-05 A/B BMS/EPMS Programming | 1d | 2026-05-12 A | 2026-05-12 A | QTS-1007140 | 100% | 2026-05-20 | 2026-05-20 | PRM | Commissioning | DH1100 | L3 | RPP |  |
| DC1-RPP-L3-CX-2420 |  | DC1-RPP-E11-05 A/B FTE | 1d | 2026-05-18 A | 2026-05-18 A | DC1-RPP-L2-2280, DC1-COD-L3-CX-2420 | 100% |  |  | ROS | Commissioning | DH1100 | L3 | RPP |  |
| DC1-RPP-L3-CX-2425 |  | DC1-RPP-E11-05 A/B L3 Startup | 2d | 2026-05-19 A | 2026-07-24 A | DC1-RPP-L3-CX-2420, QTS - 26611 | 100% | 2026-06-04 | 2026-06-05 | SQD | Commissioning | DH1100 | L3 | RPP | BAB |
|  | 06 | **DC1-DH1100-RPP-E11-06 Cx L3** |  | 2026-05-12 | 2026-07-24 |  |  |  |  |  |  |  |  |  |  |
| DC1-RPP-L3-CX-2445 |  | DC1-RPP-E11-06 A/B BMS/EPMS Programming | 1d | 2026-05-12 A | 2026-05-12 A | QTS-1007140 | 100% | 2026-05-20 | 2026-05-20 | PRM | Commissioning | DH1100 | L3 | RPP |  |
| DC1-RPP-L3-CX-2435 |  | DC1-RPP-E11-06 A/B FTE | 1d | 2026-05-18 A | 2026-05-18 A | DC1-RPP-L2-2290, DC1-COD-L3-CX-2435 | 100% |  |  | ROS | Commissioning | DH1100 | L3 | RPP |  |
| DC1-RPP-L3-CX-2440 |  | DC1-RPP-E11-06 A/B L3 Startup | 2d | 2026-05-19 A | 2026-07-24 A | DC1-RPP-L3-CX-2435, QTS - 26611 | 100% | 2026-06-04 | 2026-06-05 | SQD | Commissioning | DH1100 | L3 | RPP | BAB |
|  | 06 | **DC1-DH1100-RPP-F11 Cx L3** |  | 2026-05-12 | 2026-07-24 |  |  |  |  |  |  |  |  |  |  |
|  | 01 | **DC1-DH1100-RPP-F11-01 Cx L3** |  | 2026-05-12 | 2026-07-24 |  |  |  |  |  |  |  |  |  |  |
| DC1-RPP-L3-CX-2460 |  | DC1-RPP-F11-01 A/B BMS/EPMS Programming | 1d | 2026-05-12 A | 2026-05-12 A | QTS-1007140 | 100% | 2026-05-20 | 2026-05-20 | PRM | Commissioning | DH1100 | L3 | RPP |  |
| DC1-RPP-L3-CX-2450 |  | DC1-RPP-F11-01 A/B FTE | 1d | 2026-05-18 A | 2026-05-18 A | DC1-RPP-L2-2300, DC1-COD-L3-CX-2450 | 100% |  |  | ROS | Commissioning | DH1100 | L3 | RPP |  |
| DC1-RPP-L3-CX-2455 |  | DC1-RPP-F11-01 A/B L3 Startup | 2d | 2026-05-19 A | 2026-07-24 A | DC1-RPP-L3-CX-2450, QTS - 26611 | 100% | 2026-05-19 | 2026-05-20 | SQD | Commissioning | DH1100 | L3 | RPP | BAB |
|  | 02 | **DC1-DH1100-RPP-F11-02 Cx L3** |  | 2026-05-12 | 2026-07-24 |  |  |  |  |  |  |  |  |  |  |
| DC1-RPP-L3-CX-2475 |  | DC1-RPP-F11-02 A/B BMS/EPMS Programming | 1d | 2026-05-12 A | 2026-05-12 A | QTS-1007140 | 100% | 2026-05-21 | 2026-05-21 | PRM | Commissioning | DH1100 | L3 | RPP |  |
| DC1-RPP-L3-CX-2465 |  | DC1-RPP-F11-02 A/B FTE | 1d | 2026-05-18 A | 2026-05-18 A | DC1-RPP-L2-2310, DC1-COD-L3-CX-2465 | 100% |  |  | ROS | Commissioning | DH1100 | L3 | RPP |  |
| DC1-RPP-L3-CX-2470 |  | DC1-RPP-F11-02 A/B L3 Startup | 2d | 2026-05-19 A | 2026-07-24 A | DC1-RPP-L3-CX-2465, QTS - 26611 | 100% | 2026-06-04 | 2026-06-05 | SQD | Commissioning | DH1100 | L3 | RPP | BAB |

Notes:
- DC1-RPP-L3-CX-2395: Steps: EC Startup Report; Vendor Startup
- DC1-RPP-L3-CX-2410: Steps: EC Startup Report; Vendor Startup
- DC1-RPP-L3-CX-2425: Steps: EC Startup Report; Vendor Startup
- DC1-RPP-L3-CX-2440: Steps: EC Startup Report; Vendor Startup
- DC1-RPP-L3-CX-2455: Steps: EC Startup Report; Vendor Startup
- DC1-RPP-L3-CX-2470: Steps: EC Startup Report; Vendor Startup

| ID | WBS | Activity | Duration | Start | Finish | Predecessors | Complete | Planned start | Planned finish | Vendor Responsible Party | Layton Discipline | Location | CX Level | Equipment | Contract |
| --- | --- | --- | --- | --- | --- | --- | --- | --- | --- | --- | --- | --- | --- | --- | --- |
|  | 03 | **DC1-DH1100-RPP-F11-03 Cx L3** |  | 2026-05-12 | 2026-07-24 |  |  |  |  |  |  |  |  |  |  |
| DC1-RPP-L3-CX-2490 |  | DC1-RPP-F11-03 A/B BMS/EPMS Programming | 1d | 2026-05-12 A | 2026-05-12 A | QTS-1007140 | 100% | 2026-05-21 | 2026-05-21 | PRM | Commissioning | DH1100 | L3 | RPP |  |
| DC1-RPP-L3-CX-2480 |  | DC1-RPP-F11-03 A/B FTE | 1d | 2026-05-18 A | 2026-05-18 A | DC1-RPP-L2-2320, DC1-COD-L3-CX-2480 | 100% |  |  | ROS | Commissioning | DH1100 | L3 | RPP |  |
| DC1-RPP-L3-CX-2485 |  | DC1-RPP-F11-03 A/B L3 Startup | 2d | 2026-05-19 A | 2026-07-24 A | DC1-RPP-L3-CX-2480, QTS - 26611 | 100% | 2026-06-04 | 2026-06-05 | SQD | Commissioning | DH1100 | L3 | RPP | BAB |
|  | 04 | **DC1-DH1100-RPP-F11-04 Cx L3** |  | 2026-05-12 | 2026-07-24 |  |  |  |  |  |  |  |  |  |  |
| DC1-RPP-L3-CX-2505 |  | DC1-RPP-F11-04 A/B BMS/EPMS Programming | 1d | 2026-05-12 A | 2026-05-12 A | QTS-1007140 | 100% | 2026-05-21 | 2026-05-21 | PRM | Commissioning | DH1100 | L3 | RPP |  |
| DC1-RPP-L3-CX-2495 |  | DC1-RPP-F11-04 A/B FTE | 1d | 2026-05-18 A | 2026-05-18 A | DC1-RPP-L2-2330, DC1-COD-L3-CX-2495 | 100% |  |  | ROS | Commissioning | DH1100 | L3 | RPP |  |
| DC1-RPP-L3-CX-2500 |  | DC1-RPP-F11-04 A/B L3 Startup | 2d | 2026-05-19 A | 2026-07-24 A | DC1-RPP-L3-CX-2495, QTS - 26611 | 100% | 2026-06-04 | 2026-06-05 | SQD | Commissioning | DH1100 | L3 | RPP | BAB |
|  | 05 | **DC1-DH1100-RPP-F11-05 Cx L3** |  | 2026-05-12 | 2026-07-24 |  |  |  |  |  |  |  |  |  |  |
| DC1-RPP-L3-CX-2520 |  | DC1-RPP-F11-05 A/B BMS/EPMS Programming | 1d | 2026-05-12 A | 2026-05-12 A | QTS-1007140 | 100% | 2026-05-20 | 2026-05-20 | PRM | Commissioning | DH1100 | L3 | RPP |  |
| DC1-RPP-L3-CX-2510 |  | DC1-RPP-F11-05 A/B FTE | 1d | 2026-05-18 A | 2026-05-18 A | DC1-RPP-L2-2340, DC1-COD-L3-CX-2510 | 100% |  |  | ROS | Commissioning | DH1100 | L3 | RPP |  |
| DC1-RPP-L3-CX-2515 |  | DC1-RPP-F11-05 A/B L3 Startup | 2d | 2026-05-19 A | 2026-07-24 A | DC1-RPP-L3-CX-2510, QTS - 26611 | 100% | 2026-06-04 | 2026-06-05 | SQD | Commissioning | DH1100 | L3 | RPP | BAB |
|  | 06 | **DC1-DH1100-RPP-F11-06 Cx L3** |  | 2026-05-12 | 2026-07-24 |  |  |  |  |  |  |  |  |  |  |
| DC1-RPP-L3-CX-2535 |  | DC1-RPP-F11-06 A/B BMS/EPMS Programming | 1d | 2026-05-12 A | 2026-05-12 A | QTS-1007140 | 100% | 2026-05-20 | 2026-05-20 | PRM | Commissioning | DH1100 | L3 | RPP |  |
| DC1-RPP-L3-CX-2525 |  | DC1-RPP-F11-06 A/B FTE | 1d | 2026-05-18 A | 2026-05-18 A | DC1-MOD3-L3-Cx-2000, DC1-RPP-L2-2350, DC1-COD-L3-CX-2525 | 100% |  |  | ROS | Commissioning | DH1100 | L3 | RPP |  |
| DC1-RPP-L3-CX-2530 |  | DC1-RPP-F11-06 A/B L3 Startup | 2d | 2026-05-19 A | 2026-07-24 A | DC1-RPP-L3-CX-2525, QTS - 26611 | 100% | 2026-06-04 | 2026-06-05 | SQD | Commissioning | DH1100 | L3 | RPP | BAB |
|  | 08 | **DC1-DH1100 MOD-02 Cx L3** |  | 2026-04-09 | 2026-06-01 |  |  |  |  |  |  |  |  |  |  |
|  | 01 | **DC1-DH1100 MOD-A11-02 Cx L3** |  | 2026-04-09 | 2026-06-01 |  |  |  |  |  |  |  |  |  |  |
| DC1-MOD2-L3-Cx-2000 |  | DC1-MOD-A11-02 FTE | 1d | 2026-04-09 A | 2026-04-09 A | DC1-SWD-L3-CX-2000, DC1-MOD02-L2-2000 | 100% |  |  | ROS | Commissioning | DH1100 | L3 | MOD-02 |  |
| DC1-MOD2-L3-Cx-2010 |  | DC1-MOD-A11-02 L3 Startup | 2d | 2026-04-20 A | 2026-04-21 A | DC1-MOD2-L3-Cx-2000 | 100% |  |  | PHE | Commissioning | DH1100 | L3 | MOD-02 |  |
| DC1-MOD2-L3-Cx-2020 |  | DC1-MOD-A11-02 BMS/EPMS Programming | 1d | 2026-06-01 A | 2026-06-01 A | DC1-MOD2-L3-Cx-2010, QTS-1007140 | 100% | 2026-06-03 | 2026-06-03 | PRM | Commissioning | DH1100 | L3 | MOD-02 |  |
|  | 02 | **DC1-DH1100 MOD-B11-02 Cx L3** |  | 2026-04-09 | 2026-06-01 |  |  |  |  |  |  |  |  |  |  |
| DC1-MOD2-L3-Cx-2030 |  | DC1-MOD-B11-02 FTE | 1d | 2026-04-09 A | 2026-04-09 A | DC1-SWD-L3-CX-2030, DC1-MOD02-L2-2010 | 100% |  |  | ROS | Commissioning | DH1100 | L3 | MOD-02 |  |
| DC1-MOD2-L3-Cx-2040 |  | DC1-MOD-B11-02 L3 Startup | 2d | 2026-04-20 A | 2026-05-18 A | DC1-MOD2-L3-Cx-2030 | 100% | 2026-05-20 | 2026-05-21 | PHE | Commissioning | DH1100 | L3 | MOD-02 |  |
| DC1-MOD2-L3-Cx-2050 |  | DC1-MOD-B11-02 BMS/EPMS Programming | 1d | 2026-06-01 A | 2026-06-01 A | DC1-MOD2-L3-Cx-2040, QTS-1007140 | 100% | 2026-06-03 | 2026-06-03 | PRM | Commissioning | DH1100 | L3 | MOD-02 |  |

Notes:
- DC1-RPP-L3-CX-2485: Steps: EC Startup Report; Vendor Startup
- DC1-RPP-L3-CX-2500: Steps: EC Startup Report; Vendor Startup
- DC1-RPP-L3-CX-2515: Steps: EC Startup Report; Vendor Startup
- DC1-RPP-L3-CX-2530: Steps: EC Startup Report; Vendor Startup
- DC1-MOD2-L3-Cx-2010: Steps: EC Startup Report; Vendor Startup
- DC1-MOD2-L3-Cx-2040: Steps: EC Startup Report; Vendor Startup

| ID | WBS | Activity | Duration | Start | Finish | Predecessors | Complete | Planned start | Planned finish | Vendor Responsible Party | Layton Discipline | Location | CX Level | Equipment |
| --- | --- | --- | --- | --- | --- | --- | --- | --- | --- | --- | --- | --- | --- | --- |
|  | 03 | **DC1-DH1100 MOD-C11-02 Cx L3** |  | 2026-04-09 | 2026-06-01 |  |  |  |  |  |  |  |  |  |
| DC1-MOD2-L3-Cx-2060 |  | DC1-MOD-C11-02 FTE | 1d | 2026-04-09 A | 2026-04-09 A | DC1-SWD-L3-CX-2060, DC1-MOD02-L2-2020 | 100% |  |  | ROS | Commissioning | DH1100 | L3 | MOD-02 |
| DC1-MOD2-L3-Cx-2070 |  | DC1-MOD-C11-02 L3 Startup | 2d | 2026-04-20 A | 2026-05-18 A | DC1-MOD2-L3-Cx-2060 | 100% | 2026-05-20 | 2026-05-21 | PHE | Commissioning | DH1100 | L3 | MOD-02 |
| DC1-MOD2-L3-Cx-2080 |  | DC1-MOD-C11-02 BMS/EPMS Programming | 1d | 2026-06-01 A | 2026-06-01 A | DC1-MOD2-L3-Cx-2070, QTS-1007140 | 100% | 2026-06-03 | 2026-06-03 | PRM | Commissioning | DH1100 | L3 | MOD-02 |
|  | 04 | **DC1-DH1100 MOD-D11-02 Cx L3** |  | 2026-04-09 | 2026-06-01 |  |  |  |  |  |  |  |  |  |
| DC1-MOD2-L3-Cx-2090 |  | DC1-MOD-D11-02 FTE | 1d | 2026-04-09 A | 2026-04-09 A | DC1-SWD-L3-CX-2090, DC1-MOD02-L2-2030 | 100% |  |  | ROS | Commissioning | DH1100 | L3 | MOD-02 |
| DC1-MOD2-L3-Cx-2100 |  | DC1-MOD-D11-02 L3 Startup | 2d | 2026-04-20 A | 2026-05-18 A | DC1-MOD2-L3-Cx-2090 | 100% | 2026-05-20 | 2026-05-21 | PHE | Commissioning | DH1100 | L3 | MOD-02 |
| DC1-MOD2-L3-Cx-2110 |  | DC1-MOD-D11-02 BMS/EPMS Programming | 1d | 2026-06-01 A | 2026-06-01 A | DC1-MOD2-L3-Cx-2100, QTS-1007140 | 100% | 2026-06-03 | 2026-06-03 | PRM | Commissioning | DH1100 | L3 | MOD-02 |
|  | 05 | **DC1-DH1100 MOD-E11-02 Cx L3** |  | 2026-04-09 | 2026-06-01 |  |  |  |  |  |  |  |  |  |
| DC1-MOD2-L3-Cx-2120 |  | DC1-MOD-E11-02 FTE | 1d | 2026-04-09 A | 2026-04-09 A | DC1-SWD-L3-CX-2120, DC1-MOD02-L2-2040 | 100% |  |  | ROS | Commissioning | DH1100 | L3 | MOD-02 |
| DC1-MOD2-L3-Cx-2130 |  | DC1-MOD-E11-02 L3 Startup | 2d | 2026-04-20 A | 2026-05-18 A | DC1-MOD2-L3-Cx-2120 | 100% | 2026-05-20 | 2026-05-21 | PHE | Commissioning | DH1100 | L3 | MOD-02 |
| DC1-MOD2-L3-Cx-2140 |  | DC1-MOD-E11-02 BMS/EPMS Programming | 1d | 2026-06-01 A | 2026-06-01 A | DC1-MOD2-L3-Cx-2130, QTS-1007140 | 100% | 2026-06-03 | 2026-06-03 | PRM | Commissioning | DH1100 | L3 | MOD-02 |
|  | 06 | **DC1-DH1100 MOD-F11-02 Cx L3** |  | 2026-04-09 | 2026-06-01 |  |  |  |  |  |  |  |  |  |
| DC1-MOD2-L3-Cx-2150 |  | DC1-MOD-F11-02 FTE | 1d | 2026-04-09 A | 2026-04-09 A | DC1-SWD-L3-CX-2150, DC1-MOD02-L2-2050 | 100% |  |  | ROS | Commissioning | DH1100 | L3 | MOD-02 |
| DC1-MOD2-L3-Cx-2160 |  | DC1-MOD-F11-02 L3 Startup | 2d | 2026-04-20 A | 2026-05-18 A | DC1-MOD2-L3-Cx-2150 | 100% | 2026-05-20 | 2026-05-21 | PHE | Commissioning | DH1100 | L3 | MOD-02 |
| DC1-MOD2-L3-Cx-2170 |  | DC1-MOD-F11-02 BMS/EPMS Programming | 1d | 2026-06-01 A | 2026-06-01 A | DC1-MOD2-L3-Cx-2160, QTS-1007140 | 100% | 2026-06-03 | 2026-06-03 | PRM | Commissioning | DH1100 | L3 | MOD-02 |
|  | 07 | **DC1-DH1100 MOD-R11-02 Cx L3** |  | 2026-04-09 | 2026-06-01 |  |  |  |  |  |  |  |  |  |
| DC1-MOD2-L3-Cx-2180 |  | DC1-MOD-R11-02 FTE | 1d | 2026-04-09 A | 2026-04-09 A | DC1-SWD-L3-CX-2180, DC1-MOD02-L2-2060 | 100% |  |  | ROS | Commissioning | DH1100 | L3 | MOD-02 |
| DC1-MOD2-L3-Cx-2190 |  | DC1-MOD-R11-02 L3 Startup | 2d | 2026-04-20 A | 2026-05-18 A | DC1-MOD2-L3-Cx-2180 | 100% | 2026-05-20 | 2026-05-21 | PHE | Commissioning | DH1100 | L3 | MOD-02 |
| DC1-MOD2-L3-Cx-2200 |  | DC1-MOD-R11-02 BMS/EPMS Programming | 1d | 2026-06-01 A | 2026-06-01 A | DC1-MOD2-L3-Cx-2190, QTS-1007140 | 100% | 2026-06-03 | 2026-06-03 | PRM | Commissioning | DH1100 | L3 | MOD-02 |
|  | 09 | **DC1-DH1100 MOD-03 Cx L3** |  | 2026-04-23 | 2026-07-15 |  |  |  |  |  |  |  |  |  |
|  | 01 | **DC1-DH1100 MOD-A11-03 Cx L3** |  | 2026-04-23 | 2026-06-01 |  |  |  |  |  |  |  |  |  |
| DC1-MOD3-L3-Cx-2000 |  | DC1-MOD-A11-03 FTE | 1d | 2026-04-23 A | 2026-04-23 A | DC1-UPSM-L3-CX-2000, DC1-MOD03-L2-2000 | 100% |  |  | ROS | Commissioning | DH1100 | L3 | MOD-03 |
| DC1-MOD3-L3-Cx-2010 |  | DC1-MOD-A11-03 L3 Startup | 2d | 2026-04-27 A | 2026-05-18 A | DC1-MOD3-L3-Cx-2000 | 100% | 2026-04-20 | 2026-04-21 | PHE | Commissioning | DH1100 | L3 | MOD-03 |
| DC1-MOD3-L3-Cx-2020 |  | DC1-MOD-A11-03 BMS/EPMS Programming | 1d | 2026-06-01 A | 2026-06-01 A | DC1-MOD3-L3-Cx-2010, QTS-1007140 | 100% | 2026-06-03 | 2026-06-03 | PRM | Commissioning | DH1100 | L3 | MOD-03 |

Notes:
- DC1-MOD2-L3-Cx-2070: Steps: EC Startup Report; Vendor Startup
- DC1-MOD2-L3-Cx-2100: Steps: EC Startup Report; Vendor Startup
- DC1-MOD2-L3-Cx-2130: Steps: EC Startup Report; Vendor Startup
- DC1-MOD2-L3-Cx-2160: Steps: EC Startup Report; Vendor Startup
- DC1-MOD2-L3-Cx-2190: Steps: EC Startup Report; Vendor Startup
- DC1-MOD3-L3-Cx-2010: Steps: EC Startup Report; Vendor Startup

| ID | WBS | Activity | Duration | Start | Finish | Predecessors | Complete | Planned start | Planned finish | Vendor Responsible Party | Layton Discipline | Location | CX Level | Equipment |
| --- | --- | --- | --- | --- | --- | --- | --- | --- | --- | --- | --- | --- | --- | --- |
|  | 02 | **DC1-DH1100 MOD-B11-03 Cx L3** |  | 2026-04-23 | 2026-06-01 |  |  |  |  |  |  |  |  |  |
| DC1-MOD3-L3-Cx-2030 |  | DC1-MOD-B11-03 FTE | 1d | 2026-04-23 A | 2026-04-23 A | DC1-UPSM-L3-CX-2030, DC1-MOD03-L2-2010 | 100% | 2026-04-27 | 2026-04-27 | ROS | Commissioning | DH1100 | L3 | MOD-03 |
| DC1-MOD3-L3-Cx-2040 |  | DC1-MOD-B11-03 L3 Startup | 2d | 2026-04-27 A | 2026-05-18 A | DC1-MOD3-L3-Cx-2030 | 100% | 2026-05-20 | 2026-05-21 | PHE | Commissioning | DH1100 | L3 | MOD-03 |
| DC1-MOD3-L3-Cx-2050 |  | DC1-MOD-B11-03 BMS/EPMS Programming | 1d | 2026-06-01 A | 2026-06-01 A | DC1-MOD3-L3-Cx-2040, QTS-1007140 | 100% | 2026-06-03 | 2026-06-03 | PRM | Commissioning | DH1100 | L3 | MOD-03 |
|  | 03 | **DC1-DH1100 MOD-C11-03 Cx L3** |  | 2026-04-23 | 2026-06-01 |  |  |  |  |  |  |  |  |  |
| DC1-MOD3-L3-Cx-2060 |  | DC1-MOD-C11-03 FTE | 1d | 2026-04-23 A | 2026-04-23 A | DC1-UPSM-L3-CX-2060, DC1-MOD03-L2-2020 | 100% | 2026-04-27 | 2026-04-27 | ROS | Commissioning | DH1100 | L3 | MOD-03 |
| DC1-MOD3-L3-Cx-2070 |  | DC1-MOD-C11-03 L3 Startup | 2d | 2026-04-27 A | 2026-05-18 A | DC1-MOD3-L3-Cx-2060 | 100% | 2026-05-20 | 2026-05-21 | PHE | Commissioning | DH1100 | L3 | MOD-03 |
| DC1-MOD3-L3-Cx-2080 |  | DC1-MOD-C11-03 BMS/EPMS Programming | 1d | 2026-06-01 A | 2026-06-01 A | DC1-MOD3-L3-Cx-2070, QTS-1007140 | 100% | 2026-06-03 | 2026-06-03 | PRM | Commissioning | DH1100 | L3 | MOD-03 |
|  | 04 | **DC1-DH1100 MOD-D11-03 Cx L3** |  | 2026-04-23 | 2026-06-01 |  |  |  |  |  |  |  |  |  |
| DC1-MOD3-L3-Cx-2090 |  | DC1-MOD-D11-03 FTE | 1d | 2026-04-23 A | 2026-04-23 A | DC1-UPSM-L3-CX-2090, DC1-MOD03-L2-2030 | 100% | 2026-04-27 | 2026-04-27 | ROS | Commissioning | DH1100 | L3 | MOD-03 |
| DC1-MOD3-L3-Cx-2100 |  | DC1-MOD-D11-03 L3 Startup | 2d | 2026-04-27 A | 2026-05-18 A | DC1-MOD3-L3-Cx-2090 | 100% | 2026-05-20 | 2026-05-21 | PHE | Commissioning | DH1100 | L3 | MOD-03 |
| DC1-MOD3-L3-Cx-2110 |  | DC1-MOD-D11-03 BMS/EPMS Programming | 1d | 2026-06-01 A | 2026-06-01 A | DC1-MOD3-L3-Cx-2100, QTS-1007140 | 100% | 2026-06-03 | 2026-06-03 | PRM | Commissioning | DH1100 | L3 | MOD-03 |
|  | 05 | **DC1-DH1100 MOD-E11-03 Cx L3** |  | 2026-04-23 | 2026-06-01 |  |  |  |  |  |  |  |  |  |
| DC1-MOD3-L3-Cx-2120 |  | DC1-MOD-E11-03 FTE | 1d | 2026-04-23 A | 2026-04-23 A | DC1-UPSM-L3-CX-2120, DC1-MOD03-L2-2040 | 100% | 2026-04-27 | 2026-04-27 | ROS | Commissioning | DH1100 | L3 | MOD-03 |
| DC1-MOD3-L3-Cx-2130 |  | DC1-MOD-E11-03 L3 Startup | 2d | 2026-04-27 A | 2026-05-18 A | DC1-MOD3-L3-Cx-2120 | 100% | 2026-05-20 | 2026-05-21 | PHE | Commissioning | DH1100 | L3 | MOD-03 |
| DC1-MOD3-L3-Cx-2140 |  | DC1-MOD-E11-03 BMS/EPMS Programming | 1d | 2026-06-01 A | 2026-06-01 A | DC1-MOD3-L3-Cx-2130, QTS-1007140 | 100% | 2026-06-03 | 2026-06-03 | PRM | Commissioning | DH1100 | L3 | MOD-03 |
|  | 06 | **DC1-DH1100 MOD-F11-03 Cx L3** |  | 2026-04-23 | 2026-06-01 |  |  |  |  |  |  |  |  |  |
| DC1-MOD3-L3-Cx-2150 |  | DC1-MOD-F11-03 FTE | 1d | 2026-04-23 A | 2026-04-23 A | DC1-UPSM-L3-CX-2150, DC1-MOD03-L2-2050 | 100% | 2026-04-27 | 2026-04-27 | ROS | Commissioning | DH1100 | L3 | MOD-03 |
| DC1-MOD3-L3-Cx-2160 |  | DC1-MOD-F11-03 L3 Startup | 2d | 2026-04-27 A | 2026-05-18 A | DC1-MOD3-L3-Cx-2150 | 100% | 2026-05-20 | 2026-05-21 | PHE | Commissioning | DH1100 | L3 | MOD-03 |
| DC1-MOD3-L3-Cx-2170 |  | DC1-MOD-F11-03 BMS/EPMS Programming | 1d | 2026-06-01 A | 2026-06-01 A | DC1-MOD3-L3-Cx-2160, QTS-1007140 | 100% | 2026-06-03 | 2026-06-03 | PRM | Commissioning | DH1100 | L3 | MOD-03 |
|  | 07 | **DC1-DH1100 MOD-R11-03 Cx L3** |  | 2026-04-23 | 2026-07-15 |  |  |  |  |  |  |  |  |  |
| DC1-MOD3-L3-Cx-2180 |  | DC1-MOD-R11-03 FTE | 1d | 2026-04-23 A | 2026-04-23 A | DC1-UPSM-L3-CX-2180, DC1-MOD03-L2-2060 | 100% | 2026-04-22 | 2026-04-22 | ROS | Commissioning | DH1100 | L3 | MOD-03 |
| DC1-MOD3-L3-Cx-2190 |  | DC1-MOD-R11-03 L3 Startup | 2d | 2026-04-27 A | 2026-05-18 A | DC1-MOD3-L3-Cx-2180 | 100% | 2026-05-20 | 2026-05-21 | PHE | Commissioning | DH1100 | L3 | MOD-03 |
| DC1-MOD3-L3-Cx-2200 |  | DC1-MOD-R11-03 BMS/EPMS Programming | 1d | 2026-06-01 A | 2026-07-15 A | DC1-MOD3-L3-Cx-2190 | 100% | 2026-06-01 | 2026-06-01 | PRM | Commissioning | DH1100 | L3 | MOD-03 |

Notes:
- DC1-MOD3-L3-Cx-2040: Steps: EC Startup Report; Vendor Startup
- DC1-MOD3-L3-Cx-2070: Steps: EC Startup Report; Vendor Startup
- DC1-MOD3-L3-Cx-2100: Steps: EC Startup Report; Vendor Startup
- DC1-MOD3-L3-Cx-2130: Steps: EC Startup Report; Vendor Startup
- DC1-MOD3-L3-Cx-2160: Steps: EC Startup Report; Vendor Startup
- DC1-MOD3-L3-Cx-2190: Steps: EC Startup Report; Vendor Startup

| ID | WBS | Activity | Duration | Start | Finish | Predecessors | Complete | Planned start | Planned finish | Vendor Responsible Party | Layton Discipline | Location | CX Level | Equipment |
| --- | --- | --- | --- | --- | --- | --- | --- | --- | --- | --- | --- | --- | --- | --- |
|  | 10 | **DC1-DH1100 CDUs Cx L3** |  |  |  |  |  |  |  |  |  |  |  |  |
|  | 01 | **DC1-CDU-DH1100-01 Cx L3** |  |  |  |  |  |  |  |  |  |  |  |  |
|  | 01 | **DC1-CDU-DH1100-01 Cx L3** |  |  |  |  |  |  |  |  |  |  |  |  |
|  | 02 | **DC1-CDU-DH1100-02 Cx L3** |  |  |  |  |  |  |  |  |  |  |  |  |
|  | 03 | **DC1-CDU-DH1100-03 Cx L3** |  |  |  |  |  |  |  |  |  |  |  |  |
|  | 04 | **DC1-CDU-DH1100-04 Cx L3** |  |  |  |  |  |  |  |  |  |  |  |  |
|  | 05 | **DC1-CDU-DH1100-05 Cx L3** |  |  |  |  |  |  |  |  |  |  |  |  |
|  | 06 | **DC1-CDU-DH1100-06 Cx L3** |  |  |  |  |  |  |  |  |  |  |  |  |
|  | 11 | **DC1-DH1100 CHLR-1RT40 Cx L3** |  | 2026-03-30 | 2026-07-13 |  |  |  |  |  |  |  |  |  |
|  | 01 | **DC1-DH1100 CHLR-1RT40-A11 Cx L3** |  | 2026-03-30 | 2026-05-28 |  |  |  |  |  |  |  |  |  |
| DC1-CHLR-L3-Cx-2000 |  | DC1-CHLR-1RT40-A11 FTE | 1d | 2026-03-30 A | 2026-03-30 A | DC1-CHLR-L2-Cx-2000, DC1-SWD-L3-CX-2000 SS | 100% |  |  | ROS | Commissioning | DH1100 | L3 | CHILLER |
| DC1-CHLR-L3-Cx-2005 |  | DC1-CHLR-1RT40-A11 Heat Up | 1d | 2026-04-03 A | 2026-04-03 A | DC1-CHLR-L3-Cx-2000 | 100% |  |  | LAY | Commissioning | DH1100 | L3 | CHILLER |
| DC1-CHLR-L3-Cx-2010 |  | DC1-CHLR-1RT40-A11 L3 Startup | 1d | 2026-04-06 A | 2026-05-28 A | DC1-CHLR-L3-Cx-2005 | 100% | 2026-04-06 | 2026-04-06 | TAS | Commissioning | DH1100 | L3 | CHILLER |
| DC1-CHLR-L3-Cx-2020 |  | DC1-CHLR-1RT40-A11 BMS/EPMS Programming | 1d | 2026-05-11 A | 2026-05-11 A | QTS-1007140 | 100% |  |  | PRM | Commissioning | DH1100 | L3 | CHILLER |
|  | 02 | **DC1-DH1100 CHLR-1RT40-B11 Cx L3** |  | 2026-03-30 | 2026-05-28 |  |  |  |  |  |  |  |  |  |
| DC1-CHLR-L3-Cx-2030 |  | DC1-CHLR-1RT40-B11 FTE | 1d | 2026-03-30 A | 2026-03-30 A | DC1-CHLR-L2-Cx-2010, DC1-SWD-L3-CX-2030 SS | 100% |  |  | ROS | Commissioning | DH1100 | L3 | CHILLER |
| DC1-CHLR-L3-Cx-2035 |  | DC1-CHLR-1RT40-B11 Heat Up | 1d | 2026-04-03 A | 2026-04-03 A | DC1-CHLR-L3-Cx-2030 | 100% | 2026-05-20 | 2026-05-20 | LAY | Commissioning | DH1100 | L3 | CHILLER |
| DC1-CHLR-L3-Cx-2040 |  | DC1-CHLR-1RT40-B11 L3 Startup | 1d | 2026-04-06 A | 2026-05-28 A | DC1-CHLR-L3-Cx-2035 | 100% | 2026-05-21 | 2026-05-21 | TAS | Commissioning | DH1100 | L3 | CHILLER |
| DC1-CHLR-L3-Cx-2050 |  | DC1-CHLR-1RT40-B11 BMS/EPMS Programming | 1d | 2026-05-11 A | 2026-05-11 A | QTS-1007140 | 100% | 2026-05-22 | 2026-05-22 | PRM | Commissioning | DH1100 | L3 | CHILLER |
|  | 03 | **DC1-DH1100 CHLR-1RT40-C11 Cx L3** |  | 2026-03-30 | 2026-05-28 |  |  |  |  |  |  |  |  |  |
| DC1-CHLR-L3-Cx-2060 |  | DC1-CHLR-1RT40-C11 FTE | 1d | 2026-03-30 A | 2026-03-30 A | DC1-CHLR-L2-Cx-2020, DC1-SWD-L3-CX-2060 SS | 100% |  |  | ROS | Commissioning | DH1100 | L3 | CHILLER |
| DC1-CHLR-L3-Cx-2065 |  | DC1-CHLR-1RT40-C11 Heat Up | 1d | 2026-04-03 A | 2026-04-03 A | DC1-CHLR-L3-Cx-2060 | 100% | 2026-05-20 | 2026-05-20 | LAY | Commissioning | DH1100 | L3 | CHILLER |
| DC1-CHLR-L3-Cx-2070 |  | DC1-CHLR-1RT40-C11 L3 Startup | 1d | 2026-04-06 A | 2026-05-28 A | DC1-CHLR-L3-Cx-2065 | 100% | 2026-05-21 | 2026-05-21 | TAS | Commissioning | DH1100 | L3 | CHILLER |
| DC1-CHLR-L3-Cx-2080 |  | DC1-CHLR-1RT40-C11 BMS/EPMS Programming | 1d | 2026-05-11 A | 2026-05-11 A | QTS-1007140 | 100% | 2026-05-22 | 2026-05-22 | PRM | Commissioning | DH1100 | L3 | CHILLER |

Notes:
- DC1-CHLR-L3-Cx-2010: Steps: EC Startup Report (done); MC Startup Report (done); Vendor Startup (done)
- DC1-CHLR-L3-Cx-2040: Steps: EC Startup Report (done); MC Startup Report (done); Vendor Startup (done)
- DC1-CHLR-L3-Cx-2070: Steps: EC Startup Report (done); MC Startup Report (done); Vendor Startup (done)

| ID | WBS | Activity | Duration | Start | Finish | Predecessors | Complete | Planned start | Planned finish | Vendor Responsible Party | Layton Discipline | Location | CX Level | Equipment |
| --- | --- | --- | --- | --- | --- | --- | --- | --- | --- | --- | --- | --- | --- | --- |
|  | 04 | **DC1-DH1100 CHLR-1RT40-D11 Cx L3** |  | 2026-03-30 | 2026-05-28 |  |  |  |  |  |  |  |  |  |
| DC1-CHLR-L3-Cx-2090 |  | DC1-CHLR-1RT40-D11 FTE | 1d | 2026-03-30 A | 2026-03-30 A | DC1-CHLR-L2-Cx-2030, DC1-SWD-L3-CX-2090 SS | 100% |  |  | ROS | Commissioning | DH1100 | L3 | CHILLER |
| DC1-CHLR-L3-Cx-2095 |  | DC1-CHLR-1RT40-D11 Heat Up | 1d | 2026-04-03 A | 2026-04-03 A | DC1-CHLR-L3-Cx-2090 | 100% | 2026-05-20 | 2026-05-20 | LAY | Commissioning | DH1100 | L3 | CHILLER |
| DC1-CHLR-L3-Cx-2100 |  | DC1-CHLR-1RT40-D11 L3 Startup | 1d | 2026-04-06 A | 2026-05-28 A | DC1-CHLR-L3-Cx-2095 | 100% | 2026-05-21 | 2026-05-21 | TAS | Commissioning | DH1100 | L3 | CHILLER |
| DC1-CHLR-L3-Cx-2110 |  | DC1-CHLR-1RT40-D11 BMS/EPMS Programming | 1d | 2026-05-11 A | 2026-05-11 A | QTS-1007140 | 100% | 2026-05-22 | 2026-05-22 | PRM | Commissioning | DH1100 | L3 | CHILLER |
|  | 05 | **DC1-DH1100 CHLR-1RT40-E11 Cx L3** |  | 2026-03-30 | 2026-05-28 |  |  |  |  |  |  |  |  |  |
| DC1-CHLR-L3-Cx-2120 |  | DC1-CHLR-1RT40-E11 FTE | 1d | 2026-03-30 A | 2026-03-30 A | DC1-CHLR-L2-Cx-2040, DC1-SWD-L3-CX-2120 SS | 100% |  |  | ROS | Commissioning | DH1100 | L3 | CHILLER |
| DC1-CHLR-L3-Cx-2125 |  | DC1-CHLR-1RT40-E11 Heat Up | 1d | 2026-04-03 A | 2026-04-03 A | DC1-CHLR-L3-Cx-2120 | 100% | 2026-05-20 | 2026-05-20 | LAY | Commissioning | DH1100 | L3 | CHILLER |
| DC1-CHLR-L3-Cx-2130 |  | DC1-CHLR-1RT40-E11 L3 Startup | 1d | 2026-04-06 A | 2026-05-28 A | DC1-CHLR-L3-Cx-2125 | 100% | 2026-05-21 | 2026-05-21 | TAS | Commissioning | DH1100 | L3 | CHILLER |
| DC1-CHLR-L3-Cx-2140 |  | DC1-CHLR-1RT40-E11 BMS/EPMS Programming | 1d | 2026-05-11 A | 2026-05-11 A | QTS-1007140 | 100% | 2026-05-22 | 2026-05-22 | PRM | Commissioning | DH1100 | L3 | CHILLER |
|  | 06 | **DC1-DH1100 CHLR-1RT40-F11 Cx L3** |  | 2026-03-30 | 2026-05-28 |  |  |  |  |  |  |  |  |  |
| DC1-CHLR-L3-Cx-2150 |  | DC1-CHLR-1RT40-F11 FTE | 1d | 2026-03-30 A | 2026-03-30 A | DC1-CHLR-L2-Cx-2050, DC1-SWD-L3-CX-2150 SS | 100% |  |  | ROS | Commissioning | DH1100 | L3 | CHILLER |
| DC1-CHLR-L3-Cx-2155 |  | DC1-CHLR-1RT40-F11 Heat Up | 1d | 2026-04-03 A | 2026-04-03 A | DC1-CHLR-L3-Cx-2150 | 100% | 2026-05-20 | 2026-05-20 | LAY | Commissioning | DH1100 | L3 | CHILLER |
| DC1-CHLR-L3-Cx-2160 |  | DC1-CHLR-1RT40-F11 L3 Startup | 1d | 2026-04-06 A | 2026-05-28 A | DC1-CHLR-L3-Cx-2155 | 100% | 2026-05-21 | 2026-05-21 | TAS | Commissioning | DH1100 | L3 | CHILLER |
| DC1-CHLR-L3-Cx-2170 |  | DC1-CHLR-1RT40-F11 BMS/EPMS Programming | 1d | 2026-05-11 A | 2026-05-11 A | QTS-1007140 | 100% | 2026-05-22 | 2026-05-22 | PRM | Commissioning | DH1100 | L3 | CHILLER |
|  | 07 | **DC1-DH1100 CHLR-1RT40-R11 Cx L3** |  | 2026-03-30 | 2026-07-13 |  |  |  |  |  |  |  |  |  |
| DC1-CHLR-L3-Cx-2180 |  | DC1-CHLR-1RT40-R11 FTE | 1d | 2026-03-30 A | 2026-03-30 A | DC1-CHLR-L2-Cx-2060, DC1-SWD-L3-CX-2180 SS | 100% |  |  | ROS | Commissioning | DH1100 | L3 | CHILLER |
| DC1-CHLR-L3-Cx-2185 |  | DC1-CHLR-1RT40-R11 Heat Up | 1d | 2026-04-03 A | 2026-04-03 A | DC1-CHLR-L3-Cx-2180 | 100% | 2026-05-20 | 2026-05-20 | LAY | Commissioning | DH1100 | L3 | CHILLER |
| DC1-CHLR-L3-Cx-2190 |  | DC1-CHLR-1RT40-R11 L3 Startup | 1d | 2026-04-06 A | 2026-07-13 A | DC1-CHLR-L3-Cx-2185 | 100% | 2026-05-21 | 2026-05-21 | TAS | Commissioning | DH1100 | L3 | CHILLER |
| DC1-CHLR-L3-Cx-2200 |  | DC1-CHLR-1RT40-R11 BMS/EPMS Programming | 1d | 2026-05-11 A | 2026-05-11 A | QTS-1007140 | 100% | 2026-05-22 | 2026-05-22 | PRM | Commissioning | DH1100 | L3 | CHILLER |
|  | 12 | **DC1-DH1100 CHWP-1RT40 Cx L3** |  | 2026-03-27 | 2026-04-24 |  |  |  |  |  |  |  |  |  |
|  | 01 | **DC1-DH1100 CHWP-1RT40-A11 Cx L3** |  | 2026-03-27 | 2026-04-24 |  |  |  |  |  |  |  |  |  |
| DC1-CHWP-L3-Cx-2000 |  | DC1-CHWP-1RT40-A11 FTE | 1d | 2026-03-27 A | 2026-03-27 A | DC1-CHWP-L2-Cx-2000, DC1-UPSM-L3-CX-2000 | 100% |  |  | ROS | Commissioning | DH1100 | L3 | CHWP |
| DC1-CHWP-L3-Cx-2010 |  | DC1-CHWP1RT40-A11 L3 Startup | 2d | 2026-03-30 A | 2026-03-31 A | QTS-100550, DC1-CHWP-L3-Cx-2000 | 100% |  |  | LAY | Commissioning | DH1100 | L3 | CHWP |
| DC1-CHWP-L3-Cx-2020 |  | DC1-CHWP-1RT40-A11 BMS/EPMS | 1d | 2026-04-24 A | 2026-04-24 A | DC1-CHWP-L3-Cx-2010, QTS-1007140 SS | 100% |  |  | PRM | Commissioning | DH1100 | L3 | CHWP |

Notes:
- DC1-CHLR-L3-Cx-2100: Steps: EC Startup Report (done); MC Startup Report (done); Vendor Startup (done)
- DC1-CHLR-L3-Cx-2130: Steps: EC Startup Report (done); MC Startup Report (done); Vendor Startup (done)
- DC1-CHLR-L3-Cx-2160: Steps: EC Startup Report (done); MC Startup Report (done); Vendor Startup (done)
- DC1-CHLR-L3-Cx-2190: Steps: EC Startup Report (done); MC Startup Report (done); Vendor Startup (done)
- DC1-CHWP-L3-Cx-2010: Steps: EC Startup Report (done); MC Startup Report (done); Vendor Startup (done)

| ID | WBS | Activity | Duration | Start | Finish | Predecessors | Complete | Vendor Responsible Party | Layton Discipline | Location | CX Level | Equipment |
| --- | --- | --- | --- | --- | --- | --- | --- | --- | --- | --- | --- | --- |
|  | 02 | **DC1-DH1100 CHWP-1RT40-B11 Cx L3** |  | 2026-03-27 | 2026-04-24 |  |  |  |  |  |  |  |
| DC1-CHWP-L3-Cx-2030 |  | DC1-CHWP-1RT40-B11 FTE | 1d | 2026-03-27 A | 2026-03-27 A | DC1-CHWP-L2-Cx-2010, DC1-UPSM-L3-CX-2030 SS | 100% | ROS | Commissioning | DH1100 | L3 | CHWP |
| DC1-CHWP-L3-Cx-2040 |  | DC1-CHWP-1RT40-B11 L3 Startup | 2d | 2026-03-30 A | 2026-03-31 A | QTS-100550, DC1-CHWP-L3-Cx-2030 | 100% | LAY | Commissioning | DH1100 | L3 | CHWP |
| DC1-CHWP-L3-Cx-2050 |  | DC1-CHWP-1RT40-B11 BMS/EPMS | 1d | 2026-04-24 A | 2026-04-24 A | DC1-CHWP-L3-Cx-2040, QTS-1007140 SS | 100% | PRM | Commissioning | DH1100 | L3 | CHWP |
|  | 03 | **DC1-DH1100 CHWP-1RT40-C11 Cx L3** |  | 2026-03-27 | 2026-04-24 |  |  |  |  |  |  |  |
| DC1-CHWP-L3-Cx-2060 |  | DC1-CHWP-1RT40-C11 FTE | 1d | 2026-03-27 A | 2026-03-27 A | DC1-CHWP-L2-Cx-2020, DC1-UPSM-L3-CX-2060 SS | 100% | ROS | Commissioning | DH1100 | L3 | CHWP |
| DC1-CHWP-L3-Cx-2070 |  | DC1-CHWP-1RT40-C11 L3 Startup | 2d | 2026-03-30 A | 2026-03-31 A | QTS-100550, DC1-CHWP-L3-Cx-2060 | 100% | LAY | Commissioning | DH1100 | L3 | CHWP |
| DC1-CHWP-L3-Cx-2080 |  | DC1-CHWP-1RT40-C11 BMS/EPMS | 1d | 2026-04-24 A | 2026-04-24 A | DC1-CHWP-L3-Cx-2070, QTS-1007140 SS | 100% | PRM | Commissioning | DH1100 | L3 | CHWP |
|  | 04 | **DC1-DH1100 CHWP-1RT40-D11 Cx L3** |  | 2026-03-27 | 2026-04-24 |  |  |  |  |  |  |  |
| DC1-CHWP-L3-Cx-2090 |  | DC1-CHWP-1RT40-D11 FTE | 1d | 2026-03-27 A | 2026-03-27 A | DC1-CHWP-L2-Cx-2030, DC1-UPSM-L3-CX-2090 SS | 100% | ROS | Commissioning | DH1100 | L3 | CHWP |
| DC1-CHWP-L3-Cx-2100 |  | DC1-CHWP-1RT40-D11 L3 Startup | 2d | 2026-03-30 A | 2026-03-31 A | QTS-100550, DC1-CHWP-L3-Cx-2090 | 100% | LAY | Commissioning | DH1100 | L3 | CHWP |
| DC1-CHWP-L3-Cx-2110 |  | DC1-CHWP-1RT40-D11 BMS/EPMS | 1d | 2026-04-24 A | 2026-04-24 A | DC1-CHWP-L3-Cx-2100, QTS-1007140 SS | 100% | PRM | Commissioning | DH1100 | L3 | CHWP |
|  | 05 | **DC1-DH1100 CHWP-1RT40-E11 Cx L3** |  | 2026-03-27 | 2026-04-24 |  |  |  |  |  |  |  |
| DC1-CHWP-L3-Cx-2120 |  | DC1-CHWP-1RT40-E11 FTE | 1d | 2026-03-27 A | 2026-03-27 A | DC1-CHWP-L2-Cx-2040, DC1-UPSM-L3-CX-2120 SS | 100% | ROS | Commissioning | DH1100 | L3 | CHWP |
| DC1-CHWP-L3-Cx-2130 |  | DC1-CHWP-1RT40-E11 L3 Startup | 2d | 2026-03-30 A | 2026-03-31 A | QTS-100550, DC1-CHWP-L3-Cx-2120 | 100% | LAY | Commissioning | DH1100 | L3 | CHWP |
| DC1-CHWP-L3-Cx-2140 |  | DC1-CHWP-1RT40-E11 BMS/EPMS | 1d | 2026-04-24 A | 2026-04-24 A | DC1-CHWP-L3-Cx-2130, QTS-1007140 SS | 100% | PRM | Commissioning | DH1100 | L3 | CHWP |
|  | 06 | **DC1-DH1100 CHWP-1RT40-F11 Cx L3** |  | 2026-03-27 | 2026-04-24 |  |  |  |  |  |  |  |
| DC1-CHWP-L3-Cx-2150 |  | DC1-CHWP-1RT40-F11 FTE | 1d | 2026-03-27 A | 2026-03-27 A | DC1-CHWP-L2-Cx-2050, DC1-UPSM-L3-CX-2150 SS | 100% | ROS | Commissioning | DH1100 | L3 | CHWP |
| DC1-CHWP-L3-Cx-2160 |  | DC1-CHWP-1RT40-F11 L3 Startup | 2d | 2026-03-30 A | 2026-03-31 A | QTS-100550, DC1-CHWP-L3-Cx-2150 | 100% | LAY | Commissioning | DH1100 | L3 | CHWP |
| DC1-CHWP-L3-Cx-2170 |  | DC1-CHWP-1RT40-F11 BMS/EPMS | 1d | 2026-04-24 A | 2026-04-24 A | DC1-CHWP-L3-Cx-2160, QTS-1007140 SS | 100% | PRM | Commissioning | DH1100 | L3 | CHWP |
|  | 07 | **DC1-DH1100 CHWP-1RT40-R11 Cx L3** |  | 2026-03-27 | 2026-04-24 |  |  |  |  |  |  |  |
| DC1-CHWP-L3-Cx-2180 |  | DC1-CHWP-1RT40-R11 FTE | 1d | 2026-03-27 A | 2026-03-27 A | DC1-CHWP-L2-Cx-2060, DC1-UPSM-L3-CX-2180 SS | 100% | ROS | Commissioning | DH1100 | L3 | CHWP |
| DC1-CHWP-L3-Cx-2190 |  | DC1-CHWP-1RT40-R11 L3 Startup | 1d | 2026-03-30 A | 2026-03-30 A | QTS-100550, DC1-CHWP-L3-Cx-2180 | 100% | LAY | Commissioning | DH1100 | L3 | CHWP |
| DC1-CHWP-L3-Cx-2200 |  | DC1-CHWP-1RT40-R11 BMS/EPMS | 1d | 2026-04-24 A | 2026-04-24 A | DC1-CHWP-L3-Cx-2190, QTS-1007140 SS | 100% | PRM | Commissioning | DH1100 | L3 | CHWP |

Notes:
- DC1-CHWP-L3-Cx-2040: Steps: EC Startup Report (done); MC Startup Report (done); Vendor Startup (done)
- DC1-CHWP-L3-Cx-2070: Steps: EC Startup Report (done); MC Startup Report (done); Vendor Startup (done)
- DC1-CHWP-L3-Cx-2100: Steps: EC Startup Report (done); MC Startup Report (done); Vendor Startup (done)
- DC1-CHWP-L3-Cx-2130: Steps: EC Startup Report (done); MC Startup Report (done); Vendor Startup (done)
- DC1-CHWP-L3-Cx-2160: Steps: EC Startup Report (done); MC Startup Report (done); Vendor Startup (done)
- DC1-CHWP-L3-Cx-2190: Steps: EC Startup Report (done); MC Startup Report (done); Vendor Startup (done)

| ID | WBS | Activity | Duration | Start | Finish | Predecessors | Complete | Planned start | Planned finish | Vendor Responsible Party | Layton Discipline | Location | CX Level | Equipment |
| --- | --- | --- | --- | --- | --- | --- | --- | --- | --- | --- | --- | --- | --- | --- |
|  | 13 | **DC1-DH1100 CRAH/DOAS Cx L3** |  | 2026-04-09 | 2026-07-15 |  |  |  |  |  |  |  |  |  |
|  | 01 | **DH1100 CRAH-DH-01 L3** |  | 2026-04-09 | 2026-06-01 |  |  |  |  |  |  |  |  |  |
| DC1-CRAH-L3-Cx-2000 |  | DC1-DH1100-CRAH-DH-01 FTE | 1d | 2026-04-09 A | 2026-04-09 A | DC1-MOD2-L3-Cx-2180 SS, DC1-MOD2-L3-Cx-2090 SS, DC1-CRAH-L2-2000 | 100% |  |  | ROS | Commissioning | DH1100 | L3 | DH CRAH |
| DC1-CRAH-L3-Cx-2010 |  | DC1-DH1100-CRAH-DH-01 L3 Startup | 2d | 2026-04-22 A | 2026-06-01 A | DC1-CRAH-L3-Cx-2000, DC1-SWD-L3-CX-3060 | 100% | 2026-04-22 | 2026-04-23 | UMAS | Commissioning | DH1100 | L3 | DH CRAH |
| DC1-CRAH-L3-Cx-2020 |  | DC1-DH1100-CRAH-DH-01 BMS/EPMS Programming | 3d | 2026-04-22 A | 2026-05-11 A | QTS-1007140 | 100% | 2026-04-24 | 2026-04-28 | PRM | Commissioning | DH1100 | L3 | DH CRAH |
|  | 02 | **DH1100 CRAH-DH-02 L3** |  | 2026-04-09 | 2026-06-01 |  |  |  |  |  |  |  |  |  |
| DC1-CRAH-L3-Cx-2030 |  | DC1-DH1100-CRAH-DH-02 FTE | 1d | 2026-04-09 A | 2026-04-09 A | DC1-MOD2-L3-Cx-2150 SS, DC1-MOD2-L3-Cx-2060 SS, DC1-CRAH-L2-2010 | 100% | 2026-04-13 | 2026-04-13 | ROS | Commissioning | DH1100 | L3 | DH CRAH |
| DC1-CRAH-L3-Cx-2040 |  | DC1-DH1100-CRAH-DH-02 L3 Startup | 2d | 2026-04-22 A | 2026-06-01 A | DC1-CRAH-L3-Cx-2030, DC1-SWD-L3-CX-3060 | 100% | 2026-04-22 | 2026-04-23 | UMAS | Commissioning | DH1100 | L3 | DH CRAH |
| DC1-CRAH-L3-Cx-2050 |  | DC1-DH1100-CRAH-DH-02 BMS/EPMS Programming | 3d | 2026-04-22 A | 2026-05-11 A | QTS-1007140 | 100% | 2026-04-24 | 2026-04-28 | PRM | Commissioning | DH1100 | L3 | DH CRAH |
|  | 03 | **DH1100 CRAH-DH-03 L3** |  | 2026-04-09 | 2026-06-01 |  |  |  |  |  |  |  |  |  |
| DC1-CRAH-L3-Cx-2060 |  | DC1-DH1100-CRAH-DH-03 FTE | 1d | 2026-04-09 A | 2026-04-09 A | DC1-MOD2-L3-Cx-2120 SS, DC1-MOD2-L3-Cx-2030 SS, DC1-CRAH-L2-2020 | 100% | 2026-04-13 | 2026-04-13 | ROS | Commissioning | DH1100 | L3 | DH CRAH |
| DC1-CRAH-L3-Cx-2070 |  | DC1-DH1100-CRAH-DH-03 L3 Startup | 2d | 2026-04-22 A | 2026-06-01 A | DC1-CRAH-L3-Cx-2060, DC1-SWD-L3-CX-3060 | 100% | 2026-04-22 | 2026-04-23 | UMAS | Commissioning | DH1100 | L3 | DH CRAH |
| DC1-CRAH-L3-Cx-2080 |  | DC1-DH1100-CRAH-DH-03 BMS/EPMS Programming | 3d | 2026-04-22 A | 2026-05-11 A | QTS-1007140 | 100% | 2026-04-24 | 2026-04-28 | PRM | Commissioning | DH1100 | L3 | DH CRAH |
|  | 04 | **DH1100 CRAH-DH-04 L3** |  | 2026-04-09 | 2026-06-01 |  |  |  |  |  |  |  |  |  |
| DC1-CRAH-L3-Cx-2090 |  | DC1-DH1100-CRAH-DH-04 FTE | 1d | 2026-04-09 A | 2026-04-09 A | DC1-MOD2-L3-Cx-2090 SS, DC1-MOD2-L3-Cx-2000 SS, DC1-CRAH-L2-2030 | 100% | 2026-04-13 | 2026-04-13 | ROS | Commissioning | DH1100 | L3 | DH CRAH |
| DC1-CRAH-L3-Cx-2100 |  | DC1-DH1100-CRAH-DH-04 L3 Startup | 2d | 2026-04-22 A | 2026-06-01 A | DC1-CRAH-L3-Cx-2090, DC1-SWD-L3-CX-3060 | 100% | 2026-04-22 | 2026-04-23 | UMAS | Commissioning | DH1100 | L3 | DH CRAH |
| DC1-CRAH-L3-Cx-2110 |  | DC1-DH1100-CRAH-DH-04 BMS/EPMS Programming | 3d | 2026-04-22 A | 2026-05-11 A | QTS-1007140 | 100% | 2026-04-24 | 2026-04-28 | PRM | Commissioning | DH1100 | L3 | DH CRAH |
|  | 05 | **DH1100 CRAH-DH-05 L3** |  | 2026-04-09 | 2026-06-01 |  |  |  |  |  |  |  |  |  |
| DC1-CRAH-L3-Cx-2120 |  | DC1-DH1100-CRAH-DH-05 FTE | 1d | 2026-04-09 A | 2026-04-09 A | DC1-MOD2-L3-Cx-2060 SS, DC1-MOD2-L3-Cx-2180 SS, DC1-CRAH-L2-2040, DC1-CRAH-L3-Cx-2090 | 100% | 2026-04-14 | 2026-04-14 | ROS | Commissioning | DH1100 | L3 | DH CRAH |
| DC1-CRAH-L3-Cx-2130 |  | DC1-DH1100-CRAH-DH-05 L3 Startup | 2d | 2026-04-22 A | 2026-06-01 A | DC1-CRAH-L3-Cx-2120, DC1-SWD-L3-CX-3060 | 100% | 2026-04-22 | 2026-04-23 | UMAS | Commissioning | DH1100 | L3 | DH CRAH |
| DC1-CRAH-L3-Cx-2140 |  | DC1-DH1100-CRAH-DH-05 BMS/EPMS Programming | 3d | 2026-04-22 A | 2026-05-11 A | QTS-1007140 | 100% | 2026-04-24 | 2026-04-28 | PRM | Commissioning | DH1100 | L3 | DH CRAH |
|  | 06 | **DH1100 CRAH-DH-06 L3** |  | 2026-04-09 | 2026-06-01 |  |  |  |  |  |  |  |  |  |
| DC1-CRAH-L3-Cx-2150 |  | DC1-DH1100-CRAH-DH-06 FTE | 1d | 2026-04-09 A | 2026-04-09 A | DC1-MOD2-L3-Cx-2150 SS, DC1-MOD2-L3-Cx-2030 SS, DC1-CRAH-L2-2050, DC1-CRAH-L3-Cx-2090 | 100% | 2026-04-14 | 2026-04-14 | ROS | Commissioning | DH1100 | L3 | DH CRAH |
| DC1-CRAH-L3-Cx-2160 |  | DC1-DH1100-CRAH-DH-06 L3 Startup | 2d | 2026-04-22 A | 2026-06-01 A | DC1-CRAH-L3-Cx-2150, DC1-SWD-L3-CX-3060 | 100% | 2026-04-22 | 2026-04-23 | UMAS | Commissioning | DH1100 | L3 | DH CRAH |
| DC1-CRAH-L3-Cx-2170 |  | DC1-DH1100-CRAH-DH-06 BMS/EPMS Programming | 3d | 2026-04-22 A | 2026-05-11 A | QTS-1007140 | 100% | 2026-04-24 | 2026-04-28 | PRM | Commissioning | DH1100 | L3 | DH CRAH |

Notes:
- DC1-CRAH-L3-Cx-2010: Steps: EC Startup Report; MC Startup Report; Vendor Startup
- DC1-CRAH-L3-Cx-2020: Steps: Controls Checklist (Prime) (done)
- DC1-CRAH-L3-Cx-2040: Steps: EC Startup Report; MC Startup Report; Vendor Startup
- DC1-CRAH-L3-Cx-2050: Steps: Controls Checklist (Prime) (done)
- DC1-CRAH-L3-Cx-2070: Steps: EC Startup Report; MC Startup Report; Vendor Startup
- DC1-CRAH-L3-Cx-2080: Steps: Controls Checklist (Prime) (done)
- DC1-CRAH-L3-Cx-2100: Steps: EC Startup Report; MC Startup Report; Vendor Startup
- DC1-CRAH-L3-Cx-2110: Steps: Controls Checklist (Prime) (done)
- DC1-CRAH-L3-Cx-2130: Steps: EC Startup Report; MC Startup Report; Vendor Startup
- DC1-CRAH-L3-Cx-2140: Steps: Controls Checklist (Prime) (done)
- DC1-CRAH-L3-Cx-2160: Steps: EC Startup Report; MC Startup Report; Vendor Startup

| ID | WBS | Activity | Duration | Start | Finish | Predecessors | Complete | Planned start | Planned finish | Vendor Responsible Party | Layton Discipline | Location | CX Level | Equipment |
| --- | --- | --- | --- | --- | --- | --- | --- | --- | --- | --- | --- | --- | --- | --- |
|  | 07 | **DH1100 CRAH-DH-07 L3** |  | 2026-04-09 | 2026-06-01 |  |  |  |  |  |  |  |  |  |
| DC1-CRAH-L3-Cx-2180 |  | DC1-DH1100-CRAH-DH-07 FTE | 1d | 2026-04-09 A | 2026-04-09 A | DC1-MOD2-L3-Cx-2120 SS, DC1-MOD2-L3-Cx-2000 SS, DC1-CRAH-L2-2060, DC1-CRAH-L3-Cx-2090 | 100% | 2026-04-14 | 2026-04-14 | ROS | Commissioning | DH1100 | L3 | DH CRAH |
| DC1-CRAH-L3-Cx-2190 |  | DC1-DH1100-CRAH-DH-07 L3 Startup | 2d | 2026-04-22 A | 2026-06-01 A | DC1-CRAH-L3-Cx-2180, DC1-SWD-L3-CX-3060 | 100% | 2026-04-22 | 2026-04-23 | UMAS | Commissioning | DH1100 | L3 | DH CRAH |
| DC1-CRAH-L3-Cx-2200 |  | DC1-DH1100-CRAH-DH-07 BMS/EPMS Programming | 3d | 2026-04-22 A | 2026-05-11 A | QTS-1007140 | 100% | 2026-04-24 | 2026-04-28 | PRM | Commissioning | DH1100 | L3 | DH CRAH |
|  | 08 | **DH1100 CRAH-DH-08 L3** |  | 2026-04-09 | 2026-06-01 |  |  |  |  |  |  |  |  |  |
| DC1-CRAH-L3-Cx-2210 |  | DC1-DH1100-CRAH-DH-08 FTE | 1d | 2026-04-09 A | 2026-04-09 A | DC1-MOD2-L3-Cx-2180 SS, DC1-MOD2-L3-Cx-2060 SS, DC1-CRAH-L2-2070, DC1-CRAH-L3-Cx-2090 | 100% | 2026-04-14 | 2026-04-14 | ROS | Commissioning | DH1100 | L3 | DH CRAH |
| DC1-CRAH-L3-Cx-2220 |  | DC1-DH1100-CRAH-DH-08 L3 Startup | 2d | 2026-04-22 A | 2026-06-01 A | DC1-CRAH-L3-Cx-2210, DC1-SWD-L3-CX-3060 | 100% | 2026-04-22 | 2026-04-23 | UMAS | Commissioning | DH1100 | L3 | DH CRAH |
| DC1-CRAH-L3-Cx-2230 |  | DC1-DH1100-CRAH-DH-08 BMS/EPMS Programming | 3d | 2026-04-22 A | 2026-05-11 A | QTS-1007140 | 100% | 2026-04-24 | 2026-04-28 | PRM | Commissioning | DH1100 | L3 | DH CRAH |
|  | 09 | **DH1100 CRAH-DH-09 L3** |  | 2026-04-09 | 2026-06-01 |  |  |  |  |  |  |  |  |  |
| DC1-CRAH-L3-Cx-2240 |  | DC1-DH1100-CRAH-DH-09 FTE | 1d | 2026-04-09 A | 2026-04-09 A | DC1-MOD2-L3-Cx-2150 SS, DC1-MOD2-L3-Cx-2030 SS, DC1-CRAH-L2-2080, DC1-CRAH-L3-Cx-2210 | 100% | 2026-04-15 | 2026-04-15 | ROS | Commissioning | DH1100 | L3 | DH CRAH |
| DC1-CRAH-L3-Cx-2250 |  | DC1-DH1100-CRAH-DH-09 L3 Startup | 2d | 2026-04-22 A | 2026-06-01 A | DC1-CRAH-L3-Cx-2240, DC1-SWD-L3-CX-3060 | 100% | 2026-04-22 | 2026-04-23 | UMAS | Commissioning | DH1100 | L3 | DH CRAH |
| DC1-CRAH-L3-Cx-2260 |  | DC1-DH1100-CRAH-DH-09 BMS/EPMS Programming | 3d | 2026-04-22 A | 2026-05-11 A | QTS-1007140 | 100% | 2026-04-24 | 2026-04-28 | PRM | Commissioning | DH1100 | L3 | DH CRAH |
|  | 10 | **DH1100 CRAH-DH-10 L3** |  | 2026-04-09 | 2026-06-01 |  |  |  |  |  |  |  |  |  |
| DC1-CRAH-L3-Cx-2270 |  | DC1-DH1100-CRAH-DH-10 FTE | 1d | 2026-04-09 A | 2026-04-09 A | DC1-MOD2-L3-Cx-2120 SS, DC1-MOD2-L3-Cx-2000 SS, DC1-CRAH-L2-2090, DC1-CRAH-L3-Cx-2210 | 100% | 2026-04-15 | 2026-04-15 | ROS | Commissioning | DH1100 | L3 | DH CRAH |
| DC1-CRAH-L3-Cx-2280 |  | DC1-DH1100-CRAH-DH-10 L3 Startup | 2d | 2026-04-22 A | 2026-06-01 A | DC1-CRAH-L3-Cx-2270, DC1-SWD-L3-CX-3060 | 100% | 2026-04-22 | 2026-04-23 | UMAS | Commissioning | DH1100 | L3 | DH CRAH |
| DC1-CRAH-L3-Cx-2290 |  | DC1-DH1100-CRAH-DH-10 BMS/EPMS Programming | 3d | 2026-04-22 A | 2026-05-11 A | QTS-1007140 | 100% | 2026-04-24 | 2026-04-28 | PRM | Commissioning | DH1100 | L3 | DH CRAH |
|  | 11 | **DH1100 CRAH-DH-11 L3** |  | 2026-04-09 | 2026-06-01 |  |  |  |  |  |  |  |  |  |
| DC1-CRAH-L3-Cx-2300 |  | DC1-DH1100-CRAH-DH-11 FTE | 1d | 2026-04-09 A | 2026-04-09 A | DC1-MOD2-L3-Cx-2180 SS, DC1-MOD2-L3-Cx-2090 SS, DC1-CRAH-L2-2100, DC1-CRAH-L3-Cx-2210 | 100% | 2026-04-15 | 2026-04-15 | ROS | Commissioning | DH1100 | L3 | DH CRAH |
| DC1-CRAH-L3-Cx-2310 |  | DC1-DH1100-CRAH-DH-11 L3 Startup | 2d | 2026-04-22 A | 2026-06-01 A | DC1-CRAH-L3-Cx-2300, DC1-SWD-L3-CX-3060 | 100% | 2026-04-22 | 2026-04-23 | UMAS | Commissioning | DH1100 | L3 | DH CRAH |
| DC1-CRAH-L3-Cx-2320 |  | DC1-DH1100-CRAH-DH-11 BMS/EPMS Programming | 3d | 2026-04-22 A | 2026-05-11 A | QTS-1007140 | 100% | 2026-04-24 | 2026-04-28 | PRM | Commissioning | DH1100 | L3 | DH CRAH |
|  | 12 | **DH1100 CRAH-DH-12 L3** |  | 2026-04-09 | 2026-06-01 |  |  |  |  |  |  |  |  |  |
| DC1-CRAH-L3-Cx-2330 |  | DC1-DH1100-CRAH-DH-12 FTE | 1d | 2026-04-09 A | 2026-04-09 A | DC1-MOD2-L3-Cx-2060 SS, DC1-MOD2-L3-Cx-2150 SS, DC1-CRAH-L2-2110, DC1-CRAH-L3-Cx-2210 | 100% | 2026-04-15 | 2026-04-15 | ROS | Commissioning | DH1100 | L3 | DH CRAH |
| DC1-CRAH-L3-Cx-2340 |  | DC1-DH1100-CRAH-DH-12 L3 Startup | 2d | 2026-04-22 A | 2026-06-01 A | DC1-CRAH-L3-Cx-2330, DC1-SWD-L3-CX-3060 | 100% | 2026-04-22 | 2026-04-23 | UMAS | Commissioning | DH1100 | L3 | DH CRAH |
| DC1-CRAH-L3-Cx-2350 |  | DC1-DH1100-CRAH-DH-12 BMS/EPMS Programming | 3d | 2026-04-22 A | 2026-05-11 A | QTS-1007140 | 100% | 2026-04-24 | 2026-04-28 | PRM | Commissioning | DH1100 | L3 | DH CRAH |

Notes:
- DC1-CRAH-L3-Cx-2190: Steps: EC Startup Report; MC Startup Report; Vendor Startup
- DC1-CRAH-L3-Cx-2220: Steps: EC Startup Report; MC Startup Report; Vendor Startup
- DC1-CRAH-L3-Cx-2250: Steps: EC Startup Report; MC Startup Report; Vendor Startup
- DC1-CRAH-L3-Cx-2280: Steps: EC Startup Report; MC Startup Report; Vendor Startup
- DC1-CRAH-L3-Cx-2310: Steps: EC Startup Report; MC Startup Report; Vendor Startup
- DC1-CRAH-L3-Cx-2340: Steps: EC Startup Report; MC Startup Report; Vendor Startup

| ID | WBS | Activity | Duration | Start | Finish | Predecessors | Complete | Planned start | Planned finish | Vendor Responsible Party | Layton Discipline | Location | CX Level | Equipment |
| --- | --- | --- | --- | --- | --- | --- | --- | --- | --- | --- | --- | --- | --- | --- |
|  | 13 | **DH1100 CRAH-DH-13 L3** |  | 2026-04-09 | 2026-06-01 |  |  |  |  |  |  |  |  |  |
| DC1-CRAH-L3-Cx-2360 |  | DC1-DH1100-CRAH-DH-13 FTE | 1d | 2026-04-09 A | 2026-04-09 A | DC1-MOD2-L3-Cx-2120 SS, DC1-MOD2-L3-Cx-2030 SS, DC1-CRAH-L2-2120, DC1-CRAH-L3-Cx-2330 | 100% | 2026-04-16 | 2026-04-16 | ROS | Commissioning | DH1100 | L3 | DH CRAH |
| DC1-CRAH-L3-Cx-2370 |  | DC1-DH1100-CRAH-DH-13 L3 Startup | 2d | 2026-04-22 A | 2026-06-01 A | DC1-CRAH-L3-Cx-2360, DC1-SWD-L3-CX-3060 | 100% | 2026-04-22 | 2026-04-23 | UMAS | Commissioning | DH1100 | L3 | DH CRAH |
| DC1-CRAH-L3-Cx-2380 |  | DC1-DH1100-CRAH-DH-13 BMS/EPMS Programming | 3d | 2026-04-22 A | 2026-05-11 A | QTS-1007140 | 100% | 2026-04-24 | 2026-04-28 | PRM | Commissioning | DH1100 | L3 | DH CRAH |
|  | 14 | **DH1100 CRAH-DH-14 L3** |  | 2026-04-09 | 2026-06-01 |  |  |  |  |  |  |  |  |  |
| DC1-CRAH-L3-Cx-2390 |  | DC1-DH1100-CRAH-DH-14 FTE | 1d | 2026-04-09 A | 2026-04-09 A | DC1-MOD2-L3-Cx-2090 SS, DC1-MOD2-L3-Cx-2000 SS, DC1-CRAH-L2-2130, DC1-CRAH-L3-Cx-2330 | 100% | 2026-04-16 | 2026-04-16 | ROS | Commissioning | DH1100 | L3 | DH CRAH |
| DC1-CRAH-L3-Cx-2400 |  | DC1-DH1100-CRAH-DH-14 L3 Startup | 2d | 2026-04-22 A | 2026-06-01 A | DC1-CRAH-L3-Cx-2390, DC1-SWD-L3-CX-3060 | 100% | 2026-04-22 | 2026-04-23 | UMAS | Commissioning | DH1100 | L3 | DH CRAH |
| DC1-CRAH-L3-Cx-2410 |  | DC1-DH1100-CRAH-DH-14 BMS/EPMS Programming | 3d | 2026-04-22 A | 2026-05-11 A | QTS-1007140 | 100% | 2026-04-24 | 2026-04-28 | PRM | Commissioning | DH1100 | L3 | DH CRAH |
|  | 15 | **DH1100 CRAH-DH-15 L3** |  | 2026-04-09 | 2026-06-01 |  |  |  |  |  |  |  |  |  |
| DC1-CRAH-L3-Cx-2420 |  | DC1-DH1100-CRAH-DH-15 FTE | 1d | 2026-04-09 A | 2026-04-09 A | DC1-MOD2-L3-Cx-2030 SS, DC1-MOD2-L3-Cx-2000 SS, DC1-CRAH-L2-2140, DC1-CRAH-L3-Cx-2330 | 100% | 2026-04-16 | 2026-04-16 | ROS | Commissioning | DH1100 | L3 | DH CRAH |
| DC1-CRAH-L3-Cx-2430 |  | DC1-DH1100-CRAH-DH-15 L3 Startup | 2d | 2026-04-22 A | 2026-06-01 A | DC1-CRAH-L3-Cx-2420, QTS-16241, DC1-SWD-L3-CX-3060 | 100% | 2026-04-22 | 2026-04-23 | UMAS | Commissioning | DH1100 | L3 | DH CRAH |
| DC1-CRAH-L3-Cx-2440 |  | DC1-DH1100-CRAH-DH-15 BMS/EPMS Programming | 3d | 2026-04-22 A | 2026-05-11 A | QTS-1007140 | 100% | 2026-04-24 | 2026-04-28 | PRM | Commissioning | DH1100 | L3 | DH CRAH |
|  | 16 | **DH1100 CRAH-DH-16 L3** |  | 2026-04-09 | 2026-06-01 |  |  |  |  |  |  |  |  |  |
| DC1-CRAH-L3-Cx-2450 |  | DC1-DH1100-CRAH-DH-16 FTE | 1d | 2026-04-09 A | 2026-04-09 A | DC1-MOD2-L3-Cx-2060 SS, DC1-MOD2-L3-Cx-2030 SS, DC1-CRAH-L2-2150, DC1-CRAH-L3-Cx-2330 | 100% | 2026-04-16 | 2026-04-16 | ROS | Commissioning | DH1100 | L3 | DH CRAH |
| DC1-CRAH-L3-Cx-2460 |  | DC1-DH1100-CRAH-DH-16 L3 Startup | 2d | 2026-04-22 A | 2026-06-01 A | DC1-CRAH-L3-Cx-2450, QTS-16241, DC1-SWD-L3-CX-3060 | 100% | 2026-04-22 | 2026-04-23 | UMAS | Commissioning | DH1100 | L3 | DH CRAH |
| DC1-CRAH-L3-Cx-2470 |  | DC1-DH1100-CRAH-DH-16 BMS/EPMS Programming | 3d | 2026-04-22 A | 2026-05-11 A | QTS-1007140 | 100% | 2026-04-24 | 2026-04-28 | PRM | Commissioning | DH1100 | L3 | DH CRAH |
|  | 17 | **DH1100 CRAH-DH-17 L3** |  | 2026-04-09 | 2026-06-01 |  |  |  |  |  |  |  |  |  |
| DC1-CRAH-L3-Cx-2480 |  | DC1-DH1100-CRAH-DH-17 FTE | 1d | 2026-04-09 A | 2026-04-09 A | DC1-MOD2-L3-Cx-2060 SS, DC1-MOD2-L3-Cx-2090 SS, DC1-CRAH-L2-2160, DC1-CRAH-L3-Cx-2450 | 100% | 2026-04-17 | 2026-04-17 | ROS | Commissioning | DH1100 | L3 | DH CRAH |
| DC1-CRAH-L3-Cx-2490 |  | DC1-DH1100-CRAH-DH-17 L3 Startup | 2d | 2026-04-22 A | 2026-06-01 A | DC1-CRAH-L3-Cx-2480, QTS-16241, DC1-SWD-L3-CX-3060 | 100% | 2026-04-22 | 2026-04-23 | UMAS | Commissioning | DH1100 | L3 | DH CRAH |
| DC1-CRAH-L3-Cx-2500 |  | DC1-DH1100-CRAH-DH-17 BMS/EPMS Programming | 3d | 2026-04-22 A | 2026-05-11 A | QTS-1007140 | 100% | 2026-04-24 | 2026-04-28 | PRM | Commissioning | DH1100 | L3 | DH CRAH |
|  | 18 | **DH1100 CRAH-DH-18 L3** |  | 2026-04-09 | 2026-06-01 |  |  |  |  |  |  |  |  |  |
| DC1-CRAH-L3-Cx-2510 |  | DC1-DH1100-CRAH-DH-18 FTE | 1d | 2026-04-09 A | 2026-04-09 A | DC1-MOD2-L3-Cx-2120 SS, DC1-MOD2-L3-Cx-2090 SS, DC1-CRAH-L2-2170, DC1-CRAH-L3-Cx-2450 | 100% | 2026-04-17 | 2026-04-17 | ROS | Commissioning | DH1100 | L3 | DH CRAH |
| DC1-CRAH-L3-Cx-2520 |  | DC1-DH1100-CRAH-DH-18 L3 Startup | 2d | 2026-04-22 A | 2026-06-01 A | DC1-CRAH-L3-Cx-2510, QTS-16241, DC1-SWD-L3-CX-3060 | 100% | 2026-04-22 | 2026-04-23 | UMAS | Commissioning | DH1100 | L3 | DH CRAH |
| DC1-CRAH-L3-Cx-2530 |  | DC1-DH1100-CRAH-DH-18 BMS/EPMS Programming | 3d | 2026-04-22 A | 2026-05-11 A | QTS-1007140 | 100% | 2026-04-24 | 2026-04-28 | PRM | Commissioning | DH1100 | L3 | DH CRAH |

Notes:
- DC1-CRAH-L3-Cx-2370: Steps: EC Startup Report; MC Startup Report; Vendor Startup
- DC1-CRAH-L3-Cx-2400: Steps: EC Startup Report; MC Startup Report; Vendor Startup
- DC1-CRAH-L3-Cx-2430: Steps: EC Startup Report; MC Startup Report; Vendor Startup
- DC1-CRAH-L3-Cx-2460: Steps: EC Startup Report; MC Startup Report; Vendor Startup
- DC1-CRAH-L3-Cx-2490: Steps: EC Startup Report; MC Startup Report; Vendor Startup
- DC1-CRAH-L3-Cx-2520: Steps: EC Startup Report; MC Startup Report; Vendor Startup

| ID | WBS | Activity | Duration | Start | Finish | Predecessors | Complete | Planned start | Planned finish | Vendor Responsible Party | Layton Discipline | Location | CX Level | Equipment |
| --- | --- | --- | --- | --- | --- | --- | --- | --- | --- | --- | --- | --- | --- | --- |
|  | 19 | **DH1100 CRAH-DH-19 L3** |  | 2026-04-09 | 2026-06-01 |  |  |  |  |  |  |  |  |  |
| DC1-CRAH-L3-Cx-2540 |  | DC1-DH1100-CRAH-DH-19 FTE | 1d | 2026-04-09 A | 2026-04-09 A | DC1-MOD2-L3-Cx-2150 SS, DC1-MOD2-L3-Cx-2120 SS, DC1-CRAH-L2-2180, DC1-CRAH-L3-Cx-2450 | 100% | 2026-04-17 | 2026-04-17 | ROS | Commissioning | DH1100 | L3 | DH CRAH |
| DC1-CRAH-L3-Cx-2550 |  | DC1-DH1100-CRAH-DH-19 L3 Startup | 2d | 2026-04-22 A | 2026-06-01 A | DC1-CRAH-L3-Cx-2540, QTS-16241, DC1-SWD-L3-CX-3060 | 100% | 2026-04-22 | 2026-04-23 | UMAS | Commissioning | DH1100 | L3 | DH CRAH |
| DC1-CRAH-L3-Cx-2560 |  | DC1-DH1100-CRAH-DH-19 BMS/EPMS Programming | 3d | 2026-04-22 A | 2026-05-11 A | QTS-1007140 | 100% | 2026-04-24 | 2026-04-28 | PRM | Commissioning | DH1100 | L3 | DH CRAH |
|  | 20 | **DH1100 CRAH-DH-20 L3** |  | 2026-04-09 | 2026-06-01 |  |  |  |  |  |  |  |  |  |
| DC1-CRAH-L3-Cx-2570 |  | DC1-DH1100-CRAH-DH-20 FTE | 1d | 2026-04-09 A | 2026-04-09 A | DC1-MOD2-L3-Cx-2180 SS, DC1-MOD2-L3-Cx-2150 SS, DC1-CRAH-L2-2190, DC1-CRAH-L3-Cx-2450 | 100% | 2026-04-17 | 2026-04-17 | ROS | Commissioning | DH1100 | L3 | DH CRAH |
| DC1-CRAH-L3-Cx-2580 |  | DC1-DH1100-CRAH-DH-20 L3 Startup | 2d | 2026-04-22 A | 2026-06-01 A | DC1-CRAH-L3-Cx-2570, QTS-16241, DC1-SWD-L3-CX-3060 | 100% | 2026-04-22 | 2026-04-23 | UMAS | Commissioning | DH1100 | L3 | DH CRAH |
| DC1-CRAH-L3-Cx-2590 |  | DC1-DH1100-CRAH-DH-20 BMS/EPMS Programming | 3d | 2026-04-22 A | 2026-05-11 A | QTS-1007140 | 100% | 2026-04-24 | 2026-04-28 | PRM | Commissioning | DH1100 | L3 | DH CRAH |
|  | 21 | **DH1100 CRAH-DH-21 L3** |  | 2026-04-09 | 2026-06-01 |  |  |  |  |  |  |  |  |  |
| DC1-CRAH-L3-Cx-2600 |  | DC1-DH1100-CRAH-DH-21 FTE | 1d | 2026-04-09 A | 2026-04-09 A | DC1-MOD2-L3-Cx-2180 SS, DC1-MOD2-L3-Cx-2000 SS, DC1-CRAH-L2-2200, DC1-CRAH-L3-Cx-2570 | 100% | 2026-04-20 | 2026-04-20 | ROS | Commissioning | DH1100 | L3 | DH CRAH |
| DC1-CRAH-L3-Cx-2610 |  | DC1-DH1100-CRAH-DH-21 L3 Startup | 2d | 2026-04-22 A | 2026-06-01 A | DC1-CRAH-L3-Cx-2600, QTS-16241, DC1-SWD-L3-CX-3060 | 100% | 2026-04-22 | 2026-04-23 | UMAS | Commissioning | DH1100 | L3 | DH CRAH |
| DC1-CRAH-L3-Cx-2620 |  | DC1-DH1100-CRAH-DH-21 BMS/EPMS Programming | 3d | 2026-04-22 A | 2026-05-11 A | QTS-1007140 | 100% | 2026-04-24 | 2026-04-28 | PRM | Commissioning | DH1100 | L3 | DH CRAH |
|  | 22 | **DH1100 CRAH-DH-22 L3** |  | 2026-04-09 | 2026-06-01 |  |  |  |  |  |  |  |  |  |
| DC1-CRAH-L3-Cx-2630 |  | DC1-DH1100-CRAH-DH-22 FTE | 1d | 2026-04-09 A | 2026-04-09 A | DC1-MOD2-L3-Cx-2060 SS, DC1-MOD2-L3-Cx-2000 SS, DC1-CRAH-L2-2210, DC1-CRAH-L3-Cx-2570 | 100% | 2026-04-20 | 2026-04-20 | ROS | Commissioning | DH1100 | L3 | DH CRAH |
| DC1-CRAH-L3-Cx-2640 |  | DC1-DH1100-CRAH-DH-22 L3 Startup | 2d | 2026-04-22 A | 2026-06-01 A | DC1-CRAH-L3-Cx-2630, QTS-16241, DC1-SWD-L3-CX-3060 | 100% | 2026-04-22 | 2026-04-23 | UMAS | Commissioning | DH1100 | L3 | DH CRAH |
| DC1-CRAH-L3-Cx-2650 |  | DC1-DH1100-CRAH-DH-22 BMS/EPMS Programming | 3d | 2026-04-22 A | 2026-05-11 A | QTS-1007140 | 100% | 2026-04-24 | 2026-04-28 | PRM | Commissioning | DH1100 | L3 | DH CRAH |
|  | 23 | **DH1100 CRAH-DH-23 L3** |  | 2026-04-09 | 2026-06-01 |  |  |  |  |  |  |  |  |  |
| DC1-CRAH-L3-Cx-2660 |  | DC1-DH1100-CRAH-DH-23 FTE | 1d | 2026-04-09 A | 2026-04-09 A | DC1-MOD2-L3-Cx-2090 SS, DC1-MOD2-L3-Cx-2030 SS, DC1-CRAH-L2-2220, DC1-CRAH-L3-Cx-2570 | 100% | 2026-04-20 | 2026-04-20 | ROS | Commissioning | DH1100 | L3 | DH CRAH |
| DC1-CRAH-L3-Cx-2670 |  | DC1-DH1100-CRAH-DH-23 L3 Startup | 2d | 2026-04-22 A | 2026-06-01 A | DC1-CRAH-L3-Cx-2660, QTS-16241, DC1-SWD-L3-CX-3060 | 100% | 2026-04-22 | 2026-04-23 | UMAS | Commissioning | DH1100 | L3 | DH CRAH |
| DC1-CRAH-L3-Cx-2680 |  | DC1-DH1100-CRAH-DH-23 BMS/EPMS Programming | 3d | 2026-04-22 A | 2026-05-11 A | QTS-1007140 | 100% | 2026-04-24 | 2026-04-28 | PRM | Commissioning | DH1100 | L3 | DH CRAH |
|  | 24 | **DH1100 CRAH-DH-24 L3** |  | 2026-04-09 | 2026-06-01 |  |  |  |  |  |  |  |  |  |
| DC1-CRAH-L3-Cx-2690 |  | DC1-DH1100-CRAH-DH-24 FTE | 1d | 2026-04-09 A | 2026-04-09 A | DC1-MOD2-L3-Cx-2060 SS, DC1-MOD2-L3-Cx-2120 SS, DC1-CRAH-L2-2230, DC1-CRAH-L3-Cx-2570 | 100% | 2026-04-20 | 2026-04-20 | ROS | Commissioning | DH1100 | L3 | DH CRAH |
| DC1-CRAH-L3-Cx-2700 |  | DC1-DH1100-CRAH-DH-24 L3 Startup | 2d | 2026-04-22 A | 2026-06-01 A | DC1-CRAH-L3-Cx-2690, QTS-16241, DC1-SWD-L3-CX-3060 | 100% | 2026-04-22 | 2026-04-23 | UMAS | Commissioning | DH1100 | L3 | DH CRAH |
| DC1-CRAH-L3-Cx-2710 |  | DC1-DH1100-CRAH-DH-24 BMS/EPMS Programming | 3d | 2026-04-22 A | 2026-05-11 A | QTS-1007140 | 100% | 2026-04-24 | 2026-04-28 | PRM | Commissioning | DH1100 | L3 | DH CRAH |

Notes:
- DC1-CRAH-L3-Cx-2550: Steps: EC Startup Report; MC Startup Report; Vendor Startup
- DC1-CRAH-L3-Cx-2580: Steps: EC Startup Report; MC Startup Report; Vendor Startup
- DC1-CRAH-L3-Cx-2610: Steps: EC Startup Report; MC Startup Report; Vendor Startup
- DC1-CRAH-L3-Cx-2640: Steps: EC Startup Report; MC Startup Report; Vendor Startup
- DC1-CRAH-L3-Cx-2670: Steps: EC Startup Report; MC Startup Report; Vendor Startup
- DC1-CRAH-L3-Cx-2700: Steps: EC Startup Report; MC Startup Report; Vendor Startup

| ID | WBS | Activity | Duration | Start | Finish | Predecessors | Complete | Planned start | Planned finish | Vendor Responsible Party | Layton Discipline | Location | CX Level | Equipment |
| --- | --- | --- | --- | --- | --- | --- | --- | --- | --- | --- | --- | --- | --- | --- |
|  | 25 | **DH1100 CRAH-DH-25 L3** |  | 2026-04-09 | 2026-06-01 |  |  |  |  |  |  |  |  |  |
| DC1-CRAH-L3-Cx-2720 |  | DC1-DH1100-CRAH-DH-25 FTE | 1d | 2026-04-09 A | 2026-04-09 A | DC1-MOD2-L3-Cx-2150 SS, DC1-MOD2-L3-Cx-2090 SS, DC1-CRAH-L2-2240, DC1-CRAH-L3-Cx-2690 | 100% | 2026-04-21 | 2026-04-21 | ROS | Commissioning | DH1100 | L3 | DH CRAH |
| DC1-CRAH-L3-Cx-2730 |  | DC1-DH1100-CRAH-DH-25 L3 Startup | 2d | 2026-04-22 A | 2026-06-01 A | DC1-CRAH-L3-Cx-2720, QTS-16241, DC1-SWD-L3-CX-3060 | 100% | 2026-04-22 | 2026-04-23 | UMAS | Commissioning | DH1100 | L3 | DH CRAH |
| DC1-CRAH-L3-Cx-2740 |  | DC1-DH1100-CRAH-DH-25 BMS/EPMS Programming | 3d | 2026-04-22 A | 2026-05-11 A | QTS-1007140 | 100% | 2026-04-24 | 2026-04-28 | PRM | Commissioning | DH1100 | L3 | DH CRAH |
|  | 26 | **DH1100 CRAH-DH-26 L3** |  | 2026-04-09 | 2026-06-01 |  |  |  |  |  |  |  |  |  |
| DC1-CRAH-L3-Cx-2750 |  | DC1-DH1100-CRAH-DH-26 FTE | 1d | 2026-04-09 A | 2026-04-09 A | DC1-MOD2-L3-Cx-2180 SS, DC1-MOD2-L3-Cx-2120 SS, DC1-CRAH-L2-2250, DC1-CRAH-L3-Cx-2690 | 100% | 2026-04-21 | 2026-04-21 | ROS | Commissioning | DH1100 | L3 | DH CRAH |
| DC1-CRAH-L3-Cx-2760 |  | DC1-DH1100-CRAH-DH-26 L3 Startup | 2d | 2026-04-22 A | 2026-06-01 A | DC1-CRAH-L3-Cx-2750, QTS-16241, DC1-SWD-L3-CX-3060 | 100% | 2026-04-22 | 2026-04-23 | UMAS | Commissioning | DH1100 | L3 | DH CRAH |
| DC1-CRAH-L3-Cx-2770 |  | DC1-DH1100-CRAH-DH-26 BMS/EPMS Programming | 3d | 2026-04-22 A | 2026-05-11 A | QTS-1007140 | 100% | 2026-04-24 | 2026-04-28 | PRM | Commissioning | DH1100 | L3 | DH CRAH |
|  | 27 | **DH1100 CRAH-DH-27 L3** |  | 2026-04-09 | 2026-06-01 |  |  |  |  |  |  |  |  |  |
| DC1-CRAH-L3-Cx-2780 |  | DC1-DH1100-CRAH-DH-27 FTE | 1d | 2026-04-09 A | 2026-04-09 A | DC1-MOD2-L3-Cx-2150 SS, DC1-MOD2-L3-Cx-2000 SS, DC1-CRAH-L2-2260, DC1-CRAH-L3-Cx-2690 | 100% | 2026-04-21 | 2026-04-21 | ROS | Commissioning | DH1100 | L3 | DH CRAH |
| DC1-CRAH-L3-Cx-2790 |  | DC1-DH1100-CRAH-DH-27 L3 Startup | 2d | 2026-04-22 A | 2026-06-01 A | DC1-CRAH-L3-Cx-2780, QTS-16241, DC1-SWD-L3-CX-3060 | 100% | 2026-04-22 | 2026-04-23 | UMAS | Commissioning | DH1100 | L3 | DH CRAH |
| DC1-CRAH-L3-Cx-2800 |  | DC1-DH1100-CRAH-DH-27 BMS/EPMS Programming | 3d | 2026-04-22 A | 2026-05-11 A | QTS-1007140 | 100% | 2026-04-24 | 2026-04-28 | PRM | Commissioning | DH1100 | L3 | DH CRAH |
|  | 28 | **DH1100 CRAH-DH-28 L3** |  | 2026-04-09 | 2026-06-01 |  |  |  |  |  |  |  |  |  |
| DC1-CRAH-L3-Cx-2810 |  | DC1-DH1100-CRAH-DH-28 FTE | 1d | 2026-04-09 A | 2026-04-09 A | DC1-MOD2-L3-Cx-2180 SS, DC1-MOD2-L3-Cx-2030 SS, DC1-CRAH-L2-2270, DC1-CRAH-L3-Cx-2690 | 100% | 2026-04-21 | 2026-04-21 | ROS | Commissioning | DH1100 | L3 | DH CRAH |
| DC1-CRAH-L3-Cx-2820 |  | DC1-DH1100-CRAH-DH-28 L3 Startup | 2d | 2026-04-22 A | 2026-06-01 A | DC1-CRAH-L3-Cx-2810, QTS-16241, DC1-SWD-L3-CX-3060 | 100% | 2026-04-22 | 2026-04-23 | UMAS | Commissioning | DH1100 | L3 | DH CRAH |
| DC1-CRAH-L3-Cx-2830 |  | DC1-DH1100-CRAH-DH-28 BMS/EPMS Programming | 3d | 2026-04-22 A | 2026-05-11 A | QTS-1007140 | 100% | 2026-04-24 | 2026-04-28 | PRM | Commissioning | DH1100 | L3 | DH CRAH |
|  | 29 | **DH1100 CRAH-EG-01 L3** |  | 2026-04-09 | 2026-05-26 |  |  |  |  |  |  |  |  |  |
| DC1-CRAH-L3-Cx-2840 |  | DC1-DH1100-CRAH-EG-1102-01 FTE | 1d | 2026-04-09 A | 2026-04-09 A | DC1-MOD2-L3-Cx-2000 SS, DC1-CRAH-L2-2280 | 100% | 2026-04-13 | 2026-04-13 | ROS | Commissioning | DH1100 | L3 | EG CRAH |
| DC1-CRAH-L3-Cx-2850 |  | DC1-DH1100-CRAH-EG-1102-01 L3 Startup | 2d | 2026-05-11 A | 2026-05-26 A | DC1-CRAH-L3-Cx-2840, DC1-SWD-L3-CX-3060 | 100% | 2026-05-13 | 2026-05-14 | VER | Commissioning | DH1100 | L3 | EG CRAH |
| DC1-CRAH-L3-Cx-2860 |  | DC1-DH1100-CRAH-EG-1102-01 BMS/EPMS Programming | 1d | 2026-05-12 A | 2026-05-12 A | DC1-CRAH-L3-Cx-2850 SS, QTS-1007140 | 100% | 2026-05-15 | 2026-05-15 | PRM | Commissioning | DH1100 | L3 | EG CRAH |
|  | 30 | **DH1100 CRAH-EG-02 L3** |  | 2026-04-09 | 2026-05-26 |  |  |  |  |  |  |  |  |  |
| DC1-CRAH-L3-Cx-2870 |  | DC1-DH1100-CRAH-EG-1102-02 FTE | 1d | 2026-04-09 A | 2026-04-09 A | DC1-MOD2-L3-Cx-2060 SS, DC1-CRAH-L2-2290 | 100% | 2026-04-13 | 2026-04-13 | ROS | Commissioning | DH1100 | L3 | EG CRAH |
| DC1-CRAH-L3-Cx-2880 |  | DC1-DH1100-CRAH-EG-1102-02 L3 Startup | 2d | 2026-05-11 A | 2026-05-26 A | DC1-CRAH-L3-Cx-2870, DC1-SWD-L3-CX-3060 | 100% | 2026-05-13 | 2026-05-14 | VER | Commissioning | DH1100 | L3 | EG CRAH |
| DC1-CRAH-L3-Cx-2890 |  | DC1-DH1100-CRAH-EG-1102-02 BMS/EPMS Programming | 1d | 2026-05-12 A | 2026-05-12 A | DC1-CRAH-L3-Cx-2880 SS, QTS-1007140 | 100% | 2026-05-15 | 2026-05-15 | PRM | Commissioning | DH1100 | L3 | EG CRAH |

Notes:
- DC1-CRAH-L3-Cx-2730: Steps: EC Startup Report; MC Startup Report; Vendor Startup
- DC1-CRAH-L3-Cx-2760: Steps: EC Startup Report; MC Startup Report; Vendor Startup
- DC1-CRAH-L3-Cx-2790: Steps: EC Startup Report; MC Startup Report; Vendor Startup
- DC1-CRAH-L3-Cx-2820: Steps: EC Startup Report; MC Startup Report; Vendor Startup
- DC1-CRAH-L3-Cx-2850: Steps: EC Startup Report (done); MC Startup Report; Vendor Startup (done)
- DC1-CRAH-L3-Cx-2860: Steps: Controls Checklist (done)
- DC1-CRAH-L3-Cx-2880: Steps: EC Startup Report (done); MC Startup Report; Vendor Startup

| ID | WBS | Activity | Duration | Start | Finish | Predecessors | Complete | Planned start | Planned finish | Calendar | Vendor Responsible Party | Layton Discipline | Location | CX Level | Equipment | NICK |
| --- | --- | --- | --- | --- | --- | --- | --- | --- | --- | --- | --- | --- | --- | --- | --- | --- |
|  | 31 | **DH1100 CRAH-EG-03 L3** |  | 2026-04-09 | 2026-05-26 |  |  |  |  |  |  |  |  |  |  |  |
| DC1-CRAH-L3-Cx-2900 |  | DC1-DH1100-CRAH-EG-1102-03 FTE | 1d | 2026-04-09 A | 2026-04-09 A | DC1-MOD2-L3-Cx-2090 SS, DC1-CRAH-L2-2300 | 100% | 2026-04-13 | 2026-04-13 |  | ROS | Commissioning | DH1100 | L3 | EG CRAH |  |
| DC1-CRAH-L3-Cx-2910 |  | DC1-DH1100-CRAH-EG-1102-03 L3 Startup | 2d | 2026-05-11 A | 2026-05-26 A | DC1-CRAH-L3-Cx-2900, DC1-SWD-L3-CX-3060 | 100% | 2026-05-13 | 2026-05-14 |  | VER | Commissioning | DH1100 | L3 | EG CRAH |  |
| DC1-CRAH-L3-Cx-2920 |  | DC1-DH1100-CRAH-EG-1102-03 BMS/EPMS Programming | 1d | 2026-05-12 A | 2026-05-12 A | DC1-CRAH-L3-Cx-2910 SS, QTS-1007140 | 100% | 2026-05-15 | 2026-05-15 |  | PRM | Commissioning | DH1100 | L3 | EG CRAH |  |
|  | 32 | **DH1100 CRAH-EG-04 L3** |  | 2026-04-09 | 2026-05-26 |  |  |  |  |  |  |  |  |  |  |  |
| DC1-CRAH-L3-Cx-2930 |  | DC1-DH1100-CRAH-EG-1102-04 FTE | 1d | 2026-04-09 A | 2026-04-09 A | DC1-MOD2-L3-Cx-2150 SS, DC1-CRAH-L2-2310 | 100% | 2026-04-13 | 2026-04-13 |  | ROS | Commissioning | DH1100 | L3 | EG CRAH |  |
| DC1-CRAH-L3-Cx-2940 |  | DC1-DH1100-CRAH-EG-1102-04 L3 Startup | 2d | 2026-05-11 A | 2026-05-26 A | DC1-CRAH-L3-Cx-2930, DC1-SWD-L3-CX-3060 | 100% | 2026-05-13 | 2026-05-14 |  | VER | Commissioning | DH1100 | L3 | EG CRAH |  |
| DC1-CRAH-L3-Cx-2950 |  | DC1-DH1100-CRAH-EG-1102-04 BMS/EPMS Programming | 1d | 2026-05-12 A | 2026-05-12 A | DC1-CRAH-L3-Cx-2940 SS, QTS-1007140 | 100% | 2026-05-15 | 2026-05-15 |  | PRM | Commissioning | DH1100 | L3 | EG CRAH |  |
|  | 33 | **DC1-DH1100-DOAS-RT-01 L3** |  | 2026-04-24 | 2026-07-15 |  |  |  |  |  |  |  |  |  |  |  |
| DC1-DOAS-L3-Cx-2000 |  | DC1-DH1100-DOAS-RT-01 FTE | 1d | 2026-04-24 A | 2026-04-24 A | DC1-MOD2-L3-Cx-2180 SS, DC1-DOAS-L2-2000 | 100% |  |  |  | ROS | Commissioning | DH1100 | L3 | DOAS |  |
| DC1-DOAS-L3-Cx-2010 |  | DC1-DH1100-DOAS-RT-01 L3 Startup | 2d | 2026-04-27 A | 2026-07-15 A | DC1-DOAS-L3-Cx-2000 | 100% | 2026-04-27 | 2026-04-28 |  | TAS | Commissioning | DH1100 | L3 | DOAS |  |
| DC1-DOAS-L3-Cx-2020 |  | DC1-DH1100-DOAS-RT-01 BMS/EPMS Programming | 1d | 2026-05-07 A | 2026-07-15 A | DC1-DOAS-L3-Cx-2010 SS, DC1-DOAS-L3-Cx-2010 FF | 100% | 2026-05-07 | 2026-05-07 |  | PRM | Commissioning | DH1100 | L3 | DOAS |  |
|  | 34 | **DC1-DH1100-DOAS-RT-02 L3** |  | 2026-04-24 | 2026-07-15 |  |  |  |  |  |  |  |  |  |  |  |
| DC1-DOAS-L3-Cx-2030 |  | DC1-DH1100-DOAS-RT-02 FTE | 1d | 2026-04-24 A | 2026-04-24 A | DC1-MOD2-L3-Cx-2150 SS, DC1-DOAS-L2-2010 | 100% | 2026-04-23 | 2026-04-23 |  | ROS | Commissioning | DH1100 | L3 | DOAS |  |
| DC1-DOAS-L3-Cx-2040 |  | DC1-DH1100-DOAS-RT-02 L3 Startup | 2d | 2026-04-27 A | 2026-07-15 A | DC1-DOAS-L3-Cx-2030 | 100% | 2026-04-27 | 2026-04-28 |  | TAS | Commissioning | DH1100 | L3 | DOAS |  |
| DC1-DOAS-L3-Cx-2050 |  | DC1-DH1100-DOAS-RT-02 BMS/EPMS Programming | 1d | 2026-05-07 A | 2026-07-15 A | DC1-DOAS-L3-Cx-2040 SS, DC1-DOAS-L3-Cx-2040 FF | 100% | 2026-05-07 | 2026-05-07 |  | PRM | Commissioning | DH1100 | L3 | DOAS |  |
|  | 1 | **DC1-DH1100 CDU SCP Cx L3** |  |  |  |  |  |  |  |  |  |  |  |  |  |  |
|  | 14 | **DC1-DH1100 LOADBANK** |  | 2026-05-06 | 2026-05-13 |  |  |  |  |  |  |  |  |  |  |  |
| DC1-DH1100-LB-1000 |  | DC1-DH1100 Connect Air Cooled Load Banks at RPPs | 1d | 2026-05-06 A | 2026-05-06 A | DC1-RPP-L3-CX-2175 FF, DC1-RPP-L3-CX-2160 FF, DC1-RPP-L3-CX-2145 FF, DC1-RPP-L3-CX-2130 FF, DC1-RPP-L3-CX-2115 FF, DC1-RPP-L3-CX-2100 FF, DC1-RPP-L3-CX-2085 FF, DC1-RPP-L3-CX-2070 FF, DC1-RPP-L3-CX-2055 FF, DC1-RPP-L3-CX-2040 FF, DC1-RPP-L3-CX-2025 FF, DC1-RPP-L3-CX-2010 FF | 100% |  |  |  | PHE | Commissioning | DH1100 | L3 | RPP |  |
| DC1-DH1100-LB-1010 |  | DC1-DH1100 Burn in Chillers | 3d | 2026-05-11 A | 2026-05-13 A | DC1-DH1100-LB-1000, DC1-CHLR-L3-Cx-2000, DC1-CHLR-L3-Cx-2030, DC1-CHLR-L3-Cx-2060, DC1-CHLR-L3-Cx-2090, DC1-CHLR-L3-Cx-2120, DC1-CHLR-L3-Cx-2150, DC1-CHLR-L3-Cx-2180 | 100% |  |  |  | LAY | Commissioning | DH1100 | L3 | CHILLER | NICK |
|  | 15 | **DC1-DH1100 TAB** |  | 2026-04-27 | 2026-05-12 |  |  |  |  |  |  |  |  |  |  |  |
| DC1-DH1100-TAB-1000 |  | DC1-DH1100 Water Tab (Industrial Loop) | 5d | 2026-04-27 A | 2026-05-04 A | DC1-CHWP-L3-Cx-2200, DC1-CHWP-L3-Cx-2170, DC1-CHWP-L3-Cx-2140, DC1-CHWP-L3-Cx-2110, DC1-CHWP-L3-Cx-2080, DC1-CHWP-L3-Cx-2050, DC1-CHWP-L3-Cx-2020 | 100% | 2026-04-27 | 2026-05-01 | QTS-PHX3 DC1 - 7 day No Holidays | LAY | Commissioning | DH1100 | L3 |  |  |
| DC1-DH1100-TAB-1010 |  | DC1-DH1100 Air Tab | 6d | 2026-05-05 A | 2026-05-12 A | QTS - 24461, QTS - 15000, QTS-1010200, QTS - 24831 | 100% | 2026-05-05 | 2026-05-11 | QTS-PHX3 DC1 - 6 day w/ Holidays | LAY | Commissioning | DH1100 | L3 |  |  |
|  | 04 | **Data Hall 1100 Cx L4** |  | 2026-04-24 | 2026-07-06 |  |  |  |  |  |  |  |  |  |  |  |
| DC1-MECH-L4-Cx-1110 |  | DC1 Data Hall 1100 BMS/EPMS Integration | 1d | 2026-07-06 A | 2026-07-06 A | DC1-DH1100-TAB-1000, DC1-ATS-L3-CX-2010, DC1-ATS-L3-CX-2025, DC1-ATS-L3-CX-2040, DC1-ATS-L3-CX-2055, DC1-ATS-L3-CX-2070, DC1-ATS-L3-CX-2085, DC1-ATS-L3-CX-2100, DC1-ATS-L3-CX-2115, DC1-ATS-L3-CX-2130, DC1-ATS-L3-CX-2145, DC1-ATS-L3-CX-2160, DC1-ATS-L3-CX-2175, DC1-ATS-L3-CX-2190, DC1-ATS-L3-CX-2205, DC1-ATS-L3-CX-2220, DC1-ATS-L3-CX-2235, DC1-ATS-L3-CX-2250, DC1-ATS-L3-CX-2265, DC1-ATS-L3-CX-2280, DC1-ATS-L3-CX-2295, DC1-ATS-L3-CX-2310, DC1-ATS-L3-CX-2325, DC1-ATS-L3-CX-2340, DC1-ATS-L3-CX-2355, DC1-ATS-L3-CX-2370, DC1-ATS-L3-CX-2385, DC1-ATS-L3-CX-2400, DC1-ATS-L3-CX-2415, DC1-ATS-L3-CX-2430, DC1-ATS-L3-CX-2445, DC1-ATS-L3-CX-2460, DC1-ATS-L3-CX-2475, DC1-ATS-L3-CX-2490, DC1-ATS-L3-CX-2505, DC1-ATS-L3-CX-2520, DC1-ATS-L3-CX-2535, DC1-BUS-L3-CX-1020, DC1-BUS-L3-CX-1050, DC1-COD-L3-CX-2025, DC1-COD-L3-CX-2010, DC1-COD-L3-CX-2040, DC1-COD-L3-CX-2055, DC1-COD-L3-CX-2070, DC1-COD-L3-CX-2085, DC1-COD-L3-CX-2100, DC1-COD-L3-CX-2115, DC1-COD-L3-CX-2130, DC1-COD-L3-CX-2145, DC1-COD-L3-CX-2160, DC1-COD-L3-CX-2175, DC1-COD-L3-CX-2190, DC1-COD-L3-CX-2205, DC1-COD-L3-CX-2220, DC1-COD-L3-CX-2235, DC1-COD-L3-CX-2250, DC1-COD-L3-CX-2265, DC1-COD-L3-CX-2280, DC1-COD-L3-CX-2295, DC1-COD-L3-CX-2310, DC1-COD-L3-CX-2325, DC1-COD-L3-CX-2340, DC1-COD-L3-CX-2355, DC1-COD-L3-CX-2370, DC1-COD-L3-CX-2385, DC1-COD-L3-CX-2400, DC1-COD-L3-CX-2415, DC1-COD-L3-CX-2430, DC1-COD-L3-CX-2445, DC1-COD-L3-CX-2460, DC1-COD-L3-CX-2475, DC1-COD-L3-CX-2490, DC1-COD-L3-CX-2505, DC1-COD-L3-CX-2520, DC1-COD-L3-CX-2535, DC1-MOD1-L3-CX-2020, DC1-MOD1-L3-CX-2050, DC1-MOD1-L3-CX-2080, DC1-MOD1-L3-CX-2110, DC1-MOD1-L3-CX-2140, DC1-MOD1-L3-CX-2170, DC1-MOD1-L3-CX-2200, DC1-MOD2-L3-Cx-2050, DC1-MOD2-L3-Cx-2020, DC1-MOD2-L3-Cx-2050 FF, DC1-MOD2-L3-Cx-2080, DC1-MOD2-L3-Cx-2110, DC1-MOD2-L3-Cx-2140, DC1-MOD2-L3-Cx-2170, DC1-MOD2-L3-Cx-2200, DC1-MOD3-L3-Cx-2020, DC1-MOD3-L3-Cx-2050, DC1-MOD3-L3-Cx-2080, DC1-MOD3-L3-Cx-2110, DC1-MOD3-L3-Cx-2140, DC1-MOD3-L3-Cx-2170, DC1-XFMR-L3-CX-2020, DC1-XFMR-L3-CX-2050, DC1-XFMR-L3-CX-2080, DC1-XFMR-L3-CX-2110, DC1-XFMR-L3-CX-2140, DC1-XFMR-L3-CX-2170, DC1-XFMR-L3-CX-2200, DC1-SWD-L3-CX-2020, DC1-SWD-L3-CX-2050, DC1-SWD-L3-CX-2080, DC1-SWD-L3-CX-2110, DC1-SWD-L3-CX-2140, DC1-SWD-L3-CX-2170, DC1-SWD-L3-CX-2200, DC1-GEN-L3-CX-2020, DC1-GEN-L3-CX-2050, DC1-GEN-L3-CX-2080, DC1-GEN-L3-CX-2110, DC1-GEN-L3-CX-2140, DC1-GEN-L3-CX-2170, DC1-GEN-L3-CX-2200, DC1-COMP-L3-CX-2020, DC1-FAN-L3-CX-2020, DC1-COMP-L3-CX-2050, DC1-FAN-L3-CX-2050, DC1-COMP-L3-CX-2080, DC1-FAN-L3-CX-2080, DC1-COMP-L3-CX-2110, DC1-FAN-L3-CX-2110, DC1-COMP-L3-CX-2140, DC1-FAN-L3-CX-2140, DC1-COMP-L3-CX-2170, DC1-FAN-L3-CX-2170, DC1-COMP-L3-CX-2200, DC1-FAN-L3-CX-2200, DC1-BUS-L3-CX-2020, DC1-BUS-L3-CX-2050 | 100% | 2026-07-17 | 2026-07-17 |  | LAY | Commissioning | DH1100 | L4 |  |  |

Notes:
- DC1-CRAH-L3-Cx-2910: Steps: EC Startup Report; MC Startup Report; Vendor Startup
- DC1-CRAH-L3-Cx-2940: Steps: EC Startup Report; MC Startup Report; Vendor Startup
- DC1-DOAS-L3-Cx-2010: Steps: EC Startup Report; MC Startup Report; Vendor Startup
- DC1-DOAS-L3-Cx-2040: Steps: EC Startup Report; MC Startup Report; Vendor Startup

| ID | WBS | Activity | Duration | Start | Finish | Predecessors | Complete | Planned start | Planned finish | Vendor Responsible Party | Layton Discipline | Location | CX Level | Equipment | Contract | Layton Super | Allucent CSI Group |
| --- | --- | --- | --- | --- | --- | --- | --- | --- | --- | --- | --- | --- | --- | --- | --- | --- | --- |
|  | 01 | **Data Hall 1100 Electrical Cx L4** |  |  |  |  |  |  |  |  |  |  |  |  |  |  |  |
|  | 02 | **Data Hall 1100 Mechanical Cx L4** |  |  |  |  |  |  |  |  |  |  |  |  |  |  |  |
|  | 1 | **Data Hall 1100 Generator Burn In** |  | 2026-04-24 | 2026-04-30 |  |  |  |  |  |  |  |  |  |  |  |  |
| DC1-L4-Cx-1150 |  | DC1 Data Hall 1100 Generator Burns A11 & B11 | 1d | 2026-04-24 A | 2026-04-27 A | DC1-XFMR-L3-CX-2230, DC1-L4-Cx-1180 FF | 100% | 2026-04-27 | 2026-04-27 | HLT | Commissioning | DH1100 | L4 | GEN |  |  |  |
| DC1-L4-Cx-1180 |  | DC1 Data Hall 1100 Generator Burns R11 | 1d | 2026-04-27 A | 2026-04-27 A | DC1-XFMR-L3-CX-2230 | 100% |  |  | HLT | Commissioning | DH1100 | L4 | GEN |  |  |  |
| DC1-L4-Cx-1160 |  | DC1 Data Hall 1100 Generator Burns C11 & D11 | 1d | 2026-04-28 A | 2026-04-28 A | DC1-L4-Cx-1150 | 100% |  |  | HLT | Commissioning | DH1100 | L4 | GEN |  |  |  |
| DC1-L4-Cx-1170 |  | DC1 Data Hall 1100 Generator Burns E11 & F11 | 1d | 2026-04-30 A | 2026-04-30 A | DC1-L4-Cx-1160 | 100% |  |  | HLT | Commissioning | DH1100 | L4 | GEN |  |  |  |
|  | 05 | **Data Hall 1100 Cx L5** |  |  |  |  |  |  |  |  |  |  |  |  |  |  |  |
|  | 04 | **Data Hall 2200 Commissioning** |  | 2026-01-09 | 2026-07-31 |  |  |  |  |  |  |  |  |  |  |  |  |
|  | 02 | **Data Hall 2200 Cx L2** |  | 2026-01-09 | 2026-07-23 |  |  |  |  |  |  |  |  |  |  |  |  |
|  | 01 | **DC1-DH2200 Generators Cx L2** |  | 2026-06-29 | 2026-07-23 |  |  |  |  |  |  |  |  |  |  |  |  |
| DC1-GEN-L2-2070 |  | DH2200 GEN-A22 L2 Checklist | 3d | 2026-06-29 A | 2026-07-23 A | QTS-1000290, QTS-17381, QTS-1004490, QTS-1007320, QTS-1001200 FF, QTS-1007290 FF | 100% | 2026-06-26 | 2026-06-30 | HLT | Commissioning | DH2200 | L2 | GEN | BAB |  |  |
| DC1-GEN-L2-2080 |  | DH2200 GEN-B22 L2 Checklist | 3d | 2026-06-29 A | 2026-07-23 A | QTS-1000290, DC1-GEN-L2-2070 SS, QTS-1004490, QTS-1007340, DC1-GEN-L2-2070 FF, QTS-1001200 FF, QTS-1007290 FF | 100% | 2026-06-26 | 2026-06-30 | HLT | Commissioning | DH2200 | L2 | GEN | BAB |  |  |
| DC1-GEN-L2-2090 |  | DH2200 GEN-C22 L2 Checklist | 3d | 2026-06-29 A | 2026-07-23 A | QTS-1000290, DC1-GEN-L2-2080 SS, QTS-1004490, QTS-1007360, DC1-GEN-L2-2080 FF, QTS-1001200 FF, QTS-1007290 FF | 100% | 2026-06-26 | 2026-06-30 | HLT | Commissioning | DH2200 | L2 | GEN | BAB |  |  |
| DC1-GEN-L2-2100 |  | DH2200 GEN-D22 L2 Checklist | 3d | 2026-06-29 A | 2026-07-23 A | QTS-1000290, DC1-GEN-L2-2090 SS, QTS-1004490, QTS-1007380, DC1-GEN-L2-2090 FF, QTS-1001200 FF, QTS-1007290 FF | 100% | 2026-06-26 | 2026-06-30 | HLT | Commissioning | DH2200 | L2 | GEN | BAB |  |  |
| DC1-GEN-L2-2110 |  | DH2200 GEN-E22 L2 Checklist | 3d | 2026-06-29 A | 2026-07-23 A | QTS-1000290, DC1-GEN-L2-2100 SS, QTS-1004490, QTS-1007400, DC1-GEN-L2-2100 FF, QTS-1001200 FF, QTS-1007290 FF | 100% | 2026-06-26 | 2026-06-30 | HLT | Commissioning | DH2200 | L2 | GEN | BAB |  |  |
| DC1-GEN-L2-2120 |  | DH2200 GEN-F22 L2 Checklist | 3d | 2026-06-29 A | 2026-07-23 A | QTS-1000290, DC1-GEN-L2-2110 SS, QTS-1004490, QTS-1007420, DC1-GEN-L2-2110 FF, QTS-1001200 FF, QTS-1007290 FF | 100% | 2026-06-26 | 2026-06-30 | HLT | Commissioning | DH2200 | L2 | GEN | BAB |  |  |
| DC1-GEN-L2-2130 |  | DH2200 GEN-R22 L2 Checklist | 3d | 2026-06-29 A | 2026-07-23 A | QTS-1000290, DC1-GEN-L2-2120 SS, QTS-1004490, QTS-1007440, DC1-GEN-L2-2120 FF, QTS-1001200 FF, QTS-1007290 FF | 100% | 2026-06-26 | 2026-06-30 | HLT | Commissioning | DH2200 | L2 | GEN | BAB |  |  |
|  | 02 | **DC1-DH2200 MV XFMRs Cx L2** |  | 2026-01-09 | 2026-06-01 |  |  |  |  |  |  |  |  |  |  |  |  |
| DC1-XFMR-L2-2070 |  | DH2200 XFMR-A22 L2 Checklist | 3d | 2026-01-09 A | 2026-06-01 A | QTS-42821 FF, DC1-XFMR-L2-2130 FF, QTS-15871 FF, QTS-1007310 FF, QTS-1007290 FF, QTS-1007270 | 100% | 2026-01-21 | 2026-01-23 | VTC | Commissioning | DH2200 | L2 | XFMR |  | Travis Todaro |  |
| DC1-XFMR-L2-2130 |  | DH2200 XFMR-R22 L2 Checklist | 3d | 2026-01-15 A | 2026-06-01 A | QTS-42821 FF, QTS-25591 FF, QTS-1007430 FF, QTS-1007290 FF, QTS-42821 SS | 100% | 2026-01-15 | 2026-01-20 | VTC | Commissioning | DH2200 | L2 | XFMR |  | Travis Todaro | 01ADMIN |
| DC1-XFMR-L2-2080 |  | DH2200 XFMR-B22 L2 Checklist | 3d | 2026-01-21 A | 2026-06-01 A | QTS-42821 FF, DC1-XFMR-L2-2070 SS+2d, QTS-1007330 FF, QTS-1007290 FF | 100% | 2026-01-21 | 2026-01-23 | VTC | Commissioning | DH2200 | L2 | XFMR |  | Travis Todaro |  |
| DC1-XFMR-L2-2090 |  | DH2200 XFMR-C22 L2 Checklist | 3d | 2026-01-21 A | 2026-06-01 A | QTS-42821 FF, DC1-XFMR-L2-2080 SS, QTS-1007350 FF, QTS-1007290 FF | 100% | 2026-01-21 | 2026-01-23 | VTC | Commissioning | DH2200 | L2 | XFMR |  | Travis Todaro |  |
| DC1-XFMR-L2-2100 |  | DH2200 XFMR-D22 L2 Checklist | 3d | 2026-01-21 A | 2026-06-01 A | QTS-42821 FF, DC1-XFMR-L2-2090 SS, QTS-1007370 FF, QTS-1007290 FF | 100% | 2026-01-21 | 2026-01-23 | VTC | Commissioning | DH2200 | L2 | XFMR |  | Travis Todaro |  |
| DC1-XFMR-L2-2110 |  | DH2200 XFMR-E22 L2 Checklist | 3d | 2026-01-21 A | 2026-06-01 A | QTS-42821 FF, DC1-XFMR-L2-2100 SS, QTS-1007390 FF, QTS-1007290 FF | 100% | 2026-01-21 | 2026-01-23 | VTC | Commissioning | DH2200 | L2 | XFMR |  | Travis Todaro |  |
| DC1-XFMR-L2-2120 |  | DH2200 XFMR-F22 L2 Checklist | 3d | 2026-01-21 A | 2026-06-01 A | QTS-42821 FF, DC1-XFMR-L2-2110 SS, QTS-1007410 FF, QTS-1007290 FF | 100% | 2026-01-21 | 2026-01-23 | VTC | Commissioning | DH2200 | L2 | XFMR |  | Travis Todaro |  |

Notes:
- DC1-GEN-L2-2070: Steps: EC Installation Checklist (done); MC Installation Checklist; CC Installation Checklist (done); Vendor Pre-Energization Checklist (done); CXA Pre-Energization Inspection; PEI/Clean-Walk
- DC1-GEN-L2-2080: Steps: EC Installation Checklist (done); MC Installation Checklist; CC Installation Checklist (done); Vendor Pre-Energization Checklist (done); CXA Pre-Energization Inspection; PEI/Clean-Walk
- DC1-GEN-L2-2090: Steps: EC Installation Checklist (done); MC Installation Checklist; CC Installation Checklist (done); Vendor Pre-Energization Checklist (done); CXA Pre-Energization Inspection; PEI/Clean-Walk
- DC1-GEN-L2-2100: Steps: EC Installation Checklist (done); MC Installation Checklist; CC Installation Checklist (done); Vendor Pre-Energization Checklist (done); CXA Pre-Energization Inspection; PEI/Clean-Walk
- DC1-GEN-L2-2110: Steps: EC Installation Checklist (done); MC Installation Checklist; CC Installation Checklist (done); Vendor Pre-Energization Checklist (done); CXA Pre-Energization Inspection; PEI/Clean-Walk
- DC1-GEN-L2-2120: Steps: EC Installation Checklist (done); MC Installation Checklist; CC Installation Checklist (done); Vendor Pre-Energization Checklist (done); CXA Pre-Energization Inspection; PEI/Clean-Walk
- DC1-GEN-L2-2130: Steps: EC Installation Checklist (done); MC Installation Checklist; CC Installation Checklist (done); Vendor Pre-Energization Checklist (done); CXA Pre-Energization Inspection; PEI/Clean-Walk
- DC1-XFMR-L2-2070: Steps: EC Installation Checklist; CC Installation Checklist; Vendor Pre-Energization Checklist (done); CXA Pre-Energization Inspection; PEI/Clean-Walk
- DC1-XFMR-L2-2130: Steps: EC Installation Checklist; CC Installation Checklist; Vendor Pre-Energization Checklist (done); CXA Pre-Energization Inspection; PEI/Clean-Walk
- DC1-XFMR-L2-2080: Steps: EC Installation Checklist; CC Installation Checklist; Vendor Pre-Energization Checklist (done); CXA Pre-Energization Inspection; PEI/Clean-Walk
- DC1-XFMR-L2-2090: Steps: EC Installation Checklist; CC Installation Checklist; Vendor Pre-Energization Checklist (done); CXA Pre-Energization Inspection; PEI/Clean-Walk
- DC1-XFMR-L2-2100: Steps: EC Installation Checklist; CC Installation Checklist; Vendor Pre-Energization Checklist (done); CXA Pre-Energization Inspection; PEI/Clean-Walk
- DC1-XFMR-L2-2110: Steps: EC Installation Checklist; CC Installation Checklist; Vendor Pre-Energization Checklist (done); CXA Pre-Energization Inspection; PEI/Clean-Walk
- DC1-XFMR-L2-2120: Steps: EC Installation Checklist; CC Installation Checklist; Vendor Pre-Energization Checklist (done); CXA Pre-Energization Inspection; PEI/Clean-Walk

| ID | WBS | Activity | Duration | Start | Finish | Predecessors | Complete | Planned start | Planned finish | Vendor Responsible Party | Layton Discipline | Location | CX Level | Equipment | Layton Super | Allucent CSI Group | Contract |
| --- | --- | --- | --- | --- | --- | --- | --- | --- | --- | --- | --- | --- | --- | --- | --- | --- | --- |
|  | 03 | **DC1-DH2200 PODS** |  | 2026-06-15 | 2026-07-22 |  |  |  |  |  |  |  |  |  |  |  |  |
|  | 01 | **DC1-DH2200 SWDs Cx L2** |  | 2026-06-26 | 2026-06-29 |  |  |  |  |  |  |  |  |  |  |  |  |
| DC1-SWD-L2-2070 |  | DH2200 SWD-A22 L2 Checklist | 3d | 2026-06-26 A | 2026-06-29 A | QTS-15871, QTS-17381, QTS-1007310, QTS-1007320 | 100% | 2026-06-26 | 2026-06-30 | SIE | Commissioning | DH2200 | L2 | SWD | Travis Todaro |  |  |
| DC1-SWD-L2-2080 |  | DH2200 SWD-B22 L2 Checklist | 3d | 2026-06-26 A | 2026-06-29 A | DC1-SWD-L2-2070 SS, QTS-1007330, QTS-1007340 | 100% | 2026-06-26 | 2026-06-30 | SIE | Commissioning | DH2200 | L2 | SWD | Travis Todaro |  |  |
| DC1-SWD-L2-2090 |  | DH2200 SWD-C22 L2 Checklist | 3d | 2026-06-26 A | 2026-06-29 A | DC1-SWD-L2-2080 SS, QTS-1007350, QTS-1007360, DC1-SWD-L2-2080 FF | 100% | 2026-06-26 | 2026-06-30 | SIE | Commissioning | DH2200 | L2 | SWD | Travis Todaro |  |  |
| DC1-SWD-L2-2100 |  | DH2200 SWD-D22 L2 Checklist | 3d | 2026-06-26 A | 2026-06-29 A | DC1-SWD-L2-2090 SS, QTS-1007370, QTS-1007380, DC1-SWD-L2-2090 FF | 100% | 2026-06-26 | 2026-06-30 | SIE | Commissioning | DH2200 | L2 | SWD | Travis Todaro |  |  |
| DC1-SWD-L2-2110 |  | DH2200 SWD-E22 L2 Checklist | 3d | 2026-06-26 A | 2026-06-29 A | DC1-SWD-L2-2100 SS, QTS-1007390, QTS-1007400, DC1-SWD-L2-2100 FF | 100% | 2026-06-26 | 2026-06-30 | SIE | Commissioning | DH2200 | L2 | SWD | Travis Todaro |  |  |
| DC1-SWD-L2-2120 |  | DH2200 SWD-F22 L2 Checklist | 3d | 2026-06-26 A | 2026-06-29 A | DC1-SWD-L2-2110 SS, QTS-1007410, QTS-1007420, DC1-SWD-L2-2110 FF | 100% | 2026-06-26 | 2026-06-30 | SIE | Commissioning | DH2200 | L2 | SWD | Travis Todaro |  |  |
| DC1-SWD-L2-2130 |  | DH2200 SWD-R22 L2 Checklist | 3d | 2026-06-26 A | 2026-06-29 A | QTS-15871, QTS-17381, QTS-1007430, QTS-1007440, QTS-1007820 | 100% | 2026-06-26 | 2026-06-30 | SIE | Commissioning | DH2200 | L2 | SWD | Travis Todaro |  |  |
|  | 02 | **DC1-DH2200 MOD-01s Cx L2** |  | 2026-06-15 | 2026-06-18 |  |  |  |  |  |  |  |  |  |  |  |  |
| DC1-MOD01-L2-2070 |  | DH2200 MOD-A22-01 L2 Checklist | 3d | 2026-06-15 A | 2026-06-18 A | QTS-13551, QTS-15871, QTS-17381, DC1-SWD-L2-2070 SS, DC1-SWD-L2-2070 FF, QTS - 26611 | 100% | 2026-06-26 | 2026-06-30 | PHE | Commissioning | DH2200 | L2 | MOD-01 | Travis Todaro | 01ADMIN |  |
| DC1-MOD01-L2-2080 |  | DH2200 MOD-B22-01 L2 Checklist | 3d | 2026-06-15 A | 2026-06-18 A | QTS-13551, DC1-MOD01-L2-2070 SS, DC1-MOD01-L2-2070 FF, QTS - 26611 | 100% | 2026-06-26 | 2026-06-30 | PHE | Commissioning | DH2200 | L2 | MOD-01 | Travis Todaro | 01ADMIN |  |
| DC1-MOD01-L2-2090 |  | DH2200 MOD-C22-01 L2 Checklist | 3d | 2026-06-15 A | 2026-06-18 A | QTS-13551, DC1-MOD01-L2-2080 SS, DC1-MOD01-L2-2080 FF, QTS - 26611 | 100% | 2026-06-26 | 2026-06-30 | PHE | Commissioning | DH2200 | L2 | MOD-01 | Travis Todaro | 01ADMIN |  |
| DC1-MOD01-L2-2100 |  | DH2200 MOD-D22-01 L2 Checklist | 3d | 2026-06-15 A | 2026-06-18 A | QTS-13551, DC1-MOD01-L2-2090 FF, DC1-MOD01-L2-2090 SS, QTS - 26611 | 100% | 2026-06-26 | 2026-06-30 | PHE | Commissioning | DH2200 | L2 | MOD-01 | Travis Todaro | 01ADMIN |  |
| DC1-MOD01-L2-2110 |  | DH2200 MOD-E22-01 L2 Checklist | 3d | 2026-06-15 A | 2026-06-18 A | QTS-13551, DC1-MOD01-L2-2100 SS, DC1-MOD01-L2-2100 FF, QTS - 26611 | 100% | 2026-06-26 | 2026-06-30 | PHE | Commissioning | DH2200 | L2 | MOD-01 | Travis Todaro | 01ADMIN |  |
| DC1-MOD01-L2-2120 |  | DH2200 MOD-F22-01 L2 Checklist | 3d | 2026-06-15 A | 2026-06-18 A | QTS-13551, DC1-MOD01-L2-2110 SS, DC1-MOD01-L2-2110 FF, QTS - 26611 | 100% | 2026-06-26 | 2026-06-30 | PHE | Commissioning | DH2200 | L2 | MOD-01 | Travis Todaro | 01ADMIN |  |
| DC1-MOD01-L2-2130 |  | DH2200 MOD-R22-01 L2 Checklist | 3d | 2026-06-15 A | 2026-06-18 A | QTS-13551, DC1-MOD01-L2-2120 SS, DC1-MOD01-L2-2120 FF, QTS - 26611 | 100% | 2026-06-26 | 2026-06-30 | PHE | Commissioning | DH2200 | L2 | MOD-01 | Travis Todaro | 01ADMIN |  |
|  | 1 | **DC1 POD UPS Battery Delivery and Install** |  |  |  |  |  |  |  |  |  |  |  |  |  |  |  |
|  | 03 | **DC1-DH2200 UPS-M Cx L2** |  | 2026-07-22 | 2026-07-22 |  |  |  |  |  |  |  |  |  |  |  |  |
| DC1-UPS-M-L2-2070 |  | DH2200 UPS-M-A22 L2 Checklist | 1d | 2026-07-22 A | 2026-07-22 A | QTS-13551, QTS-43751 | 100% |  |  | VER | Commissioning | DH2200 | L2 | UPS |  | 01ADMIN | BAB |
| DC1-UPS-M-L2-2080 |  | DH2200 UPS-M-B22 L2 Checklist | 1d | 2026-07-22 A | 2026-07-22 A | DC1-UPS-M-L2-2070 SS | 100% |  |  | VER | Commissioning | DH2200 | L2 | UPS |  | 01ADMIN | BAB |
| DC1-UPS-M-L2-2090 |  | DH2200 UPS-M-C22 L2 Checklist | 1d | 2026-07-22 A | 2026-07-22 A | DC1-UPS-M-L2-2080 SS | 100% |  |  | VER | Commissioning | DH2200 | L2 | UPS |  |  | BAB |
| DC1-UPS-M-L2-2100 |  | DH2200 UPS-M-D22 L2 Checklist | 1d | 2026-07-22 A | 2026-07-22 A | DC1-UPS-M-L2-2090 SS | 100% |  |  | VER | Commissioning | DH2200 | L2 | UPS |  |  | BAB |
| DC1-UPS-M-L2-2110 |  | DH2200 UPS-M-E22 L2 Checklist | 1d | 2026-07-22 A | 2026-07-22 A | DC1-UPS-M-L2-2100 SS | 100% |  |  | VER | Commissioning | DH2200 | L2 | UPS |  |  | BAB |
| DC1-UPS-M-L2-2120 |  | DH2200 UPS-M-F22 L2 Checklist | 1d | 2026-07-22 A | 2026-07-22 A | DC1-UPS-M-L2-2110 SS | 100% |  |  | VER | Commissioning | DH2200 | L2 | UPS |  |  | BAB |
| DC1-UPS-M-L2-2130 |  | DH2200 UPS-M-R22 L2 Checklist | 1d | 2026-07-22 A | 2026-07-22 A | DC1-UPS-M-L2-2120 SS | 100% |  |  | VER | Commissioning | DH2200 | L2 | UPS |  |  | BAB |

Notes:
- DC1-SWD-L2-2070: Steps: EC Pre-Energization Checklist; Vendor Pre-Energization Checklist; CXA Pre-Energization Inspection; PEI/Clean-Walk
- DC1-SWD-L2-2080: Steps: EC Pre-Energization Checklist; Vendor Pre-Energization Checklist; CXA Pre-Energization Inspection; PEI/Clean-Walk
- DC1-SWD-L2-2090: Steps: EC Pre-Energization Checklist; Vendor Pre-Energization Checklist; CXA Pre-Energization Inspection; PEI/Clean-Walk
- DC1-SWD-L2-2100: Steps: EC Pre-Energization Checklist; Vendor Pre-Energization Checklist; CXA Pre-Energization Inspection; PEI/Clean-Walk
- DC1-SWD-L2-2110: Steps: EC Pre-Energization Checklist; Vendor Pre-Energization Checklist; CXA Pre-Energization Inspection; PEI/Clean-Walk
- DC1-SWD-L2-2120: Steps: EC Pre-Energization Checklist; Vendor Pre-Energization Checklist; CXA Pre-Energization Inspection; PEI/Clean-Walk
- DC1-SWD-L2-2130: Steps: EC Pre-Energization Checklist; Vendor Pre-Energization Checklist; CXA Pre-Energization Inspection; PEI/Clean-Walk
- DC1-MOD01-L2-2070: Steps: Vendor Pre-Energization Checklist; CXA Pre-Energization Inspection; PEI/Clean-Walk
- DC1-MOD01-L2-2080: Steps: Vendor Pre-Energization Checklist; CXA Pre-Energization Inspection; PEI/Clean-Walk
- DC1-MOD01-L2-2090: Steps: Vendor Pre-Energization Checklist; CXA Pre-Energization Inspection; PEI/Clean-Walk
- DC1-MOD01-L2-2100: Steps: Vendor Pre-Energization Checklist; CXA Pre-Energization Inspection; PEI/Clean-Walk
- DC1-MOD01-L2-2110: Steps: Vendor Pre-Energization Checklist; CXA Pre-Energization Inspection; PEI/Clean-Walk
- DC1-MOD01-L2-2120: Steps: Vendor Pre-Energization Checklist; CXA Pre-Energization Inspection; PEI/Clean-Walk
- DC1-MOD01-L2-2130: Steps: Vendor Pre-Energization Checklist; CXA Pre-Energization Inspection; PEI/Clean-Walk
- DC1-UPS-M-L2-2070: Steps: EC Pre-Energization Checklist (done); MC Pre-Energization Checklist (done); GC Pre-Energization Checklist (done); Vendor Pre-Energization Checklist; CXA Pre-Energization Inspection; PEI/Clean-Walk
- DC1-UPS-M-L2-2080: Steps: EC Pre-Energization Checklist (done); MC Pre-Energization Checklist (done); MC Pre-Energization Checklist1 (done); Vendor Pre-Energization Checklist; CXA Pre-Energization Inspection; PEI/Clean-Walk
- DC1-UPS-M-L2-2090: Steps: EC Pre-Energization Checklist (done); MC Pre-Energization Checklist (done); GC Pre-Energization Checklist (done); Vendor Pre-Energization Checklist; CXA Pre-Energization Inspection; PEI/Clean-Walk
- DC1-UPS-M-L2-2100: Steps: EC Pre-Energization Checklist (done); MC Pre-Energization Checklist (done); GC Pre-Energization Checklist (done); Vendor Pre-Energization Checklist; CXA Pre-Energization Inspection; PEI/Clean-Walk
- DC1-UPS-M-L2-2110: Steps: EC Pre-Energization Checklist (done); MC Pre-Energization Checklist (done); GC Pre-Energization Checklist (done); Vendor Pre-Energization Checklist; CXA Pre-Energization Inspection; PEI/Clean-Walk
- DC1-UPS-M-L2-2120: Steps: EC Pre-Energization Checklist (done); MC Pre-Energization Checklist (done); GC Pre-Energization Checklist (done); Vendor Pre-Energization Checklist; CXA Pre-Energization Inspection; PEI/Clean-Walk
- DC1-UPS-M-L2-2130: Steps: EC Pre-Energization Checklist (done); MC Pre-Energization Checklist (done); GC Pre-Energization Checklist (done); Vendor Pre-Energization Checklist; CXA Pre-Energization Inspection; PEI/Clean-Walk

| ID | WBS | Activity | Duration | Start | Finish | Predecessors | Complete | Planned start | Planned finish | Vendor Responsible Party | Layton Discipline | Location | CX Level | Equipment |
| --- | --- | --- | --- | --- | --- | --- | --- | --- | --- | --- | --- | --- | --- | --- |
|  | 04 | **DC1-DH2200 COMPRESSOR/FAN UNITS Cx L2** |  |  |  |  |  |  |  |  |  |  |  |  |
|  | 01 | **DC1-DH2200 POD-AC UNITS A22 Cx L2** |  |  |  |  |  |  |  |  |  |  |  |  |
|  | 02 | **DC1-DH2200 POD-AC UNITS B22 Cx L2** |  |  |  |  |  |  |  |  |  |  |  |  |
|  | 03 | **DC1-DH2200 POD-AC UNITS C22 Cx L2** |  |  |  |  |  |  |  |  |  |  |  |  |
|  | 04 | **DC1-DH2200 POD-AC UNITS D22 Cx L2** |  |  |  |  |  |  |  |  |  |  |  |  |
|  | 05 | **DC1-DH2200 POD-AC UNITS E22 Cx L2** |  |  |  |  |  |  |  |  |  |  |  |  |
|  | 06 | **DC1-DH2200 POD-AC UNITS F22 Cx L2** |  |  |  |  |  |  |  |  |  |  |  |  |
|  | 07 | **DC1-DH2200 POD-AC UNITS R22 Cx L2** |  |  |  |  |  |  |  |  |  |  |  |  |
|  | 04 | **DC1-DH2200 BUS-R1X/BUS-R2X Cx L2** |  |  |  |  |  |  |  |  |  |  |  |  |
|  | 05 | **DC1-DH2200 ATS Cx L2** |  |  |  |  |  |  |  |  |  |  |  |  |
|  | 01 | **DC1-DH2200 ATS-A22 Cx L2** |  |  |  |  |  |  |  |  |  |  |  |  |
|  | 02 | **DC1-DH2200 ATS-B22 Cx L2** |  |  |  |  |  |  |  |  |  |  |  |  |
|  | 03 | **DC1-DH2200 ATS-C22 Cx L2** |  |  |  |  |  |  |  |  |  |  |  |  |
|  | 04 | **DC1-DH2200 ATS-D22 Cx L2** |  |  |  |  |  |  |  |  |  |  |  |  |
|  | 05 | **DC1-DH2200 ATS-E22 Cx L2** |  |  |  |  |  |  |  |  |  |  |  |  |
|  | 06 | **DC1-DH2200 ATS-F22 Cx L2** |  |  |  |  |  |  |  |  |  |  |  |  |
|  | 06 | **DC1-DH2200 CODs Cx L2** |  |  |  |  |  |  |  |  |  |  |  |  |
|  | 01 | **DC1-DH2200 COD A22 Cx L2** |  |  |  |  |  |  |  |  |  |  |  |  |
|  | 02 | **DC1-DH2200 COD B22 Cx L2** |  |  |  |  |  |  |  |  |  |  |  |  |
|  | 03 | **DC1-DH2200 COD C22 Cx L2** |  |  |  |  |  |  |  |  |  |  |  |  |
|  | 04 | **DC1-DH2200 COD D22 Cx L2** |  |  |  |  |  |  |  |  |  |  |  |  |
|  | 05 | **DC1-DH2200 COD E22 Cx L2** |  |  |  |  |  |  |  |  |  |  |  |  |
|  | 06 | **DC1-DH2200 COD F22 Cx L2** |  |  |  |  |  |  |  |  |  |  |  |  |
|  | 07 | **DC1-DH2200 RPPs Cx L2** |  |  |  |  |  |  |  |  |  |  |  |  |
|  | 01 | **DC1-DH2200 RPP A22 Cx L2** |  |  |  |  |  |  |  |  |  |  |  |  |
|  | 02 | **DC1-DH2200 RPP B22 Cx L2** |  |  |  |  |  |  |  |  |  |  |  |  |
|  | 03 | **DC1-DH2200 RPP C22 Cx L2** |  |  |  |  |  |  |  |  |  |  |  |  |
|  | 04 | **DC1-DH2200 RPP D22 Cx L2** |  |  |  |  |  |  |  |  |  |  |  |  |
|  | 05 | **DC1-DH2200 RPP E22 Cx L2** |  |  |  |  |  |  |  |  |  |  |  |  |
|  | 06 | **DC1-DH2200 RPP F22 Cx L2** |  |  |  |  |  |  |  |  |  |  |  |  |
|  | 08 | **DC1-DH2200 MOD-02 Cx L2** |  | 2026-06-30 | 2026-07-15 |  |  |  |  |  |  |  |  |  |
| DC1-MOD02-L2-2070 |  | DH2200 MOD-A22-02 L2 Checklist | 1d | 2026-06-30 A | 2026-07-15 A | QTS-17981 FF, QTS-17961, QTS-44471 SS, QTS-43751, QTS-1008740 SS, QTS - 26611 | 100% | 2026-07-01 | 2026-07-01 | PHE | Commissioning | DH2200 | L2 | MOD-02 |
| DC1-MOD02-L2-2080 |  | DH2200 MOD-B22-02 L2 Checklist | 1d | 2026-06-30 A | 2026-07-15 A | QTS-17981 FF, QTS-17961, QTS-44471 SS, DC1-MOD02-L2-2070 SS, QTS-1008740 SS, QTS - 26611 | 100% | 2026-07-01 | 2026-07-01 | PHE | Commissioning | DH2200 | L2 | MOD-02 |
| DC1-MOD02-L2-2090 |  | DH2200 MOD-C22-02 L2 Checklist | 1d | 2026-06-30 A | 2026-07-15 A | QTS-17981 FF, QTS-17961, QTS-44471 SS, DC1-MOD02-L2-2080 SS, QTS - 26611 | 100% | 2026-07-01 | 2026-07-01 | PHE | Commissioning | DH2200 | L2 | MOD-02 |
| DC1-MOD02-L2-2100 |  | DH2200 MOD-D22-02 L2 Checklist | 1d | 2026-06-30 A | 2026-07-15 A | QTS-17981 FF, QTS-17961, QTS-44471 SS, DC1-MOD02-L2-2090 SS, QTS-1008740 SS, QTS - 26611 | 100% | 2026-07-01 | 2026-07-01 | PHE | Commissioning | DH2200 | L2 | MOD-02 |
| DC1-MOD02-L2-2110 |  | DH2200 MOD-E22-02 L2 Checklist | 1d | 2026-06-30 A | 2026-07-15 A | QTS-17981 FF, QTS-17961, QTS-44471 SS, DC1-MOD02-L2-2100 SS, QTS-1008740 SS, QTS - 26611 | 100% | 2026-07-01 | 2026-07-01 | PHE | Commissioning | DH2200 | L2 | MOD-02 |
| DC1-MOD02-L2-2120 |  | DH2200 MOD-F22-02 L2 Checklist | 1d | 2026-06-30 A | 2026-07-15 A | QTS-17981 FF, QTS-17961, QTS-44471 SS, DC1-MOD02-L2-2110 SS, QTS-1008740 SS, QTS - 26611 | 100% | 2026-07-01 | 2026-07-01 | PHE | Commissioning | DH2200 | L2 | MOD-02 |
| DC1-MOD02-L2-2130 |  | DH2200 MOD-R22-02 L2 Checklist | 1d | 2026-06-30 A | 2026-07-15 A | QTS-17981 FF, QTS-17961, QTS-44471 SS, DC1-MOD02-L2-2120 SS, QTS-1008740 SS, QTS - 26611 | 100% | 2026-07-01 | 2026-07-01 | PHE | Commissioning | DH2200 | L2 | MOD-02 |

Notes:
- DC1-MOD02-L2-2070: Steps: EC Installation Checklist (done); CC Installation Checklist (done); Vendor Pre-Energization Checklist (done); GC Installation Checklist (done); CXA Pre-Energization Inspection; PEI/Clean-Walk
- DC1-MOD02-L2-2080: Steps: EC Installation Checklist (done); CC Installation Checklist (done); Vendor Pre-Energization Checklist (done); GC Installation Checklist (done); CXA Pre-Energization Inspection; PEI/Clean-Walk
- DC1-MOD02-L2-2090: Steps: EC Installation Checklist (done); CC Installation Checklist (done); Vendor Pre-Energization Checklist (done); GC Installation Checklist (done); CXA Pre-Energization Inspection; PEI/Clean-Walk
- DC1-MOD02-L2-2100: Steps: EC Installation Checklist (done); CC Installation Checklist (done); Vendor Pre-Energization Checklist (done); GC Installation Checklist (done); CXA Pre-Energization Inspection; PEI/Clean-Walk
- DC1-MOD02-L2-2110: Steps: EC Installation Checklist (done); CC Installation Checklist (done); Vendor Pre-Energization Checklist (done); GC Installation Checklist (done); CXA Pre-Energization Inspection; PEI/Clean-Walk
- DC1-MOD02-L2-2120: Steps: EC Installation Checklist (done); CC Installation Checklist (done); Vendor Pre-Energization Checklist (done); GC Installation Checklist (done); CXA Pre-Energization Inspection; PEI/Clean-Walk
- DC1-MOD02-L2-2130: Steps: EC Installation Checklist (done); CC Installation Checklist (done); Vendor Pre-Energization Checklist (done); GC Installation Checklist (done); CXA Pre-Energization Inspection; PEI/Clean-Walk

| ID | WBS | Activity | Duration | Start | Finish | Predecessors | Complete | Planned start | Planned finish | Vendor Responsible Party | Layton Discipline | Location | CX Level | Equipment | Contract |
| --- | --- | --- | --- | --- | --- | --- | --- | --- | --- | --- | --- | --- | --- | --- | --- |
|  | 09 | **DC1-DH2200 MOD-03 Cx L2** |  |  |  |  |  |  |  |  |  |  |  |  |  |
|  | 10 | **DC1-DH2200 CDUs Cx L2** |  |  |  |  |  |  |  |  |  |  |  |  |  |
|  | 11 | **DC1-DH2200 CHLR Cx L2** |  |  |  |  |  |  |  |  |  |  |  |  |  |
|  | 12 | **DC1-DH2200 CHWP Cx L2** |  |  |  |  |  |  |  |  |  |  |  |  |  |
|  | 13 | **DC1-DH2200 CRAH/DOAS Cx L2** |  |  |  |  |  |  |  |  |  |  |  |  |  |
|  | 03 | **Data Hall 2200 Cx L3** |  | 2026-06-01 | 2026-07-31 |  |  |  |  |  |  |  |  |  |  |
|  | 01 | **DC1-DH2200 Generators Cx L3** |  | 2026-07-23 | 2026-07-31 |  |  |  |  |  |  |  |  |  |  |
|  | 01 | **DC1-DH2200-GEN-A22 Cx L3** |  | 2026-07-23 | 2026-07-31 |  |  |  |  |  |  |  |  |  |  |
| DC1-GEN-L3-CX-2210 |  | DC1-GEN-A22 FTE | 1d | 2026-07-23 A | 2026-07-23 A | DC1-GEN-L2-2070, QTS-1007300 | 100% | 2026-07-24 | 2026-07-24 | ROS | Commissioning | DH2200 | L3 | GEN | BAB |
| DC1-GEN-L3-CX-2220 |  | DC1-GEN-A22 L3 Startup | 2d | 2026-07-23 A | 2026-07-23 A | DC1-GEN-L3-CX-2210 | 100% | 2026-07-27 | 2026-07-28 | HLT | Commissioning | DH2200 | L3 | GEN | BAB |
| DC1-GEN-L3-CX-2230 |  | DC1-GEN-A22 BMS/EPMS Programming | 1d | 2026-07-31 A | 2026-07-31 A | DC1-GEN-L3-CX-2220 | 100% | 2026-08-05 | 2026-08-05 | PRM | Commissioning | DH2200 | L3 | GEN | BAB |
|  | 02 | **DC1-DH2200-GEN-B22 Cx L3** |  | 2026-07-23 | 2026-07-31 |  |  |  |  |  |  |  |  |  |  |
| DC1-GEN-L3-CX-2240 |  | DC1-GEN-B22 FTE | 1d | 2026-07-23 A | 2026-07-23 A | DC1-GEN-L2-2080, QTS-1007300 | 100% | 2026-07-24 | 2026-07-24 | ROS | Commissioning | DH2200 | L3 | GEN | BAB |
| DC1-GEN-L3-CX-2250 |  | DC1-GEN-B22 L3 Startup | 2d | 2026-07-23 A | 2026-07-23 A | DC1-GEN-L3-CX-2240 | 100% | 2026-07-27 | 2026-07-28 | HLT | Commissioning | DH2200 | L3 | GEN | BAB |
| DC1-GEN-L3-CX-2260 |  | DC1-GEN-B22 BMS/EPMS Programming | 1d | 2026-07-31 A | 2026-07-31 A | DC1-GEN-L3-CX-2250 | 100% | 2026-08-05 | 2026-08-05 | PRM | Commissioning | DH2200 | L3 | GEN | BAB |
|  | 03 | **DC1-DH2200-GEN-C22 Cx L3** |  | 2026-07-23 | 2026-07-31 |  |  |  |  |  |  |  |  |  |  |
| DC1-GEN-L3-CX-2270 |  | DC1-GEN-C22 FTE | 1d | 2026-07-23 A | 2026-07-23 A | DC1-GEN-L2-2090, QTS-1007300 | 100% | 2026-07-24 | 2026-07-24 | ROS | Commissioning | DH2200 | L3 | GEN | BAB |
| DC1-GEN-L3-CX-2280 |  | DC1-GEN-C22 L3 Startup | 2d | 2026-07-23 A | 2026-07-23 A | DC1-GEN-L3-CX-2270 | 100% | 2026-07-27 | 2026-07-28 | HLT | Commissioning | DH2200 | L3 | GEN | BAB |
| DC1-GEN-L3-CX-2290 |  | DC1-GEN-C22 BMS/EPMS Programming | 1d | 2026-07-31 A | 2026-07-31 A | DC1-GEN-L3-CX-2280 | 100% | 2026-08-05 | 2026-08-05 | PRM | Commissioning | DH2200 | L3 | GEN | BAB |
|  | 04 | **DC1-DH2200-GEN-D22 Cx L3** |  | 2026-07-23 | 2026-07-31 |  |  |  |  |  |  |  |  |  |  |
| DC1-GEN-L3-CX-2300 |  | DC1-GEN-D22 FTE | 1d | 2026-07-23 A | 2026-07-23 A | DC1-GEN-L2-2100, QTS-1007300 | 100% | 2026-07-24 | 2026-07-24 | ROS | Commissioning | DH2200 | L3 | GEN | BAB |
| DC1-GEN-L3-CX-2310 |  | DC1-GEN-D22 L3 Startup | 2d | 2026-07-23 A | 2026-07-23 A | DC1-GEN-L3-CX-2300 | 100% | 2026-07-27 | 2026-07-28 | HLT | Commissioning | DH2200 | L3 | GEN | BAB |
| DC1-GEN-L3-CX-2320 |  | DC1-GEN-D22 BMS/EPMS Programming | 1d | 2026-07-31 A | 2026-07-31 A | DC1-GEN-L3-CX-2310 | 100% | 2026-08-05 | 2026-08-05 | PRM | Commissioning | DH2200 | L3 | GEN | BAB |
|  | 05 | **DC1-DH2200-GEN-E22 Cx L3** |  | 2026-07-23 | 2026-07-31 |  |  |  |  |  |  |  |  |  |  |
| DC1-GEN-L3-CX-2330 |  | DC1-GEN-E22 FTE | 1d | 2026-07-23 A | 2026-07-23 A | DC1-GEN-L2-2110, QTS-1007300 | 100% | 2026-07-24 | 2026-07-24 | ROS | Commissioning | DH2200 | L3 | GEN | BAB |
| DC1-GEN-L3-CX-2340 |  | DC1-GEN-E22 L3 Startup | 2d | 2026-07-23 A | 2026-07-23 A | DC1-GEN-L3-CX-2330 | 100% | 2026-07-27 | 2026-07-28 | HLT | Commissioning | DH2200 | L3 | GEN | BAB |
| DC1-GEN-L3-CX-2350 |  | DC1-GEN-E22 BMS/EPMS Programming | 1d | 2026-07-31 A | 2026-07-31 A | DC1-GEN-L3-CX-2340 | 100% | 2026-08-05 | 2026-08-05 | PRM | Commissioning | DH2200 | L3 | GEN | BAB |

Notes:
- DC1-GEN-L3-CX-2220: Steps: EC Startup Report; Vendor Startup
- DC1-GEN-L3-CX-2250: Steps: EC Startup Report; Vendor Startup
- DC1-GEN-L3-CX-2280: Steps: EC Startup Report; Vendor Startup
- DC1-GEN-L3-CX-2310: Steps: EC Startup Report; Vendor Startup
- DC1-GEN-L3-CX-2340: Steps: EC Startup Report; Vendor Startup

| ID | WBS | Activity | Duration | Start | Finish | Predecessors | Complete | Planned start | Planned finish | Vendor Responsible Party | Layton Discipline | Location | CX Level | Equipment | Contract | Layton Super |
| --- | --- | --- | --- | --- | --- | --- | --- | --- | --- | --- | --- | --- | --- | --- | --- | --- |
|  | 06 | **DC1-DH2200-GEN-F22 Cx L3** |  | 2026-07-23 | 2026-07-31 |  |  |  |  |  |  |  |  |  |  |  |
| DC1-GEN-L3-CX-2360 |  | DC1-GEN-F22 FTE | 1d | 2026-07-23 A | 2026-07-23 A | DC1-GEN-L2-2120, QTS-1007300 | 100% | 2026-07-24 | 2026-07-24 | ROS | Commissioning | DH2200 | L3 | GEN | BAB |  |
| DC1-GEN-L3-CX-2370 |  | DC1-GEN-F22 L3 Startup | 2d | 2026-07-23 A | 2026-07-23 A | DC1-GEN-L3-CX-2360 | 100% | 2026-07-27 | 2026-07-28 | HLT | Commissioning | DH2200 | L3 | GEN | BAB |  |
| DC1-GEN-L3-CX-2380 |  | DC1-GEN-F22 BMS/EPMS Programming | 1d | 2026-07-31 A | 2026-07-31 A | DC1-GEN-L3-CX-2370 | 100% | 2026-08-05 | 2026-08-05 | PRM | Commissioning | DH2200 | L3 | GEN | BAB |  |
|  | 07 | **DC1-DH2200-GEN-R22 Cx L3** |  | 2026-07-23 | 2026-07-31 |  |  |  |  |  |  |  |  |  |  |  |
| DC1-GEN-L3-CX-2390 |  | DC1-GEN-R22 FTE | 1d | 2026-07-23 A | 2026-07-23 A | DC1-GEN-L2-2130, QTS-1007300 | 100% | 2026-07-24 | 2026-07-24 | ROS | Commissioning | DH2200 | L3 | GEN | BAB |  |
| DC1-GEN-L3-CX-2400 |  | DC1-GEN-R22 L3 Startup | 2d | 2026-07-23 A | 2026-07-23 A | DC1-GEN-L3-CX-2390 | 100% | 2026-07-27 | 2026-07-28 | HLT | Commissioning | DH2200 | L3 | GEN | BAB |  |
| DC1-GEN-L3-CX-2410 |  | DC1-GEN-R22 BMS/EPMS Programming | 1d | 2026-07-31 A | 2026-07-31 A | DC1-GEN-L3-CX-2400 | 100% | 2026-08-05 | 2026-08-05 | PRM | Commissioning | DH2200 | L3 | GEN | BAB |  |
|  | 02 | **DC1-DH2200 MV XFMRs Cx L3** |  | 2026-06-01 | 2026-07-31 |  |  |  |  |  |  |  |  |  |  |  |
|  | 01 | **DC1-DH2200 MV-XFMR-A22 Cx L3** |  | 2026-06-01 | 2026-07-31 |  |  |  |  |  |  |  |  |  |  |  |
| DC1-XFM-L3-CX-1210 |  | DC1-XFMR-A22 FTE | 1d | 2026-06-01 A | 2026-06-01 A | DC1-XFMR-L2-2120, DC1-SWD-L2-2070, DC1-XFMR-L2-2070, QTS-1004750 | 100% | 2026-07-01 | 2026-07-01 | ROS | Commissioning | DH2200 | L3 | XFMR |  | Travis Todaro |
| DC1-XFM-L3-CX-1220 |  | DC1-XFMR-A22 L3 Startup | 2d | 2026-07-22 A | 2026-07-23 A | DC1-XFM-L3-CX-1210 | 100% |  |  | VTC | Commissioning | DH2200 | L3 | XFMR | BAB |  |
| DC1-XFM-L3-CX-1230 |  | DC1-XFMR-A22 BMS/EPMS Programming | 1d | 2026-07-31 A | 2026-07-31 A | DC1-XFM-L3-CX-1220 | 100% | 2026-08-05 | 2026-08-05 | PRM | Commissioning | DH2200 | L3 | XFMR | BAB |  |
|  | 02 | **DC1-DH2200 MV-XFMR-B22 Cx L3** |  | 2026-06-01 | 2026-07-31 |  |  |  |  |  |  |  |  |  |  |  |
| DC1-XFM-L3-CX-1240 |  | DC1-XFMR-B22 FTE | 1d | 2026-06-01 A | 2026-06-01 A | DC1-XFMR-L2-2120, DC1-SWD-L2-2080, DC1-XFMR-L2-2080, QTS-1004750 | 100% | 2026-07-01 | 2026-07-01 | ROS | Commissioning | DH2200 | L3 | XFMR |  | Travis Todaro |
| DC1-XFM-L3-CX-1250 |  | DC1-XFMR-B22 L3 Startup | 2d | 2026-07-22 A | 2026-07-23 A | DC1-XFM-L3-CX-1240 | 100% |  |  | VTC | Commissioning | DH2200 | L3 | XFMR | BAB |  |
| DC1-XFM-L3-CX-1260 |  | DC1-XFMR-B22 BMS/EPMS Programming | 1d | 2026-07-31 A | 2026-07-31 A | DC1-XFM-L3-CX-1250 | 100% | 2026-08-05 | 2026-08-05 | PRM | Commissioning | DH2200 | L3 | XFMR | BAB |  |
|  | 03 | **DC1-DH2200 MV-XFMR-C22 Cx L3** |  | 2026-06-01 | 2026-07-31 |  |  |  |  |  |  |  |  |  |  |  |
| DC1-XFM-L3-CX-1270 |  | DC1-XFMR-C22 FTE | 1d | 2026-06-01 A | 2026-06-01 A | DC1-XFMR-L2-2120, DC1-SWD-L2-2090, DC1-XFMR-L2-2090, QTS-1004750, DC1-XFM-L3-CX-1240 SS, DC1-XFM-L3-CX-1240 FF | 100% | 2026-07-01 | 2026-07-01 | ROS | Commissioning | DH2200 | L3 | XFMR |  | Travis Todaro |
| DC1-XFM-L3-CX-1280 |  | DC1-XFMR-C22 L3 Startup | 2d | 2026-07-22 A | 2026-07-23 A | DC1-XFM-L3-CX-1270 | 100% |  |  | VTC | Commissioning | DH2200 | L3 | XFMR | BAB |  |
| DC1-XFM-L3-CX-1290 |  | DC1-XFMR-C22 BMS/EPMS Programming | 1d | 2026-07-31 A | 2026-07-31 A | DC1-XFM-L3-CX-1280 | 100% | 2026-08-05 | 2026-08-05 | PRM | Commissioning | DH2200 | L3 | XFMR | BAB |  |
|  | 04 | **DC1-DH2200 MV-XFMR-D22 Cx L3** |  | 2026-06-01 | 2026-07-31 |  |  |  |  |  |  |  |  |  |  |  |
| DC1-XFM-L3-CX-1300 |  | DC1-XFMR-D22 FTE | 1d | 2026-06-01 A | 2026-06-01 A | DC1-XFMR-L2-2120, DC1-SWD-L2-2100, DC1-XFMR-L2-2100, QTS-1004750 | 100% | 2026-07-01 | 2026-07-01 | ROS | Commissioning | DH2200 | L3 | XFMR |  | Travis Todaro |
| DC1-XFM-L3-CX-1310 |  | DC1-XFMR-D22 L3 Startup | 2d | 2026-07-22 A | 2026-07-23 A | DC1-XFM-L3-CX-1300 | 100% |  |  | VTC | Commissioning | DH2200 | L3 | XFMR | BAB |  |
| DC1-XFM-L3-CX-1320 |  | DC1-XFMR-D22 BMS/EPMS Programming | 1d | 2026-07-31 A | 2026-07-31 A | DC1-XFM-L3-CX-1310 | 100% | 2026-08-05 | 2026-08-05 | PRM | Commissioning | DH2200 | L3 | XFMR | BAB |  |

Notes:
- DC1-GEN-L3-CX-2370: Steps: EC Startup Report; Vendor Startup
- DC1-GEN-L3-CX-2400: Steps: EC Startup Report; Vendor Startup
- DC1-XFM-L3-CX-1220: Steps: EC Startup Report; Vendor Startup
- DC1-XFM-L3-CX-1250: Steps: EC Startup Report; Vendor Startup
- DC1-XFM-L3-CX-1280: Steps: EC Startup Report; Vendor Startup
- DC1-XFM-L3-CX-1310: Steps: EC Startup Report; Vendor Startup

| ID | WBS | Activity | Duration | Start | Finish | Predecessors | Complete | Planned start | Planned finish | Vendor Responsible Party | Layton Discipline | Location | CX Level | Equipment | Layton Super | Contract |
| --- | --- | --- | --- | --- | --- | --- | --- | --- | --- | --- | --- | --- | --- | --- | --- | --- |
|  | 05 | **DC1-DH2200 MV-XFMR-E22 Cx L3** |  | 2026-06-01 | 2026-07-31 |  |  |  |  |  |  |  |  |  |  |  |
| DC1-XFM-L3-CX-1330 |  | DC1-XFMR-E22 FTE | 1d | 2026-06-01 A | 2026-06-01 A | DC1-XFMR-L2-2120, DC1-SWD-L2-2110, DC1-XFMR-L2-2110, QTS-1004750 | 100% | 2026-07-01 | 2026-07-01 | ROS | Commissioning | DH2200 | L3 | XFMR | Travis Todaro |  |
| DC1-XFM-L3-CX-1340 |  | DC1-XFMR-E22 L3 Startup | 2d | 2026-07-22 A | 2026-07-23 A | DC1-XFM-L3-CX-1330 | 100% |  |  | VTC | Commissioning | DH2200 | L3 | XFMR |  | BAB |
| DC1-XFM-L3-CX-1350 |  | DC1-XFMR-E22 BMS/EPMS Programming | 1d | 2026-07-31 A | 2026-07-31 A | DC1-XFM-L3-CX-1340 | 100% | 2026-08-05 | 2026-08-05 | PRM | Commissioning | DH2200 | L3 | XFMR |  | BAB |
|  | 06 | **DC1-DH2200 MV-XFMR-F22 Cx L3** |  | 2026-06-01 | 2026-07-31 |  |  |  |  |  |  |  |  |  |  |  |
| DC1-XFM-L3-CX-1360 |  | DC1-XFMR-F22 FTE | 1d | 2026-06-01 A | 2026-06-01 A | DC1-SWD-L2-2120, DC1-XFMR-L2-2120, QTS-1004750 | 100% | 2026-07-01 | 2026-07-01 | ROS | Commissioning | DH2200 | L3 | XFMR | Travis Todaro |  |
| DC1-XFM-L3-CX-1370 |  | DC1-XFMR-F22 L3 Startup | 2d | 2026-07-22 A | 2026-07-23 A | DC1-XFM-L3-CX-1360 | 100% |  |  | VTC | Commissioning | DH2200 | L3 | XFMR |  | BAB |
| DC1-XFM-L3-CX-1380 |  | DC1-XFMR-F22 BMS/EPMS Programming | 1d | 2026-07-31 A | 2026-07-31 A | DC1-XFM-L3-CX-1370 | 100% | 2026-08-05 | 2026-08-05 | PRM | Commissioning | DH2200 | L3 | XFMR |  | BAB |
|  | 07 | **DC1-DH2200 MV-XFMR-R22 Cx L3** |  | 2026-06-01 | 2026-07-31 |  |  |  |  |  |  |  |  |  |  |  |
| DC1-XFM-L3-CX-1390 |  | DC1-XFMR-R22 FTE | 1d | 2026-06-01 A | 2026-06-01 A | DC1-SWD-L2-2120, DC1-SWD-L2-2130, DC1-XFMR-L2-2130, QTS-1004750 | 100% | 2026-07-01 | 2026-07-01 | ROS | Commissioning | DH2200 | L3 | XFMR | Travis Todaro |  |
| DC1-XFM-L3-CX-1400 |  | DC1-XFMR-R22 L3 Startup | 2d | 2026-07-22 A | 2026-07-23 A | DC1-XFM-L3-CX-1390 | 100% |  |  | VTC | Commissioning | DH2200 | L3 | XFMR |  | BAB |
| DC1-XFM-L3-CX-1410 |  | DC1-XFMR-R22 BMS/EPMS Programming | 1d | 2026-07-31 A | 2026-07-31 A | DC1-XFM-L3-CX-1400 | 100% | 2026-08-05 | 2026-08-05 | PRM | Commissioning | DH2200 | L3 | XFMR |  | BAB |
|  | 03 | **DC1-DH2200 PODS Cx L3** |  | 2026-06-18 | 2026-07-31 |  |  |  |  |  |  |  |  |  |  |  |
|  | 01 | **DC1-DH2200 SWDs Cx L3** |  | 2026-06-29 | 2026-07-22 |  |  |  |  |  |  |  |  |  |  |  |
|  | 01 | **DC1-DH2200-SWD-A22 Cx L3** |  | 2026-06-29 | 2026-07-22 |  |  |  |  |  |  |  |  |  |  |  |
| DC1-SWD-L3-CX-2210 |  | DC1-SWD-A22 FTE | 1d | 2026-06-29 A | 2026-06-29 A | DC1-XFM-L3-CX-1210 SS, DC1-SWD-L2-2070 | 100% | 2026-06-26 | 2026-06-26 | ROS | Commissioning | DH2200 | L3 | SWD | Travis Todaro |  |
| DC1-SWD-L3-CX-2220 |  | DC1-SWD-A22 L3 Startup | 2d | 2026-06-29 A | 2026-06-29 A | QTS-1801, DC1-SWD-L3-CX-2210 | 100% | 2026-06-29 | 2026-06-30 | SIE | Commissioning | DH2200 | L3 | SWD | Travis Todaro |  |
| DC1-SWD-L3-CX-2230 |  | DC1-SWD-A22 BMS/EPMS Programming | 1d | 2026-07-22 A | 2026-07-22 A | DC1-SWD-L3-CX-2220 | 100% |  |  | PRM | Commissioning | DH2200 | L3 | SWD |  | BAB |
|  | 02 | **DC1-DH2200-SWD-B22 Cx L3** |  | 2026-06-29 | 2026-07-22 |  |  |  |  |  |  |  |  |  |  |  |
| DC1-SWD-L3-CX-2240 |  | DC1-SWD-B22 FTE | 1d | 2026-06-29 A | 2026-06-29 A | DC1-XFM-L3-CX-1240 SS, DC1-SWD-L2-2080 | 100% | 2026-06-26 | 2026-06-26 | ROS | Commissioning | DH2200 | L3 | SWD | Travis Todaro |  |
| DC1-SWD-L3-CX-2250 |  | DC1-SWD-B22 L3 Startup | 2d | 2026-06-29 A | 2026-06-29 A | QTS-1801, DC1-SWD-L3-CX-2240 | 100% | 2026-06-29 | 2026-06-30 | SIE | Commissioning | DH2200 | L3 | SWD | Travis Todaro |  |
| DC1-SWD-L3-CX-2260 |  | DC1-SWD-B22 BMS/EPMS Programming | 1d | 2026-07-22 A | 2026-07-22 A | DC1-SWD-L3-CX-2250 | 100% |  |  | PRM | Commissioning | DH2200 | L3 | SWD |  | BAB |
|  | 03 | **DC1-DH2200-SWD-C22 Cx L3** |  | 2026-06-29 | 2026-07-22 |  |  |  |  |  |  |  |  |  |  |  |
| DC1-SWD-L3-CX-2270 |  | DC1-SWD-C22 FTE | 1d | 2026-06-29 A | 2026-06-29 A | DC1-XFM-L3-CX-1270 SS, DC1-SWD-L2-2090 | 100% | 2026-06-26 | 2026-06-26 | ROS | Commissioning | DH2200 | L3 | SWD | Travis Todaro |  |
| DC1-SWD-L3-CX-2280 |  | DC1-SWD-C22 L3 Startup | 2d | 2026-06-29 A | 2026-06-29 A | QTS-1801, DC1-SWD-L3-CX-2270 | 100% | 2026-06-29 | 2026-06-30 | SIE | Commissioning | DH2200 | L3 | SWD | Travis Todaro |  |
| DC1-SWD-L3-CX-2290 |  | DC1-SWD-C22 BMS/EPMS Programming | 1d | 2026-07-22 A | 2026-07-22 A | DC1-SWD-L3-CX-2280 | 100% |  |  | PRM | Commissioning | DH2200 | L3 | SWD |  | BAB |

Notes:
- DC1-XFM-L3-CX-1340: Steps: EC Startup Report; Vendor Startup
- DC1-XFM-L3-CX-1370: Steps: EC Startup Report; Vendor Startup
- DC1-XFM-L3-CX-1400: Steps: EC Startup Report; Vendor Startup
- DC1-SWD-L3-CX-2220: Steps: EC Startup Report; Vendor Startup
- DC1-SWD-L3-CX-2250: Steps: EC Startup Report; Vendor Startup
- DC1-SWD-L3-CX-2280: Steps: EC Startup Report; Vendor Startup

| ID | WBS | Activity | Duration | Start | Finish | Predecessors | Complete | Planned start | Planned finish | Vendor Responsible Party | Layton Discipline | Location | CX Level | Equipment | Layton Super | Contract | Notes |
| --- | --- | --- | --- | --- | --- | --- | --- | --- | --- | --- | --- | --- | --- | --- | --- | --- | --- |
|  | 04 | **DC1-DH2200-SWD-D22 Cx L3** |  | 2026-06-29 | 2026-07-22 |  |  |  |  |  |  |  |  |  |  |  |  |
| DC1-SWD-L3-CX-2300 |  | DC1-SWD-D22 FTE | 1d | 2026-06-29 A | 2026-06-29 A | DC1-XFM-L3-CX-1300 SS, DC1-SWD-L2-2100 | 100% | 2026-06-26 | 2026-06-26 | ROS | Commissioning | DH2200 | L3 | SWD | Travis Todaro |  |  |
| DC1-SWD-L3-CX-2310 |  | DC1-SWD-D22 L3 Startup | 2d | 2026-06-29 A | 2026-06-29 A | QTS-1801, DC1-SWD-L3-CX-2300 | 100% | 2026-06-29 | 2026-06-30 | SIE | Commissioning | DH2200 | L3 | SWD | Travis Todaro |  |  |
| DC1-SWD-L3-CX-2320 |  | DC1-SWD-D22 BMS/EPMS Programming | 1d | 2026-07-22 A | 2026-07-22 A | DC1-SWD-L3-CX-2310 | 100% |  |  | PRM | Commissioning | DH2200 | L3 | SWD |  | BAB |  |
|  | 05 | **DC1-DH2200-SWD-E22 Cx L3** |  | 2026-06-29 | 2026-07-22 |  |  |  |  |  |  |  |  |  |  |  |  |
| DC1-SWD-L3-CX-2330 |  | DC1-SWD-E22 FTE | 1d | 2026-06-29 A | 2026-06-29 A | DC1-XFM-L3-CX-1330 SS, DC1-SWD-L2-2110 | 100% | 2026-06-26 | 2026-06-26 | ROS | Commissioning | DH2200 | L3 | SWD | Travis Todaro |  |  |
| DC1-SWD-L3-CX-2340 |  | DC1-SWD-E22 L3 Startup | 2d | 2026-06-29 A | 2026-06-29 A | QTS-1801, DC1-SWD-L3-CX-2330 | 100% | 2026-06-29 | 2026-06-30 | SIE | Commissioning | DH2200 | L3 | SWD | Travis Todaro |  |  |
| DC1-SWD-L3-CX-2350 |  | DC1-SWD-E22 BMS/EPMS Programming | 1d | 2026-07-22 A | 2026-07-22 A | DC1-SWD-L3-CX-2340 | 100% |  |  | PRM | Commissioning | DH2200 | L3 | SWD |  | BAB |  |
|  | 06 | **DC1-DH2200-SWD-F22 Cx L3** |  | 2026-06-29 | 2026-07-22 |  |  |  |  |  |  |  |  |  |  |  |  |
| DC1-SWD-L3-CX-2360 |  | DC1-SWD-F22 FTE | 1d | 2026-06-29 A | 2026-06-29 A | DC1-XFM-L3-CX-1360 SS, DC1-SWD-L2-2120 | 100% | 2026-06-26 | 2026-06-26 | ROS | Commissioning | DH2200 | L3 | SWD | Travis Todaro |  |  |
| DC1-SWD-L3-CX-2370 |  | DC1-SWD-F22 L3 Startup | 2d | 2026-06-29 A | 2026-06-29 A | QTS-1801, DC1-SWD-L3-CX-2360 | 100% | 2026-06-29 | 2026-06-30 | SIE | Commissioning | DH2200 | L3 | SWD | Travis Todaro |  |  |
| DC1-SWD-L3-CX-2380 |  | DC1-SWD-F22 BMS/EPMS Programming | 1d | 2026-07-22 A | 2026-07-22 A | DC1-SWD-L3-CX-2370 | 100% |  |  | PRM | Commissioning | DH2200 | L3 | SWD |  | BAB |  |
|  | 07 | **DC1-DH2200-SWD-R22 Cx L3** |  | 2026-06-29 | 2026-07-22 |  |  |  |  |  |  |  |  |  |  |  |  |
| DC1-SWD-L3-CX-2390 |  | DC1-SWD-R22 FTE | 1d | 2026-06-29 A | 2026-06-29 A | DC1-XFM-L3-CX-1390 SS, DC1-SWD-L2-2130 | 100% | 2026-06-26 | 2026-06-26 | ROS | Commissioning | DH2200 | L3 | SWD | Travis Todaro |  |  |
| DC1-SWD-L3-CX-2400 |  | DC1-SWD-R22 L3 Startup | 2d | 2026-06-29 A | 2026-06-29 A | QTS-1801, DC1-SWD-L3-CX-2390 | 100% | 2026-06-29 | 2026-06-30 | SIE | Commissioning | DH2200 | L3 | SWD | Travis Todaro |  |  |
| DC1-SWD-L3-CX-2410 |  | DC1-SWD-R22 BMS/EPMS Programming | 1d | 2026-07-22 A | 2026-07-22 A | DC1-SWD-L3-CX-2400 | 100% |  |  | PRM | Commissioning | DH2200 | L3 | SWD |  | BAB |  |
|  | 02 | **DC1-DH2200 MOD-01s Cx L3** |  | 2026-06-18 | 2026-07-22 |  |  |  |  |  |  |  |  |  |  |  |  |
|  | 01 | **DC1-DH2200-MOD-A22-01 Cx L3** |  | 2026-06-18 | 2026-07-22 |  |  |  |  |  |  |  |  |  |  |  |  |
| DC1-MOD1-L3-CX-2210 |  | DC1-MOD-01-A22 FTE | 1d | 2026-06-18 A | 2026-06-18 A | DC1-SWD-L3-CX-2210 SS, DC1-MOD01-L2-2070 | 100% | 2026-07-01 | 2026-07-01 | ROS | Commissioning | DH2200 | L3 | MOD-01 | Travis Todaro |  |  |
| DC1-MOD1-L3-CX-2220 |  | DC1-MOD-01-A22 L3 Startup | 2d | 2026-06-18 A | 2026-06-18 A | DC1-MOD1-L3-CX-2210 | 100% | 2026-07-02 | 2026-07-06 | PHE | Commissioning | DH2200 | L3 | MOD-01 | Travis Todaro |  | Vendor Only |
| DC1-MOD1-L3-CX-2230 |  | DC1-MOD-01-A22 BMS/EPMS Programming | 1d | 2026-07-22 A | 2026-07-22 A | DC1-MOD1-L3-CX-2220 | 100% |  |  | PRM | Commissioning | DH2200 | L3 | MOD-01 |  | BAB |  |
|  | 02 | **DC1-DH2200-MOD-B22-01 Cx L3** |  | 2026-06-18 | 2026-07-22 |  |  |  |  |  |  |  |  |  |  |  |  |
| DC1-MOD1-L3-CX-2240 |  | DC1-MOD-01-B22 FTE | 1d | 2026-06-18 A | 2026-06-18 A | DC1-SWD-L3-CX-2240 SS, DC1-MOD01-L2-2080 | 100% | 2026-07-01 | 2026-07-01 | ROS | Commissioning | DH2200 | L3 | MOD-01 | Travis Todaro |  |  |
| DC1-MOD1-L3-CX-2250 |  | DC1-MOD-01-B22 L3 Startup | 2d | 2026-06-18 A | 2026-06-18 A | DC1-MOD1-L3-CX-2240 | 100% | 2026-07-02 | 2026-07-06 | PHE | Commissioning | DH2200 | L3 | MOD-01 | Travis Todaro |  | Vendor Only |
| DC1-MOD1-L3-CX-2260 |  | DC1-MOD-01-B22 BMS/EPMS Programming | 1d | 2026-07-22 A | 2026-07-22 A | DC1-MOD1-L3-CX-2250 | 100% |  |  | PRM | Commissioning | DH2200 | L3 | MOD-01 |  | BAB |  |

Notes:
- DC1-SWD-L3-CX-2310: Steps: EC Startup Report; Vendor Startup
- DC1-SWD-L3-CX-2340: Steps: EC Startup Report; Vendor Startup
- DC1-SWD-L3-CX-2370: Steps: EC Startup Report; Vendor Startup
- DC1-SWD-L3-CX-2400: Steps: EC Startup Report; Vendor Startup

| ID | WBS | Activity | Duration | Start | Finish | Predecessors | Complete | Planned start | Planned finish | Vendor Responsible Party | Layton Discipline | Location | CX Level | Equipment | Layton Super | Notes | Contract |
| --- | --- | --- | --- | --- | --- | --- | --- | --- | --- | --- | --- | --- | --- | --- | --- | --- | --- |
|  | 03 | **DC1-DH2200-MOD-C22-01 Cx L3** |  | 2026-06-18 | 2026-07-22 |  |  |  |  |  |  |  |  |  |  |  |  |
| DC1-MOD1-L3-CX-2270 |  | DC1-MOD-01-C22 FTE | 1d | 2026-06-18 A | 2026-06-18 A | DC1-SWD-L3-CX-2270 SS, DC1-MOD01-L2-2090 | 100% | 2026-07-01 | 2026-07-01 | ROS | Commissioning | DH2200 | L3 | MOD-01 | Travis Todaro |  |  |
| DC1-MOD1-L3-CX-2280 |  | DC1-MOD-01-C22 L3 Startup | 2d | 2026-06-18 A | 2026-06-18 A | DC1-MOD1-L3-CX-2270 | 100% | 2026-07-02 | 2026-07-06 | PHE | Commissioning | DH2200 | L3 | MOD-01 | Travis Todaro | Vendor Only |  |
| DC1-MOD1-L3-CX-2290 |  | DC1-MOD-01-C22 BMS/EPMS Programming | 1d | 2026-07-22 A | 2026-07-22 A | DC1-MOD1-L3-CX-2280 | 100% |  |  | PRM | Commissioning | DH2200 | L3 | MOD-01 |  |  | BAB |
|  | 04 | **DC1-DH2200-MOD-D22-01 Cx L3** |  | 2026-06-18 | 2026-07-22 |  |  |  |  |  |  |  |  |  |  |  |  |
| DC1-MOD1-L3-CX-2300 |  | DC1-MOD-01-D22 FTE | 1d | 2026-06-18 A | 2026-06-18 A | DC1-SWD-L3-CX-2300 SS, DC1-MOD01-L2-2100 | 100% | 2026-07-01 | 2026-07-01 | ROS | Commissioning | DH2200 | L3 | MOD-01 | Travis Todaro |  |  |
| DC1-MOD1-L3-CX-2310 |  | DC1-MOD-01-D22 L3 Startup | 2d | 2026-06-18 A | 2026-06-18 A | DC1-MOD1-L3-CX-2300 | 100% | 2026-07-02 | 2026-07-06 | PHE | Commissioning | DH2200 | L3 | MOD-01 | Travis Todaro | Vendor Only |  |
| DC1-MOD1-L3-CX-2320 |  | DC1-MOD-01-D22 BMS/EPMS Programming | 1d | 2026-07-22 A | 2026-07-22 A | DC1-MOD1-L3-CX-2310 | 100% |  |  | PRM | Commissioning | DH2200 | L3 | MOD-01 |  |  | BAB |
|  | 05 | **DC1-DH2200-MOD-E22-01 Cx L3** |  | 2026-06-18 | 2026-07-22 |  |  |  |  |  |  |  |  |  |  |  |  |
| DC1-MOD1-L3-CX-2330 |  | DC1-MOD-01-E22 FTE | 1d | 2026-06-18 A | 2026-06-18 A | DC1-SWD-L3-CX-2330 SS, DC1-MOD01-L2-2110 | 100% | 2026-07-01 | 2026-07-01 | ROS | Commissioning | DH2200 | L3 | MOD-01 | Travis Todaro |  |  |
| DC1-MOD1-L3-CX-2340 |  | DC1-MOD-01-E22 L3 Startup | 2d | 2026-06-18 A | 2026-06-18 A | DC1-MOD1-L3-CX-2330 | 100% | 2026-07-02 | 2026-07-06 | PHE | Commissioning | DH2200 | L3 | MOD-01 | Travis Todaro | Vendor Only |  |
| DC1-MOD1-L3-CX-2350 |  | DC1-MOD-01-E22 BMS/EPMS Programming | 1d | 2026-07-22 A | 2026-07-22 A | DC1-MOD1-L3-CX-2340 | 100% |  |  | PRM | Commissioning | DH2200 | L3 | MOD-01 |  |  | BAB |
|  | 06 | **DC1-DH2200-MOD-F22-01 Cx L3** |  | 2026-06-18 | 2026-07-22 |  |  |  |  |  |  |  |  |  |  |  |  |
| DC1-MOD1-L3-CX-2360 |  | DC1-MOD-01-F22 FTE | 1d | 2026-06-18 A | 2026-06-18 A | DC1-SWD-L3-CX-2360 SS, DC1-MOD01-L2-2120 | 100% | 2026-07-01 | 2026-07-01 | ROS | Commissioning | DH2200 | L3 | MOD-01 | Travis Todaro |  |  |
| DC1-MOD1-L3-CX-2370 |  | DC1-MOD-01-F22 L3 Startup | 2d | 2026-06-18 A | 2026-06-18 A | DC1-MOD1-L3-CX-2360 | 100% | 2026-07-02 | 2026-07-06 | PHE | Commissioning | DH2200 | L3 | MOD-01 | Travis Todaro | Vendor Only |  |
| DC1-MOD1-L3-CX-2380 |  | DC1-MOD-01-F22 BMS/EPMS Programming | 1d | 2026-07-22 A | 2026-07-22 A | DC1-MOD1-L3-CX-2370 | 100% |  |  | PRM | Commissioning | DH2200 | L3 | MOD-01 |  |  | BAB |
|  | 07 | **DC1-DH2200-MOD-R22-01 Cx L3** |  | 2026-06-18 | 2026-07-22 |  |  |  |  |  |  |  |  |  |  |  |  |
| DC1-MOD1-L3-CX-2390 |  | DC1-MOD-01-R22 FTE | 1d | 2026-06-18 A | 2026-06-18 A | DC1-SWD-L3-CX-2390 SS, DC1-MOD01-L2-2130 | 100% | 2026-07-01 | 2026-07-01 | ROS | Commissioning | DH2200 | L3 | MOD-01 | Travis Todaro |  |  |
| DC1-MOD1-L3-CX-2400 |  | DC1-MOD-01-R22 L3 Startup | 2d | 2026-06-18 A | 2026-06-18 A | DC1-MOD1-L3-CX-2390 | 100% | 2026-07-02 | 2026-07-06 | PHE | Commissioning | DH2200 | L3 | MOD-01 | Travis Todaro | Vendor Only |  |
| DC1-MOD1-L3-CX-2410 |  | DC1-MOD-01-R22 BMS/EPMS Programming | 1d | 2026-07-22 A | 2026-07-22 A | DC1-MOD1-L3-CX-2400 | 100% |  |  | PRM | Commissioning | DH2200 | L3 | MOD-01 |  |  | BAB |
|  | 03 | **DC1-DH2200 UPS-M Cx L3** |  | 2026-07-23 | 2026-07-31 |  |  |  |  |  |  |  |  |  |  |  |  |
|  | 01 | **DC1-DH2200-UPS-M-A22-01 Cx L3** |  | 2026-07-23 | 2026-07-31 |  |  |  |  |  |  |  |  |  |  |  |  |
| DC1-UPSM-L3-CX-2210 |  | DC1-UPS-M-A22 FTE | 1d | 2026-07-23 A | 2026-07-23 A | DC1-MOD1-L3-CX-2210, DC1-UPS-M-L2-2070 | 100% |  |  | ROS | Commissioning | DH2200 | L3 | UPS |  |  | BAB |
| DC1-UPSM-L3-CX-2220 |  | DC1-UPS-M-A22 L3 Startup | 2d | 2026-07-24 A | 2026-07-24 A | DC1-UPSM-L3-CX-2210 | 100% | 2026-07-24 | 2026-07-27 | VER | Commissioning | DH2200 | L3 | UPS |  |  | BAB |
| DC1-UPSM-L3-CX-2230 |  | DC1-UPS-M-A22 BMS/EPMS Programming | 1d | 2026-07-31 A | 2026-07-31 A | DC1-UPSM-L3-CX-2220 | 100% | 2026-08-05 | 2026-08-05 | PRM | Commissioning | DH2200 | L3 | UPS |  |  | BAB |

Notes:
- DC1-UPSM-L3-CX-2220: Steps: EC Startup Report; Vendor Startup

| ID | WBS | Activity | Duration | Start | Finish | Predecessors | Complete | Planned start | Planned finish | Vendor Responsible Party | Layton Discipline | Location | CX Level | Equipment | Contract |
| --- | --- | --- | --- | --- | --- | --- | --- | --- | --- | --- | --- | --- | --- | --- | --- |
|  | 02 | **DC1-DH2200-UPS-M-B22-01 Cx L3** |  | 2026-07-23 | 2026-07-31 |  |  |  |  |  |  |  |  |  |  |
| DC1-UPSM-L3-CX-2240 |  | DC1-UPS-M-B22 FTE | 1d | 2026-07-23 A | 2026-07-23 A | DC1-MOD1-L3-CX-2240, DC1-UPS-M-L2-2080 | 100% |  |  | ROS | Commissioning | DH2200 | L3 | UPS | BAB |
| DC1-UPSM-L3-CX-2250 |  | DC1-UPS-M-B22 L3 Startup | 2d | 2026-07-24 A | 2026-07-24 A | DC1-UPSM-L3-CX-2240 | 100% | 2026-07-24 | 2026-07-27 | VER | Commissioning | DH2200 | L3 | UPS | BAB |
| DC1-UPSM-L3-CX-2260 |  | DC1-UPS-M-B22 BMS/EPMS Programming | 1d | 2026-07-31 A | 2026-07-31 A | DC1-UPSM-L3-CX-2250 | 100% | 2026-08-05 | 2026-08-05 | PRM | Commissioning | DH2200 | L3 | UPS | BAB |
|  | 03 | **DC1-DH2200-UPS-M-C22-01 Cx L3** |  | 2026-07-23 | 2026-07-31 |  |  |  |  |  |  |  |  |  |  |
| DC1-UPSM-L3-CX-2270 |  | DC1-UPS-M-C22 FTE | 1d | 2026-07-23 A | 2026-07-23 A | DC1-MOD1-L3-CX-2270, DC1-UPS-M-L2-2090 | 100% |  |  | ROS | Commissioning | DH2200 | L3 | UPS | BAB |
| DC1-UPSM-L3-CX-2280 |  | DC1-UPS-M-C22 L3 Startup | 2d | 2026-07-24 A | 2026-07-24 A | DC1-UPSM-L3-CX-2270 | 100% | 2026-07-24 | 2026-07-27 | VER | Commissioning | DH2200 | L3 | UPS | BAB |
| DC1-UPSM-L3-CX-2290 |  | DC1-UPS-M-C22 BMS/EPMS Programming | 1d | 2026-07-31 A | 2026-07-31 A | DC1-UPSM-L3-CX-2280 | 100% | 2026-08-05 | 2026-08-05 | PRM | Commissioning | DH2200 | L3 | UPS | BAB |
|  | 04 | **DC1-DH2200-UPS-M-D22-01 Cx L3** |  | 2026-07-23 | 2026-07-31 |  |  |  |  |  |  |  |  |  |  |
| DC1-UPSM-L3-CX-2300 |  | DC1-UPS-M-D22 FTE | 1d | 2026-07-23 A | 2026-07-23 A | DC1-MOD1-L3-CX-2300, DC1-UPS-M-L2-2100 | 100% |  |  | ROS | Commissioning | DH2200 | L3 | UPS | BAB |
| DC1-UPSM-L3-CX-2310 |  | DC1-UPS-M-D22 L3 Startup | 2d | 2026-07-24 A | 2026-07-24 A | DC1-UPSM-L3-CX-2300 | 100% | 2026-07-24 | 2026-07-27 | VER | Commissioning | DH2200 | L3 | UPS | BAB |
| DC1-UPSM-L3-CX-2320 |  | DC1-UPS-M-D22 BMS/EPMS Programming | 1d | 2026-07-31 A | 2026-07-31 A | DC1-UPSM-L3-CX-2310 | 100% | 2026-08-05 | 2026-08-05 | PRM | Commissioning | DH2200 | L3 | UPS | BAB |
|  | 05 | **DC1-DH2200-UPS-M-E22-01 Cx L3** |  | 2026-07-23 | 2026-07-31 |  |  |  |  |  |  |  |  |  |  |
| DC1-UPSM-L3-CX-2330 |  | DC1-UPS-M-E22 FTE | 1d | 2026-07-23 A | 2026-07-23 A | DC1-MOD1-L3-CX-2330, DC1-UPS-M-L2-2110 | 100% |  |  | ROS | Commissioning | DH2200 | L3 | UPS | BAB |
| DC1-UPSM-L3-CX-2340 |  | DC1-UPS-M-E22 L3 Startup | 2d | 2026-07-24 A | 2026-07-24 A | DC1-UPSM-L3-CX-2330 | 100% | 2026-07-24 | 2026-07-27 | VER | Commissioning | DH2200 | L3 | UPS | BAB |
| DC1-UPSM-L3-CX-2350 |  | DC1-UPS-M-E22 BMS/EPMS Programming | 1d | 2026-07-31 A | 2026-07-31 A | DC1-UPSM-L3-CX-2340 | 100% | 2026-08-05 | 2026-08-05 | PRM | Commissioning | DH2200 | L3 | UPS | BAB |
|  | 06 | **DC1-DH2200-UPS-M-F22-01 Cx L3** |  | 2026-07-23 | 2026-07-31 |  |  |  |  |  |  |  |  |  |  |
| DC1-UPSM-L3-CX-2360 |  | DC1-UPS-M-F22 FTE | 1d | 2026-07-23 A | 2026-07-23 A | DC1-MOD1-L3-CX-2360, DC1-UPS-M-L2-2120 | 100% |  |  | ROS | Commissioning | DH2200 | L3 | UPS | BAB |
| DC1-UPSM-L3-CX-2370 |  | DC1-UPS-M-F22 L3 Startup | 2d | 2026-07-24 A | 2026-07-24 A | DC1-UPSM-L3-CX-2360 | 100% | 2026-07-24 | 2026-07-27 | VER | Commissioning | DH2200 | L3 | UPS | BAB |
| DC1-UPSM-L3-CX-2380 |  | DC1-UPS-M-F22 BMS/EPMS Programming | 1d | 2026-07-31 A | 2026-07-31 A | DC1-UPSM-L3-CX-2370 | 100% | 2026-08-05 | 2026-08-05 | PRM | Commissioning | DH2200 | L3 | UPS | BAB |
|  | 07 | **DC1-DH2200-UPS-M-R22-01 Cx L3** |  | 2026-07-23 | 2026-07-31 |  |  |  |  |  |  |  |  |  |  |
| DC1-UPSM-L3-CX-2390 |  | DC1-UPS-M-R22 FTE | 1d | 2026-07-23 A | 2026-07-23 A | DC1-MOD1-L3-CX-2390, DC1-UPS-M-L2-2130 | 100% |  |  | ROS | Commissioning | DH2200 | L3 | UPS | BAB |
| DC1-UPSM-L3-CX-2400 |  | DC1-UPS-M-R22 L3 Startup | 2d | 2026-07-24 A | 2026-07-24 A | DC1-UPSM-L3-CX-2390 | 100% | 2026-07-24 | 2026-07-27 | VER | Commissioning | DH2200 | L3 | UPS | BAB |
| DC1-UPSM-L3-CX-2410 |  | DC1-UPS-M-R22 BMS/EPMS Programming | 1d | 2026-07-31 A | 2026-07-31 A | DC1-UPSM-L3-CX-2400 | 100% | 2026-08-05 | 2026-08-05 | PRM | Commissioning | DH2200 | L3 | UPS | BAB |

Notes:
- DC1-UPSM-L3-CX-2250: Steps: EC Startup Report; Vendor Startup
- DC1-UPSM-L3-CX-2280: Steps: EC Startup Report; Vendor Startup
- DC1-UPSM-L3-CX-2310: Steps: EC Startup Report; Vendor Startup
- DC1-UPSM-L3-CX-2340: Steps: EC Startup Report; Vendor Startup
- DC1-UPSM-L3-CX-2370: Steps: EC Startup Report; Vendor Startup
- DC1-UPSM-L3-CX-2400: Steps: EC Startup Report; Vendor Startup

| ID | WBS | Activity | Duration | Start | Finish | Predecessors | Complete | Planned start | Planned finish | Vendor Responsible Party | Layton Discipline | Location | CX Level | Equipment | Contract | Notes |
| --- | --- | --- | --- | --- | --- | --- | --- | --- | --- | --- | --- | --- | --- | --- | --- | --- |
|  | 04 | **DC1-DH2200 COMPRESSOR/FAN UNITS Cx L3** |  | 2026-07-22 | 2026-07-22 |  |  |  |  |  |  |  |  |  |  |  |
|  | 01 | **DC1-DH2200 POD-AC UNITS A22 Cx L3** |  | 2026-07-22 | 2026-07-22 |  |  |  |  |  |  |  |  |  |  |  |
| DC1-COMP-L3-CX-2210 |  | DC1-COMP-A22-01 FTE (2) | 1d | 2026-07-22 A | 2026-07-22 A | DC1-MOD1-L3-CX-2210 | 100% |  |  | ROS | Commissioning | DH2200 | L3 | POD AC | BAB |  |
| DC1-COMP-L3-CX-2220 |  | DC1-COMP-A22-01 L3 Startup (2) | 2d | 2026-07-22 A | 2026-07-22 A | DC1-COMP-L3-CX-2210 | 100% | 2026-07-23 | 2026-07-24 | CAP | Commissioning | DH2200 | L3 | POD AC | BAB | Vendor Only |
| DC1-COMP-L3-CX-2230 |  | DC1-COMP-A22-01 BMS/EPMS Programming (2) | 1d | 2026-07-22 A | 2026-07-22 A | DC1-COMP-L3-CX-2220 | 100% | 2026-07-27 | 2026-07-27 | PRM | Commissioning | DH2200 | L3 | POD AC | BAB |  |
| DC1-FAN-L3-CX-2210 |  | DC1-FAN-A22-01 FTE (2) | 1d | 2026-07-22 A | 2026-07-22 A | DC1-MOD1-L3-CX-2210 | 100% |  |  | ROS | Commissioning | DH2200 | L3 | POD AC | BAB |  |
| DC1-FAN-L3-CX-2220 |  | DC1-FAN-A22-01 L3 Startup (2) | 2d | 2026-07-22 A | 2026-07-22 A | DC1-FAN-L3-CX-2210 | 100% | 2026-07-23 | 2026-07-24 | FBB | Commissioning | DH2200 | L3 | POD AC | BAB | Vendor Only |
| DC1-FAN-L3-CX-2230 |  | DC1-FAN-A22-01 BMS/EPMS Programming (2) | 1d | 2026-07-22 A | 2026-07-22 A | DC1-FAN-L3-CX-2220 | 100% | 2026-07-27 | 2026-07-27 | PRM | Commissioning | DH2200 | L3 | POD AC | BAB |  |
|  | 02 | **DC1-DH2200 POD-AC UNITS B22 Cx L3** |  | 2026-07-22 | 2026-07-22 |  |  |  |  |  |  |  |  |  |  |  |
| DC1-COMP-L3-CX-2240 |  | DC1-COMP-B22-01 FTE (2) | 1d | 2026-07-22 A | 2026-07-22 A | DC1-MOD1-L3-CX-2240 | 100% |  |  | ROS | Commissioning | DH2200 | L3 | POD AC | BAB |  |
| DC1-COMP-L3-CX-2250 |  | DC1-COMP-B22-01 L3 Startup (2) | 2d | 2026-07-22 A | 2026-07-22 A | DC1-COMP-L3-CX-2240 | 100% | 2026-07-23 | 2026-07-24 | CAP | Commissioning | DH2200 | L3 | POD AC | BAB | Vendor Only |
| DC1-COMP-L3-CX-2260 |  | DC1-COMP-B22-01 BMS/EPMS Programming (2) | 1d | 2026-07-22 A | 2026-07-22 A | DC1-COMP-L3-CX-2250 | 100% | 2026-07-27 | 2026-07-27 | PRM | Commissioning | DH2200 | L3 | POD AC | BAB |  |
| DC1-FAN-L3-CX-2240 |  | DC1-FAN-B22-01 FTE (2) | 1d | 2026-07-22 A | 2026-07-22 A | DC1-MOD1-L3-CX-2240 | 100% |  |  | ROS | Commissioning | DH2200 | L3 | POD AC | BAB |  |
| DC1-FAN-L3-CX-2250 |  | DC1-FAN-B22-01 L3 Startup (2) | 2d | 2026-07-22 A | 2026-07-22 A | DC1-FAN-L3-CX-2240 | 100% | 2026-07-23 | 2026-07-24 | FBB | Commissioning | DH2200 | L3 | POD AC | BAB | Vendor Only |
| DC1-FAN-L3-CX-2260 |  | DC1-FAN-B22-01 BMS/EPMS Programming (2) | 1d | 2026-07-22 A | 2026-07-22 A | DC1-FAN-L3-CX-2250 | 100% | 2026-07-27 | 2026-07-27 | PRM | Commissioning | DH2200 | L3 | POD AC | BAB |  |
|  | 03 | **DC1-DH2200 POD-AC UNITS C22 Cx L3** |  | 2026-07-22 | 2026-07-22 |  |  |  |  |  |  |  |  |  |  |  |
| DC1-COMP-L3-CX-2270 |  | DC1-COMP-C22-01 FTE (2) | 1d | 2026-07-22 A | 2026-07-22 A | DC1-MOD1-L3-CX-2270 | 100% |  |  | ROS | Commissioning | DH2200 | L3 | POD AC | BAB |  |
| DC1-COMP-L3-CX-2280 |  | DC1-COMP-C22-01 L3 Startup (2) | 2d | 2026-07-22 A | 2026-07-22 A | DC1-COMP-L3-CX-2270 | 100% | 2026-07-23 | 2026-07-24 | CAP | Commissioning | DH2200 | L3 | POD AC | BAB | Vendor Only |
| DC1-COMP-L3-CX-2290 |  | DC1-COMP-C22-01 BMS/EPMS Programming (2) | 1d | 2026-07-22 A | 2026-07-22 A | DC1-COMP-L3-CX-2280 | 100% | 2026-07-27 | 2026-07-27 | PRM | Commissioning | DH2200 | L3 | POD AC | BAB |  |
| DC1-FAN-L3-CX-2270 |  | DC1-FAN-C22-01 FTE (2) | 1d | 2026-07-22 A | 2026-07-22 A | DC1-MOD1-L3-CX-2270 | 100% |  |  | ROS | Commissioning | DH2200 | L3 | POD AC | BAB |  |
| DC1-FAN-L3-CX-2280 |  | DC1-FAN-C22-01 L3 Startup (2) | 2d | 2026-07-22 A | 2026-07-22 A | DC1-FAN-L3-CX-2270 | 100% | 2026-07-23 | 2026-07-24 | FBB | Commissioning | DH2200 | L3 | POD AC | BAB | Vendor Only |
| DC1-FAN-L3-CX-2290 |  | DC1-FAN-C22-01 BMS/EPMS Programming (2) | 1d | 2026-07-22 A | 2026-07-22 A | DC1-FAN-L3-CX-2280 | 100% | 2026-07-27 | 2026-07-27 | PRM | Commissioning | DH2200 | L3 | POD AC | BAB |  |
|  | 04 | **DC1-DH2200 POD-AC UNITS D22 Cx L3** |  | 2026-07-22 | 2026-07-22 |  |  |  |  |  |  |  |  |  |  |  |
| DC1-COMP-L3-CX-2300 |  | DC1-COMP-D22-01 FTE (2) | 1d | 2026-07-22 A | 2026-07-22 A | DC1-MOD1-L3-CX-2300 | 100% |  |  | ROS | Commissioning | DH2200 | L3 | POD AC | BAB |  |
| DC1-COMP-L3-CX-2310 |  | DC1-COMP-D22-01 L3 Startup (2) | 2d | 2026-07-22 A | 2026-07-22 A | DC1-COMP-L3-CX-2300 | 100% | 2026-07-23 | 2026-07-24 | CAP | Commissioning | DH2200 | L3 | POD AC | BAB | Vendor Only |
| DC1-COMP-L3-CX-2320 |  | DC1-COMP-D22-01 BMS/EPMS Programming (2) | 1d | 2026-07-22 A | 2026-07-22 A | DC1-COMP-L3-CX-2310 | 100% | 2026-07-27 | 2026-07-27 | PRM | Commissioning | DH2200 | L3 | POD AC | BAB |  |
| DC1-FAN-L3-CX-2300 |  | DC1-FAN-D22-01 FTE (2) | 1d | 2026-07-22 A | 2026-07-22 A | DC1-MOD1-L3-CX-2300 | 100% |  |  | ROS | Commissioning | DH2200 | L3 | POD AC | BAB |  |
| DC1-FAN-L3-CX-2310 |  | DC1-FAN-D22-01 L3 Startup (2) | 2d | 2026-07-22 A | 2026-07-22 A | DC1-FAN-L3-CX-2300 | 100% | 2026-07-23 | 2026-07-24 | FBB | Commissioning | DH2200 | L3 | POD AC | BAB | Vendor Only |
| DC1-FAN-L3-CX-2320 |  | DC1-FAN-D22-01 BMS/EPMS Programming (2) | 1d | 2026-07-22 A | 2026-07-22 A | DC1-FAN-L3-CX-2310 | 100% | 2026-07-27 | 2026-07-27 | PRM | Commissioning | DH2200 | L3 | POD AC | BAB |  |

| ID | WBS | Activity | Duration | Start | Finish | Predecessors | Complete | Planned start | Planned finish | Vendor Responsible Party | Layton Discipline | Location | CX Level | Equipment | Contract | Notes |
| --- | --- | --- | --- | --- | --- | --- | --- | --- | --- | --- | --- | --- | --- | --- | --- | --- |
|  | 05 | **DC1-DH2200 POD-AC UNITS E22 Cx L3** |  | 2026-07-22 | 2026-07-22 |  |  |  |  |  |  |  |  |  |  |  |
| DC1-COMP-L3-CX-2330 |  | DC1-COMP-E22-01 FTE (2) | 1d | 2026-07-22 A | 2026-07-22 A | DC1-MOD1-L3-CX-2330 | 100% |  |  | ROS | Commissioning | DH2200 | L3 | POD AC | BAB |  |
| DC1-COMP-L3-CX-2340 |  | DC1-COMP-E22-01 L3 Startup (2) | 2d | 2026-07-22 A | 2026-07-22 A | DC1-COMP-L3-CX-2330 | 100% | 2026-07-23 | 2026-07-24 | CAP | Commissioning | DH2200 | L3 | POD AC | BAB | Vendor Only |
| DC1-COMP-L3-CX-2350 |  | DC1-COMP-E22-01 BMS/EPMS Programming (2) | 1d | 2026-07-22 A | 2026-07-22 A | DC1-COMP-L3-CX-2340 | 100% | 2026-07-27 | 2026-07-27 | PRM | Commissioning | DH2200 | L3 | POD AC | BAB |  |
| DC1-FAN-L3-CX-2330 |  | DC1-FAN-E22-01 FTE (2) | 1d | 2026-07-22 A | 2026-07-22 A | DC1-MOD1-L3-CX-2330 | 100% |  |  | ROS | Commissioning | DH2200 | L3 | POD AC | BAB |  |
| DC1-FAN-L3-CX-2340 |  | DC1-FAN-E22-01 L3 Startup (2) | 2d | 2026-07-22 A | 2026-07-22 A | DC1-FAN-L3-CX-2330 | 100% | 2026-07-23 | 2026-07-24 | FBB | Commissioning | DH2200 | L3 | POD AC | BAB | Vendor Only |
| DC1-FAN-L3-CX-2350 |  | DC1-FAN-E22-01 BMS/EPMS Programming (2) | 1d | 2026-07-22 A | 2026-07-22 A | DC1-FAN-L3-CX-2340 | 100% | 2026-07-27 | 2026-07-27 | PRM | Commissioning | DH2200 | L3 | POD AC | BAB |  |
|  | 06 | **DC1-DH2200 POD-AC UNITS F22 Cx L3** |  | 2026-07-22 | 2026-07-22 |  |  |  |  |  |  |  |  |  |  |  |
| DC1-COMP-L3-CX-2360 |  | DC1-COMP-F22-01 FTE (2) | 1d | 2026-07-22 A | 2026-07-22 A | DC1-MOD1-L3-CX-2360 | 100% |  |  | ROS | Commissioning | DH2200 | L3 | POD AC | BAB |  |
| DC1-COMP-L3-CX-2370 |  | DC1-COMP-F22-01 L3 Startup (2) | 2d | 2026-07-22 A | 2026-07-22 A | DC1-COMP-L3-CX-2360 | 100% | 2026-07-23 | 2026-07-24 | CAP | Commissioning | DH2200 | L3 | POD AC | BAB |  |
| DC1-COMP-L3-CX-2380 |  | DC1-COMP-F22-01 BMS/EPMS Programming (2) | 1d | 2026-07-22 A | 2026-07-22 A | DC1-COMP-L3-CX-2370 | 100% | 2026-07-27 | 2026-07-27 | PRM | Commissioning | DH2200 | L3 | POD AC | BAB |  |
| DC1-FAN-L3-CX-2360 |  | DC1-FAN-F22-01 FTE (2) | 1d | 2026-07-22 A | 2026-07-22 A | DC1-MOD1-L3-CX-2360 | 100% |  |  | ROS | Commissioning | DH2200 | L3 | POD AC | BAB |  |
| DC1-FAN-L3-CX-2370 |  | DC1-FAN-F22-01 L3 Startup (2) | 2d | 2026-07-22 A | 2026-07-22 A | DC1-FAN-L3-CX-2360 | 100% | 2026-07-23 | 2026-07-24 | FBB | Commissioning | DH2200 | L3 | POD AC | BAB | Vendor Only |
| DC1-FAN-L3-CX-2380 |  | DC1-FAN-F22-01 BMS/EPMS Programming (2) | 1d | 2026-07-22 A | 2026-07-22 A | DC1-FAN-L3-CX-2370 | 100% | 2026-07-27 | 2026-07-27 | PRM | Commissioning | DH2200 | L3 | POD AC | BAB |  |
|  | 07 | **DC1-DH2200 POD-AC UNITS R22 Cx L3** |  | 2026-07-22 | 2026-07-22 |  |  |  |  |  |  |  |  |  |  |  |
| DC1-COMP-L3-CX-2390 |  | DC1-COMP-R22-01 FTE (2) | 1d | 2026-07-22 A | 2026-07-22 A | DC1-MOD1-L3-CX-2390 | 100% |  |  | ROS | Commissioning | DH2200 | L3 | POD AC | BAB |  |
| DC1-COMP-L3-CX-2400 |  | DC1-COMP-R22-01 L3 Startup (2) | 2d | 2026-07-22 A | 2026-07-22 A | DC1-COMP-L3-CX-2390 | 100% | 2026-07-23 | 2026-07-24 | CAP | Commissioning | DH2200 | L3 | POD AC | BAB | Vendor Only |
| DC1-COMP-L3-CX-2410 |  | DC1-COMP-R22-01 BMS/EPMS Programming (2) | 1d | 2026-07-22 A | 2026-07-22 A | DC1-COMP-L3-CX-2400 | 100% | 2026-07-27 | 2026-07-27 | PRM | Commissioning | DH2200 | L3 | POD AC | BAB |  |
| DC1-FAN-L3-CX-2390 |  | DC1-FAN-R22-01 FTE (2) | 1d | 2026-07-22 A | 2026-07-22 A | DC1-MOD1-L3-CX-2390 | 100% |  |  | ROS | Commissioning | DH2200 | L3 | POD AC | BAB |  |
| DC1-FAN-L3-CX-2400 |  | DC1-FAN-R22-01 L3 Startup (2) | 2d | 2026-07-22 A | 2026-07-22 A | DC1-FAN-L3-CX-2390 | 100% | 2026-07-23 | 2026-07-24 | FBB | Commissioning | DH2200 | L3 | POD AC | BAB | Vendor Only |
| DC1-FAN-L3-CX-2410 |  | DC1-FAN-R22-01 BMS/EPMS Programming (2) | 1d | 2026-07-22 A | 2026-07-22 A | DC1-FAN-L3-CX-2400 | 100% | 2026-07-27 | 2026-07-27 | PRM | Commissioning | DH2200 | L3 | POD AC | BAB |  |
|  | 04 | **DC1-DH2200 BUS-R1X/BUS-R2X Cx L3** |  |  |  |  |  |  |  |  |  |  |  |  |  |  |
|  | 01 | **DC1-DH2200 BUS-R2 MAINTENANCE BUS DUCT Cx L3** |  |  |  |  |  |  |  |  |  |  |  |  |  |  |
|  | 02 | **DC1-DH2200 BUS-R1 CATCHER BUS DUCT Cx L3** |  |  |  |  |  |  |  |  |  |  |  |  |  |  |
|  | 05 | **DC1-DH2200 ATS Cx L3** |  |  |  |  |  |  |  |  |  |  |  |  |  |  |
|  | 01 | **DC1-DH2200 ATS-A22 Cx L3** |  |  |  |  |  |  |  |  |  |  |  |  |  |  |
|  | 01 | **DC1-DH2200-ATS-A22-01 Cx L3** |  |  |  |  |  |  |  |  |  |  |  |  |  |  |
|  | 02 | **DC1-DH2200-ATS-A22-02 Cx L3** |  |  |  |  |  |  |  |  |  |  |  |  |  |  |
|  | 03 | **DC1-DH2200-ATS-A22-03 Cx L3** |  |  |  |  |  |  |  |  |  |  |  |  |  |  |
|  | 04 | **DC1-DH2200-ATS-A22-04 Cx L3** |  |  |  |  |  |  |  |  |  |  |  |  |  |  |
|  | 05 | **DC1-DH2200-ATS-A22-05 Cx L3** |  |  |  |  |  |  |  |  |  |  |  |  |  |  |
|  | 06 | **DC1-DH2200-ATS-A22-06 Cx L3** |  |  |  |  |  |  |  |  |  |  |  |  |  |  |
|  | 02 | **DC1-DH2200 ATS-B22 Cx L3** |  |  |  |  |  |  |  |  |  |  |  |  |  |  |
|  | 01 | **DC1-DH2200-ATS-B22-01 Cx L3** |  |  |  |  |  |  |  |  |  |  |  |  |  |  |
|  | 02 | **DC1-DH2200-ATS-B22-02 Cx L3** |  |  |  |  |  |  |  |  |  |  |  |  |  |  |
|  | 03 | **DC1-DH2200-ATS-B22-03 Cx L3** |  |  |  |  |  |  |  |  |  |  |  |  |  |  |
|  | 04 | **DC1-DH2200-ATS-B22-04 Cx L3** |  |  |  |  |  |  |  |  |  |  |  |  |  |  |
|  | 05 | **DC1-DH2200-ATS-B22-05 Cx L3** |  |  |  |  |  |  |  |  |  |  |  |  |  |  |
|  | 06 | **DC1-DH2200-ATS-B22-06 Cx L3** |  |  |  |  |  |  |  |  |  |  |  |  |  |  |
|  | 03 | **DC1-DH2200 ATS-C22 Cx L3** |  |  |  |  |  |  |  |  |  |  |  |  |  |  |
|  | 01 | **DC1-DH2200-ATS-C22-01 Cx L3** |  |  |  |  |  |  |  |  |  |  |  |  |  |  |
|  | 02 | **DC1-DH2200-ATS-C22-02 Cx L3** |  |  |  |  |  |  |  |  |  |  |  |  |  |  |
|  | 03 | **DC1-DH2200-ATS-C22-03 Cx L3** |  |  |  |  |  |  |  |  |  |  |  |  |  |  |
|  | 04 | **DC1-DH2200-ATS-C22-04 Cx L3** |  |  |  |  |  |  |  |  |  |  |  |  |  |  |
|  | 05 | **DC1-DH2200-ATS-C22-05 Cx L3** |  |  |  |  |  |  |  |  |  |  |  |  |  |  |
|  | 06 | **DC1-DH2200-ATS-C22-06 Cx L3** |  |  |  |  |  |  |  |  |  |  |  |  |  |  |
|  | 04 | **DC1-DH2200 ATS-D22 Cx L3** |  |  |  |  |  |  |  |  |  |  |  |  |  |  |
|  | 01 | **DC1-DH2200-ATS-D22-01 Cx L3** |  |  |  |  |  |  |  |  |  |  |  |  |  |  |
|  | 02 | **DC1-DH2200-ATS-D22-02 Cx L3** |  |  |  |  |  |  |  |  |  |  |  |  |  |  |
|  | 03 | **DC1-DH2200-ATS-D22-03 Cx L3** |  |  |  |  |  |  |  |  |  |  |  |  |  |  |
|  | 04 | **DC1-DH2200-ATS-D22-04 Cx L3** |  |  |  |  |  |  |  |  |  |  |  |  |  |  |
|  | 05 | **DC1-DH2200-ATS-D22-05 Cx L3** |  |  |  |  |  |  |  |  |  |  |  |  |  |  |
|  | 06 | **DC1-DH2200-ATS-D22-06 Cx L3** |  |  |  |  |  |  |  |  |  |  |  |  |  |  |
|  | 05 | **DC1-DH2200 ATS-E22 Cx L3** |  |  |  |  |  |  |  |  |  |  |  |  |  |  |
|  | 01 | **DC1-DH2200-ATS-E22-01 Cx L3** |  |  |  |  |  |  |  |  |  |  |  |  |  |  |
|  | 02 | **DC1-DH2200-ATS-E22-02 Cx L3** |  |  |  |  |  |  |  |  |  |  |  |  |  |  |
|  | 03 | **DC1-DH2200-ATS-E22-03 Cx L3** |  |  |  |  |  |  |  |  |  |  |  |  |  |  |
|  | 04 | **DC1-DH2200-ATS-E22-04 Cx L3** |  |  |  |  |  |  |  |  |  |  |  |  |  |  |
|  | 05 | **DC1-DH2200-ATS-E22-05 Cx L3** |  |  |  |  |  |  |  |  |  |  |  |  |  |  |
|  | 06 | **DC1-DH2200-ATS-E22-06 Cx L3** |  |  |  |  |  |  |  |  |  |  |  |  |  |  |
|  | 06 | **DC1-DH2200 ATS-F22 Cx L3** |  |  |  |  |  |  |  |  |  |  |  |  |  |  |
|  | 01 | **DC1-DH2200-ATS-F22-01 Cx L3** |  |  |  |  |  |  |  |  |  |  |  |  |  |  |
|  | 02 | **DC1-DH2200-ATS-F22-02 Cx L3** |  |  |  |  |  |  |  |  |  |  |  |  |  |  |
|  | 03 | **DC1-DH2200-ATS-F22-03 Cx L3** |  |  |  |  |  |  |  |  |  |  |  |  |  |  |
|  | 04 | **DC1-DH2200-ATS-F22-04 Cx L3** |  |  |  |  |  |  |  |  |  |  |  |  |  |  |
|  | 05 | **DC1-DH2200-ATS-F22-05 Cx L3** |  |  |  |  |  |  |  |  |  |  |  |  |  |  |
|  | 06 | **DC1-DH2200-ATS-F22-06 Cx L3** |  |  |  |  |  |  |  |  |  |  |  |  |  |  |
|  | 06 | **DC1-DH2200 CODs Cx L3** |  |  |  |  |  |  |  |  |  |  |  |  |  |  |
|  | 01 | **DC1-DH2200-COD-A22 Cx L3** |  |  |  |  |  |  |  |  |  |  |  |  |  |  |
|  | 01 | **DC1-DH2200-COD-A22-01 Cx L3** |  |  |  |  |  |  |  |  |  |  |  |  |  |  |

| WBS | Activity |
| --- | --- |
| 02 | **DC1-DH2200-COD-A22-02 Cx L3** |
| 03 | **DC1-DH2200-COD-A22-03 Cx L3** |
| 04 | **DC1-DH2200-COD-A22-04 Cx L3** |
| 05 | **DC1-DH2200-COD-A22-05 Cx L3** |
| 06 | **DC1-DH2200-COD-A22-06 Cx L3** |
| 02 | **DC1-DH2200-COD-B22 Cx L3** |
| 01 | **DC1-DH2200-COD-B22-01 Cx L3** |
| 02 | **DC1-DH2200-COD-B22-02 Cx L3** |
| 03 | **DC1-DH2200-COD-B22-03 Cx L3** |
| 04 | **DC1-DH2200-COD-B22-04 Cx L3** |
| 05 | **DC1-DH2200-COD-B22-05 Cx L3** |
| 06 | **DC1-DH2200-COD-B22-06 Cx L3** |
| 03 | **DC1-DH2200-COD-C22 Cx L3** |
| 01 | **DC1-DH2200-COD-C22-01 Cx L3** |
| 02 | **DC1-DH2200-COD-C22-02 Cx L3** |
| 03 | **DC1-DH2200-COD-C22-03 Cx L3** |
| 04 | **DC1-DH2200-COD-C22-04 Cx L3** |
| 05 | **DC1-DH2200-COD-C22-05 Cx L3** |
| 06 | **DC1-DH2200-COD-C22-06 Cx L3** |
| 04 | **DC1-DH2200-COD-D22 Cx L3** |
| 01 | **DC1-DH2200-COD-D22-01 Cx L3** |
| 02 | **DC1-DH2200-COD-D22-02 Cx L3** |
| 03 | **DC1-DH2200-COD-D22-03 Cx L3** |
| 04 | **DC1-DH2200-COD-D22-04 Cx L3** |
| 05 | **DC1-DH2200-COD-D22-05 Cx L3** |
| 06 | **DC1-DH2200-COD-D22-06 Cx L3** |
| 05 | **DC1-DH2200-COD-E22 Cx L3** |
| 01 | **DC1-DH2200-COD-E22-01 Cx L3** |
| 02 | **DC1-DH2200-COD-E22-02 Cx L3** |
| 03 | **DC1-DH2200-COD-E22-03 Cx L3** |
| 04 | **DC1-DH2200-COD-E22-04 Cx L3** |
| 05 | **DC1-DH2200-COD-E22-05 Cx L3** |
| 06 | **DC1-DH2200-COD-E22-06 Cx L3** |
| 06 | **DC1-DH2200-COD-F22 Cx L3** |
| 01 | **DC1-DH2200-COD-F22-01 Cx L3** |
| 02 | **DC1-DH2200-COD-F22-02 Cx L3** |
| 03 | **DC1-DH2200-COD-F22-03 Cx L3** |
| 04 | **DC1-DH2200-COD-F22-04 Cx L3** |
| 05 | **DC1-DH2200-COD-F22-05 Cx L3** |
| 06 | **DC1-DH2200-COD-F22-06 Cx L3** |
| 07 | **DC1-DH2200 RPPs Cx L3** |
| 01 | **DC1-DH2200-RPP-A22 Cx L3** |
| 01 | **DC1-DH2200-RPP-A22-01 Cx L3** |
| 02 | **DC1-DH2200-RPP-A22-02 Cx L3** |
| 03 | **DC1-DH2200-RPP-A22-03 Cx L3** |
| 04 | **DC1-DH2200-RPP-A22-04 Cx L3** |
| 05 | **DC1-DH2200-RPP-A22-05 Cx L3** |
| 06 | **DC1-DH2200-RPP-A22-06 Cx L3** |
| 02 | **DC1-DH2200-RPP-B22 Cx L3** |
| 01 | **DC1-DH2200-RPP-B22-01 Cx L3** |
| 02 | **DC1-DH2200-RPP-B22-02 Cx L3** |
| 03 | **DC1-DH2200-RPP-B22-03 Cx L3** |
| 04 | **DC1-DH2200-RPP-B22-04 Cx L3** |
| 05 | **DC1-DH2200-RPP-B22-05 Cx L3** |
| 06 | **DC1-DH2200-RPP-B22-06 Cx L3** |
| 03 | **DC1-DH2200-RPP-C22 Cx L3** |
| 01 | **DC1-DH2200-RPP-C22-01 Cx L3** |
| 02 | **DC1-DH2200-RPP-C22-02 Cx L3** |
| 03 | **DC1-DH2200-RPP-C22-03 Cx L3** |
| 04 | **DC1-DH2200-RPP-C22-04 Cx L3** |
| 05 | **DC1-DH2200-RPP-C22-05 Cx L3** |
| 06 | **DC1-DH2200-RPP-C22-06 Cx L3** |
| 04 | **DC1-DH2200-RPP-D22 Cx L3** |
| 01 | **DC1-DH2200-RPP-D22-01 Cx L3** |
| 02 | **DC1-DH2200-RPP-D22-02 Cx L3** |
| 03 | **DC1-DH2200-RPP-D22-03 Cx L3** |
| 04 | **DC1-DH2200-RPP-D22-04 Cx L3** |
| 05 | **DC1-DH2200-RPP-D22-05 Cx L3** |
| 06 | **DC1-DH2200-RPP-D22-06 Cx L3** |
| 05 | **DC1-DH2200-RPP-E22 Cx L3** |

| WBS | Activity |
| --- | --- |
| 01 | **DC1-DH2200-RPP-E22-01 Cx L3** |
| 02 | **DC1-DH2200-RPP-E22-02 Cx L3** |
| 03 | **DC1-DH2200-RPP-E22-03 Cx L3** |
| 04 | **DC1-DH2200-RPP-E22-04 Cx L3** |
| 05 | **DC1-DH2200-RPP-E22-05 Cx L3** |
| 06 | **DC1-DH2200-RPP-E22-06 Cx L3** |
| 06 | **DC1-DH2200-RPP-F22 Cx L3** |
| 01 | **DC1-DH2200-RPP-F22-01 Cx L3** |
| 02 | **DC1-DH2200-RPP-F22-02 Cx L3** |
| 03 | **DC1-DH2200-RPP-F22-03 Cx L3** |
| 04 | **DC1-DH2200-RPP-F22-04 Cx L3** |
| 05 | **DC1-DH2200-RPP-F22-05 Cx L3** |
| 06 | **DC1-DH2200-RPP-F22-06 Cx L3** |
| 08 | **DC1-DH2200 MOD-02 Cx L3** |
| 01 | **DC1-DH2200 MOD-A22-02 Cx L3** |
| 02 | **DC1-DH2200 MOD-B22-02 Cx L3** |
| 03 | **DC1-DH2200 MOD-C22-02 Cx L3** |
| 04 | **DC1-DH2200 MOD-D22-02 Cx L3** |
| 05 | **DC1-DH2200 MOD-E22-02 Cx L3** |
| 06 | **DC1-DH2200 MOD-F22-02 Cx L3** |
| 07 | **DC1-DH2200 MOD-R22-02 Cx L3** |
| 09 | **DC1-DH2200 MOD-03 Cx L3** |
| 01 | **DC1-DH2200 MOD-A22-03 Cx L3** |
| 02 | **DC1-DH2200 MOD-B22-03 Cx L3** |
| 03 | **DC1-DH2200 MOD-C22-03 Cx L3** |
| 04 | **DC1-DH2200 MOD-D22-03 Cx L3** |
| 05 | **DC1-DH2200 MOD-E22-03 Cx L3** |
| 06 | **DC1-DH2200 MOD-F22-03 Cx L3** |
| 07 | **DC1-DH2200 MOD-R22-03 Cx L3** |
| 10 | **DC1-DH2200 CDUs Cx L3** |
| 01 | **DC1-CDU-DH2200-01 Cx L3** |
| 02 | **DC1-CDU-DH2200-02 Cx L3** |
| 03 | **DC1-CDU-DH2200-03 Cx L3** |
| 04 | **DC1-CDU-DH2200-04 Cx L3** |
| 05 | **DC1-CDU-DH2200-05 Cx L3** |
| 06 | **DC1-CDU-DH2200-06 Cx L3** |
| 07 | **DC1-CDU-DH2200-07 Cx L3** |
| 08 | **DC1-CDU-DH2200-08 Cx L3** |
| 09 | **DC1-CDU-DH2200-09 Cx L3** |
| 10 | **DC1-CDU-DH220010 Cx L3** |
| 11 | **DC1-CDU-DH220011 Cx L3** |
| 12 | **DC1-CDU-DH2200-12 Cx L3** |
| 13 | **DC1-CDU-DH2200-13 Cx L3** |
| 14 | **DC1-CDU-DH2200-14 Cx L3** |
| 15 | **DC1-CDU-DH2200-15 Cx L3** |
| 16 | **DC1-CDU-DH2200-16 Cx L3** |
| 17 | **DC1-CDU-DH2200-17 Cx L3** |
| 18 | **DC1-CDU-DH2200-18 Cx L3** |
| 11 | **DC1-DH2200 CHLR-1RT40 Cx L3** |
| 01 | **DC1-DH2200 CHLR-1RT40-A22 Cx L3** |
| 02 | **DC1-DH2200 CHLR-1RT40-B22 Cx L3** |
| 03 | **DC1-DH2200 CHLR-1RT40-C22 Cx L3** |
| 04 | **DC1-DH2200 CHLR-1RT40-D22 Cx L3** |
| 05 | **DC1-DH2200 CHLR-1RT40-E22 Cx L3** |
| 06 | **DC1-DH2200 CHLR-1RT40-F22 Cx L3** |
| 07 | **DC1-DH2200 CHLR-1RT40-R22 Cx L3** |
| 12 | **DC1-DH2200 CHWP-1RT40 Cx L3** |
| 01 | **DC1-DH2200 CHWP-1RT40-A22 Cx L3** |
| 02 | **DC1-DH2200 CHWP-1RT40-B22 Cx L3** |
| 03 | **DC1-DH2200 CHWP-1RT40-C22 Cx L3** |
| 04 | **DC1-DH2200 CHWP-1RT40-D22 Cx L3** |
| 05 | **DC1-DH2200 CHWP-1RT40-E22 Cx L3** |
| 06 | **DC1-DH2200 CHWP-1RT40-F22 Cx L3** |
| 07 | **DC1-DH2200 CHWP-1RT40-R22 Cx L3** |
| 13 | **DC1-DH2200 CRAH/DOAS Cx L3** |
| 01 | **DH2200 CRAH-DH-01 L3** |
| 02 | **DH2200 CRAH-DH-02 L3** |
| 03 | **DH2200 CRAH-DH-03 L3** |
| 04 | **DH2200 CRAH-DH-04 L3** |
| 05 | **DH2200 CRAH-DH-05 L3** |

| ID | WBS | Activity | Duration | Start | Finish | Predecessors | Complete | Planned start | Planned finish | Vendor Responsible Party | Layton Discipline | Location | CX Level | Equipment | Contract |
| --- | --- | --- | --- | --- | --- | --- | --- | --- | --- | --- | --- | --- | --- | --- | --- |
|  | 06 | **DH2200 CRAH-DH-06 L3** |  |  |  |  |  |  |  |  |  |  |  |  |  |
|  | 07 | **DH2200 CRAH-DH-07 L3** |  |  |  |  |  |  |  |  |  |  |  |  |  |
|  | 08 | **DH2200 CRAH-DH-08 L3** |  |  |  |  |  |  |  |  |  |  |  |  |  |
|  | 09 | **DH2200 CRAH-DH-09 L3** |  |  |  |  |  |  |  |  |  |  |  |  |  |
|  | 10 | **DH2200 CRAH-DH-10 L3** |  |  |  |  |  |  |  |  |  |  |  |  |  |
|  | 11 | **DH2200 CRAH-DH-11 L3** |  |  |  |  |  |  |  |  |  |  |  |  |  |
|  | 12 | **DH2200 CRAH-DH-12 L3** |  |  |  |  |  |  |  |  |  |  |  |  |  |
|  | 13 | **DH2200 CRAH-DH-13 L3** |  |  |  |  |  |  |  |  |  |  |  |  |  |
|  | 14 | **DH2200 CRAH-DH-14 L3** |  |  |  |  |  |  |  |  |  |  |  |  |  |
|  | 15 | **DH2200 CRAH-DH-15 L3** |  |  |  |  |  |  |  |  |  |  |  |  |  |
|  | 16 | **DH2200 CRAH-DH-16 L3** |  |  |  |  |  |  |  |  |  |  |  |  |  |
|  | 17 | **DH2200 CRAH-DH-17 L3** |  |  |  |  |  |  |  |  |  |  |  |  |  |
|  | 18 | **DH2200 CRAH-DH-18 L3** |  |  |  |  |  |  |  |  |  |  |  |  |  |
|  | 19 | **DH2200 CRAH-DH-19 L3** |  |  |  |  |  |  |  |  |  |  |  |  |  |
|  | 20 | **DH2200 CRAH-DH-20 L3** |  |  |  |  |  |  |  |  |  |  |  |  |  |
|  | 21 | **DH2200 CRAH-DH-21 L3** |  |  |  |  |  |  |  |  |  |  |  |  |  |
|  | 22 | **DH2200 CRAH-DH-22 L3** |  |  |  |  |  |  |  |  |  |  |  |  |  |
|  | 23 | **DH2200 CRAH-DH-23 L3** |  |  |  |  |  |  |  |  |  |  |  |  |  |
|  | 24 | **DH2200 CRAH-DH-24 L3** |  |  |  |  |  |  |  |  |  |  |  |  |  |
|  | 25 | **DH2200 CRAH-DH-25 L3** |  |  |  |  |  |  |  |  |  |  |  |  |  |
|  | 26 | **DH2200 CRAH-DH-26 L3** |  |  |  |  |  |  |  |  |  |  |  |  |  |
|  | 27 | **DH2200 CRAH-DH-27 L3** |  |  |  |  |  |  |  |  |  |  |  |  |  |
|  | 28 | **DH2200 CRAH-DH-28 L3** |  |  |  |  |  |  |  |  |  |  |  |  |  |
|  | 29 | **DH2200 CRAH-EG-01 L3** |  |  |  |  |  |  |  |  |  |  |  |  |  |
|  | 30 | **DH2200 CRAH-EG-02 L3** |  |  |  |  |  |  |  |  |  |  |  |  |  |
|  | 31 | **DH2200 CRAH-EG-03 L3** |  |  |  |  |  |  |  |  |  |  |  |  |  |
|  | 32 | **DH2200 CRAH-EG-04 L3** |  |  |  |  |  |  |  |  |  |  |  |  |  |
|  | 33 | **DC1-DH2200-DOAS-RT-01 L3** |  |  |  |  |  |  |  |  |  |  |  |  |  |
|  | 34 | **DC1-DH2200-DOAS-RT-02 L3** |  |  |  |  |  |  |  |  |  |  |  |  |  |
|  | 14 | **DC1-DH2200 LOADBANK** |  |  |  |  |  |  |  |  |  |  |  |  |  |
|  | 15 | **DC1-DH2200 TAB** |  |  |  |  |  |  |  |  |  |  |  |  |  |
|  | 04 | **Data Hall 2200 Cx L4** |  |  |  |  |  |  |  |  |  |  |  |  |  |
|  | 1 | **Data Hall 2200 Generator Burn In** |  |  |  |  |  |  |  |  |  |  |  |  |  |
|  | 02 | **Data Hall 2200 Mechanical Cx L4** |  |  |  |  |  |  |  |  |  |  |  |  |  |
|  | 01 | **Data Hall 2200 Electrical Cx L4** |  |  |  |  |  |  |  |  |  |  |  |  |  |
|  | 05 | **Data Hall 2200 Cx L5** |  |  |  |  |  |  |  |  |  |  |  |  |  |
|  | 05 | **Data Hall 1200 Commissioning** |  | 2026-01-09 | 2026-07-30 |  |  |  |  |  |  |  |  |  |  |
|  | 02 | **Data Hall 1200 Cx L2** |  | 2026-01-09 | 2026-07-23 |  |  |  |  |  |  |  |  |  |  |
|  | 01 | **DC1-DH1200 Generators Cx L2** |  | 2026-06-25 | 2026-07-23 |  |  |  |  |  |  |  |  |  |  |
| DC1-GEN-L2-2140 |  | DH1200 GEN-A12 L2 Checklist | 3d | 2026-06-25 A | 2026-07-23 A | QTS-1001210 FF, QTS-1007840, QTS-1009190 FF | 100% | 2026-07-02 | 2026-07-07 | HLT | Commissioning | DH1200 | L2 | GEN | BAB |
| DC1-GEN-L2-2150 |  | DH1200 GEN-B12 L2 Checklist | 3d | 2026-06-25 A | 2026-07-23 A | QTS-1001210 FF, QTS-1007930, QTS-1009190 FF | 100% | 2026-07-02 | 2026-07-07 | HLT | Commissioning | DH1200 | L2 | GEN | BAB |
| DC1-GEN-L2-2160 |  | DH1200 GEN-C12 L2 Checklist | 3d | 2026-06-25 A | 2026-07-23 A | QTS-1001210 FF, QTS-1007950, QTS-1009190 FF | 100% | 2026-07-02 | 2026-07-07 | HLT | Commissioning | DH1200 | L2 | GEN | BAB |
| DC1-GEN-L2-2170 |  | DH1200 GEN-D12 L2 Checklist | 3d | 2026-06-25 A | 2026-07-23 A | QTS-1001210 FF, QTS-1007970, QTS-1009190 FF | 100% | 2026-07-02 | 2026-07-07 | HLT | Commissioning | DH1200 | L2 | GEN | BAB |
| DC1-GEN-L2-2180 |  | DH1200 GEN-E12 L2 Checklist | 3d | 2026-06-25 A | 2026-07-23 A | QTS-1001210 FF, QTS-1007990, QTS-1009190 FF | 100% | 2026-07-02 | 2026-07-07 | HLT | Commissioning | DH1200 | L2 | GEN | BAB |
| DC1-GEN-L2-2190 |  | DH1200 GEN-F12 L2 Checklist | 3d | 2026-06-25 A | 2026-07-23 A | QTS-1001210 FF, QTS-1008010, QTS-1009190 FF | 100% | 2026-07-02 | 2026-07-07 | HLT | Commissioning | DH1200 | L2 | GEN | BAB |
| DC1-GEN-L2-2200 |  | DH1200 GEN-R12 L2 Checklist | 3d | 2026-06-25 A | 2026-07-23 A | QTS-1001210 FF, QTS-1008030, QTS-1009190 FF | 100% | 2026-07-02 | 2026-07-07 | HLT | Commissioning | DH1200 | L2 | GEN | BAB |

Notes:
- DC1-GEN-L2-2140: Steps: EC Installation Checklist (done); MC Installation Checklist (done); CC Installation Checklist (done); Vendor Pre-Energization Checklist (done); GC Installation Checklist (done); CXA Pre-Energization Inspection; PEI/Clean-Walk
- DC1-GEN-L2-2150: Steps: EC Installation Checklist (done); MC Installation Checklist (done); CC Installation Checklist (done); Vendor Pre-Energization Checklist (done); GC Installation Checklist (done); CXA Pre-Energization Inspection; PEI/Clean-Walk
- DC1-GEN-L2-2160: Steps: EC Installation Checklist (done); MC Installation Checklist (done); CC Installation Checklist (done); Vendor Pre-Energization Checklist (done); GC Installation Checklist (done); CXA Pre-Energization Inspection; PEI/Clean-Walk
- DC1-GEN-L2-2170: Steps: EC Installation Checklist (done); MC Installation Checklist (done); CC Installation Checklist (done); Vendor Pre-Energization Checklist (done); GC Installation Checklist (done); CXA Pre-Energization Inspection; PEI/Clean-Walk
- DC1-GEN-L2-2180: Steps: EC Installation Checklist (done); MC Installation Checklist (done); CC Installation Checklist (done); Vendor Pre-Energization Checklist (done); GC Installation Checklist (done); CXA Pre-Energization Inspection; PEI/Clean-Walk
- DC1-GEN-L2-2190: Steps: EC Installation Checklist (done); MC Installation Checklist (done); CC Installation Checklist (done); Vendor Pre-Energization Checklist (done); GC Installation Checklist; CXA Pre-Energization Inspection; PEI/Clean-Walk
- DC1-GEN-L2-2200: Steps: EC Installation Checklist (done); MC Installation Checklist; CC Installation Checklist; Vendor Pre-Energization Checklist (done); GC Installation Checklist (done); CXA Pre-Energization Inspection; PEI/Clean-Walk

| ID | WBS | Activity | Duration | Start | Finish | Predecessors | Complete | Planned start | Planned finish | Vendor Responsible Party | Layton Discipline | Location | CX Level | Equipment | Layton Super | Allucent CSI Group |
| --- | --- | --- | --- | --- | --- | --- | --- | --- | --- | --- | --- | --- | --- | --- | --- | --- |
|  | 02 | **DC1-DH1200 MV XFMRs Cx L2** |  | 2026-01-09 | 2026-06-26 |  |  |  |  |  |  |  |  |  |  |  |
| DC1-XFMR-L2-2140 |  | DH1200 XFMR-A12 L2 Checklist | 3d | 2026-01-09 A | 2026-06-26 A | DC1-XFMR-L2-2200 FF, QTS-1007830 FF, QTS-1007310 | 100% | 2026-01-09 | 2026-01-13 | VTC | Commissioning | DH1200 | L2 | XFMR | Travis Todaro |  |
| DC1-XFMR-L2-2190 |  | DH1200 XFMR-F12 L2 Checklist | 3d | 2026-01-15 A | 2026-06-26 A | DC1-XFMR-L2-2140 SS, QTS-1008000 FF | 100% | 2026-01-21 | 2026-01-23 | VTC | Commissioning | DH1200 | L2 | XFMR | Travis Todaro |  |
| DC1-XFMR-L2-2150 |  | DH1200 XFMR-B12 L2 Checklist | 3d | 2026-01-21 A | 2026-06-26 A | DC1-XFMR-L2-2140 SS+2d, QTS-1007920 FF | 100% | 2026-01-21 | 2026-01-23 | VTC | Commissioning | DH1200 | L2 | XFMR | Travis Todaro |  |
| DC1-XFMR-L2-2170 |  | DH1200 XFMR-D12 L2 Checklist | 3d | 2026-01-21 A | 2026-06-26 A | DC1-XFMR-L2-2150 SS, QTS-1007960 FF | 100% | 2026-01-21 | 2026-01-23 | VTC | Commissioning | DH1200 | L2 | XFMR | Travis Todaro |  |
| DC1-XFMR-L2-2180 |  | DH1200 XFMR-E12 L2 Checklist | 3d | 2026-01-21 A | 2026-06-26 A | DC1-XFMR-L2-2170 SS, QTS-1007980 FF | 100% | 2026-01-21 | 2026-01-23 | VTC | Commissioning | DH1200 | L2 | XFMR | Travis Todaro |  |
| DC1-XFMR-L2-2160 |  | DH1200 XFMR-C12 L2 Checklist | 9d | 2026-06-03 A | 2026-06-26 A | DC1-XFMR-L2-2150 SS+2d, QTS-1007940 FF | 100% | 2026-06-24 | 2026-07-07 | VTC | Commissioning | DH1200 | L2 | XFMR | Travis Todaro |  |
| DC1-XFMR-L2-2200 |  | DH1200 XFMR-R12 L2 Checklist | 3d | 2026-06-03 A | 2026-06-26 A | QTS-1008020 | 100% | 2026-06-24 | 2026-06-26 | VTC | Commissioning | DH1200 | L2 | XFMR | Travis Todaro |  |
|  | 03 | **DC1-DH1200 PODS** |  | 2026-06-15 | 2026-07-23 |  |  |  |  |  |  |  |  |  |  |  |
|  | 01 | **DC1-DH1200 SWDs Cx L2** |  | 2026-06-25 | 2026-06-29 |  |  |  |  |  |  |  |  |  |  |  |
| DC1-SWD-L2-2140 |  | DH1200 SWD-A12 L2 Checklist | 3d | 2026-06-25 A | 2026-06-29 A | QTS-1007850 | 100% |  |  | SIE | Commissioning | DH1200 | L2 | SWD | Travis Todaro |  |
| DC1-SWD-L2-2150 |  | DH1200 SWD-B12 L2 Checklist | 3d | 2026-06-25 A | 2026-06-29 A | QTS-1007860 | 100% |  |  | SIE | Commissioning | DH1200 | L2 | SWD | Travis Todaro |  |
| DC1-SWD-L2-2160 |  | DH1200 SWD-C12 L2 Checklist | 3d | 2026-06-25 A | 2026-06-29 A | QTS-1007870 | 100% |  |  | SIE | Commissioning | DH1200 | L2 | SWD | Travis Todaro |  |
| DC1-SWD-L2-2170 |  | DH1200 SWD-D12 L2 Checklist | 3d | 2026-06-25 A | 2026-06-29 A | QTS-1007880 | 100% |  |  | SIE | Commissioning | DH1200 | L2 | SWD | Travis Todaro |  |
| DC1-SWD-L2-2180 |  | DH1200 SWD-E12 L2 Checklist | 3d | 2026-06-25 A | 2026-06-29 A | QTS-1007890 | 100% |  |  | SIE | Commissioning | DH1200 | L2 | SWD | Travis Todaro |  |
| DC1-SWD-L2-2190 |  | DH1200 SWD-F12 L2 Checklist | 3d | 2026-06-25 A | 2026-06-29 A | QTS-1007900 | 100% |  |  | SIE | Commissioning | DH1200 | L2 | SWD | Travis Todaro |  |
| DC1-SWD-L2-2200 |  | DH1200 SWD-R12 L2 Checklist | 3d | 2026-06-25 A | 2026-06-29 A | QTS-1007910 | 100% |  |  | SIE | Commissioning | DH1200 | L2 | SWD | Travis Todaro |  |
|  | 02 | **DC1-DH1200 MOD-01s Cx L2** |  | 2026-06-15 | 2026-07-10 |  |  |  |  |  |  |  |  |  |  |  |
| DC1-MOD01-L2-2140 |  | DH1200 MOD-A12-01 L2 Checklist | 3d | 2026-06-15 A | 2026-06-18 A | QTS-13561, QTS-1007850, DC1-XFMR-L2-2140, QTS - 26611 | 100% | 2026-07-08 | 2026-07-10 | PHE | Commissioning | DH1200 | L2 | MOD-01 | Travis Todaro | 01ADMIN |
| DC1-MOD01-L2-2150 |  | DH1200 MOD-B12-01 L2 Checklist | 3d | 2026-06-15 A | 2026-06-18 A | DC1-MOD01-L2-2140 SS, QTS-1007860, DC1-XFMR-L2-2150, QTS - 26611 | 100% | 2026-07-08 | 2026-07-10 | PHE | Commissioning | DH1200 | L2 | MOD-01 | Travis Todaro | 01ADMIN |
| DC1-MOD01-L2-2160 |  | DH1200 MOD-C12-01 L2 Checklist | 3d | 2026-06-15 A | 2026-07-10 A | QTS-1007870, DC1-XFMR-L2-2160, QTS - 26611 | 100% | 2026-07-08 | 2026-07-10 | PHE | Commissioning | DH1200 | L2 | MOD-01 | Travis Todaro |  |
| DC1-MOD01-L2-2170 |  | DH1200 MOD-D12-01 L2 Checklist | 3d | 2026-06-15 A | 2026-06-18 A | QTS-1007880, DC1-XFMR-L2-2170, QTS - 26611 | 100% | 2026-07-08 | 2026-07-10 | PHE | Commissioning | DH1200 | L2 | MOD-01 | Travis Todaro |  |
| DC1-MOD01-L2-2180 |  | DH1200 MOD-E12-01 L2 Checklist | 3d | 2026-06-15 A | 2026-07-10 A | QTS-1007890, DC1-XFMR-L2-2180, QTS - 26611 | 100% | 2026-07-08 | 2026-07-10 | PHE | Commissioning | DH1200 | L2 | MOD-01 | Travis Todaro |  |
| DC1-MOD01-L2-2190 |  | DH1200 MOD-F12-01 L2 Checklist | 3d | 2026-06-15 A | 2026-06-18 A | QTS-1007900, DC1-XFMR-L2-2190, QTS - 26611 | 100% | 2026-07-08 | 2026-07-10 | PHE | Commissioning | DH1200 | L2 | MOD-01 | Travis Todaro |  |
| DC1-MOD01-L2-2200 |  | DH1200 MOD-R12-01 L2 Checklist | 3d | 2026-06-15 A | 2026-06-18 A | QTS-1007910, DC1-XFMR-L2-2200, QTS - 26611 | 100% | 2026-06-29 | 2026-07-01 | PHE | Commissioning | DH1200 | L2 | MOD-01 | Travis Todaro |  |

Notes:
- DC1-XFMR-L2-2140: Steps: EC Installation Checklist; CC Installation Checklist; Vendor Pre-Energization Checklist (done); CXA Pre-Energization Inspection; PEI/Clean-Walk
- DC1-XFMR-L2-2190: Steps: EC Installation Checklist; CC Installation Checklist; Vendor Pre-Energization Checklist (done); CXA Pre-Energization Inspection; PEI/Clean-Walk
- DC1-XFMR-L2-2150: Steps: EC Installation Checklist; CC Installation Checklist; Vendor Pre-Energization Checklist (done); CXA Pre-Energization Inspection; PEI/Clean-Walk
- DC1-XFMR-L2-2170: Steps: EC Installation Checklist; CC Installation Checklist; Vendor Pre-Energization Checklist (done); CXA Pre-Energization Inspection; PEI/Clean-Walk
- DC1-XFMR-L2-2180: Steps: EC Installation Checklist; CC Installation Checklist; Vendor Pre-Energization Checklist (done); CXA Pre-Energization Inspection; PEI/Clean-Walk
- DC1-XFMR-L2-2160: Steps: EC Installation Checklist; CC Installation Checklist; Vendor Pre-Energization Checklist; CXA Pre-Energization Inspection; PEI/Clean-Walk
- DC1-XFMR-L2-2200: Steps: EC Installation Checklist; CC Installation Checklist; Vendor Pre-Energization Checklist; CXA Pre-Energization Inspection; PEI/Clean-Walk
- DC1-SWD-L2-2140: Steps: EC Pre-Energization Checklist; Vendor Pre-Energization Checklist; CXA Pre-Energization Inspection; PEI/Clean-Walk
- DC1-SWD-L2-2150: Steps: EC Pre-Energization Checklist; Vendor Pre-Energization Checklist; CXA Pre-Energization Inspection; PEI/Clean-Walk
- DC1-SWD-L2-2160: Steps: EC Pre-Energization Checklist; Vendor Pre-Energization Checklist; CXA Pre-Energization Inspection; PEI/Clean-Walk
- DC1-SWD-L2-2170: Steps: EC Pre-Energization Checklist; Vendor Pre-Energization Checklist; CXA Pre-Energization Inspection; PEI/Clean-Walk
- DC1-SWD-L2-2180: Steps: EC Pre-Energization Checklist; Vendor Pre-Energization Checklist; CXA Pre-Energization Inspection; PEI/Clean-Walk
- DC1-SWD-L2-2190: Steps: EC Pre-Energization Checklist; Vendor Pre-Energization Checklist; CXA Pre-Energization Inspection; PEI/Clean-Walk
- DC1-SWD-L2-2200: Steps: EC Pre-Energization Checklist; Vendor Pre-Energization Checklist; CXA Pre-Energization Inspection; PEI/Clean-Walk
- DC1-MOD01-L2-2140: Steps: Vendor Pre-Energization Checklist; CXA Pre-Energization Inspection; PEI/Clean-Walk
- DC1-MOD01-L2-2150: Steps: Vendor Pre-Energization Checklist; CXA Pre-Energization Inspection; PEI/Clean-Walk
- DC1-MOD01-L2-2160: Steps: Vendor Pre-Energization Checklist (done); CXA Pre-Energization Inspection (done); PEI/Clean-Walk (done)
- DC1-MOD01-L2-2170: Steps: Vendor Pre-Energization Checklist; CXA Pre-Energization Inspection; PEI/Clean-Walk
- DC1-MOD01-L2-2180: Steps: Vendor Pre-Energization Checklist (done); CXA Pre-Energization Inspection (done); PEI/Clean-Walk (done)
- DC1-MOD01-L2-2190: Steps: Vendor Pre-Energization Checklist; CXA Pre-Energization Inspection; PEI/Clean-Walk
- DC1-MOD01-L2-2200: Steps: Vendor Pre-Energization Checklist; CXA Pre-Energization Inspection; PEI/Clean-Walk

| ID | WBS | Activity | Duration | Start | Finish | Predecessors | Complete | Planned start | Planned finish | Vendor Responsible Party | Allucent CSI Group | Layton Discipline | Location | CX Level | Equipment | Contract |
| --- | --- | --- | --- | --- | --- | --- | --- | --- | --- | --- | --- | --- | --- | --- | --- | --- |
|  | 03 | **DC1-DH1200 UPS-M Cx L2** |  | 2026-07-08 | 2026-07-23 |  |  |  |  |  |  |  |  |  |  |  |
| DC1-UPS-M-L2-2140 |  | DH1200 UPS-M-A12 L2 Checklist | 3d | 2026-07-08 A | 2026-07-23 A | DC1-UPS-M-L2-2200 SS, DC1-MOD01-L2-2140 SS, DC1-MOD01-L2-2140 FF | 100% | 2026-07-21 | 2026-07-23 | VER | 01ADMIN | Commissioning | DH1200 | L2 | UPS | BAB |
| DC1-UPS-M-L2-2150 |  | DH1200 UPS-M-B12 L2 Checklist | 3d | 2026-07-08 A | 2026-07-23 A | DC1-UPS-M-L2-2140 SS, DC1-MOD01-L2-2150 SS, DC1-MOD01-L2-2150 FF | 100% | 2026-07-21 | 2026-07-23 | VER | 01ADMIN | Commissioning | DH1200 | L2 | UPS | BAB |
| DC1-UPS-M-L2-2160 |  | DH1200 UPS-M-C12 L2 Checklist | 3d | 2026-07-08 A | 2026-07-23 A | DC1-MOD01-L2-2160 SS, DC1-MOD01-L2-2160 FF | 100% | 2026-07-21 | 2026-07-23 | VER |  | Commissioning | DH1200 | L2 | UPS | BAB |
| DC1-UPS-M-L2-2170 |  | DH1200 UPS-M-D12 L2 Checklist | 3d | 2026-07-08 A | 2026-07-23 A | QTS-43811, DC1-MOD01-L2-2170 SS, DC1-MOD01-L2-2170 FF | 100% | 2026-07-21 | 2026-07-23 | VER |  | Commissioning | DH1200 | L2 | UPS | BAB |
| DC1-UPS-M-L2-2180 |  | DH1200 UPS-M-E12 L2 Checklist | 3d | 2026-07-08 A | 2026-07-23 A | DC1-MOD01-L2-2180 SS, DC1-MOD01-L2-2180 FF | 100% | 2026-07-21 | 2026-07-23 | VER |  | Commissioning | DH1200 | L2 | UPS | BAB |
| DC1-UPS-M-L2-2190 |  | DH1200 UPS-M-F12 L2 Checklist | 3d | 2026-07-08 A | 2026-07-23 A | DC1-MOD01-L2-2190 SS, DC1-MOD01-L2-2190 FF | 100% | 2026-07-21 | 2026-07-23 | VER |  | Commissioning | DH1200 | L2 | UPS | BAB |
| DC1-UPS-M-L2-2200 |  | DH1200 UPS-M-R12 L2 Checklist | 3d | 2026-07-08 A | 2026-07-23 A | QTS-43771, QTS-13561, QTS-18971, DC1-MOD01-L2-2200 SS, DC1-MOD01-L2-2200 FF | 100% | 2026-07-21 | 2026-07-23 | VER |  | Commissioning | DH1200 | L2 | UPS | BAB |
|  | 04 | **DC1-DH1200 COMPRESSOR/FAN UNITS Cx L2** |  |  |  |  |  |  |  |  |  |  |  |  |  |  |
|  | 01 | **DC1-DH1200 POD-AC UNITS A12 Cx L2** |  |  |  |  |  |  |  |  |  |  |  |  |  |  |
|  | 02 | **DC1-DH1200 POD-AC UNITS B12 Cx L2** |  |  |  |  |  |  |  |  |  |  |  |  |  |  |
|  | 03 | **DC1-DH1200 POD-AC UNITS C12 Cx L2** |  |  |  |  |  |  |  |  |  |  |  |  |  |  |
|  | 04 | **DC1-DH1200 POD-AC UNITS D12 Cx L2** |  |  |  |  |  |  |  |  |  |  |  |  |  |  |
|  | 05 | **DC1-DH1200 POD-AC UNITS E12 Cx L2** |  |  |  |  |  |  |  |  |  |  |  |  |  |  |
|  | 06 | **DC1-DH1200 POD-AC UNITS F12 Cx L2** |  |  |  |  |  |  |  |  |  |  |  |  |  |  |
|  | 07 | **DC1-DH1200 POD-AC UNITS R12 Cx L2** |  |  |  |  |  |  |  |  |  |  |  |  |  |  |
|  | 04 | **DC1-DH1200 BUS-R1X/BUS-R2X Cx L2** |  |  |  |  |  |  |  |  |  |  |  |  |  |  |
|  | 05 | **DC1-DH1200 ATS Cx L2** |  |  |  |  |  |  |  |  |  |  |  |  |  |  |
|  | 01 | **DC1-DH1200 ATS-A12 Cx L2** |  |  |  |  |  |  |  |  |  |  |  |  |  |  |
|  | 02 | **DC1-DH1200 ATS-B12 Cx L2** |  |  |  |  |  |  |  |  |  |  |  |  |  |  |
|  | 03 | **DC1-DH1200 ATS-C12 Cx L2** |  |  |  |  |  |  |  |  |  |  |  |  |  |  |
|  | 04 | **DC1-DH1200 ATS-D12 Cx L2** |  |  |  |  |  |  |  |  |  |  |  |  |  |  |
|  | 05 | **DC1-DH1200 ATS-E12 Cx L2** |  |  |  |  |  |  |  |  |  |  |  |  |  |  |
|  | 06 | **DC1-DH1200 ATS-F12 Cx L2** |  |  |  |  |  |  |  |  |  |  |  |  |  |  |
|  | 06 | **DC1-DH1200 CODs Cx L2** |  |  |  |  |  |  |  |  |  |  |  |  |  |  |
|  | 01 | **DC1-DH1200 COD A12 Cx L2** |  |  |  |  |  |  |  |  |  |  |  |  |  |  |
|  | 02 | **DC1-DH1200 COD B12 Cx L2** |  |  |  |  |  |  |  |  |  |  |  |  |  |  |
|  | 03 | **DC1-DH1200 COD C12 Cx L2** |  |  |  |  |  |  |  |  |  |  |  |  |  |  |
|  | 04 | **DC1-DH1200 COD D12 Cx L2** |  |  |  |  |  |  |  |  |  |  |  |  |  |  |
|  | 05 | **DC1-DH1200 COD E12 Cx L2** |  |  |  |  |  |  |  |  |  |  |  |  |  |  |
|  | 06 | **DC1-DH1200 COD F12 Cx L2** |  |  |  |  |  |  |  |  |  |  |  |  |  |  |
|  | 07 | **DC1-DH1200 RPPs Cx L2** |  |  |  |  |  |  |  |  |  |  |  |  |  |  |
|  | 01 | **DC1-DH1200 RPP A12 Cx L2** |  |  |  |  |  |  |  |  |  |  |  |  |  |  |
|  | 02 | **DC1-DH1200 RPP B12 Cx L2** |  |  |  |  |  |  |  |  |  |  |  |  |  |  |
|  | 03 | **DC1-DH1200 RPP C12 Cx L2** |  |  |  |  |  |  |  |  |  |  |  |  |  |  |
|  | 04 | **DC1-DH1200 RPP D12 Cx L2** |  |  |  |  |  |  |  |  |  |  |  |  |  |  |
|  | 05 | **DC1-DH1200 RPP E12 Cx L2** |  |  |  |  |  |  |  |  |  |  |  |  |  |  |
|  | 06 | **DC1-DH1200 RPP F12 Cx L2** |  |  |  |  |  |  |  |  |  |  |  |  |  |  |
|  | 08 | **DC1-DH1200 MOD-02 Cx L2** |  |  |  |  |  |  |  |  |  |  |  |  |  |  |
|  | 09 | **DC1-DH1200 MOD-03 Cx L2** |  |  |  |  |  |  |  |  |  |  |  |  |  |  |
|  | 10 | **DC1-DH1200 CDUs Cx L2** |  |  |  |  |  |  |  |  |  |  |  |  |  |  |
|  | 11 | **DC1-DH1200 CHLR Cx L2** |  |  |  |  |  |  |  |  |  |  |  |  |  |  |
|  | 12 | **DC1-DH1200 CHWP Cx L2** |  |  |  |  |  |  |  |  |  |  |  |  |  |  |
|  | 13 | **DC1-DH1200 CRAH/DOAS Cx L2** |  |  |  |  |  |  |  |  |  |  |  |  |  |  |
|  | 03 | **Data Hall 1200 Cx L3** |  | 2026-06-18 | 2026-07-30 |  |  |  |  |  |  |  |  |  |  |  |
|  | 01 | **DC1-DH1200 Generators Cx L3** |  | 2026-07-23 | 2026-07-30 |  |  |  |  |  |  |  |  |  |  |  |
|  | 01 | **DC1-DH1200-GEN-A12 Cx L3** |  | 2026-07-23 | 2026-07-30 |  |  |  |  |  |  |  |  |  |  |  |
| DC1-GEN-L3-CX-2420 |  | DC1-GEN-A12 FTE | 1d | 2026-07-23 A | 2026-07-23 A | DC1-SWD-L3-CX-2420, DC1-GEN-L2-2140, QTS-1001200, QTS-1001210 | 100% | 2026-07-24 | 2026-07-24 | ROS |  | Commissioning | DH1200 | L3 | GEN | BAB |
| DC1-GEN-L3-CX-2430 |  | DC1-GEN-A12 L3 Startup | 2d | 2026-07-24 A | 2026-07-24 A | DC1-GEN-L3-CX-2420 | 100% | 2026-07-27 | 2026-07-28 | HLT |  | Commissioning | DH1200 | L3 | GEN | BAB |
| DC1-GEN-L3-CX-2440 |  | DC1-GEN-A12 BMS/EPMS Programming | 1d | 2026-07-30 A | 2026-07-30 A | DC1-GEN-L3-CX-2430 | 100% | 2026-08-05 | 2026-08-05 | PRM |  | Commissioning | DH1200 | L3 | GEN | BAB |

Notes:
- DC1-UPS-M-L2-2140: Steps: EC Pre-Energization Checklist (done); Vendor Pre-Energization Checklist (done); GC Pre-Energization Checklist (done); CXA Pre-Energization Inspection; PEI/Clean-Walk
- DC1-UPS-M-L2-2150: Steps: EC Pre-Energization Checklist (done); Vendor Pre-Energization Checklist (done); GC Pre-Energization Checklist (done); CXA Pre-Energization Inspection; PEI/Clean-Walk
- DC1-UPS-M-L2-2160: Steps: EC Pre-Energization Checklist (done); Vendor Pre-Energization Checklist (done); GC Pre-Energization Checklist (done); CXA Pre-Energization Inspection; PEI/Clean-Walk
- DC1-UPS-M-L2-2170: Steps: EC Pre-Energization Checklist (done); Vendor Pre-Energization Checklist (done); GC Pre-Energization Checklist (done); CXA Pre-Energization Inspection; PEI/Clean-Walk
- DC1-UPS-M-L2-2180: Steps: EC Pre-Energization Checklist (done); Vendor Pre-Energization Checklist (done); GC Pre-Energization Checklist (done); CXA Pre-Energization Inspection; PEI/Clean-Walk
- DC1-UPS-M-L2-2190: Steps: EC Pre-Energization Checklist (done); Vendor Pre-Energization Checklist (done); GC Pre-Energization Checklist (done); CXA Pre-Energization Inspection; PEI/Clean-Walk
- DC1-UPS-M-L2-2200: Steps: EC Pre-Energization Checklist (done); Vendor Pre-Energization Checklist (done); GC Pre-Energization Checklist (done); CXA Pre-Energization Inspection; PEI/Clean-Walk
- DC1-GEN-L3-CX-2430: Steps: EC Startup Report; Vendor Startup

| ID | WBS | Activity | Duration | Start | Finish | Predecessors | Complete | Planned start | Planned finish | Vendor Responsible Party | Layton Discipline | Location | CX Level | Equipment | Contract |
| --- | --- | --- | --- | --- | --- | --- | --- | --- | --- | --- | --- | --- | --- | --- | --- |
|  | 02 | **DC1-DH1200-GEN-B12 Cx L3** |  | 2026-07-23 | 2026-07-30 |  |  |  |  |  |  |  |  |  |  |
| DC1-GEN-L3-CX-2450 |  | DC1-GEN-B12 FTE | 1d | 2026-07-23 A | 2026-07-23 A | DC1-SWD-L3-CX-2450, DC1-GEN-L2-2150, QTS-1001200, QTS-1001210 | 100% | 2026-07-24 | 2026-07-24 | ROS | Commissioning | DH1200 | L3 | GEN | BAB |
| DC1-GEN-L3-CX-2460 |  | DC1-GEN-B12 L3 Startup | 2d | 2026-07-24 A | 2026-07-24 A | DC1-GEN-L3-CX-2450 | 100% | 2026-07-27 | 2026-07-28 | HLT | Commissioning | DH1200 | L3 | GEN | BAB |
| DC1-GEN-L3-CX-2470 |  | DC1-GEN-B12 BMS/EPMS Programming | 1d | 2026-07-30 A | 2026-07-30 A | DC1-GEN-L3-CX-2460 | 100% | 2026-08-05 | 2026-08-05 | PRM | Commissioning | DH1200 | L3 | GEN | BAB |
|  | 03 | **DC1-DH1200-GEN-C12 Cx L3** |  | 2026-07-23 | 2026-07-30 |  |  |  |  |  |  |  |  |  |  |
| DC1-GEN-L3-CX-2480 |  | DC1-GEN-C12 FTE | 1d | 2026-07-23 A | 2026-07-23 A | DC1-SWD-L3-CX-2480, DC1-GEN-L2-2160, QTS-1001200, QTS-1001210 | 100% | 2026-07-24 | 2026-07-24 | ROS | Commissioning | DH1200 | L3 | GEN | BAB |
| DC1-GEN-L3-CX-2490 |  | DC1-GEN-C12 L3 Startup | 2d | 2026-07-24 A | 2026-07-24 A | DC1-GEN-L3-CX-2480 | 100% | 2026-07-27 | 2026-07-28 | HLT | Commissioning | DH1200 | L3 | GEN | BAB |
| DC1-GEN-L3-CX-2500 |  | DC1-GEN-C12 BMS/EPMS Programming | 1d | 2026-07-30 A | 2026-07-30 A | DC1-GEN-L3-CX-2490 | 100% | 2026-08-05 | 2026-08-05 | PRM | Commissioning | DH1200 | L3 | GEN | BAB |
|  | 04 | **DC1-DH1200-GEN-D12 Cx L3** |  | 2026-07-23 | 2026-07-30 |  |  |  |  |  |  |  |  |  |  |
| DC1-GEN-L3-CX-2510 |  | DC1-GEN-D12 FTE | 1d | 2026-07-23 A | 2026-07-23 A | DC1-SWD-L3-CX-2510, DC1-GEN-L2-2170, QTS-1001200, QTS-1001210 | 100% | 2026-07-24 | 2026-07-24 | ROS | Commissioning | DH1200 | L3 | GEN | BAB |
| DC1-GEN-L3-CX-2520 |  | DC1-GEN-D12 L3 Startup | 2d | 2026-07-24 A | 2026-07-24 A | DC1-GEN-L3-CX-2510 | 100% | 2026-07-27 | 2026-07-28 | HLT | Commissioning | DH1200 | L3 | GEN | BAB |
| DC1-GEN-L3-CX-2530 |  | DC1-GEN-D12 BMS/EPMS Programming | 1d | 2026-07-30 A | 2026-07-30 A | DC1-GEN-L3-CX-2520 | 100% | 2026-08-05 | 2026-08-05 | PRM | Commissioning | DH1200 | L3 | GEN | BAB |
|  | 05 | **DC1-DH1200-GEN-E12 Cx L3** |  | 2026-07-23 | 2026-07-30 |  |  |  |  |  |  |  |  |  |  |
| DC1-GEN-L3-CX-2540 |  | DC1-GEN-E12 FTE | 1d | 2026-07-23 A | 2026-07-23 A | DC1-GEN-L2-2180, QTS-1001200, QTS-1001210 | 100% | 2026-07-24 | 2026-07-24 | ROS | Commissioning | DH1200 | L3 | GEN | BAB |
| DC1-GEN-L3-CX-2550 |  | DC1-GEN-E12 L3 Startup | 2d | 2026-07-24 A | 2026-07-24 A | DC1-GEN-L3-CX-2540 | 100% | 2026-07-27 | 2026-07-28 | HLT | Commissioning | DH1200 | L3 | GEN | BAB |
| DC1-GEN-L3-CX-2560 |  | DC1-GEN-E12 BMS/EPMS Programming | 1d | 2026-07-30 A | 2026-07-30 A | DC1-GEN-L3-CX-2550 | 100% | 2026-08-05 | 2026-08-05 | PRM | Commissioning | DH1200 | L3 | GEN | BAB |
|  | 06 | **DC1-DH1200-GEN-F12 Cx L3** |  | 2026-07-23 | 2026-07-30 |  |  |  |  |  |  |  |  |  |  |
| DC1-GEN-L3-CX-2570 |  | DC1-GEN-F12 FTE | 1d | 2026-07-23 A | 2026-07-23 A | DC1-GEN-L2-2190, QTS-1001200, QTS-1001210 | 100% | 2026-07-24 | 2026-07-24 | ROS | Commissioning | DH1200 | L3 | GEN | BAB |
| DC1-GEN-L3-CX-2580 |  | DC1-GEN-F12 L3 Startup | 2d | 2026-07-24 A | 2026-07-24 A | DC1-GEN-L3-CX-2570 | 100% | 2026-07-27 | 2026-07-28 | HLT | Commissioning | DH1200 | L3 | GEN | BAB |
| DC1-GEN-L3-CX-2590 |  | DC1-GEN-F12 BMS/EPMS Programming | 1d | 2026-07-30 A | 2026-07-30 A | DC1-GEN-L3-CX-2580 | 100% | 2026-08-05 | 2026-08-05 | PRM | Commissioning | DH1200 | L3 | GEN | BAB |
|  | 07 | **DC1-DH1200-GEN-R12 Cx L3** |  | 2026-07-23 | 2026-07-30 |  |  |  |  |  |  |  |  |  |  |
| DC1-GEN-L3-CX-2600 |  | DC1-GEN-R12 FTE | 1d | 2026-07-23 A | 2026-07-23 A | DC1-SWD-L3-CX-2600, DC1-GEN-L2-2200, QTS-1001200, QTS-1001210 | 100% | 2026-07-24 | 2026-07-24 | ROS | Commissioning | DH1200 | L3 | GEN | BAB |
| DC1-GEN-L3-CX-2610 |  | DC1-GEN-R12 L3 Startup | 2d | 2026-07-24 A | 2026-07-24 A | DC1-GEN-L3-CX-2600 | 100% | 2026-07-27 | 2026-07-28 | HLT | Commissioning | DH1200 | L3 | GEN | BAB |
| DC1-GEN-L3-CX-2620 |  | DC1-GEN-R12 BMS/EPMS Programming | 1d | 2026-07-30 A | 2026-07-30 A | DC1-GEN-L3-CX-2610 | 100% | 2026-08-05 | 2026-08-05 | PRM | Commissioning | DH1200 | L3 | GEN | BAB |

Notes:
- DC1-GEN-L3-CX-2460: Steps: EC Startup Report; Vendor Startup
- DC1-GEN-L3-CX-2490: Steps: EC Startup Report; Vendor Startup
- DC1-GEN-L3-CX-2520: Steps: EC Startup Report; Vendor Startup
- DC1-GEN-L3-CX-2550: Steps: EC Startup Report; Vendor Startup
- DC1-GEN-L3-CX-2580: Steps: EC Startup Report; Vendor Startup
- DC1-GEN-L3-CX-2610: Steps: EC Startup Report; Vendor Startup

| ID | WBS | Activity | Duration | Start | Finish | Predecessors | Complete | Planned start | Planned finish | Notes | Vendor Responsible Party | Layton Discipline | Location | CX Level | Equipment | Layton Super | Contract |
| --- | --- | --- | --- | --- | --- | --- | --- | --- | --- | --- | --- | --- | --- | --- | --- | --- | --- |
|  | 02 | **DC1-DH1200 MV XFMRs Cx L3** |  | 2026-06-26 | 2026-07-30 |  |  |  |  |  |  |  |  |  |  |  |  |
|  | 01 | **DC1-DH1200 MV-XFMR-A12 Cx L3** |  | 2026-06-26 | 2026-07-30 |  |  |  |  |  |  |  |  |  |  |  |  |
| DC1-XFM-L3-CX-1420 |  | DC1-XFMR-A12 FTE | 1d | 2026-06-26 A | 2026-06-26 A | DC1-XFMR-L2-2140, QTS-1004750 | 100% | 2026-07-08 | 2026-07-08 | MVG FTE Pred | ROS | Commissioning | DH1200 | L3 | XFMR | Travis Todaro |  |
| DC1-XFM-L3-CX-1430 |  | DC1-XFMR-A12 L3 Startup | 2d | 2026-07-22 A | 2026-07-23 A | DC1-XFM-L3-CX-1420 | 100% |  |  |  | VTC | Commissioning | DH1200 | L3 | XFMR |  | BAB |
| DC1-XFM-L3-CX-1440 |  | DC1-XFMR-A12 BMS/EPMS Programming | 1d | 2026-07-30 A | 2026-07-30 A | DC1-XFM-L3-CX-1430 | 100% | 2026-08-05 | 2026-08-05 |  | PRM | Commissioning | DH1200 | L3 | XFMR |  | BAB |
|  | 02 | **DC1-DH1200 MV-XFMR-B12 Cx L3** |  | 2026-06-26 | 2026-07-30 |  |  |  |  |  |  |  |  |  |  |  |  |
| DC1-XFM-L3-CX-1450 |  | DC1-XFMR-B12 FTE | 1d | 2026-06-26 A | 2026-06-26 A | DC1-XFMR-L2-2150, QTS-1004750 | 100% | 2026-07-08 | 2026-07-08 | MVG FTE Pred | ROS | Commissioning | DH1200 | L3 | XFMR | Travis Todaro |  |
| DC1-XFM-L3-CX-1460 |  | DC1-XFMR-B12 L3 Startup | 2d | 2026-07-22 A | 2026-07-23 A | DC1-XFM-L3-CX-1450 | 100% |  |  |  | VTC | Commissioning | DH1200 | L3 | XFMR |  | BAB |
| DC1-XFM-L3-CX-1470 |  | DC1-XFMR-B12 BMS/EPMS Programming | 1d | 2026-07-30 A | 2026-07-30 A | DC1-XFM-L3-CX-1460 | 100% | 2026-08-05 | 2026-08-05 |  | PRM | Commissioning | DH1200 | L3 | XFMR |  | BAB |
|  | 03 | **DC1-DH1200 MV-XFMR-C12 Cx L3** |  | 2026-06-26 | 2026-07-30 |  |  |  |  |  |  |  |  |  |  |  |  |
| DC1-XFM-L3-CX-1480 |  | DC1-XFMR-C12 FTE | 1d | 2026-06-26 A | 2026-06-26 A | DC1-XFMR-L2-2160, QTS-1004750 | 100% | 2026-07-08 | 2026-07-08 | MVG FTE Pred | ROS | Commissioning | DH1200 | L3 | XFMR | Travis Todaro |  |
| DC1-XFM-L3-CX-1490 |  | DC1-XFMR-C12 L3 Startup | 2d | 2026-07-22 A | 2026-07-23 A | DC1-XFM-L3-CX-1480 | 100% |  |  |  | VTC | Commissioning | DH1200 | L3 | XFMR |  | BAB |
| DC1-XFM-L3-CX-1500 |  | DC1-XFMR-C12 BMS/EPMS Programming | 1d | 2026-07-30 A | 2026-07-30 A | DC1-XFM-L3-CX-1490 | 100% | 2026-08-05 | 2026-08-05 |  | PRM | Commissioning | DH1200 | L3 | XFMR |  | BAB |
|  | 04 | **DC1-DH1200 MV-XFMR-D12 Cx L3** |  | 2026-06-26 | 2026-07-30 |  |  |  |  |  |  |  |  |  |  |  |  |
| DC1-XFM-L3-CX-1510 |  | DC1-XFMR-D12 FTE | 1d | 2026-06-26 A | 2026-06-26 A | DC1-XFMR-L2-2170, QTS-1004750 | 100% | 2026-07-08 | 2026-07-08 | MVG FTE Pred | ROS | Commissioning | DH1200 | L3 | XFMR | Travis Todaro |  |
| DC1-XFM-L3-CX-1520 |  | DC1-XFMR-D12 L3 Startup | 2d | 2026-07-22 A | 2026-07-23 A | DC1-XFM-L3-CX-1510 | 100% |  |  |  | VTC | Commissioning | DH1200 | L3 | XFMR |  | BAB |
| DC1-XFM-L3-CX-1530 |  | DC1-XFMR-D12 BMS/EPMS Programming | 1d | 2026-07-30 A | 2026-07-30 A | DC1-XFM-L3-CX-1520 | 100% | 2026-08-05 | 2026-08-05 |  | PRM | Commissioning | DH1200 | L3 | XFMR |  | BAB |
|  | 05 | **DC1-DH1200 MV-XFMR-E12 Cx L3** |  | 2026-06-26 | 2026-07-30 |  |  |  |  |  |  |  |  |  |  |  |  |
| DC1-XFM-L3-CX-1540 |  | DC1-XFMR-E12 FTE | 1d | 2026-06-26 A | 2026-06-26 A | DC1-XFMR-L2-2180, QTS-1004750 | 100% | 2026-07-08 | 2026-07-08 | MVG FTE Pred | ROS | Commissioning | DH1200 | L3 | XFMR | Travis Todaro |  |
| DC1-XFM-L3-CX-1550 |  | DC1-XFMR-E12 L3 Startup | 2d | 2026-07-22 A | 2026-07-23 A | DC1-XFM-L3-CX-1540 | 100% |  |  |  | VTC | Commissioning | DH1200 | L3 | XFMR |  | BAB |
| DC1-XFM-L3-CX-1560 |  | DC1-XFMR-E12 BMS/EPMS Programming | 1d | 2026-07-30 A | 2026-07-30 A | DC1-XFM-L3-CX-1550 | 100% | 2026-08-05 | 2026-08-05 |  | PRM | Commissioning | DH1200 | L3 | XFMR |  | BAB |
|  | 06 | **DC1-DH1200 MV-XFMR-F12 Cx L3** |  | 2026-06-26 | 2026-07-30 |  |  |  |  |  |  |  |  |  |  |  |  |
| DC1-XFM-L3-CX-1570 |  | DC1-XFMR-F12 FTE | 1d | 2026-06-26 A | 2026-06-26 A | DC1-XFMR-L2-2190, QTS-1004750 | 100% | 2026-07-08 | 2026-07-08 | MVG FTE Pred | ROS | Commissioning | DH1200 | L3 | XFMR | Travis Todaro |  |
| DC1-XFM-L3-CX-1580 |  | DC1-XFMR-F12 L3 Startup | 2d | 2026-07-22 A | 2026-07-23 A | DC1-XFM-L3-CX-1570 | 100% |  |  |  | VTC | Commissioning | DH1200 | L3 | XFMR |  | BAB |
| DC1-XFM-L3-CX-1590 |  | DC1-XFMR-F12 BMS/EPMS Programming | 1d | 2026-07-30 A | 2026-07-30 A | DC1-XFM-L3-CX-1580 | 100% | 2026-08-05 | 2026-08-05 |  | PRM | Commissioning | DH1200 | L3 | XFMR |  | BAB |

Notes:
- DC1-XFM-L3-CX-1430: Steps: EC Startup Report; Vendor Startup
- DC1-XFM-L3-CX-1460: Steps: EC Startup Report; Vendor Startup
- DC1-XFM-L3-CX-1490: Steps: EC Startup Report; Vendor Startup
- DC1-XFM-L3-CX-1520: Steps: EC Startup Report; Vendor Startup
- DC1-XFM-L3-CX-1550: Steps: EC Startup Report; Vendor Startup
- DC1-XFM-L3-CX-1580: Steps: EC Startup Report; Vendor Startup

| ID | WBS | Activity | Duration | Start | Finish | Predecessors | Complete | Planned start | Planned finish | Notes | Vendor Responsible Party | Layton Discipline | Location | CX Level | Equipment | Layton Super | Contract |
| --- | --- | --- | --- | --- | --- | --- | --- | --- | --- | --- | --- | --- | --- | --- | --- | --- | --- |
|  | 07 | **DC1-DH1200 MV-XFMR-R12 Cx L3** |  | 2026-06-26 | 2026-07-30 |  |  |  |  |  |  |  |  |  |  |  |  |
| DC1-XFM-L3-CX-1600 |  | DC1-XFMR-R12 FTE | 1d | 2026-06-26 A | 2026-06-26 A | DC1-XFMR-L2-2200, QTS-1004750 | 100% | 2026-06-29 | 2026-06-29 | MVG FTE Pred | ROS | Commissioning | DH1200 | L3 | XFMR | Travis Todaro |  |
| DC1-XFM-L3-CX-1610 |  | DC1-XFMR-R12 L3 Startup | 2d | 2026-07-22 A | 2026-07-23 A | DC1-XFM-L3-CX-1600 | 100% |  |  |  | VTC | Commissioning | DH1200 | L3 | XFMR |  | BAB |
| DC1-XFM-L3-CX-1620 |  | DC1-XFMR-R12 BMS/EPMS Programming | 1d | 2026-07-30 A | 2026-07-30 A | DC1-XFM-L3-CX-1610 | 100% | 2026-08-05 | 2026-08-05 |  | PRM | Commissioning | DH1200 | L3 | XFMR |  | BAB |
|  | 03 | **DC1-DH1200 PODS Cx L3** |  | 2026-06-18 | 2026-07-30 |  |  |  |  |  |  |  |  |  |  |  |  |
|  | 01 | **DC1-DH1200 SWDs Cx L3** |  | 2026-07-15 | 2026-07-30 |  |  |  |  |  |  |  |  |  |  |  |  |
|  | 01 | **DC1-DH1200-SWD-A12 Cx L3** |  | 2026-07-15 | 2026-07-30 |  |  |  |  |  |  |  |  |  |  |  |  |
| DC1-SWD-L3-CX-2420 |  | DC1-SWD-A12 FTE | 1d | 2026-07-15 A | 2026-07-15 A | DC1-XFM-L3-CX-1420 SS, DC1-SWD-L2-2140, DC1-XFM-L3-CX-1420, QTS-1007290 FF | 100% |  |  |  | ROS | Commissioning | DH1200 | L3 | SWD |  |  |
| DC1-SWD-L3-CX-2430 |  | DC1-SWD-A12 L3 Startup | 2d | 2026-07-22 A | 2026-07-23 A | QTS-1931, DC1-SWD-L3-CX-2420 | 100% |  |  |  | SIE | Commissioning | DH1200 | L3 | SWD |  | BAB |
| DC1-SWD-L3-CX-2440 |  | DC1-SWD-A12 BMS/EPMS Programming | 1d | 2026-07-30 A | 2026-07-30 A | DC1-SWD-L3-CX-2430 | 100% | 2026-08-05 | 2026-08-05 |  | PRM | Commissioning | DH1200 | L3 | SWD |  | BAB |
|  | 02 | **DC1-DH1200-SWD-B12 Cx L3** |  | 2026-07-15 | 2026-07-30 |  |  |  |  |  |  |  |  |  |  |  |  |
| DC1-SWD-L3-CX-2450 |  | DC1-SWD-B12 FTE | 1d | 2026-07-15 A | 2026-07-15 A | DC1-XFM-L3-CX-1450 SS, DC1-SWD-L2-2150, DC1-XFM-L3-CX-1450, QTS-1007290 FF | 100% |  |  |  | ROS | Commissioning | DH1200 | L3 | SWD |  |  |
| DC1-SWD-L3-CX-2460 |  | DC1-SWD-B12 L3 Startup | 2d | 2026-07-22 A | 2026-07-23 A | QTS-1931, DC1-SWD-L3-CX-2450 | 100% |  |  |  | SIE | Commissioning | DH1200 | L3 | SWD |  | BAB |
| DC1-SWD-L3-CX-2470 |  | DC1-SWD-B12 BMS/EPMS Programming | 1d | 2026-07-30 A | 2026-07-30 A | DC1-SWD-L3-CX-2460 | 100% | 2026-08-05 | 2026-08-05 |  | PRM | Commissioning | DH1200 | L3 | SWD |  | BAB |
|  | 03 | **DC1-DH1200-SWD-C12 Cx L3** |  | 2026-07-15 | 2026-07-30 |  |  |  |  |  |  |  |  |  |  |  |  |
| DC1-SWD-L3-CX-2480 |  | DC1-SWD-C12 FTE | 1d | 2026-07-15 A | 2026-07-15 A | DC1-XFM-L3-CX-1480 SS, DC1-SWD-L2-2160, DC1-XFM-L3-CX-1480, QTS-1007290 FF | 100% |  |  |  | ROS | Commissioning | DH1200 | L3 | SWD |  |  |
| DC1-SWD-L3-CX-2490 |  | DC1-SWD-C12 L3 Startup | 2d | 2026-07-22 A | 2026-07-23 A | QTS-1931, DC1-SWD-L3-CX-2480 | 100% |  |  |  | SIE | Commissioning | DH1200 | L3 | SWD |  | BAB |
| DC1-SWD-L3-CX-2500 |  | DC1-SWD-C12 BMS/EPMS Programming | 1d | 2026-07-30 A | 2026-07-30 A | DC1-SWD-L3-CX-2490 | 100% | 2026-08-05 | 2026-08-05 |  | PRM | Commissioning | DH1200 | L3 | SWD |  | BAB |
|  | 04 | **DC1-DH1200-SWD-D12 Cx L3** |  | 2026-07-15 | 2026-07-30 |  |  |  |  |  |  |  |  |  |  |  |  |
| DC1-SWD-L3-CX-2510 |  | DC1-SWD-D12 FTE | 1d | 2026-07-15 A | 2026-07-15 A | DC1-XFM-L3-CX-1510 SS, DC1-SWD-L2-2170, DC1-XFM-L3-CX-1510, QTS-1007290 FF | 100% |  |  |  | ROS | Commissioning | DH1200 | L3 | SWD |  |  |
| DC1-SWD-L3-CX-2520 |  | DC1-SWD-D12 L3 Startup | 2d | 2026-07-22 A | 2026-07-23 A | QTS-1931, DC1-SWD-L3-CX-2510 | 100% |  |  |  | SIE | Commissioning | DH1200 | L3 | SWD |  | BAB |
| DC1-SWD-L3-CX-2530 |  | DC1-SWD-D12 BMS/EPMS Programming | 1d | 2026-07-30 A | 2026-07-30 A | DC1-SWD-L3-CX-2520 | 100% | 2026-08-05 | 2026-08-05 |  | PRM | Commissioning | DH1200 | L3 | SWD |  | BAB |
|  | 05 | **DC1-DH1200-SWD-E12 Cx L3** |  | 2026-07-15 | 2026-07-30 |  |  |  |  |  |  |  |  |  |  |  |  |
| DC1-SWD-L3-CX-2540 |  | DC1-SWD-E12 FTE | 1d | 2026-07-15 A | 2026-07-15 A | DC1-XFM-L3-CX-1540 SS, DC1-SWD-L2-2180, DC1-XFM-L3-CX-1540, QTS-1007290 FF | 100% |  |  |  | ROS | Commissioning | DH1200 | L3 | SWD |  |  |
| DC1-SWD-L3-CX-2550 |  | DC1-SWD-E12 L3 Startup | 2d | 2026-07-22 A | 2026-07-23 A | QTS-1931, DC1-SWD-L3-CX-2540 | 100% |  |  |  | SIE | Commissioning | DH1200 | L3 | SWD |  | BAB |
| DC1-SWD-L3-CX-2560 |  | DC1-SWD-E12 BMS/EPMS Programming | 1d | 2026-07-30 A | 2026-07-30 A | DC1-SWD-L3-CX-2550 | 100% | 2026-08-05 | 2026-08-05 |  | PRM | Commissioning | DH1200 | L3 | SWD |  | BAB |

Notes:
- DC1-XFM-L3-CX-1610: Steps: EC Startup Report; Vendor Startup
- DC1-SWD-L3-CX-2430: Steps: EC Startup Report; Vendor Startup
- DC1-SWD-L3-CX-2460: Steps: EC Startup Report; Vendor Startup
- DC1-SWD-L3-CX-2490: Steps: EC Startup Report; Vendor Startup
- DC1-SWD-L3-CX-2520: Steps: EC Startup Report; Vendor Startup
- DC1-SWD-L3-CX-2550: Steps: EC Startup Report; Vendor Startup

| ID | WBS | Activity | Duration | Start | Finish | Predecessors | Complete | Planned start | Planned finish | Vendor Responsible Party | Layton Discipline | Location | CX Level | Equipment | Contract | Layton Super | Notes |
| --- | --- | --- | --- | --- | --- | --- | --- | --- | --- | --- | --- | --- | --- | --- | --- | --- | --- |
|  | 06 | **DC1-DH1200-SWD-F12 Cx L3** |  | 2026-07-15 | 2026-07-30 |  |  |  |  |  |  |  |  |  |  |  |  |
| DC1-SWD-L3-CX-2570 |  | DC1-SWD-F12 FTE | 1d | 2026-07-15 A | 2026-07-15 A | DC1-XFM-L3-CX-1570 SS, DC1-SWD-L2-2190, DC1-XFM-L3-CX-1570, QTS-1007290 FF | 100% |  |  | ROS | Commissioning | DH1200 | L3 | SWD |  |  |  |
| DC1-SWD-L3-CX-2580 |  | DC1-SWD-F12 L3 Startup | 2d | 2026-07-22 A | 2026-07-23 A | QTS-1931, DC1-SWD-L3-CX-2570 | 100% |  |  | SIE | Commissioning | DH1200 | L3 | SWD | BAB |  |  |
| DC1-SWD-L3-CX-2590 |  | DC1-SWD-F12 BMS/EPMS Programming | 1d | 2026-07-30 A | 2026-07-30 A | DC1-SWD-L3-CX-2580 | 100% | 2026-08-05 | 2026-08-05 | PRM | Commissioning | DH1200 | L3 | SWD | BAB |  |  |
|  | 07 | **DC1-DH1200-SWD-R12 Cx L3** |  | 2026-07-15 | 2026-07-30 |  |  |  |  |  |  |  |  |  |  |  |  |
| DC1-SWD-L3-CX-2600 |  | DC1-SWD-R12 FTE | 1d | 2026-07-15 A | 2026-07-15 A | DC1-XFM-L3-CX-1600 SS, DC1-SWD-L2-2200, DC1-XFM-L3-CX-1600, QTS-1007290 FF | 100% |  |  | ROS | Commissioning | DH1200 | L3 | SWD |  |  |  |
| DC1-SWD-L3-CX-2610 |  | DC1-SWD-R12 L3 Startup | 2d | 2026-07-22 A | 2026-07-23 A | QTS-1931, DC1-SWD-L3-CX-2600 | 100% |  |  | SIE | Commissioning | DH1200 | L3 | SWD | BAB |  |  |
| DC1-SWD-L3-CX-2620 |  | DC1-SWD-R12 BMS/EPMS Programming | 1d | 2026-07-30 A | 2026-07-30 A | DC1-SWD-L3-CX-2610 | 100% | 2026-08-05 | 2026-08-05 | PRM | Commissioning | DH1200 | L3 | SWD | BAB |  |  |
|  | 02 | **DC1-DH1200 MOD-01s Cx L3** |  | 2026-06-18 | 2026-07-30 |  |  |  |  |  |  |  |  |  |  |  |  |
|  | 01 | **DC1-DH1200-MOD-A12-01 Cx L3** |  | 2026-06-18 | 2026-07-30 |  |  |  |  |  |  |  |  |  |  |  |  |
| DC1-MOD1-L3-CX-2420 |  | DC1-MOD-01-A12 FTE | 1d | 2026-06-18 A | 2026-06-18 A | DC1-MOD01-L2-2140 | 100% | 2026-07-13 | 2026-07-13 | ROS | Commissioning | DH1200 | L3 | MOD-01 |  | Travis Todaro |  |
| DC1-MOD1-L3-CX-2430 |  | DC1-MOD-01-A12 L3 Startup | 2d | 2026-06-18 A | 2026-06-18 A | DC1-MOD1-L3-CX-2420 | 100% | 2026-07-14 | 2026-07-15 | PHE | Commissioning | DH1200 | L3 | MOD-01 |  | Travis Todaro | Vendor Only |
| DC1-MOD1-L3-CX-2440 |  | DC1-MOD-01-A12 BMS/EPMS Programming | 1d | 2026-07-30 A | 2026-07-30 A | DC1-MOD1-L3-CX-2430 | 100% | 2026-08-05 | 2026-08-05 | PRM | Commissioning | DH1200 | L3 | MOD-01 | BAB |  |  |
|  | 02 | **DC1-DH1200-MOD-B12-01 Cx L3** |  | 2026-06-18 | 2026-07-30 |  |  |  |  |  |  |  |  |  |  |  |  |
| DC1-MOD1-L3-CX-2450 |  | DC1-MOD-01-B12 FTE | 1d | 2026-06-18 A | 2026-06-18 A | DC1-MOD01-L2-2150 | 100% | 2026-07-13 | 2026-07-13 | ROS | Commissioning | DH1200 | L3 | MOD-01 |  | Travis Todaro |  |
| DC1-MOD1-L3-CX-2460 |  | DC1-MOD-01-B12 L3 Startup | 2d | 2026-06-18 A | 2026-06-18 A | DC1-MOD1-L3-CX-2450 | 100% | 2026-07-14 | 2026-07-15 | PHE | Commissioning | DH1200 | L3 | MOD-01 |  | Travis Todaro | Vendor Only |
| DC1-MOD1-L3-CX-2470 |  | DC1-MOD-01-B12 BMS/EPMS Programming | 1d | 2026-07-30 A | 2026-07-30 A | DC1-MOD1-L3-CX-2460 | 100% | 2026-08-05 | 2026-08-05 | PRM | Commissioning | DH1200 | L3 | MOD-01 | BAB |  |  |
|  | 03 | **DC1-DH1200-MOD-C12-01 Cx L3** |  | 2026-07-10 | 2026-07-30 |  |  |  |  |  |  |  |  |  |  |  |  |
| DC1-MOD1-L3-CX-2480 |  | DC1-MOD-01-C12 FTE | 1d | 2026-07-10 A | 2026-07-10 A | DC1-MOD01-L2-2160 | 100% | 2026-07-20 | 2026-07-20 | ROS | Commissioning | DH1200 | L3 | MOD-01 |  | Travis Todaro |  |
| DC1-MOD1-L3-CX-2490 |  | DC1-MOD-01-C12 L3 Startup | 2d | 2026-07-10 A | 2026-07-10 A | DC1-MOD1-L3-CX-2480 | 100% | 2026-07-21 | 2026-07-22 | PHE | Commissioning | DH1200 | L3 | MOD-01 |  | Travis Todaro | Vendor Only |
| DC1-MOD1-L3-CX-2500 |  | DC1-MOD-01-C12 BMS/EPMS Programming | 1d | 2026-07-30 A | 2026-07-30 A | DC1-MOD1-L3-CX-2490 | 100% | 2026-08-05 | 2026-08-05 | PRM | Commissioning | DH1200 | L3 | MOD-01 | BAB |  |  |
|  | 04 | **DC1-DH1200-MOD-D12-01 Cx L3** |  | 2026-06-18 | 2026-07-30 |  |  |  |  |  |  |  |  |  |  |  |  |
| DC1-MOD1-L3-CX-2510 |  | DC1-MOD-01-D12 FTE | 1d | 2026-06-18 A | 2026-06-18 A | DC1-MOD01-L2-2170 | 100% | 2026-07-13 | 2026-07-13 | ROS | Commissioning | DH1200 | L3 | MOD-01 |  | Travis Todaro |  |
| DC1-MOD1-L3-CX-2520 |  | DC1-MOD-01-D12 L3 Startup | 2d | 2026-06-18 A | 2026-06-18 A | DC1-MOD1-L3-CX-2510 | 100% | 2026-07-14 | 2026-07-15 | PHE | Commissioning | DH1200 | L3 | MOD-01 |  | Travis Todaro | Vendor Only |
| DC1-MOD1-L3-CX-2530 |  | DC1-MOD-01-D12 BMS/EPMS Programming | 1d | 2026-07-30 A | 2026-07-30 A | DC1-MOD1-L3-CX-2520 | 100% | 2026-08-05 | 2026-08-05 | PRM | Commissioning | DH1200 | L3 | MOD-01 | BAB |  |  |

Notes:
- DC1-SWD-L3-CX-2580: Steps: EC Startup Report; Vendor Startup
- DC1-SWD-L3-CX-2610: Steps: EC Startup Report; Vendor Startup

| ID | WBS | Activity | Duration | Start | Finish | Predecessors | Complete | Planned start | Planned finish | Vendor Responsible Party | Layton Discipline | Location | CX Level | Equipment | Layton Super | Notes | Contract |
| --- | --- | --- | --- | --- | --- | --- | --- | --- | --- | --- | --- | --- | --- | --- | --- | --- | --- |
|  | 05 | **DC1-DH1200-MOD-E12-01 Cx L3** |  | 2026-07-10 | 2026-07-30 |  |  |  |  |  |  |  |  |  |  |  |  |
| DC1-MOD1-L3-CX-2540 |  | DC1-MOD-01-E12 FTE | 1d | 2026-07-10 A | 2026-07-10 A | DC1-MOD01-L2-2180 | 100% | 2026-07-20 | 2026-07-20 | ROS | Commissioning | DH1200 | L3 | MOD-01 | Travis Todaro |  |  |
| DC1-MOD1-L3-CX-2550 |  | DC1-MOD-01-E12 L3 Startup | 2d | 2026-07-10 A | 2026-07-10 A | DC1-MOD1-L3-CX-2540 | 100% | 2026-07-21 | 2026-07-22 | PHE | Commissioning | DH1200 | L3 | MOD-01 | Travis Todaro | Vendor Only |  |
| DC1-MOD1-L3-CX-2560 |  | DC1-MOD-01-E12 BMS/EPMS Programming | 1d | 2026-07-30 A | 2026-07-30 A | DC1-MOD1-L3-CX-2550 | 100% | 2026-08-05 | 2026-08-05 | PRM | Commissioning | DH1200 | L3 | MOD-01 |  |  | BAB |
|  | 06 | **DC1-DH1200-MOD-F12-01 Cx L3** |  | 2026-06-18 | 2026-07-30 |  |  |  |  |  |  |  |  |  |  |  |  |
| DC1-MOD1-L3-CX-2570 |  | DC1-MOD-01-F12 FTE | 1d | 2026-06-18 A | 2026-06-18 A | DC1-MOD01-L2-2190 | 100% | 2026-07-13 | 2026-07-13 | ROS | Commissioning | DH1200 | L3 | MOD-01 | Travis Todaro |  |  |
| DC1-MOD1-L3-CX-2580 |  | DC1-MOD-01-F12 L3 Startup | 2d | 2026-06-18 A | 2026-06-18 A | DC1-MOD1-L3-CX-2570 | 100% | 2026-07-14 | 2026-07-15 | PHE | Commissioning | DH1200 | L3 | MOD-01 | Travis Todaro | Vendor Only |  |
| DC1-MOD1-L3-CX-2590 |  | DC1-MOD-01-F12 BMS/EPMS Programming | 1d | 2026-07-30 A | 2026-07-30 A | DC1-MOD1-L3-CX-2580 | 100% | 2026-08-05 | 2026-08-05 | PRM | Commissioning | DH1200 | L3 | MOD-01 |  |  | BAB |
|  | 07 | **DC1-DH1200-MOD-R12-01 Cx L3** |  | 2026-06-18 | 2026-07-30 |  |  |  |  |  |  |  |  |  |  |  |  |
| DC1-MOD1-L3-CX-2600 |  | DC1-MOD-01-R12 FTE | 1d | 2026-06-18 A | 2026-06-18 A | DC1-MOD01-L2-2200 | 100% | 2026-07-02 | 2026-07-02 | ROS | Commissioning | DH1200 | L3 | MOD-01 | Travis Todaro |  |  |
| DC1-MOD1-L3-CX-2610 |  | DC1-MOD-01-R12 L3 Startup | 2d | 2026-06-18 A | 2026-06-18 A | DC1-MOD1-L3-CX-2600 | 100% | 2026-07-06 | 2026-07-07 | PHE | Commissioning | DH1200 | L3 | MOD-01 | Travis Todaro | Vendor Only |  |
| DC1-MOD1-L3-CX-2620 |  | DC1-MOD-01-R12 BMS/EPMS Programming | 1d | 2026-07-30 A | 2026-07-30 A | DC1-MOD1-L3-CX-2610 | 100% | 2026-08-05 | 2026-08-05 | PRM | Commissioning | DH1200 | L3 | MOD-01 |  |  | BAB |
|  | 03 | **DC1-DH1200 UPS-M Cx L3** |  | 2026-07-23 | 2026-07-30 |  |  |  |  |  |  |  |  |  |  |  |  |
|  | 01 | **DC1-DH1200-UPS-M-A12-01 Cx L3** |  | 2026-07-23 | 2026-07-30 |  |  |  |  |  |  |  |  |  |  |  |  |
| DC1-UPSM-L3-CX-2420 |  | DC1-UPS-M-A12 FTE | 1d | 2026-07-23 A | 2026-07-23 A | DC1-UPS-M-L2-2140 | 100% | 2026-07-24 | 2026-07-24 | ROS | Commissioning | DH1200 | L3 | UPS |  |  | BAB |
| DC1-UPSM-L3-CX-2430 |  | DC1-UPS-M-A12 L3 Startup | 2d | 2026-07-24 A | 2026-07-24 A | DC1-UPSM-L3-CX-2420 | 100% | 2026-07-27 | 2026-07-28 | VER | Commissioning | DH1200 | L3 | UPS |  |  | BAB |
| DC1-UPSM-L3-CX-2440 |  | DC1-UPS-M-A12 BMS/EPMS Programming | 1d | 2026-07-30 A | 2026-07-30 A | DC1-UPSM-L3-CX-2430 | 100% | 2026-08-05 | 2026-08-05 | PRM | Commissioning | DH1200 | L3 | UPS |  |  | BAB |
|  | 02 | **DC1-DH1200-UPS-M-B12-01 Cx L3** |  | 2026-07-23 | 2026-07-30 |  |  |  |  |  |  |  |  |  |  |  |  |
| DC1-UPSM-L3-CX-2450 |  | DC1-UPS-M-B12 FTE | 1d | 2026-07-23 A | 2026-07-23 A | DC1-UPS-M-L2-2150 | 100% | 2026-07-24 | 2026-07-24 | ROS | Commissioning | DH1200 | L3 | UPS |  |  | BAB |
| DC1-UPSM-L3-CX-2460 |  | DC1-UPS-M-B12 L3 Startup | 2d | 2026-07-24 A | 2026-07-24 A | DC1-UPSM-L3-CX-2450 | 100% | 2026-07-27 | 2026-07-28 | VER | Commissioning | DH1200 | L3 | UPS |  |  | BAB |
| DC1-UPSM-L3-CX-2470 |  | DC1-UPS-M-B12 BMS/EPMS Programming | 1d | 2026-07-30 A | 2026-07-30 A | DC1-UPSM-L3-CX-2460 | 100% | 2026-08-05 | 2026-08-05 | PRM | Commissioning | DH1200 | L3 | UPS |  |  | BAB |
|  | 03 | **DC1-DH1200-UPS-M-C12-01 Cx L3** |  | 2026-07-23 | 2026-07-30 |  |  |  |  |  |  |  |  |  |  |  |  |
| DC1-UPSM-L3-CX-2480 |  | DC1-UPS-M-C12 FTE | 1d | 2026-07-23 A | 2026-07-23 A | DC1-UPS-M-L2-2160 | 100% | 2026-07-24 | 2026-07-24 | ROS | Commissioning | DH1200 | L3 | UPS |  |  | BAB |
| DC1-UPSM-L3-CX-2490 |  | DC1-UPS-M-C12 L3 Startup | 2d | 2026-07-24 A | 2026-07-24 A | DC1-UPSM-L3-CX-2480 | 100% | 2026-07-27 | 2026-07-28 | VER | Commissioning | DH1200 | L3 | UPS |  |  | BAB |
| DC1-UPSM-L3-CX-2500 |  | DC1-UPS-M-C12 BMS/EPMS Programming | 1d | 2026-07-30 A | 2026-07-30 A | DC1-UPSM-L3-CX-2490 | 100% | 2026-08-05 | 2026-08-05 | PRM | Commissioning | DH1200 | L3 | UPS |  |  | BAB |

Notes:
- DC1-UPSM-L3-CX-2430: Steps: EC Startup Report; Vendor Startup
- DC1-UPSM-L3-CX-2460: Steps: EC Startup Report; Vendor Startup
- DC1-UPSM-L3-CX-2490: Steps: EC Startup Report; Vendor Startup

| ID | WBS | Activity | Duration | Start | Finish | Predecessors | Complete | Planned start | Planned finish | Vendor Responsible Party | Layton Discipline | Location | CX Level | Equipment | Contract | Notes |
| --- | --- | --- | --- | --- | --- | --- | --- | --- | --- | --- | --- | --- | --- | --- | --- | --- |
|  | 04 | **DC1-DH1200-UPS-M-D12-01 Cx L3** |  | 2026-07-23 | 2026-07-30 |  |  |  |  |  |  |  |  |  |  |  |
| DC1-UPSM-L3-CX-2510 |  | DC1-UPS-M-D12 FTE | 1d | 2026-07-23 A | 2026-07-23 A | DC1-UPS-M-L2-2170 | 100% | 2026-07-24 | 2026-07-24 | ROS | Commissioning | DH1200 | L3 | UPS | BAB |  |
| DC1-UPSM-L3-CX-2520 |  | DC1-UPS-M-D12 L3 Startup | 2d | 2026-07-24 A | 2026-07-24 A | DC1-UPSM-L3-CX-2510 | 100% | 2026-07-27 | 2026-07-28 | VER | Commissioning | DH1200 | L3 | UPS | BAB |  |
| DC1-UPSM-L3-CX-2530 |  | DC1-UPS-M-D12 BMS/EPMS Programming | 1d | 2026-07-30 A | 2026-07-30 A | DC1-UPSM-L3-CX-2520 | 100% | 2026-08-05 | 2026-08-05 | PRM | Commissioning | DH1200 | L3 | UPS | BAB |  |
|  | 05 | **DC1-DH1200-UPS-M-E12-01 Cx L3** |  | 2026-07-23 | 2026-07-30 |  |  |  |  |  |  |  |  |  |  |  |
| DC1-UPSM-L3-CX-2540 |  | DC1-UPS-M-E12 FTE | 1d | 2026-07-23 A | 2026-07-23 A | DC1-UPS-M-L2-2180 | 100% | 2026-07-24 | 2026-07-24 | ROS | Commissioning | DH1200 | L3 | UPS | BAB |  |
| DC1-UPSM-L3-CX-2550 |  | DC1-UPS-M-E12 L3 Startup | 2d | 2026-07-24 A | 2026-07-24 A | DC1-UPSM-L3-CX-2540 | 100% | 2026-07-27 | 2026-07-28 | VER | Commissioning | DH1200 | L3 | UPS | BAB |  |
| DC1-UPSM-L3-CX-2560 |  | DC1-UPS-M-E12 BMS/EPMS Programming | 1d | 2026-07-30 A | 2026-07-30 A | DC1-UPSM-L3-CX-2550 | 100% | 2026-08-05 | 2026-08-05 | PRM | Commissioning | DH1200 | L3 | UPS | BAB |  |
|  | 06 | **DC1-DH1200-UPS-M-F12-01 Cx L3** |  | 2026-07-23 | 2026-07-30 |  |  |  |  |  |  |  |  |  |  |  |
| DC1-UPSM-L3-CX-2570 |  | DC1-UPS-M-F12 FTE | 1d | 2026-07-23 A | 2026-07-23 A | DC1-UPS-M-L2-2190 SS | 100% | 2026-07-22 | 2026-07-22 | ROS | Commissioning | DH1200 | L3 | UPS | BAB |  |
| DC1-UPSM-L3-CX-2580 |  | DC1-UPS-M-F12 L3 Startup | 2d | 2026-07-24 A | 2026-07-24 A | DC1-UPSM-L3-CX-2570, DC1-UPS-M-L2-2190 | 100% | 2026-07-24 | 2026-07-27 | VER | Commissioning | DH1200 | L3 | UPS | BAB |  |
| DC1-UPSM-L3-CX-2590 |  | DC1-UPS-M-F12 BMS/EPMS Programming | 1d | 2026-07-30 A | 2026-07-30 A | DC1-UPSM-L3-CX-2580 | 100% | 2026-08-05 | 2026-08-05 | PRM | Commissioning | DH1200 | L3 | UPS | BAB |  |
|  | 07 | **DC1-DH1200-UPS-M-R12-01 Cx L3** |  | 2026-07-23 | 2026-07-30 |  |  |  |  |  |  |  |  |  |  |  |
| DC1-UPSM-L3-CX-2600 |  | DC1-UPS-M-R12 FTE | 1d | 2026-07-23 A | 2026-07-23 A | DC1-UPS-M-L2-2200 | 100% | 2026-07-24 | 2026-07-24 | ROS | Commissioning | DH1200 | L3 | UPS | BAB |  |
| DC1-UPSM-L3-CX-2610 |  | DC1-UPS-M-R12 L3 Startup | 2d | 2026-07-24 A | 2026-07-24 A | DC1-UPSM-L3-CX-2600 | 100% | 2026-07-27 | 2026-07-28 | VER | Commissioning | DH1200 | L3 | UPS | BAB |  |
| DC1-UPSM-L3-CX-2620 |  | DC1-UPS-M-R12 BMS/EPMS Programming | 1d | 2026-07-30 A | 2026-07-30 A | DC1-UPSM-L3-CX-2610 | 100% | 2026-08-05 | 2026-08-05 | PRM | Commissioning | DH1200 | L3 | UPS | BAB |  |
|  | 04 | **DC1-DH1200 COMPRESSOR/FAN UNITS Cx L3** |  | 2026-07-22 | 2026-07-22 |  |  |  |  |  |  |  |  |  |  |  |
|  | 01 | **DC1-DH1200 POD-AC UNITS A12 Cx L3** |  | 2026-07-22 | 2026-07-22 |  |  |  |  |  |  |  |  |  |  |  |
| DC1-COMP-L3-CX-2420 |  | DC1-COMP-A12-01 FTE (2) | 1d | 2026-07-22 A | 2026-07-22 A | DC1-MOD1-L3-CX-2420 SS, DC1-MOD1-L3-CX-2420 FF | 100% |  |  | ROS | Commissioning | DH1200 | L3 | POD AC | BAB |  |
| DC1-COMP-L3-CX-2430 |  | DC1-COMP-A12-01 L3 Startup (2) | 2d | 2026-07-22 A | 2026-07-22 A | DC1-COMP-L3-CX-2420 | 100% | 2026-07-23 | 2026-07-24 | CAP | Commissioning | DH1200 | L3 | POD AC | BAB | Vendor Only |
| DC1-COMP-L3-CX-2440 |  | DC1-COMP-A12-01 BMS/EPMS Programming (2) | 1d | 2026-07-22 A | 2026-07-22 A | DC1-COMP-L3-CX-2430 | 100% | 2026-07-27 | 2026-07-27 | PRM | Commissioning | DH1200 | L3 | POD AC | BAB |  |
| DC1-FAN-L3-CX-2420 |  | DC1-FAN-A12-01 FTE (2) | 1d | 2026-07-22 A | 2026-07-22 A | DC1-MOD1-L3-CX-2420 SS, DC1-MOD1-L3-CX-2420 FF | 100% |  |  | ROS | Commissioning | DH1200 | L3 | POD AC | BAB |  |
| DC1-FAN-L3-CX-2430 |  | DC1-FAN-A12-01 L3 Startup (2) | 2d | 2026-07-22 A | 2026-07-22 A | DC1-FAN-L3-CX-2420 | 100% | 2026-07-23 | 2026-07-24 | FBB | Commissioning | DH1200 | L3 | POD AC | BAB | Vendor Only |
| DC1-FAN-L3-CX-2440 |  | DC1-FAN-A12-01 BMS/EPMS Programming (2) | 1d | 2026-07-22 A | 2026-07-22 A | DC1-FAN-L3-CX-2430 | 100% | 2026-07-27 | 2026-07-27 | PRM | Commissioning | DH1200 | L3 | POD AC | BAB |  |

Notes:
- DC1-UPSM-L3-CX-2520: Steps: EC Startup Report; Vendor Startup
- DC1-UPSM-L3-CX-2550: Steps: EC Startup Report; Vendor Startup
- DC1-UPSM-L3-CX-2580: Steps: EC Startup Report; Vendor Startup
- DC1-UPSM-L3-CX-2610: Steps: EC Startup Report; Vendor Startup

| ID | WBS | Activity | Duration | Start | Finish | Predecessors | Complete | Planned start | Planned finish | Vendor Responsible Party | Layton Discipline | Location | CX Level | Equipment | Contract | Notes |
| --- | --- | --- | --- | --- | --- | --- | --- | --- | --- | --- | --- | --- | --- | --- | --- | --- |
|  | 02 | **DC1-DH1200 POD-AC UNITS B12 Cx L3** |  | 2026-07-22 | 2026-07-22 |  |  |  |  |  |  |  |  |  |  |  |
| DC1-COMP-L3-CX-2450 |  | DC1-COMP-B12-01 FTE (2) | 1d | 2026-07-22 A | 2026-07-22 A | DC1-MOD1-L3-CX-2450 SS, DC1-MOD1-L3-CX-2450 FF | 100% |  |  | ROS | Commissioning | DH1200 | L3 | POD AC | BAB |  |
| DC1-COMP-L3-CX-2460 |  | DC1-COMP-B12-01 L3 Startup (2) | 2d | 2026-07-22 A | 2026-07-22 A | DC1-COMP-L3-CX-2450 | 100% | 2026-07-23 | 2026-07-24 | CAP | Commissioning | DH1200 | L3 | POD AC | BAB | Vendor Only |
| DC1-COMP-L3-CX-2470 |  | DC1-COMP-B12-01 BMS/EPMS Programming (2) | 1d | 2026-07-22 A | 2026-07-22 A | DC1-COMP-L3-CX-2460 | 100% | 2026-07-27 | 2026-07-27 | PRM | Commissioning | DH1200 | L3 | POD AC | BAB |  |
| DC1-FAN-L3-CX-2450 |  | DC1-FAN-B12-01 FTE (2) | 1d | 2026-07-22 A | 2026-07-22 A | DC1-MOD1-L3-CX-2450 SS, DC1-MOD1-L3-CX-2450 FF | 100% |  |  | ROS | Commissioning | DH1200 | L3 | POD AC | BAB |  |
| DC1-FAN-L3-CX-2460 |  | DC1-FAN-B12-01 L3 Startup (2) | 2d | 2026-07-22 A | 2026-07-22 A | DC1-FAN-L3-CX-2450 | 100% | 2026-07-23 | 2026-07-24 | FBB | Commissioning | DH1200 | L3 | POD AC | BAB | Vendor Only |
| DC1-FAN-L3-CX-2470 |  | DC1-FAN-B12-01 BMS/EPMS Programming (2) | 1d | 2026-07-22 A | 2026-07-22 A | DC1-FAN-L3-CX-2460 | 100% | 2026-07-27 | 2026-07-27 | PRM | Commissioning | DH1200 | L3 | POD AC | BAB |  |
|  | 03 | **DC1-DH1200 POD-AC UNITS C12 Cx L3** |  | 2026-07-22 | 2026-07-22 |  |  |  |  |  |  |  |  |  |  |  |
| DC1-COMP-L3-CX-2480 |  | DC1-COMP-C12-01 FTE (2) | 1d | 2026-07-22 A | 2026-07-22 A | DC1-MOD1-L3-CX-2480 SS, DC1-MOD1-L3-CX-2480 FF | 100% |  |  | ROS | Commissioning | DH1200 | L3 | POD AC | BAB |  |
| DC1-COMP-L3-CX-2490 |  | DC1-COMP-C12-01 L3 Startup (2) | 2d | 2026-07-22 A | 2026-07-22 A | DC1-COMP-L3-CX-2480 | 100% | 2026-07-23 | 2026-07-24 | CAP | Commissioning | DH1200 | L3 | POD AC | BAB | Vendor Only |
| DC1-COMP-L3-CX-2500 |  | DC1-COMP-C12-01 BMS/EPMS Programming (2) | 1d | 2026-07-22 A | 2026-07-22 A | DC1-COMP-L3-CX-2490 | 100% | 2026-07-27 | 2026-07-27 | PRM | Commissioning | DH1200 | L3 | POD AC | BAB |  |
| DC1-FAN-L3-CX-2480 |  | DC1-FAN-C12-01 FTE (2) | 1d | 2026-07-22 A | 2026-07-22 A | DC1-MOD1-L3-CX-2480 SS, DC1-MOD1-L3-CX-2480 FF | 100% |  |  | ROS | Commissioning | DH1200 | L3 | POD AC | BAB |  |
| DC1-FAN-L3-CX-2490 |  | DC1-FAN-C12-01 L3 Startup (2) | 2d | 2026-07-22 A | 2026-07-22 A | DC1-FAN-L3-CX-2480 | 100% | 2026-07-23 | 2026-07-24 | FBB | Commissioning | DH1200 | L3 | POD AC | BAB | Vendor Only |
| DC1-FAN-L3-CX-2500 |  | DC1-FAN-C12-01 BMS/EPMS Programming (2) | 1d | 2026-07-22 A | 2026-07-22 A | DC1-FAN-L3-CX-2490 | 100% | 2026-07-27 | 2026-07-27 | PRM | Commissioning | DH1200 | L3 | POD AC | BAB |  |
|  | 04 | **DC1-DH1200 POD-AC UNITS D12 Cx L3** |  | 2026-07-22 | 2026-07-22 |  |  |  |  |  |  |  |  |  |  |  |
| DC1-COMP-L3-CX-2510 |  | DC1-COMP-D12-01 FTE (2) | 1d | 2026-07-22 A | 2026-07-22 A | DC1-MOD1-L3-CX-2510 SS, DC1-MOD1-L3-CX-2510 FF | 100% |  |  | ROS | Commissioning | DH1200 | L3 | POD AC | BAB |  |
| DC1-COMP-L3-CX-2520 |  | DC1-COMP-D12-01 L3 Startup (2) | 2d | 2026-07-22 A | 2026-07-22 A | DC1-COMP-L3-CX-2510 | 100% | 2026-07-23 | 2026-07-24 | CAP | Commissioning | DH1200 | L3 | POD AC | BAB | Vendor Only |
| DC1-COMP-L3-CX-2530 |  | DC1-COMP-D12-01 BMS/EPMS Programming (2) | 1d | 2026-07-22 A | 2026-07-22 A | DC1-COMP-L3-CX-2520 | 100% | 2026-07-27 | 2026-07-27 | PRM | Commissioning | DH1200 | L3 | POD AC | BAB |  |
| DC1-FAN-L3-CX-2510 |  | DC1-FAN-D12-01 FTE (2) | 1d | 2026-07-22 A | 2026-07-22 A | DC1-MOD1-L3-CX-2510 SS, DC1-MOD1-L3-CX-2510 FF | 100% |  |  | ROS | Commissioning | DH1200 | L3 | POD AC | BAB |  |
| DC1-FAN-L3-CX-2520 |  | DC1-FAN-D12-01 L3 Startup (2) | 2d | 2026-07-22 A | 2026-07-22 A | DC1-FAN-L3-CX-2510 | 100% | 2026-07-23 | 2026-07-24 | FBB | Commissioning | DH1200 | L3 | POD AC | BAB | Vendor Only |
| DC1-FAN-L3-CX-2530 |  | DC1-FAN-D12-01 BMS/EPMS Programming (2) | 1d | 2026-07-22 A | 2026-07-22 A | DC1-FAN-L3-CX-2520 | 100% | 2026-07-27 | 2026-07-27 | PRM | Commissioning | DH1200 | L3 | POD AC | BAB |  |
|  | 05 | **DC1-DH1200 POD-AC UNITS E12 Cx L3** |  | 2026-07-22 | 2026-07-22 |  |  |  |  |  |  |  |  |  |  |  |
| DC1-COMP-L3-CX-2540 |  | DC1-COMP-E12-01 FTE (2) | 1d | 2026-07-22 A | 2026-07-22 A | DC1-MOD1-L3-CX-2540 SS, DC1-MOD1-L3-CX-2540 FF | 100% |  |  | ROS | Commissioning | DH1200 | L3 | POD AC | BAB |  |
| DC1-COMP-L3-CX-2550 |  | DC1-COMP-E12-01 L3 Startup (2) | 2d | 2026-07-22 A | 2026-07-22 A | DC1-COMP-L3-CX-2540 | 100% | 2026-07-23 | 2026-07-24 | CAP | Commissioning | DH1200 | L3 | POD AC | BAB | Vendor Only |
| DC1-COMP-L3-CX-2560 |  | DC1-COMP-E12-01 BMS/EPMS Programming (2) | 1d | 2026-07-22 A | 2026-07-22 A | DC1-COMP-L3-CX-2550 | 100% | 2026-07-27 | 2026-07-27 | PRM | Commissioning | DH1200 | L3 | POD AC | BAB |  |
| DC1-FAN-L3-CX-2540 |  | DC1-FAN-E12-01 FTE (2) | 1d | 2026-07-22 A | 2026-07-22 A | DC1-MOD1-L3-CX-2540 SS, DC1-MOD1-L3-CX-2540 FF | 100% |  |  | ROS | Commissioning | DH1200 | L3 | POD AC | BAB |  |
| DC1-FAN-L3-CX-2550 |  | DC1-FAN-E12-01 L3 Startup (2) | 2d | 2026-07-22 A | 2026-07-22 A | DC1-FAN-L3-CX-2540 | 100% | 2026-07-23 | 2026-07-24 | FBB | Commissioning | DH1200 | L3 | POD AC | BAB | Vendor Only |
| DC1-FAN-L3-CX-2560 |  | DC1-FAN-E12-01 BMS/EPMS Programming (2) | 1d | 2026-07-22 A | 2026-07-22 A | DC1-FAN-L3-CX-2550 | 100% | 2026-07-27 | 2026-07-27 | PRM | Commissioning | DH1200 | L3 | POD AC | BAB |  |

| ID | WBS | Activity | Duration | Start | Finish | Predecessors | Complete | Planned start | Planned finish | Vendor Responsible Party | Layton Discipline | Location | CX Level | Equipment | Contract | Notes |
| --- | --- | --- | --- | --- | --- | --- | --- | --- | --- | --- | --- | --- | --- | --- | --- | --- |
|  | 06 | **DC1-DH1200 POD-AC UNITS F12 Cx L3** |  | 2026-07-22 | 2026-07-22 |  |  |  |  |  |  |  |  |  |  |  |
| DC1-COMP-L3-CX-2570 |  | DC1-COMP-F12-01 FTE (2) | 1d | 2026-07-22 A | 2026-07-22 A | DC1-MOD1-L3-CX-2570 SS, DC1-MOD1-L3-CX-2570 FF | 100% |  |  | ROS | Commissioning | DH1200 | L3 | POD AC | BAB |  |
| DC1-COMP-L3-CX-2580 |  | DC1-COMP-F12-01 L3 Startup (2) | 2d | 2026-07-22 A | 2026-07-22 A | DC1-COMP-L3-CX-2570 | 100% | 2026-07-23 | 2026-07-24 | CAP | Commissioning | DH1200 | L3 | POD AC | BAB | Vendor Only |
| DC1-COMP-L3-CX-2590 |  | DC1-COMP-F12-01 BMS/EPMS Programming (2) | 1d | 2026-07-22 A | 2026-07-22 A | DC1-COMP-L3-CX-2580 | 100% | 2026-07-27 | 2026-07-27 | PRM | Commissioning | DH1200 | L3 | POD AC | BAB |  |
| DC1-FAN-L3-CX-2570 |  | DC1-FAN-F12-01 FTE (2) | 1d | 2026-07-22 A | 2026-07-22 A | DC1-MOD1-L3-CX-2570 SS, DC1-MOD1-L3-CX-2570 FF | 100% |  |  | ROS | Commissioning | DH1200 | L3 | POD AC | BAB |  |
| DC1-FAN-L3-CX-2580 |  | DC1-FAN-F12-01 L3 Startup (2) | 2d | 2026-07-22 A | 2026-07-22 A | DC1-FAN-L3-CX-2570 | 100% | 2026-07-23 | 2026-07-24 | FBB | Commissioning | DH1200 | L3 | POD AC | BAB | Vendor Only |
| DC1-FAN-L3-CX-2590 |  | DC1-FAN-F12-01 BMS/EPMS Programming (2) | 1d | 2026-07-22 A | 2026-07-22 A | DC1-FAN-L3-CX-2580 | 100% | 2026-07-27 | 2026-07-27 | PRM | Commissioning | DH1200 | L3 | POD AC | BAB |  |
|  | 07 | **DC1-DH1200 POD-AC UNITS R12 Cx L3** |  | 2026-07-22 | 2026-07-22 |  |  |  |  |  |  |  |  |  |  |  |
| DC1-COMP-L3-CX-2600 |  | DC1-COMP-R12-01 FTE (2) | 1d | 2026-07-22 A | 2026-07-22 A | DC1-MOD1-L3-CX-2600 SS, DC1-MOD1-L3-CX-2600 FF | 100% |  |  | ROS | Commissioning | DH1200 | L3 | POD AC | BAB |  |
| DC1-COMP-L3-CX-2610 |  | DC1-COMP-R12-01 L3 Startup (2) | 2d | 2026-07-22 A | 2026-07-22 A | DC1-COMP-L3-CX-2600 | 100% | 2026-07-23 | 2026-07-24 | CAP | Commissioning | DH1200 | L3 | POD AC | BAB | Vendor Only |
| DC1-COMP-L3-CX-2620 |  | DC1-COMP-R12-01 BMS/EPMS Programming (2) | 1d | 2026-07-22 A | 2026-07-22 A | DC1-COMP-L3-CX-2610 | 100% | 2026-07-27 | 2026-07-27 | PRM | Commissioning | DH1200 | L3 | POD AC | BAB |  |
| DC1-FAN-L3-CX-2600 |  | DC1-FAN-R12-01 FTE (2) | 1d | 2026-07-22 A | 2026-07-22 A | DC1-MOD1-L3-CX-2600 SS, DC1-MOD1-L3-CX-2600 FF | 100% |  |  | ROS | Commissioning | DH1200 | L3 | POD AC | BAB |  |
| DC1-FAN-L3-CX-2610 |  | DC1-FAN-R12-01 L3 Startup (2) | 2d | 2026-07-22 A | 2026-07-22 A | DC1-FAN-L3-CX-2600 | 100% | 2026-07-23 | 2026-07-24 | FBB | Commissioning | DH1200 | L3 | POD AC | BAB | Vendor Only |
| DC1-FAN-L3-CX-2620 |  | DC1-FAN-R12-01 BMS/EPMS Programming (2) | 1d | 2026-07-22 A | 2026-07-22 A | DC1-FAN-L3-CX-2610 | 100% | 2026-07-27 | 2026-07-27 | PRM | Commissioning | DH1200 | L3 | POD AC | BAB |  |
|  | 04 | **DC1-DH1200 BUS-R1X/BUS-R2X Cx L3** |  |  |  |  |  |  |  |  |  |  |  |  |  |  |
|  | 01 | **DC1-DH1200 BUS-R1 CATCHER BUS DUCT Cx L3** |  |  |  |  |  |  |  |  |  |  |  |  |  |  |
|  | 02 | **DC1-DH1200 BUS-R2 MAINTENANCE BUS DUCT Cx L3** |  |  |  |  |  |  |  |  |  |  |  |  |  |  |
|  | 05 | **DC1-DH1200 ATS Cx L3** |  |  |  |  |  |  |  |  |  |  |  |  |  |  |
|  | 01 | **DC1-DH1200 ATS-A12 Cx L3** |  |  |  |  |  |  |  |  |  |  |  |  |  |  |
|  | 01 | **DC1-DH1200-ATS-A12-01 Cx L3** |  |  |  |  |  |  |  |  |  |  |  |  |  |  |
|  | 02 | **DC1-DH1200-ATS-A12-02 Cx L3** |  |  |  |  |  |  |  |  |  |  |  |  |  |  |
|  | 03 | **DC1-DH1200-ATS-A12-03 Cx L3** |  |  |  |  |  |  |  |  |  |  |  |  |  |  |
|  | 04 | **DC1-DH1200-ATS-A12-04 Cx L3** |  |  |  |  |  |  |  |  |  |  |  |  |  |  |
|  | 05 | **DC1-DH1200-ATS-A12-05 Cx L3** |  |  |  |  |  |  |  |  |  |  |  |  |  |  |
|  | 06 | **DC1-DH1200-ATS-A12-06 Cx L3** |  |  |  |  |  |  |  |  |  |  |  |  |  |  |
|  | 02 | **DC1-DH1200 ATS-B12 Cx L3** |  |  |  |  |  |  |  |  |  |  |  |  |  |  |
|  | 01 | **DC1-DH1200-ATS-B12-01 Cx L3** |  |  |  |  |  |  |  |  |  |  |  |  |  |  |
|  | 02 | **DC1-DH1200-ATS-B12-02 Cx L3** |  |  |  |  |  |  |  |  |  |  |  |  |  |  |
|  | 03 | **DC1-DH1200-ATS-B12-03 Cx L3** |  |  |  |  |  |  |  |  |  |  |  |  |  |  |
|  | 04 | **DC1-DH1200-ATS-B12-04 Cx L3** |  |  |  |  |  |  |  |  |  |  |  |  |  |  |
|  | 05 | **DC1-DH1200-ATS-B12-05 Cx L3** |  |  |  |  |  |  |  |  |  |  |  |  |  |  |
|  | 06 | **DC1-DH1200-ATS-B12-06 Cx L3** |  |  |  |  |  |  |  |  |  |  |  |  |  |  |
|  | 03 | **DC1-DH1200 ATS-C12 Cx L3** |  |  |  |  |  |  |  |  |  |  |  |  |  |  |
|  | 01 | **DC1-DH1200-ATS-C12-01 Cx L3** |  |  |  |  |  |  |  |  |  |  |  |  |  |  |
|  | 02 | **DC1-DH1200-ATS-C12-02 Cx L3** |  |  |  |  |  |  |  |  |  |  |  |  |  |  |
|  | 03 | **DC1-DH1200-ATS-C12-03 Cx L3** |  |  |  |  |  |  |  |  |  |  |  |  |  |  |
|  | 04 | **DC1-DH1200-ATS-C12-04 Cx L3** |  |  |  |  |  |  |  |  |  |  |  |  |  |  |
|  | 05 | **DC1-DH1200-ATS-C12-05 Cx L3** |  |  |  |  |  |  |  |  |  |  |  |  |  |  |
|  | 06 | **DC1-DH1200-ATS-C12-06 Cx L3** |  |  |  |  |  |  |  |  |  |  |  |  |  |  |
|  | 04 | **DC1-DH1200 ATS-D12 Cx L3** |  |  |  |  |  |  |  |  |  |  |  |  |  |  |
|  | 01 | **DC1-DH1200-ATS-D12-01 Cx L3** |  |  |  |  |  |  |  |  |  |  |  |  |  |  |
|  | 02 | **DC1-DH1200-ATS-D12-02 Cx L3** |  |  |  |  |  |  |  |  |  |  |  |  |  |  |
|  | 03 | **DC1-DH1200-ATS-D12-03 Cx L3** |  |  |  |  |  |  |  |  |  |  |  |  |  |  |
|  | 04 | **DC1-DH1200-ATS-D12-04 Cx L3** |  |  |  |  |  |  |  |  |  |  |  |  |  |  |
|  | 05 | **DC1-DH1200-ATS-D12-05 Cx L3** |  |  |  |  |  |  |  |  |  |  |  |  |  |  |
|  | 06 | **DC1-DH1200-ATS-D12-06 Cx L3** |  |  |  |  |  |  |  |  |  |  |  |  |  |  |
|  | 05 | **DC1-DH1200 ATS-E12 Cx L3** |  |  |  |  |  |  |  |  |  |  |  |  |  |  |
|  | 01 | **DC1-DH1200-ATS-E12-01 Cx L3** |  |  |  |  |  |  |  |  |  |  |  |  |  |  |
|  | 02 | **DC1-DH1200-ATS-E12-02 Cx L3** |  |  |  |  |  |  |  |  |  |  |  |  |  |  |
|  | 03 | **DC1-DH1200-ATS-E12-03 Cx L3** |  |  |  |  |  |  |  |  |  |  |  |  |  |  |
|  | 04 | **DC1-DH1200-ATS-E12-04 Cx L3** |  |  |  |  |  |  |  |  |  |  |  |  |  |  |
|  | 05 | **DC1-DH1200-ATS-E12-05 Cx L3** |  |  |  |  |  |  |  |  |  |  |  |  |  |  |
|  | 06 | **DC1-DH1200-ATS-E12-06 Cx L3** |  |  |  |  |  |  |  |  |  |  |  |  |  |  |
|  | 06 | **DC1-DH1200 ATS-F12 Cx L3** |  |  |  |  |  |  |  |  |  |  |  |  |  |  |
|  | 01 | **DC1-DH1200-ATS-F12-01 Cx L3** |  |  |  |  |  |  |  |  |  |  |  |  |  |  |
|  | 02 | **DC1-DH1200-ATS-F12-02 Cx L3** |  |  |  |  |  |  |  |  |  |  |  |  |  |  |
|  | 03 | **DC1-DH1200-ATS-F12-03 Cx L3** |  |  |  |  |  |  |  |  |  |  |  |  |  |  |
|  | 04 | **DC1-DH1200-ATS-F12-04 Cx L3** |  |  |  |  |  |  |  |  |  |  |  |  |  |  |
|  | 05 | **DC1-DH1200-ATS-F12-05 Cx L3** |  |  |  |  |  |  |  |  |  |  |  |  |  |  |
|  | 06 | **DC1-DH1200-ATS-F12-06 Cx L3** |  |  |  |  |  |  |  |  |  |  |  |  |  |  |
|  | 06 | **DC1-DH1200 CODs Cx L3** |  |  |  |  |  |  |  |  |  |  |  |  |  |  |
|  | 01 | **DC1-DH1200-COD-A12 Cx L3** |  |  |  |  |  |  |  |  |  |  |  |  |  |  |
|  | 01 | **DC1-DH1200-COD-A12-01 Cx L3** |  |  |  |  |  |  |  |  |  |  |  |  |  |  |
|  | 02 | **DC1-DH1200-COD-A12-02 Cx L3** |  |  |  |  |  |  |  |  |  |  |  |  |  |  |
|  | 03 | **DC1-DH1200-COD-A12-03 Cx L3** |  |  |  |  |  |  |  |  |  |  |  |  |  |  |
|  | 04 | **DC1-DH1200-COD-A12-04 Cx L3** |  |  |  |  |  |  |  |  |  |  |  |  |  |  |
|  | 05 | **DC1-DH1200-COD-A12-05 Cx L3** |  |  |  |  |  |  |  |  |  |  |  |  |  |  |
|  | 06 | **DC1-DH1200-COD-A12-06 Cx L3** |  |  |  |  |  |  |  |  |  |  |  |  |  |  |
|  | 02 | **DC1-DH1200-COD-B12 Cx L3** |  |  |  |  |  |  |  |  |  |  |  |  |  |  |
|  | 01 | **DC1-DH1200-COD-B12-01 Cx L3** |  |  |  |  |  |  |  |  |  |  |  |  |  |  |

| WBS | Activity |
| --- | --- |
| 02 | **DC1-DH1200-COD-B12-02 Cx L3** |
| 03 | **DC1-DH1200-COD-B12-03 Cx L3** |
| 04 | **DC1-DH1200-COD-B12-04 Cx L3** |
| 05 | **DC1-DH1200-COD-B12-05 Cx L3** |
| 06 | **DC1-DH1200-COD-B12-06 Cx L3** |
| 03 | **DC1-DH1200-COD-C12 Cx L3** |
| 01 | **DC1-DH1200-COD-C12-01 Cx L3** |
| 02 | **DC1-DH1200-COD-C12-02 Cx L3** |
| 03 | **DC1-DH1200-COD-C12-03 Cx L3** |
| 04 | **DC1-DH1200-COD-C12-04 Cx L3** |
| 05 | **DC1-DH1200-COD-C12-05 Cx L3** |
| 06 | **DC1-DH1200-COD-C12-06 Cx L3** |
| 04 | **DC1-DH1200-COD-D12 Cx L3** |
| 01 | **DC1-DH1200-COD-D12-01 Cx L3** |
| 02 | **DC1-DH1200-COD-D12-02 Cx L3** |
| 03 | **DC1-DH1200-COD-D12-03 Cx L3** |
| 04 | **DC1-DH1200-COD-D12-04 Cx L3** |
| 05 | **DC1-DH1200-COD-D12-05 Cx L3** |
| 06 | **DC1-DH1200-COD-D12-06 Cx L3** |
| 05 | **DC1-DH1200-COD-E12 Cx L3** |
| 01 | **DC1-DH1200-ATS-E12-01 Cx L3** |
| 02 | **DC1-DH1200-ATS-E12-02 Cx L3** |
| 03 | **DC1-DH1200-ATS-E12-03 Cx L3** |
| 04 | **DC1-DH1200-ATS-E12-04 Cx L3** |
| 05 | **DC1-DH1200-ATS-E12-05 Cx L3** |
| 06 | **DC1-DH1200-ATS-E12-06 Cx L3** |
| 06 | **DC1-DH1200-COD-F12 Cx L3** |
| 01 | **DC1-DH1200-COD-F12-01 Cx L3** |
| 02 | **DC1-DH1200-COD-F12-02 Cx L3** |
| 03 | **DC1-DH1200-COD-F12-03 Cx L3** |
| 04 | **DC1-DH1200-COD-F12-04 Cx L3** |
| 05 | **DC1-DH1200-COD-F12-05 Cx L3** |
| 06 | **DC1-DH1200-COD-F12-06 Cx L3** |
| 07 | **DC1-DH1200 RPPs Cx L3** |
| 01 | **DC1-DH1200-RPP-A12 Cx L3** |
| 01 | **DC1-DH1200-RPP-A12-01 Cx L3** |
| 02 | **DC1-DH1200-RPP-A12-02 Cx L3** |
| 03 | **DC1-DH1200-RPP-A12-03 Cx L3** |
| 04 | **DC1-DH1200-RPP-A12-04 Cx L3** |
| 05 | **DC1-DH1200-RPP-A12-05 Cx L3** |
| 06 | **DC1-DH1200-RPP-A12-06 Cx L3** |
| 02 | **DC1-DH1200-RPP-B12 Cx L3** |
| 01 | **DC1-DH1200-RPP-B12-01 Cx L3** |
| 02 | **DC1-DH1200-RPP-B12-02 Cx L3** |
| 03 | **DC1-DH1200-RPP-B12-03 Cx L3** |
| 04 | **DC1-DH1200-RPP-B12-04 Cx L3** |
| 05 | **DC1-DH1200-RPP-B12-05 Cx L3** |
| 06 | **DC1-DH1200-RPP-B12-06 Cx L3** |
| 03 | **DC1-DH1200-RPP-C12 Cx L3** |
| 01 | **DC1-DH1200-RPP-C12-01 Cx L3** |
| 02 | **DC1-DH1200-RPP-C12-02 Cx L3** |
| 03 | **DC1-DH1200-RPP-C12-03 Cx L3** |
| 04 | **DC1-DH1200-RPP-C12-04 Cx L3** |
| 05 | **DC1-DH1200-RPP-C12-05 Cx L3** |
| 06 | **DC1-DH1200-RPP-C12-06 Cx L3** |
| 04 | **DC1-DH1200-RPP-D12 Cx L3** |
| 01 | **DC1-DH1200-RPP-D12-01 Cx L3** |
| 02 | **DC1-DH1200-RPP-D12-02 Cx L3** |
| 03 | **DC1-DH1200-RPP-D12-03 Cx L3** |
| 04 | **DC1-DH1200-RPP-D12-04 Cx L3** |
| 05 | **DC1-DH1200-RPP-D12-05 Cx L3** |
| 06 | **DC1-DH1200-RPP-D12-06 Cx L3** |
| 05 | **DC1-DH1200-RPP-E12 Cx L3** |
| 01 | **DC1-DH1200-RPP-E12-01 Cx L3** |
| 02 | **DC1-DH1200-RPP-E12-02 Cx L3** |
| 03 | **DC1-DH1200-RPP-E12-03 Cx L3** |
| 04 | **DC1-DH1200-RPP-E12-04 Cx L3** |
| 05 | **DC1-DH1200-RPP-E12-05 Cx L3** |
| 06 | **DC1-DH1200-RPP-E12-06 Cx L3** |
| 06 | **DC1-DH1200-RPP-F12 Cx L3** |

| WBS | Activity |
| --- | --- |
| 01 | **DC1-DH1200-RPP-F12-01 Cx L3** |
| 02 | **DC1-DH1200-RPP-F12-02 Cx L3** |
| 03 | **DC1-DH1200-RPP-F12-03 Cx L3** |
| 04 | **DC1-DH1200-RPP-F12-04 Cx L3** |
| 05 | **DC1-DH1200-RPP-F12-05 Cx L3** |
| 06 | **DC1-DH1200-RPP-F12-06 Cx L3** |
| 08 | **DC1-DH1200 MOD-02 Cx L3** |
| 01 | **DC1-DH1200 MOD-A12-02 Cx L3** |
| 02 | **DC1-DH1200 MOD-B12-02 Cx L3** |
| 03 | **DC1-DH1200 MOD-C12-02 Cx L3** |
| 04 | **DC1-DH1200 MOD-D12-02 Cx L3** |
| 05 | **DC1-DH1200 MOD-E12-02 Cx L3** |
| 06 | **DC1-DH1200 MOD-F12-02 Cx L3** |
| 07 | **DC1-DH1200 MOD-R12-02 Cx L3** |
| 09 | **DC1-DH1200 MOD-03 Cx L3** |
| 01 | **DC1-DH1200 MOD-A12-03 Cx L3** |
| 02 | **DC1-DH1200 MOD-B12-03 Cx L3** |
| 03 | **DC1-DH1200 MOD-C12-03 Cx L3** |
| 04 | **DC1-DH1200 MOD-D12-03 Cx L3** |
| 05 | **DC1-DH1200 MOD-E12-03 Cx L3** |
| 06 | **DC1-DH1200 MOD-F12-03 Cx L3** |
| 07 | **DC1-DH1200 MOD-R12-03 Cx L3** |
| 10 | **DC1-DH1200 CDUs Cx L3** |
| 1 | **DC1-CDU-DH1200-01 Cx L3** |
| 04 | **DC1-CDU-DH1200-04 Cx L3** |
| 2 | **DC1-CDU-DH1200-02 Cx L3** |
| 3 | **DC1-CDU-DH1200-03 Cx L3** |
| 05 | **DC1-CDU-DH1200-05 Cx L3** |
| 06 | **DC1-CDU-DH1200-06 Cx L3** |
| 4 | **DC1-CDU-DH1200-07 Cx L3** |
| 5 | **DC1-CDU-DH1200-08 Cx L3** |
| 6 | **DC1-CDU-DH1200-09 Cx L3** |
| 7 | **DC1-CDU-DH1200-10 Cx L3** |
| 8 | **DC1-CDU-DH1200-11 Cx L3** |
| 9 | **DC1-CDU-DH1200-12 Cx L3** |
| 10 | **DC1-CDU-DH1200-13 Cx L3** |
| 11 | **DC1-CDU-DH1200-14 Cx L3** |
| 12 | **DC1-CDU-DH1200-15 Cx L3** |
| 13 | **DC1-CDU-DH1200-16 Cx L3** |
| 14 | **DC1-CDU-DH1200-17 Cx L3** |
| 15 | **DC1-CDU-DH1200-18 Cx L3** |
| 11 | **DC1-DH1200 CHLR-1RT40 Cx L3** |
| 01 | **DC1-DH1200 CHLR-1RT40-A12 Cx L3** |
| 02 | **DC1-DH1200 CHLR-1RT40-B12 Cx L3** |
| 03 | **DC1-DH1200 CHLR-1RT40-C12 Cx L3** |
| 04 | **DC1-DH1200 CHLR-1RT40-D12 Cx L3** |
| 05 | **DC1-DH1200 CHLR-1RT40-E12 Cx L3** |
| 06 | **DC1-DH1200 CHLR-1RT40-F12 Cx L3** |
| 07 | **DC1-DH1200 CHLR-1RT40-R12 Cx L3** |
| 12 | **DC1-DH1200 CHWP-1RT40 Cx L3** |
| 01 | **DC1-DH1200 CHWP-1RT40-A12 Cx L3** |
| 02 | **DC1-DH1200 CHWP-1RT40-B12 Cx L3** |
| 03 | **DC1-DH1200 CHWP-1RT40-C12 Cx L3** |
| 04 | **DC1-DH1200 CHWP-1RT40-D12 Cx L3** |
| 05 | **DC1-DH1200 CHWP-1RT40-E12 Cx L3** |
| 06 | **DC1-DH1200 CHWP-1RT40-F12 Cx L3** |
| 07 | **DC1-DH1200 CHWP-1RT40-R12 Cx L3** |
| 13 | **DC1-DH1200 CRAH/DOAS Cx L3** |
| 01 | **DH1200 CRAH-DH-01 L3** |
| 02 | **DH1200 CRAH-DH-02 L3** |
| 03 | **DH1200 CRAH-DH-03 L3** |
| 04 | **DH1200 CRAH-DH-04 L3** |
| 05 | **DH1200 CRAH-DH-05 L3** |
| 06 | **DH1200 CRAH-DH-06 L3** |
| 07 | **DH1200 CRAH-DH-07 L3** |
| 08 | **DH1200 CRAH-DH-08 L3** |
| 09 | **DH1200 CRAH-DH-09 L3** |
| 10 | **DH1200 CRAH-DH-10 L3** |
| 11 | **DH1200 CRAH-DH-11 L3** |
| 12 | **DH1200 CRAH-DH-12 L3** |

| WBS | Activity |
| --- | --- |
| 13 | **DH1200 CRAH-DH-13 L3** |
| 14 | **DH1200 CRAH-DH-14 L3** |
| 15 | **DH1200 CRAH-DH-15 L3** |
| 16 | **DH1200 CRAH-DH-16 L3** |
| 17 | **DH1200 CRAH-DH-17 L3** |
| 18 | **DH1200 CRAH-DH-18 L3** |
| 19 | **DH1200 CRAH-DH-19 L3** |
| 20 | **DH1200 CRAH-DH-20 L3** |
| 21 | **DH1200 CRAH-DH-21 L3** |
| 22 | **DH1200 CRAH-DH-22 L3** |
| 23 | **DH1200 CRAH-DH-23 L3** |
| 24 | **DH1200 CRAH-DH-24 L3** |
| 25 | **DH1200 CRAH-DH-25 L3** |
| 26 | **DH1200 CRAH-DH-26 L3** |
| 27 | **DH1200 CRAH-DH-27 L3** |
| 28 | **DH1200 CRAH-DH-28 L3** |
| 29 | **DH1200 CRAH-EG-01 L3** |
| 30 | **DH1200 CRAH-EG-02 L3** |
| 31 | **DH1200 CRAH-EG-03 L3** |
| 32 | **DH1200 CRAH-EG-04 L3** |
| 33 | **DC1-DH1200-DOAS-RT-01 L3** |
| 34 | **DC1-DH1200-DOAS-RT-02 L3** |
| 14 | **DC1-DH1200 LOADBANK** |
| 15 | **DC1-DH1200 TAB** |
| 04 | **Data Hall 1200 Cx L4** |
| 1 | **Data Hall 1200 Generator Burn In** |
| 02 | **Data Hall 1200 Mechanical Cx L4** |
| 01 | **Data Hall 1200 Electrical Cx L4** |
| 05 | **Data Hall 1200 Cx L5** |
| 06 | **Data Hall 2300 Commissioning** |
| 02 | **Data Hall 2300 Cx L2** |
| 01 | **DC1-DH2300 Generators Cx L2** |
| 02 | **DC1-DH2300 MV XFMRs Cx L2** |
| 03 | **DC1-DH2300 PODS** |
| 01 | **DC1-DH2300 SWDs Cx L2** |
| 02 | **DC1-DH2300 MOD-01s Cx L2** |
| 03 | **DC1-DH2300 UPS-M Cx L2** |
| 04 | **DC1-DH2300 COMPRESSOR/FAN UNITS Cx L2** |
| 01 | **DC1-DH2300 POD-AC UNITS A23 Cx L2** |
| 02 | **DC1-DH2300 POD-AC UNITS B23 Cx L2** |
| 03 | **DC1-DH2300 POD-AC UNITS C23 Cx L2** |
| 04 | **DC1-DH2300 POD-AC UNITS D23 Cx L2** |
| 05 | **DC1-DH2300 POD-AC UNITS E23 Cx L2** |
| 06 | **DC1-DH2300 POD-AC UNITS F23 Cx L2** |
| 07 | **DC1-DH2300 POD-AC UNITS R23 Cx L2** |
| 04 | **DC1-DH2300 BUS-R1X/BUS-R2X Cx L2** |
| 05 | **DC1-DH2300 ATS Cx L2** |
| 01 | **DC1-DH2300 ATS A23 Cx L2** |
| 02 | **DC1-DH2300 ATS B23 Cx L2** |
| 03 | **DC1-DH2300 ATS C23 Cx L2** |
| 04 | **DC1-DH2300 ATS D23 Cx L2** |
| 05 | **DC1-DH2300 ATS E23 Cx L2** |
| 06 | **DC1-DH2300 ATS F23 Cx L2** |
| 06 | **DC1-DH2300 CODs Cx L2** |
| 01 | **DC1-DH2300 COD A23 Cx L2** |
| 02 | **DC1-DH2300 COD B23 Cx L2** |
| 03 | **DC1-DH2300 COD C23 Cx L2** |
| 04 | **DC1-DH2300 COD D23 Cx L2** |
| 05 | **DC1-DH2300 COD E23 Cx L2** |
| 06 | **DC1-DH2300 COD F23 Cx L2** |
| 07 | **DC1-DH2300 RPPs Cx L2** |
| 01 | **DC1-DH2300 RPP A23 Cx L2** |
| 02 | **DC1-DH2300 RPP B23 Cx L2** |
| 03 | **DC1-DH2300 RPP C23 Cx L2** |
| 04 | **DC1-DH2300 RPP D23 Cx L2** |
| 05 | **DC1-DH2300 RPP E23 Cx L2** |
| 06 | **DC1-DH2300 RPP F23 Cx L2** |
| 08 | **DC1-DH2300 MOD-02 Cx L2** |
| 09 | **DC1-DH2300 MOD-03 Cx L2** |
| 10 | **DC1-DH2300 CDUs Cx L2** |

| WBS | Activity |
| --- | --- |
| 11 | **DC1-DH2300 CHLR Cx L2** |
| 12 | **DC1-DH2300 CHWP Cx L2** |
| 13 | **DC1-DH2300 CRAH/DOAS Cx L2** |
| 03 | **Data Hall 2300 Cx L3** |
| 01 | **DC1-DH2300 Generators Cx L3** |
| 01 | **DC1-DH2300-GEN-A23 Cx L3** |
| 02 | **DC1-DH2300-GEN-B23 Cx L3** |
| 03 | **DC1-DH2300-GEN-C23 Cx L3** |
| 04 | **DC1-DH2300-GEN-D23 Cx L3** |
| 05 | **DC1-DH2300-GEN-E23 Cx L3** |
| 06 | **DC1-DH2300-GEN-F23 Cx L3** |
| 07 | **DC1-DH2300-GEN-R23 Cx L3** |
| 02 | **DC1-DH2300 MV XFMRs Cx L3** |
| 01 | **DC1-DH2300 MV-XFMR-A23 Cx L3** |
| 02 | **DC1-DH2300 MV-XFMR-B23 Cx L3** |
| 03 | **DC1-DH2300 MV-XFMR-C23 Cx L3** |
| 04 | **DC1-DH2300 MV-XFMR-D23 Cx L3** |
| 05 | **DC1-DH2300 MV-XFMR-E23 Cx L3** |
| 06 | **DC1-DH2300 MV-XFMR-F23 Cx L3** |
| 07 | **DC1-DH2300 MV-XFMR-R23 Cx L3** |
| 03 | **DC1-DH2300 PODS Cx L3** |
| 01 | **DC1-DH2300 SWDs Cx L3** |
| 01 | **DC1-DH2300-SWD-A23 Cx L3** |
| 02 | **DC1-DH2300-SWD-B23 Cx L3** |
| 03 | **DC1-DH2300-SWD-C23 Cx L3** |
| 04 | **DC1-DH2300-SWD-D23 Cx L3** |
| 05 | **DC1-DH2300-SWD-E23 Cx L3** |
| 06 | **DC1-DH2300-SWD-F23 Cx L3** |
| 07 | **DC1-DH2300-SWD-R23 Cx L3** |
| 02 | **DC1-DH2300 MOD-01s Cx L3** |
| 01 | **DC1-DH2300-MOD-A23-01 Cx L3** |
| 02 | **DC1-DH2300-MOD-B23-01 Cx L3** |
| 03 | **DC1-DH2300-MOD-C23-01 Cx L3** |
| 04 | **DC1-DH2300-MOD-D23-01 Cx L3** |
| 05 | **DC1-DH2300-MOD-E23-01 Cx L3** |
| 06 | **DC1-DH2300-MOD-F23-01 Cx L3** |
| 07 | **DC1-DH2300-MOD-R23-01 Cx L3** |
| 03 | **DC1-DH2300 UPS-M Cx L3** |
| 01 | **DC1-DH2300-UPS-M-A23-01 Cx L3** |
| 02 | **DC1-DH2300-UPS-M-B23-01 Cx L3** |
| 03 | **DC1-DH2300-UPS-M-C23-01 Cx L3** |
| 04 | **DC1-DH2300-UPS-M-D23-01 Cx L3** |
| 05 | **DC1-DH2300-UPS-M-E23-01 Cx L3** |
| 06 | **DC1-DH2300-UPS-M-F23-01 Cx L3** |
| 07 | **DC1-DH2300-UPS-M-R23-01 Cx L3** |
| 04 | **DC1-DH2300 COMPRESSOR/FAN UNITS Cx L3** |
| 01 | **DC1-DH2300 POD-AC UNITS A23 Cx L3** |
| 02 | **DC1-DH2300 POD-AC UNITS B23 Cx L3** |
| 03 | **DC1-DH2300 POD-AC UNITS C23 Cx L3** |
| 04 | **DC1-DH2300 POD-AC UNITS D23 Cx L3** |
| 05 | **DC1-DH2300 POD-AC UNITS E23 Cx L3** |
| 06 | **DC1-DH2300 POD-AC UNITS F23 Cx L3** |
| 07 | **DC1-DH2300 POD-AC UNITS R23 Cx L3** |
| 04 | **DC1-DH2300 BUS-R1X/BUS-R2X Cx L3** |
| 01 | **DC1-DH2300 BUS-R2 MAINTENANCE BUS DUCT Cx L3** |
| 02 | **DC1-DH2300 BUS-R1 CATCHER BUS DUCT Cx L3** |
| 05 | **DC1-DH2300 ATS Cx L3** |
| 01 | **DC1-DH2300 ATS-A23 Cx L3** |
| 01 | **DC1-DH2300-ATS-A23-01 Cx L3** |
| 02 | **DC1-DH2300-ATS-A23-02 Cx L3** |
| 03 | **DC1-DH2300-ATS-A23-03 Cx L3** |
| 04 | **DC1-DH2300-ATS-A23-04 Cx L3** |
| 05 | **DC1-DH2300-ATS-A23-05 Cx L3** |
| 06 | **DC1-DH2300-ATS-A23-06 Cx L3** |
| 02 | **DC1-DH2300 ATS-B23 Cx L3** |
| 01 | **DC1-DH2300-ATS-B23-01 Cx L3** |
| 02 | **DC1-DH2300-ATS-B23-02 Cx L3** |
| 03 | **DC1-DH2300-ATS-B23-03 Cx L3** |
| 04 | **DC1-DH2300-ATS-B23-04 Cx L3** |
| 05 | **DC1-DH2300-ATS-B23-05 Cx L3** |

| WBS | Activity |
| --- | --- |
| 06 | **DC1-DH2300-ATS-B23-06 Cx L3** |
| 03 | **DC1-DH2300 ATS-C23 Cx L3** |
| 01 | **DC1-DH2300-ATS-C23-01 Cx L3** |
| 02 | **DC1-DH2300-ATS-C23-02 Cx L3** |
| 03 | **DC1-DH2300-ATS-C23-03 Cx L3** |
| 04 | **DC1-DH2300-ATS-C23-04 Cx L3** |
| 05 | **DC1-DH2300-ATS-C23-05 Cx L3** |
| 06 | **DC1-DH2300-ATS-C23-06 Cx L3** |
| 04 | **DC1-DH2300 ATS-D23 Cx L3** |
| 01 | **DC1-DH2300-ATS-D23-01 Cx L3** |
| 02 | **DC1-DH2300-ATS-D23-02 Cx L3** |
| 03 | **DC1-DH2300-ATS-D23-03 Cx L3** |
| 04 | **DC1-DH2300-ATS-D23-04 Cx L3** |
| 05 | **DC1-DH2300-ATS-D23-05 Cx L3** |
| 06 | **DC1-DH2300-ATS-D23-06 Cx L3** |
| 05 | **DC1-DH2300 ATS-E23 Cx L3** |
| 01 | **DC1-DH2300-ATS-E23-01 Cx L3** |
| 02 | **DC1-DH2300-ATS-E23-02 Cx L3** |
| 03 | **DC1-DH2300-ATS-E23-03 Cx L3** |
| 04 | **DC1-DH2300-ATS-E23-04 Cx L3** |
| 05 | **DC1-DH2300-ATS-E23-05 Cx L3** |
| 06 | **DC1-DH2300-ATS-E23-06 Cx L3** |
| 06 | **DC1-DH2300 ATS-F23 Cx L3** |
| 01 | **DC1-DH2300-ATS-F23-01 Cx L3** |
| 02 | **DC1-DH2300-ATS-F23-02 Cx L3** |
| 03 | **DC1-DH2300-ATS-F23-03 Cx L3** |
| 04 | **DC1-DH2300-ATS-F23-04 Cx L3** |
| 05 | **DC1-DH2300-ATS-F23-05 Cx L3** |
| 06 | **DC1-DH2300-ATS-F23-06 Cx L3** |
| 06 | **DC1-DH2300 CODs Cx L3** |
| 01 | **DC1-DH2300-COD-A23 Cx L3** |
| 01 | **DC1-DH2300-COD-A23-01 Cx L3** |
| 02 | **DC1-DH2300-COD-A23-02 Cx L3** |
| 03 | **DC1-DH2300-COD-A23-03 Cx L3** |
| 04 | **DC1-DH2300-COD-A23-04 Cx L3** |
| 05 | **DC1-DH2300-COD-A23-05 Cx L3** |
| 06 | **DC1-DH2300-COD-A23-06 Cx L3** |
| 02 | **DC1-DH2300-COD-B23 Cx L3** |
| 01 | **DC1-DH2300-COD-B23-01 Cx L3** |
| 02 | **DC1-DH2300-COD-B23-02 Cx L3** |
| 03 | **DC1-DH2300-COD-B23-03 Cx L3** |
| 04 | **DC1-DH2300-COD-B23-04 Cx L3** |
| 05 | **DC1-DH2300-COD-B23-05 Cx L3** |
| 06 | **DC1-DH2300-COD-B23-06 Cx L3** |
| 03 | **DC1-DH2300-COD-C23 Cx L3** |
| 01 | **DC1-DH2300-COD-C23-01 Cx L3** |
| 02 | **DC1-DH2300-COD-C23-02 Cx L3** |
| 03 | **DC1-DH2300-COD-C23-03 Cx L3** |
| 04 | **DC1-DH2300-COD-C23-04 Cx L3** |
| 05 | **DC1-DH2300-COD-C23-05 Cx L3** |
| 06 | **DC1-DH2300-COD-C23-06 Cx L3** |
| 04 | **DC1-DH2300-COD-D23 Cx L3** |
| 01 | **DC1-DH2300-COD-D23-01 Cx L3** |
| 02 | **DC1-DH2300-COD-D23-02 Cx L3** |
| 03 | **DC1-DH2300-COD-D23-03 Cx L3** |
| 04 | **DC1-DH2300-COD-D23-04 Cx L3** |
| 05 | **DC1-DH2300-COD-D23-05 Cx L3** |
| 06 | **DC1-DH2300-COD-D23-06 Cx L3** |
| 05 | **DC1-DH2300-COD-E23 Cx L3** |
| 01 | **DC1-DH2300-ATS-E23-01 Cx L3** |
| 02 | **DC1-DH2300-ATS-E23-02 Cx L3** |
| 03 | **DC1-DH2300-ATS-E23-03 Cx L3** |
| 04 | **DC1-DH2300-ATS-E23-04 Cx L3** |
| 05 | **DC1-DH2300-ATS-E23-05 Cx L3** |
| 06 | **DC1-DH2300-ATS-E23-06 Cx L3** |
| 06 | **DC1-DH2300-COD-F23 Cx L3** |
| 01 | **DC1-DH2300-COD-F23-01 Cx L3** |
| 02 | **DC1-DH2300-COD-F23-02 Cx L3** |
| 03 | **DC1-DH2300-COD-F23-03 Cx L3** |
| 04 | **DC1-DH2300-COD-F23-04 Cx L3** |

| WBS | Activity |
| --- | --- |
| 05 | **DC1-DH2300-COD-F23-05 Cx L3** |
| 06 | **DC1-DH2300-COD-F23-06 Cx L3** |
| 07 | **DC1-DH2300 RPPs Cx L3** |
| 01 | **DC1-DH2300-RPP-A23 Cx L3** |
| 01 | **DC1-DH2300-RPP-A23-01 Cx L3** |
| 02 | **DC1-DH2300-RPP-A23-02 Cx L3** |
| 03 | **DC1-DH2300-RPP-A23-03 Cx L3** |
| 04 | **DC1-DH2300-RPP-A23-04 Cx L3** |
| 05 | **DC1-DH2300-RPP-A23-05 Cx L3** |
| 06 | **DC1-DH2300-RPP-A23-06 Cx L3** |
| 02 | **DC1-DH2300-RPP-B23 Cx L3** |
| 01 | **DC1-DH2300-RPP-B23-01 Cx L3** |
| 02 | **DC1-DH2300-RPP-B23-02 Cx L3** |
| 03 | **DC1-DH2300-RPP-B23-03 Cx L3** |
| 04 | **DC1-DH2300-RPP-B23-04 Cx L3** |
| 05 | **DC1-DH2300-RPP-B23-05 Cx L3** |
| 06 | **DC1-DH2300-RPP-B23-06 Cx L3** |
| 03 | **DC1-DH2300-RPP-C23 Cx L3** |
| 01 | **DC1-DH2300-RPP-C23-01 Cx L3** |
| 02 | **DC1-DH2300-RPP-C23-02 Cx L3** |
| 03 | **DC1-DH2300-RPP-C23-03 Cx L3** |
| 04 | **DC1-DH2300-RPP-C23-04 Cx L3** |
| 05 | **DC1-DH2300-RPP-C23-05 Cx L3** |
| 06 | **DC1-DH2300-RPP-C23-06 Cx L3** |
| 04 | **DC1-DH2300-RPP-D23 Cx L3** |
| 01 | **DC1-DH2300-RPP-D23-01 Cx L3** |
| 02 | **DC1-DH2300-RPP-D23-02 Cx L3** |
| 03 | **DC1-DH2300-RPP-D23-03 Cx L3** |
| 04 | **DC1-DH2300-RPP-D23-04 Cx L3** |
| 05 | **DC1-DH2300-RPP-D23-05 Cx L3** |
| 06 | **DC1-DH2300-RPP-D23-06 Cx L3** |
| 05 | **DC1-DH2300-RPP-E23 Cx L3** |
| 01 | **DC1-DH2300-RPP-E23-01 Cx L3** |
| 02 | **DC1-DH2300-RPP-E23-02 Cx L3** |
| 03 | **DC1-DH2300-RPP-E23-03 Cx L3** |
| 04 | **DC1-DH2300-RPP-E23-04 Cx L3** |
| 05 | **DC1-DH2300-RPP-E23-05 Cx L3** |
| 06 | **DC1-DH2300-RPP-E23-06 Cx L3** |
| 06 | **DC1-DH2300-RPP-F23 Cx L3** |
| 01 | **DC1-DH2300-RPP-F23-01 Cx L3** |
| 02 | **DC1-DH2300-RPP-F23-02 Cx L3** |
| 03 | **DC1-DH2300-RPP-F23-03 Cx L3** |
| 04 | **DC1-DH2300-RPP-F23-04 Cx L3** |
| 05 | **DC1-DH2300-RPP-F23-05 Cx L3** |
| 06 | **DC1-DH2300-RPP-F23-06 Cx L3** |
| 08 | **DC1-DH2300 MOD-02 Cx L3** |
| 01 | **DC1-DH2300 MOD-A23-02 Cx L3** |
| 02 | **DC1-DH2300 MOD-B23-02 Cx L3** |
| 03 | **DC1-DH2300 MOD-C23-02 Cx L3** |
| 04 | **DC1-DH2300 MOD-D23-02 Cx L3** |
| 05 | **DC1-DH2300 MOD-E23-02 Cx L3** |
| 06 | **DC1-DH2300 MOD-F23-02 Cx L3** |
| 07 | **DC1-DH2300 MOD-R23-02 Cx L3** |
| 09 | **DC1-DH2300 MOD-03 Cx L3** |
| 01 | **DC1-DH2300 MOD-A23-03 Cx L3** |
| 02 | **DC1-DH2300 MOD-B23-03 Cx L3** |
| 03 | **DC1-DH2300 MOD-C23-03 Cx L3** |
| 04 | **DC1-DH2300 MOD-D23-03 Cx L3** |
| 05 | **DC1-DH2300 MOD-E23-03 Cx L3** |
| 06 | **DC1-DH2300 MOD-F23-03 Cx L3** |
| 07 | **DC1-DH2300 MOD-R23-03 Cx L3** |
| 10 | **DC1-DH2300 CDUs Cx L3** |
| 01 | **DC1-CDU-DH2300-01 Cx L3** |
| 02 | **DC1-CDU-DH2300-02 Cx L3** |
| 03 | **DC1-CDU-DH2300-03 Cx L3** |
| 04 | **DC1-CDU-DH2300-04 Cx L3** |
| 05 | **DC1-CDU-DH2300-05 Cx L3** |
| 06 | **DC1-CDU-DH2300-06 Cx L3** |
| 07 | **DC1-CDU-DH2300-07 Cx L3** |
| 08 | **DC1-CDU-DH2300-08 Cx L3** |

| WBS | Activity |
| --- | --- |
| 09 | **DC1-CDU-DH2300-09 Cx L3** |
| 10 | **DC1-CDU-DH2300-10 Cx L3** |
| 11 | **DC1-CDU-DH2300-11 Cx L3** |
| 12 | **DC1-CDU-DH2300-12 Cx L3** |
| 13 | **DC1-CDU-DH2300-13 Cx L3** |
| 14 | **DC1-CDU-DH2300-14 Cx L3** |
| 15 | **DC1-CDU-DH2300-15 Cx L3** |
| 16 | **DC1-CDU-DH2300-16 Cx L3** |
| 17 | **DC1-CDU-DH2300-17 Cx L3** |
| 18 | **DC1-CDU-DH2300-18 Cx L3** |
| 11 | **DC1-DH2300 CHLR-1RT40 Cx L3** |
| 01 | **DC1-DH2300 CHLR-1RT40-A23 Cx L3** |
| 02 | **DC1-DH2300 CHLR-1RT40-B23 Cx L3** |
| 03 | **DC1-DH2300 CHLR-1RT40-C23 Cx L3** |
| 04 | **DC1-DH2300 CHLR-1RT40-D23 Cx L3** |
| 05 | **DC1-DH2300 CHLR-1RT40-E23 Cx L3** |
| 06 | **DC1-DH2300 CHLR-1RT40-F23 Cx L3** |
| 07 | **DC1-DH2300 CHLR-1RT40-R23 Cx L3** |
| 12 | **DC1-DH2300 CHWP-1RT40 Cx L3** |
| 01 | **DC1-DH2300 CHWP-1RT40-A23 Cx L3** |
| 02 | **DC1-DH2300 CHWP-1RT40-B23 Cx L3** |
| 03 | **DC1-DH2300 CHWP-1RT40-C23 Cx L3** |
| 04 | **DC1-DH2300 CHWP-1RT40-D23 Cx L3** |
| 05 | **DC1-DH2300 CHWP-1RT40-E23 Cx L3** |
| 06 | **DC1-DH2300 CHWP-1RT40-F23 Cx L3** |
| 07 | **DC1-DH2300 CHWP-1RT40-R23 Cx L3** |
| 13 | **DC1-DH2300 CRAH/DOAS Cx L3** |
| 01 | **DH2300 CRAH-DH-01 L3** |
| 02 | **DH2300 CRAH-DH-02 L3** |
| 03 | **DH2300 CRAH-DH-03 L3** |
| 04 | **DH2300 CRAH-DH-04 L3** |
| 05 | **DH2300 CRAH-DH-05 L3** |
| 06 | **DH2300 CRAH-DH-06 L3** |
| 07 | **DH2300 CRAH-DH-07 L3** |
| 08 | **DH2300 CRAH-DH-08 L3** |
| 09 | **DH2300 CRAH-DH-09 L3** |
| 10 | **DH2300 CRAH-DH-10 L3** |
| 11 | **DH2300 CRAH-DH-11 L3** |
| 12 | **DH2300 CRAH-DH-12 L3** |
| 13 | **DH2300 CRAH-DH-13 L3** |
| 14 | **DH2300 CRAH-DH-14 L3** |
| 15 | **DH2300 CRAH-DH-15 L3** |
| 16 | **DH2300 CRAH-DH-16 L3** |
| 17 | **DH2300 CRAH-DH-17 L3** |
| 18 | **DH2300 CRAH-DH-18 L3** |
| 19 | **DH2300 CRAH-DH-19 L3** |
| 20 | **DH2300 CRAH-DH-20 L3** |
| 21 | **DH2300 CRAH-DH-21 L3** |
| 22 | **DH2300 CRAH-DH-22 L3** |
| 23 | **DH2300 CRAH-DH-23 L3** |
| 24 | **DH2300 CRAH-DH-24 L3** |
| 25 | **DH2300 CRAH-DH-25 L3** |
| 26 | **DH2300 CRAH-DH-26 L3** |
| 27 | **DH2300 CRAH-DH-27 L3** |
| 28 | **DH2300 CRAH-DH-28 L3** |
| 29 | **DH2300 CRAH-EG-01 L3** |
| 30 | **DH2300 CRAH-EG-02 L3** |
| 31 | **DH2300 CRAH-EG-03 L3** |
| 32 | **DH2300 CRAH-EG-04 L3** |
| 33 | **DC1-DH2300-DOAS-RT-01 L3** |
| 34 | **DC1-DH2300-DOAS-RT-02 L3** |
| 14 | **DC1-DH2300 LOADBANK** |
| 15 | **DC1-DH2300 TAB** |
| 04 | **Data Hall 2300 Cx L4** |
| 02 | **Data Hall 2300 Mechanical Cx L4** |
| 01 | **Data Hall 2300 Electrical Cx L4** |
| 1 | **Data Hall 2300 Generator Burn In** |
| 05 | **Data Hall 2300 Cx L5** |
| 07 | **Data Hall 1300 Commissioning** |
| 02 | **Data Hall 1300 Cx L2** |

| WBS | Activity |
| --- | --- |
| 01 | **DC1-DH1300 Generators Cx L2** |
| 02 | **DC1-DH1300 MV XFMRs Cx L2** |
| 03 | **DC1-DH1300 PODS** |
| 01 | **DC1-DH1300 SWDs Cx L2** |
| 02 | **DC1-DH1300 MOD-01s Cx L2** |
| 03 | **DC1-DH1300 UPS-M Cx L2** |
| 04 | **DC1-DH1300 COMPRESSOR/FAN UNITS Cx L2** |
| 01 | **DC1-DH1300 POD-AC UNITS A13 Cx L2** |
| 02 | **DC1-DH1300 POD-AC UNITS B13 Cx L2** |
| 03 | **DC1-DH1300 POD-AC UNITS C13 Cx L2** |
| 04 | **DC1-DH1300 POD-AC UNITS D13 Cx L2** |
| 05 | **DC1-DH1300 POD-AC UNITS E13 Cx L2** |
| 06 | **DC1-DH1300 POD-AC UNITS F13 Cx L2** |
| 07 | **DC1-DH1300 POD-AC UNITS R13 Cx L2** |
| 04 | **DC1-DH1300 BUS-R1X/BUS-R2X Cx L2** |
| 05 | **DC1-DH1300 ATS Cx L2** |
| 01 | **DC1-DH1300 ATS A13 Cx L2** |
| 02 | **DC1-DH1300 ATS B13 Cx L2** |
| 03 | **DC1-DH1300 ATS C13 Cx L2** |
| 04 | **DC1-DH1300 ATS D13 Cx L2** |
| 05 | **DC1-DH1300 ATS E13 Cx L2** |
| 06 | **DC1-DH1300 ATS F13 Cx L2** |
| 06 | **DC1-DH1300 CODs Cx L2** |
| 01 | **DC1-DH1300 COD A13 Cx L2** |
| 02 | **DC1-DH1300 COD B13 Cx L2** |
| 03 | **DC1-DH1300 COD C13 Cx L2** |
| 04 | **DC1-DH1300 COD D13 Cx L2** |
| 05 | **DC1-DH1300 COD E13 Cx L2** |
| 06 | **DC1-DH1300 COD F13 Cx L2** |
| 07 | **DC1-DH1300 RPPs Cx L2** |
| 01 | **DC1-DH1300 RPP A13 Cx L2** |
| 02 | **DC1-DH1300 RPP B13 Cx L2** |
| 03 | **DC1-DH1300 RPP C13 Cx L2** |
| 04 | **DC1-DH1300 RPP D13 Cx L2** |
| 05 | **DC1-DH1300 RPP E13 Cx L2** |
| 06 | **DC1-DH1300 RPP F13 Cx L2** |
| 08 | **DC1-DH1300 MOD-02 Cx L2** |
| 09 | **DC1-DH1300 MOD-03 Cx L2** |
| 10 | **DC1-DH1300 CDUs Cx L2** |
| 11 | **DC1-DH1300 CHLR Cx L2** |
| 12 | **DC1-DH1300 CHWP Cx L2** |
| 13 | **DC1-DH1300 CRAH/DOAS Cx L2** |
| 03 | **Data Hall 1300 Cx L3** |
| 01 | **DC1-DH1300 Generators Cx L3** |
| 01 | **DC1-DH1300-GEN-A13 Cx L3** |
| 02 | **DC1-DH1300-GEN-B13 Cx L3** |
| 03 | **DC1-DH1300-GEN-C13 Cx L3** |
| 04 | **DC1-DH1300-GEN-D13 Cx L3** |
| 05 | **DC1-DH1300-GEN-E13 Cx L3** |
| 06 | **DC1-DH1300-GEN-F13 Cx L3** |
| 07 | **DC1-DH1300-GEN-R13 Cx L3** |
| 02 | **DC1-DH1300 MV XFMRs Cx L3** |
| 01 | **DC1-DH1300 MV-XFMR-A13 Cx L3** |
| 02 | **DC1-DH1300 MV-XFMR-B13 Cx L3** |
| 03 | **DC1-DH1300 MV-XFMR-C13 Cx L3** |
| 04 | **DC1-DH1300 MV-XFMR-D13 Cx L3** |
| 05 | **DC1-DH1300 MV-XFMR-E13 Cx L3** |
| 06 | **DC1-DH1300 MV-XFMR-F13 Cx L3** |
| 07 | **DC1-DH1300 MV-XFMR-R13 Cx L3** |
| 03 | **DC1-DH1300 PODS Cx L3** |
| 01 | **DC1-DH1300 SWDs Cx L3** |
| 01 | **DC1-DH1300-SWD-A13 Cx L3** |
| 02 | **DC1-DH1300-SWD-B13 Cx L3** |
| 03 | **DC1-DH1300-SWD-C13 Cx L3** |
| 04 | **DC1-DH1300-SWD-D13 Cx L3** |
| 05 | **DC1-DH1300-SWD-E13 Cx L3** |
| 06 | **DC1-DH1300-SWD-F13 Cx L3** |
| 07 | **DC1-DH1300-SWD-R13 Cx L3** |
| 02 | **DC1-DH1300 MOD-01s Cx L3** |
| 01 | **DC1-DH1300-MOD-A13-01 Cx L3** |

| WBS | Activity |
| --- | --- |
| 02 | **DC1-DH1300-MOD-B13-01 Cx L3** |
| 03 | **DC1-DH1300-MOD-C13-01 Cx L3** |
| 04 | **DC1-DH1300-MOD-D13-01 Cx L3** |
| 05 | **DC1-DH1300-MOD-E13-01 Cx L3** |
| 06 | **DC1-DH1300-MOD-F13-01 Cx L3** |
| 07 | **DC1-DH1300-MOD-R13-01 Cx L3** |
| 03 | **DC1-DH1300 UPS-M Cx L3** |
| 01 | **DC1-DH1300-UPS-M-A13-01 Cx L3** |
| 02 | **DC1-DH1300-UPS-M-B13-01 Cx L3** |
| 03 | **DC1-DH1300-UPS-M-C13-01 Cx L3** |
| 04 | **DC1-DH1300-UPS-M-D13-01 Cx L3** |
| 05 | **DC1-DH1300-UPS-M-E13-01 Cx L3** |
| 06 | **DC1-DH1300-UPS-M-F13-01 Cx L3** |
| 07 | **DC1-DH1300-UPS-M-R13-01 Cx L3** |
| 04 | **DC1-DH1300 COMPRESSOR/FAN UNITS Cx L3** |
| 01 | **DC1-DH1300 POD-AC UNITS A13 Cx L3** |
| 02 | **DC1-DH1300 POD-AC UNITS B13 Cx L3** |
| 03 | **DC1-DH1300 POD-AC UNITS C13 Cx L3** |
| 04 | **DC1-DH1300 POD-AC UNITS D13 Cx L3** |
| 05 | **DC1-DH1300 POD-AC UNITS E13 Cx L3** |
| 06 | **DC1-DH1300 POD-AC UNITS F13 Cx L3** |
| 07 | **DC1-DH1300 POD-AC UNITS R13 Cx L3** |
| 04 | **DC1-DH1300 BUS-R1X/BUS-R2X Cx L3** |
| 01 | **DC1-DH1300 BUS-R1 CATCHER BUS DUCT Cx L3** |
| 02 | **DC1-DH1300 BUS-R2 MAINTENANCE BUS DUCT Cx L3** |
| 05 | **DC1-DH1300 ATS Cx L3** |
| 01 | **DC1-DH1300 ATS-A13 Cx L3** |
| 01 | **DC1-DH1300-ATS-A13-01 Cx L3** |
| 02 | **DC1-DH1300-ATS-A13-02 Cx L3** |
| 03 | **DC1-DH1300-ATS-A13-03 Cx L3** |
| 04 | **DC1-DH1300-ATS-A13-04 Cx L3** |
| 05 | **DC1-DH1300-ATS-A13-05 Cx L3** |
| 06 | **DC1-DH1300-ATS-A13-06 Cx L3** |
| 02 | **DC1-DH1300 ATS-B13 Cx L3** |
| 01 | **DC1-DH1300-ATS-B13-01 Cx L3** |
| 02 | **DC1-DH1300-ATS-B13-02 Cx L3** |
| 03 | **DC1-DH1300-ATS-B13-03 Cx L3** |
| 04 | **DC1-DH1300-ATS-B13-04 Cx L3** |
| 05 | **DC1-DH1300-ATS-B13-05 Cx L3** |
| 06 | **DC1-DH1300-ATS-B13-06 Cx L3** |
| 03 | **DC1-DH1300 ATS-C13 Cx L3** |
| 01 | **DC1-DH1300-ATS-C13-01 Cx L3** |
| 02 | **DC1-DH1300-ATS-C13-02 Cx L3** |
| 03 | **DC1-DH1300-ATS-C13-03 Cx L3** |
| 04 | **DC1-DH1300-ATS-C13-04 Cx L3** |
| 05 | **DC1-DH1300-ATS-C13-05 Cx L3** |
| 06 | **DC1-DH1300-ATS-C13-06 Cx L3** |
| 04 | **DC1-DH1300 ATS-D13 Cx L3** |
| 01 | **DC1-DH1300-ATS-D13-01 Cx L3** |
| 02 | **DC1-DH1300-ATS-D13-02 Cx L3** |
| 03 | **DC1-DH1300-ATS-D13-03 Cx L3** |
| 04 | **DC1-DH1300-ATS-D13-04 Cx L3** |
| 05 | **DC1-DH1300-ATS-D13-05 Cx L3** |
| 06 | **DC1-DH1300-ATS-D13-06 Cx L3** |
| 05 | **DC1-DH1300 ATS-E13 Cx L3** |
| 01 | **DC1-DH1300-ATS-E13-01 Cx L3** |
| 02 | **DC1-DH1300-ATS-E13-02 Cx L3** |
| 03 | **DC1-DH1300-ATS-E13-03 Cx L3** |
| 04 | **DC1-DH1300-ATS-E13-04 Cx L3** |
| 05 | **DC1-DH1300-ATS-E13-05 Cx L3** |
| 06 | **DC1-DH1300-ATS-E13-06 Cx L3** |
| 06 | **DC1-DH1300 ATS-F13 Cx L3** |
| 01 | **DC1-DH1300-ATS-F13-01 Cx L3** |
| 02 | **DC1-DH1300-ATS-F13-02 Cx L3** |
| 03 | **DC1-DH1300-ATS-F13-03 Cx L3** |
| 04 | **DC1-DH1300-ATS-F13-04 Cx L3** |
| 05 | **DC1-DH1300-ATS-F13-05 Cx L3** |
| 06 | **DC1-DH1300-ATS-F13-06 Cx L3** |
| 06 | **DC1-DH1300 CODs Cx L3** |
| 01 | **DC1-DH1300-COD-A13 Cx L3** |

| WBS | Activity |
| --- | --- |
| 01 | **DC1-DH1300-COD-A13-01 Cx L3** |
| 02 | **DC1-DH1300-COD-A13-02 Cx L3** |
| 03 | **DC1-DH1300-COD-A13-03 Cx L3** |
| 04 | **DC1-DH1300-COD-A13-04 Cx L3** |
| 05 | **DC1-DH1300-COD-A13-05 Cx L3** |
| 06 | **DC1-DH1300-COD-A13-06 Cx L3** |
| 02 | **DC1-DH1300-COD-B13 Cx L3** |
| 01 | **DC1-DH1300-COD-B13-01 Cx L3** |
| 02 | **DC1-DH1300-COD-B13-02 Cx L3** |
| 03 | **DC1-DH1300-COD-B13-03 Cx L3** |
| 04 | **DC1-DH1300-COD-B13-04 Cx L3** |
| 05 | **DC1-DH1300-COD-B13-05 Cx L3** |
| 06 | **DC1-DH1300-COD-B13-06 Cx L3** |
| 03 | **DC1-DH1300-COD-C13 Cx L3** |
| 01 | **DC1-DH1300-COD-C13-01 Cx L3** |
| 02 | **DC1-DH1300-COD-C13-02 Cx L3** |
| 03 | **DC1-DH1300-COD-C13-03 Cx L3** |
| 04 | **DC1-DH1300-COD-C13-04 Cx L3** |
| 05 | **DC1-DH1300-COD-C13-05 Cx L3** |
| 06 | **DC1-DH1300-COD-C13-06 Cx L3** |
| 04 | **DC1-DH1300-COD-D13 Cx L3** |
| 01 | **DC1-DH1300-COD-D13-01 Cx L3** |
| 02 | **DC1-DH1300-COD-D13-02 Cx L3** |
| 03 | **DC1-DH1300-COD-D13-03 Cx L3** |
| 04 | **DC1-DH1300-COD-D13-04 Cx L3** |
| 05 | **DC1-DH1300-COD-D13-05 Cx L3** |
| 06 | **DC1-DH1300-COD-D13-06 Cx L3** |
| 05 | **DC1-DH1300-COD-E13 Cx L3** |
| 01 | **DC1-DH1300-ATS-E13-01 Cx L3** |
| 02 | **DC1-DH1300-ATS-E13-02 Cx L3** |
| 03 | **DC1-DH1300-ATS-E13-03 Cx L3** |
| 04 | **DC1-DH1300-ATS-E13-04 Cx L3** |
| 05 | **DC1-DH1300-ATS-E13-05 Cx L3** |
| 06 | **DC1-DH1300-ATS-E13-06 Cx L3** |
| 06 | **DC1-DH1300-COD-F13 Cx L3** |
| 01 | **DC1-DH1300-COD-F13-01 Cx L3** |
| 02 | **DC1-DH1300-COD-F13-02 Cx L3** |
| 03 | **DC1-DH1300-COD-F13-03 Cx L3** |
| 04 | **DC1-DH1300-COD-F13-04 Cx L3** |
| 05 | **DC1-DH1300-COD-F13-05 Cx L3** |
| 06 | **DC1-DH1300-COD-F13-06 Cx L3** |
| 07 | **DC1-DH1300 RPPs Cx L3** |
| 01 | **DC1-DH1300-RPP-A13 Cx L3** |
| 01 | **DC1-DH1300-RPP-A13-01 Cx L3** |
| 02 | **DC1-DH1300-RPP-A13-02 Cx L3** |
| 03 | **DC1-DH1300-RPP-A13-03 Cx L3** |
| 04 | **DC1-DH1300-RPP-A13-04 Cx L3** |
| 05 | **DC1-DH1300-RPP-A13-05 Cx L3** |
| 06 | **DC1-DH1300-RPP-A13-06 Cx L3** |
| 02 | **DC1-DH1300-RPP-B13 Cx L3** |
| 01 | **DC1-DH1300-RPP-B13-01 Cx L3** |
| 02 | **DC1-DH1300-RPP-B13-02 Cx L3** |
| 03 | **DC1-DH1300-RPP-B13-03 Cx L3** |
| 04 | **DC1-DH1300-RPP-B13-04 Cx L3** |
| 05 | **DC1-DH1300-RPP-B13-05 Cx L3** |
| 06 | **DC1-DH1300-RPP-B13-06 Cx L3** |
| 03 | **DC1-DH1300-RPP-C13 Cx L3** |
| 01 | **DC1-DH1300-RPP-C13-01 Cx L3** |
| 02 | **DC1-DH1300-RPP-C13-02 Cx L3** |
| 03 | **DC1-DH1300-RPP-C13-03 Cx L3** |
| 04 | **DC1-DH1300-RPP-C13-04 Cx L3** |
| 05 | **DC1-DH1300-RPP-C13-05 Cx L3** |
| 06 | **DC1-DH1300-RPP-C13-06 Cx L3** |
| 04 | **DC1-DH1300-RPP-D13 Cx L3** |
| 01 | **DC1-DH1300-RPP-D13-01 Cx L3** |
| 02 | **DC1-DH1300-RPP-D13-02 Cx L3** |
| 03 | **DC1-DH1300-RPP-D13-03 Cx L3** |
| 04 | **DC1-DH1300-RPP-D13-04 Cx L3** |
| 05 | **DC1-DH1300-RPP-D13-05 Cx L3** |
| 06 | **DC1-DH1300-RPP-D13-06 Cx L3** |

| WBS | Activity |
| --- | --- |
| 05 | **DC1-DH1300-RPP-E13 Cx L3** |
| 01 | **DC1-DH1300-RPP-E13-01 Cx L3** |
| 02 | **DC1-DH1300-RPP-E13-02 Cx L3** |
| 03 | **DC1-DH1300-RPP-E13-03 Cx L3** |
| 04 | **DC1-DH1300-RPP-E13-04 Cx L3** |
| 05 | **DC1-DH1300-RPP-E13-05 Cx L3** |
| 06 | **DC1-DH1300-RPP-E13-06 Cx L3** |
| 06 | **DC1-DH1300-RPP-F13 Cx L3** |
| 01 | **DC1-DH1300-RPP-F13-01 Cx L3** |
| 02 | **DC1-DH1300-RPP-F13-02 Cx L3** |
| 03 | **DC1-DH1300-RPP-F13-03 Cx L3** |
| 04 | **DC1-DH1300-RPP-F13-04 Cx L3** |
| 05 | **DC1-DH1300-RPP-F13-05 Cx L3** |
| 06 | **DC1-DH1300-RPP-F13-06 Cx L3** |
| 08 | **DC1-DH1300 MOD-02 Cx L3** |
| 01 | **DC1-DH1300 MOD-A13-02 Cx L3** |
| 02 | **DC1-DH1300 MOD-B13-02 Cx L3** |
| 03 | **DC1-DH1300 MOD-C13-02 Cx L3** |
| 04 | **DC1-DH1300 MOD-D13-02 Cx L3** |
| 05 | **DC1-DH1300 MOD-E13-02 Cx L3** |
| 06 | **DC1-DH1300 MOD-F13-02 Cx L3** |
| 07 | **DC1-DH1300 MOD-R13-02 Cx L3** |
| 09 | **DC1-DH1300 MOD-03 Cx L3** |
| 01 | **DC1-DH1300 MOD-A13-03 Cx L3** |
| 02 | **DC1-DH1300 MOD-B13-03 Cx L3** |
| 03 | **DC1-DH1300 MOD-C13-03 Cx L3** |
| 04 | **DC1-DH1300 MOD-D13-03 Cx L3** |
| 05 | **DC1-DH1300 MOD-E13-03 Cx L3** |
| 06 | **DC1-DH1300 MOD-F13-03 Cx L3** |
| 07 | **DC1-DH1300 MOD-R13-03 Cx L3** |
| 10 | **DC1-DH1300 CDUs Cx L3** |
| 1 | **DC1-CDU-DH1300-01 Cx L3** |
| 04 | **DC1-CDU-DH1300-04 Cx L3** |
| 2 | **DC1-CDU-DH1300-02 Cx L3** |
| 3 | **DC1-CDU-DH1300-03 Cx L3** |
| 05 | **DC1-CDU-DH1300-05 Cx L3** |
| 06 | **DC1-CDU-DH1300-06 Cx L3** |
| 4 | **DC1-CDU-DH1300-07 Cx L3** |
| 5 | **DC1-CDU-DH1300-08 Cx L3** |
| 6 | **DC1-CDU-DH1300-09 Cx L3** |
| 7 | **DC1-CDU-DH1300-10 Cx L3** |
| 8 | **DC1-CDU-DH1300-11 Cx L3** |
| 9 | **DC1-CDU-DH1300-12 Cx L3** |
| 10 | **DC1-CDU-DH1300-13 Cx L3** |
| 11 | **DC1-CDU-DH1300-14 Cx L3** |
| 12 | **DC1-CDU-DH1300-15 Cx L3** |
| 13 | **DC1-CDU-DH1300-16 Cx L3** |
| 14 | **DC1-CDU-DH1300-17 Cx L3** |
| 15 | **DC1-CDU-DH1300-18 Cx L3** |
| 11 | **DC1-DH1300 CHLR-1RT40 Cx L3** |
| 01 | **DC1-DH1300 CHLR-1RT40-A13 Cx L3** |
| 02 | **DC1-DH1300 CHLR-1RT40-B13 Cx L3** |
| 03 | **DC1-DH1300 CHLR-1RT40-C13 Cx L3** |
| 04 | **DC1-DH1300 CHLR-1RT40-D13 Cx L3** |
| 05 | **DC1-DH1300 CHLR-1RT40-E13 Cx L3** |
| 06 | **DC1-DH1300 CHLR-1RT40-F13 Cx L3** |
| 07 | **DC1-DH1300 CHLR-1RT40-R13 Cx L3** |
| 12 | **DC1-DH1300 CHWP-1RT40 Cx L3** |
| 01 | **DC1-DH1300 CHWP-1RT40-A13 Cx L3** |
| 02 | **DC1-DH1300 CHWP-1RT40-B13 Cx L3** |
| 03 | **DC1-DH1300 CHWP-1RT40-C13 Cx L3** |
| 04 | **DC1-DH1300 CHWP-1RT40-D13 Cx L3** |
| 05 | **DC1-DH1300 CHWP-1RT40-E13 Cx L3** |
| 06 | **DC1-DH1300 CHWP-1RT40-F13 Cx L3** |
| 07 | **DC1-DH1300 CHWP-1RT40-R13 Cx L3** |
| 13 | **DC1-DH1300 CRAH/DOAS Cx L3** |
| 01 | **DH1300 CRAH-DH-01 L3** |
| 02 | **DH1300 CRAH-DH-02 L3** |
| 03 | **DH1300 CRAH-DH-03 L3** |
| 04 | **DH1300 CRAH-DH-04 L3** |

| ID | WBS | Activity | Type | Duration | Start | Finish | Predecessors | Complete | Planned start | Planned finish | Layton Discipline | Project Section-1 | Precon Phase | Fragnet | DELETED | Contract | Project Section | Baseline | Level | D | Phase-1-1 | Location | Layton Super |
| --- | --- | --- | --- | --- | --- | --- | --- | --- | --- | --- | --- | --- | --- | --- | --- | --- | --- | --- | --- | --- | --- | --- | --- |
|  | 05 | **DH1300 CRAH-DH-05 L3** |  |  |  |  |  |  |  |  |  |  |  |  |  |  |  |  |  |  |  |  |  |
|  | 06 | **DH1300 CRAH-DH-06 L3** |  |  |  |  |  |  |  |  |  |  |  |  |  |  |  |  |  |  |  |  |  |
|  | 07 | **DH1300 CRAH-DH-07 L3** |  |  |  |  |  |  |  |  |  |  |  |  |  |  |  |  |  |  |  |  |  |
|  | 08 | **DH1300 CRAH-DH-08 L3** |  |  |  |  |  |  |  |  |  |  |  |  |  |  |  |  |  |  |  |  |  |
|  | 09 | **DH1300 CRAH-DH-09 L3** |  |  |  |  |  |  |  |  |  |  |  |  |  |  |  |  |  |  |  |  |  |
|  | 10 | **DH1300 CRAH-DH-10 L3** |  |  |  |  |  |  |  |  |  |  |  |  |  |  |  |  |  |  |  |  |  |
|  | 11 | **DH1300 CRAH-DH-11 L3** |  |  |  |  |  |  |  |  |  |  |  |  |  |  |  |  |  |  |  |  |  |
|  | 12 | **DH1300 CRAH-DH-12 L3** |  |  |  |  |  |  |  |  |  |  |  |  |  |  |  |  |  |  |  |  |  |
|  | 13 | **DH1300 CRAH-DH-13 L3** |  |  |  |  |  |  |  |  |  |  |  |  |  |  |  |  |  |  |  |  |  |
|  | 14 | **DH1300 CRAH-DH-14 L3** |  |  |  |  |  |  |  |  |  |  |  |  |  |  |  |  |  |  |  |  |  |
|  | 15 | **DH1300 CRAH-DH-15 L3** |  |  |  |  |  |  |  |  |  |  |  |  |  |  |  |  |  |  |  |  |  |
|  | 16 | **DH1300 CRAH-DH-16 L3** |  |  |  |  |  |  |  |  |  |  |  |  |  |  |  |  |  |  |  |  |  |
|  | 17 | **DH1300 CRAH-DH-17 L3** |  |  |  |  |  |  |  |  |  |  |  |  |  |  |  |  |  |  |  |  |  |
|  | 18 | **DH1300 CRAH-DH-18 L3** |  |  |  |  |  |  |  |  |  |  |  |  |  |  |  |  |  |  |  |  |  |
|  | 19 | **DH1300 CRAH-DH-19 L3** |  |  |  |  |  |  |  |  |  |  |  |  |  |  |  |  |  |  |  |  |  |
|  | 20 | **DH1300 CRAH-DH-20 L3** |  |  |  |  |  |  |  |  |  |  |  |  |  |  |  |  |  |  |  |  |  |
|  | 21 | **DH1300 CRAH-DH-21 L3** |  |  |  |  |  |  |  |  |  |  |  |  |  |  |  |  |  |  |  |  |  |
|  | 22 | **DH1300 CRAH-DH-22 L3** |  |  |  |  |  |  |  |  |  |  |  |  |  |  |  |  |  |  |  |  |  |
|  | 23 | **DH1300 CRAH-DH-23 L3** |  |  |  |  |  |  |  |  |  |  |  |  |  |  |  |  |  |  |  |  |  |
|  | 24 | **DH1300 CRAH-DH-24 L3** |  |  |  |  |  |  |  |  |  |  |  |  |  |  |  |  |  |  |  |  |  |
|  | 25 | **DH1300 CRAH-DH-25 L3** |  |  |  |  |  |  |  |  |  |  |  |  |  |  |  |  |  |  |  |  |  |
|  | 26 | **DH1300 CRAH-DH-26 L3** |  |  |  |  |  |  |  |  |  |  |  |  |  |  |  |  |  |  |  |  |  |
|  | 27 | **DH1300 CRAH-DH-27 L3** |  |  |  |  |  |  |  |  |  |  |  |  |  |  |  |  |  |  |  |  |  |
|  | 28 | **DH1300 CRAH-DH-28 L3** |  |  |  |  |  |  |  |  |  |  |  |  |  |  |  |  |  |  |  |  |  |
|  | 29 | **DH1300 CRAH-EG-01 L3** |  |  |  |  |  |  |  |  |  |  |  |  |  |  |  |  |  |  |  |  |  |
|  | 30 | **DH1300 CRAH-EG-02 L3** |  |  |  |  |  |  |  |  |  |  |  |  |  |  |  |  |  |  |  |  |  |
|  | 31 | **DH1300 CRAH-EG-03 L3** |  |  |  |  |  |  |  |  |  |  |  |  |  |  |  |  |  |  |  |  |  |
|  | 32 | **DH1300 CRAH-EG-04 L3** |  |  |  |  |  |  |  |  |  |  |  |  |  |  |  |  |  |  |  |  |  |
|  | 33 | **DC1-DH1300-DOAS-RT-01 L3** |  |  |  |  |  |  |  |  |  |  |  |  |  |  |  |  |  |  |  |  |  |
|  | 34 | **DC1-DH1300-DOAS-RT-02 L3** |  |  |  |  |  |  |  |  |  |  |  |  |  |  |  |  |  |  |  |  |  |
|  | 14 | **DC1-DH1300 LOADBANK** |  |  |  |  |  |  |  |  |  |  |  |  |  |  |  |  |  |  |  |  |  |
|  | 15 | **DC1-DH1300 TAB** |  |  |  |  |  |  |  |  |  |  |  |  |  |  |  |  |  |  |  |  |  |
|  | 04 | **Data Hall 1300 Cx L4** |  |  |  |  |  |  |  |  |  |  |  |  |  |  |  |  |  |  |  |  |  |
|  | 1 | **Data Hall 1300 Generator Burn In** |  |  |  |  |  |  |  |  |  |  |  |  |  |  |  |  |  |  |  |  |  |
|  | 02 | **Data Hall 1300 Mechanical Cx L4** |  |  |  |  |  |  |  |  |  |  |  |  |  |  |  |  |  |  |  |  |  |
|  | 01 | **Data Hall 1300 Electrical Cx L4** |  |  |  |  |  |  |  |  |  |  |  |  |  |  |  |  |  |  |  |  |  |
|  | 05 | **Data Hall 1300 Cx L5** |  |  |  |  |  |  |  |  |  |  |  |  |  |  |  |  |  |  |  |  |  |
|  | 5 | **DELETED** |  |  | 2025-01-09 | 2026-08-14 |  |  |  |  |  |  |  |  |  |  |  |  |  |  |  |  |  |
| QTS-1012480 |  | **DELETE** HMIS acceptance for Generators | milestone | 0d | 2025-03-30 A | 2025-03-30 A | QTS-1020 | 100% | 2025-02-06 | 2025-02-06 | Precon | Preconstruction | Permitting | Fragnet | DELETED | BAB |  |  |  |  |  |  |  |
| QTS-24521 |  | Zone 3 Corridor 2307 // Raised Floor Pedestal Layout *Deleted* |  | 2d | 2025-04-21 A | 2025-04-22 A | QTS-1371 SS | 100% |  |  | Core & Shell |  |  |  | DELETED |  | Construction | IGMP | Level 2 | DH1100 |  |  |  |
| QTS-24531 |  | Zone 1 Corridor 2010 // Raised Floor Pedestal Layout *Deleted* |  | 2d | 2025-04-21 A | 2025-04-22 A | QTS-1371 SS | 100% |  |  | Core & Shell |  |  |  | DELETED |  | Construction | IGMP | Level 2 | DH1100 |  |  |  |
| QTS-24541 |  | Zone 2 Corridor 2010 // Raised Floor Pedestal Layout *Deleted* |  | 2d | 2025-04-21 A | 2025-04-22 A | QTS-1371 SS | 100% |  |  | Core & Shell |  |  |  | DELETED |  | Construction | IGMP | Level 2 | DH1100 |  |  |  |
| QTS-24551 |  | Zone 3 Corridor 1012 // Raised Floor Pedestal Layout *Deleted* |  | 2d | 2025-04-21 A | 2025-04-22 A | QTS-1371 SS | 100% |  |  | Core & Shell |  |  |  | DELETED |  | Construction | IGMP | Level 1 | DH1100 |  |  |  |
| QTS-25271 |  | Zone 3 Corridor 2307 // Install Raised Flooring *Deleted* |  | 2d | 2025-04-21 A | 2025-04-22 A | QTS-1371 SS | 100% |  |  | Core & Shell |  |  |  | DELETED |  | Construction | IGMP | Level 2 | DH1100 |  |  |  |
| QTS-25281 |  | Zone 1 Corridor 2010 // Install Raised Flooring *Deleted* |  | 2d | 2025-04-21 A | 2025-04-22 A | QTS-1371 SS | 100% |  |  | Core & Shell |  |  |  | DELETED |  | Construction | IGMP | Level 2 | DH1100 |  |  |  |
| QTS-25291 |  | Zone 2 Corridor 2010 // Install Raised Flooring *Deleted* |  | 2d | 2025-04-21 A | 2025-04-22 A | QTS-1371 SS | 100% |  |  | Core & Shell |  |  |  | DELETED |  | Construction | IGMP | Level 2 | DH1100 |  |  |  |
| QTS-25301 |  | Zone 3 Corridor 1012 // Install Raised Flooring *Deleted* |  | 2d | 2025-04-21 A | 2025-04-22 A | QTS-1371 SS | 100% |  |  | Core & Shell |  |  |  | DELETED |  | Construction | IGMP | Level 1 | DH1100 |  |  |  |
| QTS-25901 |  | Zone 1 Corridor 1011 // Raised Floor Pedestal Layout *Deleted* |  | 2d | 2025-04-21 A | 2025-04-22 A | QTS-1371 SS | 100% |  |  | Core & Shell |  |  |  | DELETED |  | Construction | IGMP | Level 1 | DH1100 |  |  |  |
| QTS-25911 |  | Zone 2 Corridor 1013 // Raised Floor Pedestal Layout *Deleted* |  | 2d | 2025-04-21 A | 2025-04-22 A | QTS-1371 SS | 100% |  |  | Core & Shell |  |  |  | DELETED |  | Construction | IGMP | Level 1 | DH1100 |  |  |  |
| QTS-26871 |  | Zone 1 Corridor 1011 // Install Raised Flooring *Deleted* |  | 2d | 2025-04-21 A | 2025-04-22 A | QTS-1371 SS | 100% |  |  | Core & Shell |  |  |  | DELETED |  | Construction | IGMP | Level 1 | DH1100 |  |  |  |
| QTS-26881 |  | Zone 2 Corridor 1013 // Install Raised Flooring *Deleted* |  | 2d | 2025-04-21 A | 2025-04-22 A | QTS-1371 SS | 100% |  |  | Core & Shell |  |  |  | DELETED |  | Construction | IGMP | Level 1 | DH1100 |  |  |  |
| QTS-14431 |  | Layton Review Freight Elevator Layout Shop Drawings *Deleted* |  | 1d | 2025-04-22 A | 2025-04-22 A | QTS-1371 | 100% |  |  | Core & Shell | Preconstruction | CFCI Procurement |  | DELETED |  |  | GMP |  | DH1100 |  |  |  |
| QTS-14601 |  | Freight Elevator Layout Shop Drawings Approval *Deleted* |  | 1d | 2025-04-22 A | 2025-04-22 A | QTS-1371 SS | 100% |  |  | Core & Shell | Preconstruction | CFCI Procurement |  | DELETED |  |  | GMP |  | DH1100 |  |  |  |
| QTS-15551 |  | Layton Distribute Freight Elevator Drawings Back to Subcontractor *Deleted* |  | 1d | 2025-04-22 A | 2025-04-22 A | QTS-1371 SS | 100% |  |  | Core & Shell | Preconstruction | CFCI Procurement |  | DELETED |  |  | GMP |  | DH1100 |  |  |  |
| QTS-7011 |  | Bid / Level / Buyout // Wet Utilities - *Deleted* |  | 1d | 2025-04-22 A | 2025-04-22 A | QTS-1371 SS | 100% |  |  | Core & Shell | Preconstruction | Bid & Buyout |  | DELETED |  |  | IGMP |  | DH1100 |  |  |  |
| QTS-11511 |  | DH 1100 / Electrical Gallery 1102 // In Wall Electrical Rough for South 1102 Wall *Deleted* |  | 1d | 2025-05-14 A | 2025-05-15 A | QTS-1371 SS | 100% | 2025-05-22 | 2025-05-22 | Electrical | Construction |  |  | DELETED |  |  | IGMP | Level 1 | DH1100 | Phase 1 | DH1100 |  |
| QTS-11551 |  | DH 2200 / Electrical Gallery 2202 // In Wall Electrical Rough *Deleted* |  | 1d | 2025-05-14 A | 2025-05-15 A | QTS-1371 SS | 100% | 2025-06-04 | 2025-06-04 | Electrical | Construction |  |  | DELETED |  |  | IGMP |  | DH1100 | Phase 2 | DH2200 |  |
| QTS-11591 |  | DH 1200 / Electrical Gallery 1202 // In Wall Electrical Rough for 1202 South Wall *Deleted* |  | 1d | 2025-05-14 A | 2025-05-15 A | QTS-1371 SS | 100% | 2025-06-10 | 2025-06-10 | Electrical | Construction |  |  | DELETED |  |  | IGMP |  | DH1100 | Phase 2 | DH1200 |  |
| QTS-11631 |  | DH 2300 / Electrical Gallery 2302 // In Wall Electrical Rough for 2302 South Wall *Deleted* |  | 1d | 2025-05-14 A | 2025-05-15 A | QTS-1371 SS | 100% | 2025-06-18 | 2025-06-18 | Electrical | Construction |  |  | DELETED |  |  | IGMP |  | DH1100 | Phase 3 | DH2300 |  |
| QTS-11671 |  | DH 1300 / Electrical Gallery 1302 // In Wall Electrical Rough for 1302 South Wall *Deleted* |  | 1d | 2025-05-14 A | 2025-05-15 A | QTS-1371 SS | 100% | 2025-06-30 | 2025-06-30 | Electrical | Construction |  |  | DELETED |  |  | IGMP |  | DH1100 | Phase 3 | DH1300 |  |
| QTS-11921 |  | DH 1100 / Electrical Gallery 1102 // In Wall Inspection for South 1102 Wall *Deleted* |  | 1d | 2025-05-14 A | 2025-05-15 A | QTS-1371 SS | 100% | 2025-05-27 | 2025-05-27 | Mechanical | Construction |  |  | DELETED |  |  | IGMP | Level 1 | DH1100 | Phase 1 | DH1100 |  |
| QTS-11951 |  | DH 2200 / Electrical Gallery 2202 // In Wall Inspection *Deleted* |  | 1d | 2025-05-14 A | 2025-05-15 A | QTS-1371 SS | 100% | 2025-06-06 | 2025-06-06 | Mechanical | Construction |  |  | DELETED |  |  | IGMP |  | DH1100 | Phase 2 | DH2200 |  |
| QTS-11981 |  | DH 1200 / Electrical Gallery 1202 // In Wall Inspection for 1202 South Wall *Deleted* |  | 1d | 2025-05-14 A | 2025-05-15 A | QTS-1371 SS | 100% | 2025-06-12 | 2025-06-12 | Mechanical | Construction |  |  | DELETED |  |  | IGMP |  | DH1100 | Phase 2 | DH1200 |  |
| QTS-12011 |  | DH 2300 / Electrical Gallery 2302 // In Wall Inspection for 2302 South Wall *Deleted* |  | 1d | 2025-05-14 A | 2025-05-15 A | QTS-1371 SS | 100% | 2025-06-20 | 2025-06-20 | Mechanical | Construction |  |  | DELETED |  |  | IGMP |  | DH1100 | Phase 3 | DH2300 |  |
| QTS-12041 |  | DH 1300 / Electrical Gallery 1302 // In Wall Inspection for 1302 South Wall *Deleted* |  | 1d | 2025-05-14 A | 2025-05-15 A | QTS-1371 SS | 100% | 2025-07-02 | 2025-07-02 | Mechanical | Construction |  |  | DELETED |  |  | IGMP |  | DH1100 | Phase 3 | DH1300 |  |
| QTS-12151 |  | DH 1100 / Electrical Gallery 1102 // Hang, Tape, & Finish Drywall for South 1102 Wall *Deleted* |  | 1d | 2025-05-14 A | 2025-05-15 A | QTS-1371 SS | 100% | 2025-05-28 | 2025-05-28 | Build Out | Construction |  |  | DELETED |  |  | IGMP | Level 1 | DH1100 | Phase 1 | DH1100 | Doug Hayes |
| QTS-12191 |  | DH 2200 / Electrical Gallery 2202 // Hang, Tape, & Finish Drywall *Deleted* |  | 1d | 2025-05-14 A | 2025-05-15 A | QTS-1371 SS | 100% | 2025-06-09 | 2025-06-09 | Build Out | Construction |  |  | DELETED |  |  | IGMP |  | DH1100 | Phase 2 | DH2200 | Doug Hayes |
| QTS-12231 |  | DH 1200 / Electrical Gallery 1202 // Hang, Tape, & Finish Drywall for 1202 South Wall *Deleted* |  | 1d | 2025-05-14 A | 2025-05-15 A | QTS-1371 SS | 100% | 2025-06-13 | 2025-06-13 | Build Out | Construction |  |  | DELETED |  |  | IGMP |  | DH1100 | Phase 2 | DH1200 | Doug Hayes |
| QTS-12271 |  | DH 2300 / Electrical Gallery 2302 // Hang, Tape, & Finish Drywall for 2302 South Wall *Deleted* |  | 1d | 2025-05-14 A | 2025-05-15 A | QTS-1371 SS | 100% | 2025-06-23 | 2025-06-23 | Build Out | Construction |  |  | DELETED |  |  | IGMP |  | DH1100 | Phase 3 | DH2300 | Doug Hayes |
| QTS-12311 |  | DH 1300 / Electrical Gallery 1302 // Hang, Tape, & Finish Drywall for 1302 South Wall *Deleted* |  | 1d | 2025-05-14 A | 2025-05-15 A | QTS-1371 SS | 100% | 2025-07-03 | 2025-07-03 | Build Out | Construction |  |  | DELETED |  |  | IGMP |  | DH1100 | Phase 3 | DH1300 | Doug Hayes |

| ID | Activity | Duration | Start | Finish | Predecessors | Complete | Planned start | Planned finish | Layton Discipline | Baseline | Phase-1-1 | Project Section-1 | Location | Level | Layton Super | DELETED | D |
| --- | --- | --- | --- | --- | --- | --- | --- | --- | --- | --- | --- | --- | --- | --- | --- | --- | --- |
| QTS-13631 | DH 1100 / Electrical Gallery 1102 // Paint Walls for South 1102 Wall *Deleted* | 1d | 2025-05-14 A | 2025-05-15 A | QTS-1371 SS | 100% | 2025-06-09 | 2025-06-09 | Build Out | IGMP | Phase 1 | Construction | DH1100 | Level 1 | Doug Hayes | DELETED | DH1100 |
| QTS-13701 | DH 2200 / Electrical Gallery 2202 // Paint Walls for 2202 South Wall *Deleted* | 1d | 2025-05-14 A | 2025-05-15 A | QTS-1371 SS | 100% | 2025-06-23 | 2025-06-23 | Build Out | IGMP | Phase 2 | Construction | DH2200 |  | Doug Hayes | DELETED | DH1100 |
| QTS-13771 | DH 1200 / Electrical Gallery 1202 // Paint Walls for 1202 South Wall *Deleted* | 1d | 2025-05-14 A | 2025-05-15 A | QTS-1371 SS | 100% | 2025-06-27 | 2025-06-27 | Build Out | IGMP | Phase 2 | Construction | DH1200 |  | Doug Hayes | DELETED | DH1100 |
| QTS-13841 | DH 2300 / Electrical Gallery 2302 // Paint Walls for 2302 South Wall *Deleted* | 1d | 2025-05-14 A | 2025-05-15 A | QTS-1371 SS | 100% | 2025-07-08 | 2025-07-08 | Build Out | IGMP | Phase 3 | Construction | DH2300 |  | Doug Hayes | DELETED | DH1100 |
| QTS-13911 | DH 1300 / Electrical Gallery 1302 // Paint Walls for 1302 South Wall *Deleted* | 1d | 2025-05-14 A | 2025-05-15 A | QTS-1371 SS | 100% | 2025-07-18 | 2025-07-18 | Build Out | IGMP | Phase 3 | Construction | DH1300 |  | Doug Hayes | DELETED | DH1100 |
| QTS-17061 | DH 1100 / Electrical Gallery 1102 // Set Non Critical Load XFMRs *Deleted* | 1d | 2025-05-14 A | 2025-05-15 A | QTS-1371 SS | 100% | 2025-05-20 | 2025-05-20 | Electrical | IGMP | Phase 1 | Construction | DH1100 | Level 1 |  | DELETED | DH1100 |
| QTS-17101 | DH 2200 / Electrical Gallery 2202 // Set Non Critical Load XFMRs *Deleted* | 1d | 2025-05-14 A | 2025-05-15 A | QTS-1371 SS | 100% | 2025-06-02 | 2025-06-02 | Electrical | IGMP | Phase 2 | Construction | DH2200 |  |  | DELETED | DH1100 |
| QTS-17141 | DH 1200 / Electrical Gallery 1202 // Set Non Critical Load XFMRs *Deleted* | 1d | 2025-05-14 A | 2025-05-15 A | QTS-1371 SS | 100% | 2025-08-20 | 2025-08-20 | Electrical | IGMP | Phase 2 | Construction | DH1200 |  |  | DELETED | DH1100 |
| QTS-17181 | DH 2300 / Electrical Gallery 2302 // Set Non Critical Load XFMRs *Deleted* | 1d | 2025-05-14 A | 2025-05-15 A | QTS-1371 SS | 100% | 2025-06-16 | 2025-06-16 | Electrical | IGMP | Phase 3 | Construction | DH2300 |  |  | DELETED | DH1100 |
| QTS-17221 | DH 1300 / Electrical Gallery 1302 // Set Non Critical Load XFMRs *Deleted* | 1d | 2025-05-14 A | 2025-05-15 A | QTS-1371 SS | 100% | 2025-06-26 | 2025-06-26 | Electrical | IGMP | Phase 3 | Construction | DH1300 |  |  | DELETED | DH1100 |
| QTS-17371 | DH 1100 / Electrical Gallery 1102 // Pull LV Cables from XFMRs to Panels *Deleted* | 1d | 2025-05-14 A | 2025-05-15 A | QTS-1371 SS | 100% | 2025-05-22 | 2025-05-22 | Electrical | IGMP | Phase 1 | Construction | DH1100 | Level 1 |  | DELETED | DH1100 |
| QTS-17401 | DH 2200 / Electrical Gallery 2202 // Pull LV Cables from XFMRs to Panels *Deleted* | 1d | 2025-05-14 A | 2025-05-15 A | QTS-1371 SS | 100% | 2025-06-04 | 2025-06-04 | Electrical | IGMP | Phase 2 | Construction | DH2200 |  |  | DELETED | DH1100 |
| QTS-17431 | DH 1200 / Electrical Gallery 1202 // Pull LV Cables from XFMRs to Panels *Deleted* | 1d | 2025-05-14 A | 2025-05-15 A | QTS-1371 SS | 100% | 2025-12-08 | 2025-12-08 | Electrical | IGMP | Phase 2 | Construction | DH1200 |  |  | DELETED | DH1100 |
| QTS-17461 | DH 2300 / Electrical Gallery 2302 // Pull LV Cables from XFMRs to Panels *Deleted* | 1d | 2025-05-14 A | 2025-05-15 A | QTS-1371 SS | 100% | 2025-06-18 | 2025-06-18 | Electrical | IGMP | Phase 3 | Construction | DH2300 |  |  | DELETED | DH1100 |
| QTS-17491 | DH 1300 / Electrical Gallery 1302 // Pull LV Cables from XFMRs to Panels *Deleted* | 1d | 2025-05-14 A | 2025-05-15 A | QTS-1371 SS | 100% | 2025-06-30 | 2025-06-30 | Electrical | IGMP | Phase 3 | Construction | DH1300 |  |  | DELETED | DH1100 |
| QTS-18771 | *Deleted* C South Phase 3 // Excavate, Install, & Backfill Sewer Line East | 7d | 2025-05-14 A | 2025-05-22 A | QTS-1371 SS | 100% |  |  | Site Improvements | IGMP |  | Construction | Site Work |  |  | DELETED | DH1100 |
| QTS-18921 | *Deleted* C South Phase 3 // Excavate, Install, & Backfill Sewer Line West | 7d | 2025-05-14 A | 2025-05-22 A | QTS-1371 SS | 100% |  |  | Site Improvements | IGMP |  | Construction | Site Work |  |  | DELETED | DH1100 |
| QTS-19201 | *Deleted* D East Phase 4 // Excavate, Install, & Backfill Sewer Line | 7d | 2025-05-14 A | 2025-05-22 A | QTS-1371 SS | 100% |  |  | Site Improvements | IGMP |  | Construction | Site Work |  |  | DELETED | DH1100 |
| QTS-19281 | *Deleted* A West Phase 1 // Excavate, Install, & Backfill Storm Line | 3d | 2025-05-14 A | 2025-05-16 A | QTS-1371 SS | 100% |  |  | Site Improvements | IGMP |  | Construction | Site Work | Level 1 |  | DELETED | DH1100 |
| QTS-19541 | *Deleted* B North Phase 2 // Excavate, Install, & Backfill Storm Line East | 6d | 2025-05-14 A | 2025-05-21 A | QTS-1371 SS | 100% |  |  | Site Improvements | IGMP |  | Construction | Site Work |  |  | DELETED | DH1100 |
| QTS-19551 | *Deleted* A West Phase 1 // Rough Grade | 3d | 2025-05-14 A | 2025-05-16 A | QTS-1371 SS | 100% |  |  | Site Improvements | IGMP |  | Construction | Site Work | Level 1 |  | DELETED | DH1100 |
| QTS-19641 | *Deleted* B North Phase 2 // Rough Grade | 3d | 2025-05-14 A | 2025-05-16 A | QTS-1371 SS | 100% |  |  | Site Improvements | IGMP |  | Construction | Site Work |  |  | DELETED | DH1100 |
| QTS-19651 | *Deleted* A West Phase 1 // Stake Curbs | 1d | 2025-05-14 A | 2025-05-14 A | QTS-1371 SS | 100% |  |  | Site Improvements | IGMP |  | Construction | Site Work | Level 1 |  | DELETED | DH1100 |
| QTS-19661 | *Deleted* A West Phase 1 // Excavate, Install, & Backfill Electrical for Site Lighting | 3d | 2025-05-14 A | 2025-05-16 A | QTS-1371 SS | 100% |  |  | Site Improvements | IGMP |  | Construction | Site Work | Level 1 |  | DELETED | DH1100 |
| QTS-19671 | *Deleted* A West Phase 1 // Install Underground Grounding Ring | 3d | 2025-05-14 A | 2025-05-16 A | QTS-1371 SS | 100% |  |  | Site Improvements | IGMP | Phase 1 | Construction | Site Work | Underground |  | DELETED | DH1100 |
| QTS-19731 | *Deleted* A West Phase 1 // Grade for Curb | 2d | 2025-05-14 A | 2025-05-15 A | QTS-1371 SS | 100% |  |  | Site Improvements | IGMP |  | Construction | Site Work | Level 1 |  | DELETED | DH1100 |
| QTS-19741 | *Deleted* A West Phase 1 // Install Irrigation Sleeves | 2d | 2025-05-14 A | 2025-05-15 A | QTS-1371 SS | 100% |  |  | Site Improvements | IGMP |  | Construction | Site Work | Level 1 |  | DELETED | DH1100 |
| QTS-19851 | *Deleted* B North Phase 2 // Stake Curbs | 1d | 2025-05-14 A | 2025-05-14 A | QTS-1371 SS | 100% |  |  | Site Improvements | IGMP |  | Construction | Site Work |  |  | DELETED | DH1100 |
| QTS-19861 | *Deleted* B North Phase 2 // Excavate, Install, & Backfill Electrical for Site Lighting | 6d | 2025-05-14 A | 2025-05-21 A | QTS-1371 SS | 100% |  |  | Site Improvements | IGMP |  | Construction | Site Work |  |  | DELETED | DH1100 |
| QTS-19871 | *Deleted* B North Phase 2 // Install Underground Grounding Ring | 5d | 2025-05-14 A | 2025-05-20 A | QTS-1371 SS | 100% |  |  | Site Improvements | IGMP | Phase 2 | Construction | Site Work | Underground |  | DELETED | DH1100 |
| QTS-19881 | *Deleted* C South Phase 3 // Rough Grade | 6d | 2025-05-14 A | 2025-05-21 A | QTS-1371 SS | 100% |  |  | Site Improvements | IGMP |  | Construction | Site Work |  |  | DELETED | DH1100 |
| QTS-19891 | *Deleted* A West Phase 1 // Stringline for Curb | 2d | 2025-05-14 A | 2025-05-15 A | QTS-1371 SS | 100% |  |  | Site Improvements | IGMP |  | Construction | Site Work | Level 1 |  | DELETED | DH1100 |
| QTS-19901 | *Deleted* A West Phase 1 // Drill & Reinforce Light Pole Bases | 8d | 2025-05-14 A | 2025-05-23 A | QTS-1371 SS | 100% |  |  | Site Improvements | IGMP |  | Construction | Site Work | Level 1 |  | DELETED | DH1100 |
| QTS-19921 | *Deleted* B North Phase 2 // Excavate, Install, & Backfill Storm Line West | 6d | 2025-05-14 A | 2025-05-21 A | QTS-1371 SS | 100% |  |  | Site Improvements | IGMP |  | Construction | Site Work |  |  | DELETED | DH1100 |
| QTS-20021 | *Deleted* B North Phase 2 // Grade for Curb | 3d | 2025-05-14 A | 2025-05-16 A | QTS-1371 SS | 100% |  |  | Site Improvements | IGMP |  | Construction | Site Work |  |  | DELETED | DH1100 |
| QTS-20031 | *Deleted* B North Phase 2 // Install Irrigation Sleeves | 2d | 2025-05-14 A | 2025-05-15 A | QTS-1371 SS | 100% |  |  | Site Improvements | IGMP |  | Construction | Site Work |  |  | DELETED | DH1100 |
| QTS-20051 | *Deleted* A West Phase 1 // Machine Curb | 1d | 2025-05-14 A | 2025-05-14 A | QTS-1371 SS | 100% |  |  | Site Improvements | IGMP |  | Construction | Site Work | Level 1 |  | DELETED | DH1100 |
| QTS-20161 | *Deleted* C South Phase 3 // Install Irrigation Sleeves | 4d | 2025-05-14 A | 2025-05-19 A | QTS-1371 SS | 100% |  |  | Site Improvements | IGMP |  | Construction | Site Work |  |  | DELETED | DH1100 |
| QTS-20171 | *Deleted* A West Phase 1 // Form & Place Curb Tie Ins | 1d | 2025-05-14 A | 2025-05-14 A | QTS-1371 SS | 100% |  |  | Site Improvements | IGMP |  | Construction | Site Work | Level 1 |  | DELETED | DH1100 |
| QTS-20391 | *Deleted* B North Phase 2 // Stringline for Curb | 1d | 2025-05-14 A | 2025-05-14 A | QTS-1371 SS | 100% |  |  | Site Improvements | IGMP |  | Construction | Site Work |  |  | DELETED | DH1100 |
| QTS-20401 | *Deleted* A West Phase 1 // Install Irrigation Main Lines | 4d | 2025-05-14 A | 2025-05-19 A | QTS-1371 SS | 100% |  |  | Site Improvements | IGMP |  | Construction | Site Work | Level 1 |  | DELETED | DH1100 |
| QTS-20411 | *Deleted* A West Phase 1 // Prep & Place Sidewalks | 5d | 2025-05-14 A | 2025-05-20 A | QTS-1371 SS | 100% |  |  | Site Improvements | IGMP |  | Construction | Site Work | Level 1 |  | DELETED | DH1100 |
| QTS-20421 | *Deleted* A West Phase 1 // Prep & Place Heavy Duty Concrete | 5d | 2025-05-14 A | 2025-05-20 A | QTS-1371 SS | 100% |  |  | Site Improvements | IGMP |  | Construction | Site Work | Level 1 |  | DELETED | DH1100 |
| QTS-20431 | *Deleted* B North Phase 2 // Machine Curb | 1d | 2025-05-14 A | 2025-05-14 A | QTS-1371 SS | 100% |  |  | Site Improvements | IGMP |  | Construction | Site Work |  |  | DELETED | DH1100 |
| QTS-20471 | *Deleted* B North Phase 2 // Form & Place Curb Tie Ins | 3d | 2025-05-14 A | 2025-05-16 A | QTS-1371 SS | 100% |  |  | Site Improvements | IGMP |  | Construction | Site Work |  |  | DELETED | DH1100 |
| QTS-20481 | *Deleted* C South Phase 3 // Excavate, Install, & Backfill Electrical for Site Lighting | 6d | 2025-05-14 A | 2025-05-21 A | QTS-1371 SS | 100% |  |  | Site Improvements | IGMP |  | Construction | Site Work |  |  | DELETED | DH1100 |
| QTS-20491 | *Deleted* C South Phase 3 // Excavate, Install, & Backfill Storm Line East | 6d | 2025-05-14 A | 2025-05-21 A | QTS-1371 SS | 100% |  |  | Site Improvements | IGMP |  | Construction | Site Work |  |  | DELETED | DH1100 |
| QTS-20501 | *Deleted* C South Phase 3 // Install Underground Grounding Ring | 5d | 2025-05-14 A | 2025-05-20 A | QTS-1371 SS | 100% |  |  | Site Improvements | IGMP | Phase 3 | Construction | Site Work | Underground |  | DELETED | DH1100 |
| QTS-20641 | *Deleted* B North Phase 2 // Drill & Reinforce Light Pole Bases | 8d | 2025-05-14 A | 2025-05-23 A | QTS-1371 SS | 100% |  |  | Site Improvements | IGMP |  | Construction | Site Work |  |  | DELETED | DH1100 |
| QTS-20651 | *Deleted* A West Phase 1 // Stub Up Electrical to Light Poles | 4d | 2025-05-14 A | 2025-05-19 A | QTS-1371 SS | 100% |  |  | Site Improvements | IGMP |  | Construction | Site Work | Level 1 |  | DELETED | DH1100 |
| QTS-20661 | *Deleted* A West Phase 1 // Install Irrigation Laterals | 4d | 2025-05-14 A | 2025-05-19 A | QTS-1371 SS | 100% |  |  | Site Improvements | IGMP |  | Construction | Site Work | Level 1 |  | DELETED | DH1100 |
| QTS-20861 | *Deleted* B North Phase 2 // Prep & Place Medium Duty Concrete Pavement | 6d | 2025-05-14 A | 2025-05-21 A | QTS-1371 SS | 100% |  |  | Site Improvements | IGMP |  | Construction | Site Work |  |  | DELETED | DH1100 |
| QTS-20871 | *Deleted* B North Phase 2 // Install Irrigation Main Lines | 6d | 2025-05-14 A | 2025-05-21 A | QTS-1371 SS | 100% |  |  | Site Improvements | IGMP |  | Construction | Site Work |  |  | DELETED | DH1100 |
| QTS-20891 | *Deleted* A West Phase 1 // Prep & Place Medium Duty Asphalt Pavement | 3d | 2025-05-14 A | 2025-05-16 A | QTS-1371 SS | 100% |  |  | Site Improvements | IGMP |  | Construction | Site Work | Level 1 |  | DELETED | DH1100 |
| QTS-21021 | *Deleted* C South Phase 3 // Excavate, Install, & Backfill Storm Line West | 6d | 2025-05-14 A | 2025-05-21 A | QTS-1371 SS | 100% |  |  | Site Improvements | IGMP |  | Construction | Site Work |  |  | DELETED | DH1100 |
| QTS-21031 | *Deleted* A West Phase 1 // Pour Light Pole Bases | 1d | 2025-05-14 A | 2025-05-14 A | QTS-1371 SS | 100% |  |  | Site Improvements | IGMP |  | Construction | Site Work | Level 1 |  | DELETED | DH1100 |
| QTS-21041 | *Deleted* A West Phase 1 // Install Landscaping & Planting | 4d | 2025-05-14 A | 2025-05-19 A | QTS-1371 SS | 100% |  |  | Site Improvements | IGMP |  | Construction | Site Work | Level 1 |  | DELETED | DH1100 |
| QTS-21051 | *Deleted* A West Phase 1 // Utility Adjustments (Raise Cans & Collars) | 2d | 2025-05-14 A | 2025-05-15 A | QTS-1371 SS | 100% |  |  | Site Improvements | IGMP |  | Construction | Site Work | Level 1 |  | DELETED | DH1100 |
| QTS-21161 | *Deleted* A West Phase 1 // Set Light Poles | 2d | 2025-05-14 A | 2025-05-15 A | QTS-1371 SS | 100% |  |  | Site Improvements | IGMP |  | Construction | Site Work | Level 1 |  | DELETED | DH1100 |
| QTS-21321 | *Deleted* B North Phase 2 // Prep & Place Heavy Duty Concrete Pavement | 5d | 2025-05-14 A | 2025-05-20 A | QTS-1371 SS | 100% |  |  | Site Improvements | IGMP |  | Construction | Site Work |  |  | DELETED | DH1100 |
| QTS-21331 | *Deleted* B North Phase 2 // Install Irrigation Laterals | 8d | 2025-05-14 A | 2025-05-23 A | QTS-1371 SS | 100% |  |  | Site Improvements | IGMP |  | Construction | Site Work |  |  | DELETED | DH1100 |
| QTS-21341 | *Deleted* B North Phase 2 // Field Measure for Entrance Gates | 1d | 2025-05-14 A | 2025-05-14 A | QTS-1371 SS | 100% |  |  | Site Improvements | IGMP |  | Construction | Site Work |  |  | DELETED | DH1100 |
| QTS-21351 | *Deleted* C South Phase 3 // Install Irrigation Main Lines | 8d | 2025-05-14 A | 2025-05-23 A | QTS-1371 SS | 100% |  |  | Site Improvements | IGMP |  | Construction | Site Work |  |  | DELETED | DH1100 |
| QTS-21361 | *Deleted* A West Phase 1 // Pull Electrical Wire & Make Up to Light Poles | 3d | 2025-05-14 A | 2025-05-16 A | QTS-1371 SS | 100% |  |  | Site Improvements | IGMP |  | Construction | Site Work | Level 1 |  | DELETED | DH1100 |
| QTS-21431 | *Deleted* B North Phase 2 // Stub Up Electrical to Light Poles | 8d | 2025-05-14 A | 2025-05-23 A | QTS-1371 SS | 100% |  |  | Site Improvements | IGMP |  | Construction | Site Work |  |  | DELETED | DH1100 |
| QTS-21441 | *Deleted* B North Phase 2 // Fabricate & Deliver Entrance Gates | 6d | 2025-05-14 A | 2025-05-21 A | QTS-1371 SS | 100% |  |  | Site Improvements | IGMP |  | Construction | Site Work |  |  | DELETED | DH1100 |
| QTS-21451 | *Deleted* C South Phase 3 // Drill & Reinforce Light Pole Bases | 8d | 2025-05-14 A | 2025-05-23 A | QTS-1371 SS | 100% |  |  | Site Improvements | IGMP |  | Construction | Site Work |  |  | DELETED | DH1100 |
| QTS-21621 | *Deleted* A West Phase 1 // Sack & Patch Light Pole Bases | 2d | 2025-05-14 A | 2025-05-15 A | QTS-1371 SS | 100% |  |  | Site Improvements | IGMP |  | Construction | Site Work | Level 1 |  | DELETED | DH1100 |
| QTS-21631 | *Deleted* D East Phase 4 // Excavate, Install, & Backfill Storm Line | 6d | 2025-05-14 A | 2025-05-21 A | QTS-1371 SS | 100% |  |  | Site Improvements | IGMP |  | Construction | Site Work |  |  | DELETED | DH1100 |
| QTS-21741 | *Deleted* B North Phase 2 // Prep & Place Medium Duty Asphalt Pavement | 5d | 2025-05-14 A | 2025-05-20 A | QTS-1371 SS | 100% |  |  | Site Improvements | IGMP |  | Construction | Site Work |  |  | DELETED | DH1100 |

| ID | Activity | Duration | Start | Finish | Predecessors | Complete | Planned start | Planned finish | Layton Discipline | Baseline | Project Section-1 | Location | DELETED | D | Level | Layton Super | Project Section | Phase-1 |
| --- | --- | --- | --- | --- | --- | --- | --- | --- | --- | --- | --- | --- | --- | --- | --- | --- | --- | --- |
| QTS-21841 | *Deleted* B North Phase 2 // Install Entrance Gates | 5d | 2025-05-14 A | 2025-05-20 A | QTS-1371 SS | 100% |  |  | Site Improvements | IGMP | Construction | Site Work | DELETED | DH1100 |  |  |  |  |
| QTS-21871 | *Deleted* B North Phase 2 // Install Landscaping & Planting | 5d | 2025-05-14 A | 2025-05-20 A | QTS-1371 SS | 100% |  |  | Site Improvements | IGMP | Construction | Site Work | DELETED | DH1100 |  |  |  |  |
| QTS-21881 | *Deleted* C South Phase 3 // Install Irrigation Laterals | 8d | 2025-05-14 A | 2025-05-23 A | QTS-1371 SS | 100% |  |  | Site Improvements | IGMP | Construction | Site Work | DELETED | DH1100 |  |  |  |  |
| QTS-21971 | *Deleted* B North Phase 2 // Pour Light Pole Bases | 2d | 2025-05-14 A | 2025-05-15 A | QTS-1371 SS | 100% |  |  | Site Improvements | IGMP | Construction | Site Work | DELETED | DH1100 |  |  |  |  |
| QTS-21981 | *Deleted* C South Phase 3 // Stub Up Electrical to Light Poles | 8d | 2025-05-14 A | 2025-05-23 A | QTS-1371 SS | 100% |  |  | Site Improvements | IGMP | Construction | Site Work | DELETED | DH1100 |  |  |  |  |
| QTS-21991 | *Deleted* D East Phase 4 // Excavate, Install, & Backfill Domestic Water Line | 5d | 2025-05-14 A | 2025-05-20 A | QTS-1371 SS | 100% |  |  | Site Improvements | IGMP | Construction | Site Work | DELETED | DH1100 |  |  |  |  |
| QTS-22001 | *Deleted* D East Phase 4 // Excavate, Install, & Backfill Water Line for Hydrants | 5d | 2025-05-14 A | 2025-05-20 A | QTS-1371 SS | 100% |  |  | Site Improvements | IGMP | Construction | Site Work | DELETED | DH1100 |  |  |  |  |
| QTS-22041 | *Deleted* B North Phase 2 // Utility Adjustments (Raise Cans & Collars) | 5d | 2025-05-14 A | 2025-05-20 A | QTS-1371 SS | 100% |  |  | Site Improvements | IGMP | Construction | Site Work | DELETED | DH1100 |  |  |  |  |
| QTS-22081 | *Deleted* B North Phase 2 // Set Light Poles | 2d | 2025-05-14 A | 2025-05-15 A | QTS-1371 SS | 100% |  |  | Site Improvements | IGMP | Construction | Site Work | DELETED | DH1100 |  |  |  |  |
| QTS-22111 | DH 2100 / Electrical Gallery 2102 // In Wall Electrical Rough for South 2102 Wall *Deleted* | 1d | 2025-05-14 A | 2025-05-15 A | QTS-1371 SS | 100% | 2025-05-16 | 2025-05-16 | Electrical | IGMP | Construction | DH2100 | DELETED | DH1100 | Level 2 |  |  |  |
| QTS-22171 | *Deleted* B North Phase 2 // Install Entrance Gate Operator | 5d | 2025-05-14 A | 2025-05-20 A | QTS-1371 SS | 100% |  |  | Site Improvements | IGMP | Construction | Site Work | DELETED | DH1100 |  |  |  |  |
| QTS-22221 | *Deleted* B North Phase 2 // Pull Electrical Wire & Make Up to Light Poles | 8d | 2025-05-14 A | 2025-05-23 A | QTS-1371 SS | 100% |  |  | Site Improvements | IGMP | Construction | Site Work | DELETED | DH1100 |  |  |  |  |
| QTS-22301 | *Deleted* D East Phase 4 // Rough Grade | 3d | 2025-05-14 A | 2025-05-16 A | QTS-1371 | 100% |  |  | Site Improvements | IGMP | Construction | Site Work | DELETED | DH1100 |  |  |  |  |
| QTS-22341 | *Deleted* D East Phase 4 // Install Water Meter Vault | 1d | 2025-05-14 A | 2025-05-14 A | QTS-1371 SS | 100% |  |  | Site Improvements | IGMP | Construction | Site Work | DELETED | DH1100 |  |  |  |  |
| QTS-22451 | *Deleted* D East Phase 4 // Set Water Meter | 2d | 2025-05-14 A | 2025-05-15 A | QTS-1371 SS | 100% |  |  | Site Improvements | IGMP | Construction | Site Work | DELETED | DH1100 |  |  |  |  |
| QTS-22531 | *Deleted* D East Phase 4 // Excavate, Reinforce & Pour Trash Enclosure Footings | 3d | 2025-05-14 A | 2025-05-16 A | QTS-1371 SS | 100% |  |  | Site Improvements | IGMP | Construction | Site Work | DELETED | DH1100 |  |  |  |  |
| QTS-22541 | *Deleted* C South Phase 3 // Pour Light Pole Bases | 2d | 2025-05-14 A | 2025-05-15 A | QTS-1371 SS | 100% |  |  | Site Improvements | IGMP | Construction | Site Work | DELETED | DH1100 |  |  |  |  |
| QTS-22551 | *Deleted* D East Phase 4 // Stake Curbs | 1d | 2025-05-14 A | 2025-05-14 A | QTS-1371 SS | 100% |  |  | Site Improvements | IGMP | Construction | Site Work | DELETED | DH1100 |  |  |  |  |
| QTS-22561 | *Deleted* D East Phase 4 // Excavate, Install, & Backfill Electrical for Site Lighting | 6d | 2025-05-14 A | 2025-05-21 A | QTS-1371 SS | 100% |  |  | Site Improvements | IGMP | Construction | Site Work | DELETED | DH1100 |  |  |  |  |
| QTS-22601 | *Deleted* D East Phase 4 // Install Irrigation Sleeves | 2d | 2025-05-14 A | 2025-05-15 A | QTS-1371 SS | 100% |  |  | Site Improvements | IGMP | Construction | Site Work | DELETED | DH1100 |  |  |  |  |
| QTS-22631 | DH 2100 / Electrical Gallery 2102 // In Wall Inspection for South 2102 Wall *Deleted* | 1d | 2025-05-14 A | 2025-05-15 A | QTS-1371 SS | 100% | 2025-05-20 | 2025-05-20 | Mechanical | IGMP | Construction | DH2100 | DELETED | DH1100 | Level 2 |  |  |  |
| QTS-22671 | *Deleted* C South Phase 3 // Set Light Poles | 4d | 2025-05-14 A | 2025-05-19 A | QTS-1371 SS | 100% |  |  | Site Improvements | IGMP | Construction | Site Work | DELETED | DH1100 |  |  |  |  |
| QTS-22711 | DH 2100 / Electrical Gallery 2102 // Hang, Tape, & Finish Drywall for South 2102 Wall *Deleted* | 1d | 2025-05-14 A | 2025-05-15 A | QTS-1371 SS | 100% | 2025-05-21 | 2025-05-21 | Build Out | IGMP | Construction | DH2100 | DELETED | DH1100 | Level 2 | Doug Hayes |  |  |
| QTS-22761 | *Deleted* B North Phase 2 // Excavate, Form, & Pour Screen Wall Footings East | 8d | 2025-05-14 A | 2025-05-23 A | QTS-1371 SS | 100% |  |  | Site Improvements | IGMP | Construction | Site Work | DELETED | DH1100 |  |  |  |  |
| QTS-22771 | *Deleted* D East Phase 4 // Pour Trash Enclosure Tilt Panels | 1d | 2025-05-14 A | 2025-05-14 A | QTS-1371 SS | 100% |  |  | Site Improvements | IGMP | Construction | Site Work | DELETED | DH1100 |  |  |  |  |
| QTS-22781 | *Deleted* D East Phase 4 // Grade for Curb | 2d | 2025-05-14 A | 2025-05-15 A | QTS-1371 SS | 100% |  |  | Site Improvements | IGMP | Construction | Site Work | DELETED | DH1100 |  |  |  |  |
| QTS-22831 | *Deleted* B North Phase 2 // Sack & Patch Light Pole Bases | 3d | 2025-05-14 A | 2025-05-16 A | QTS-1371 SS | 100% |  |  | Site Improvements | IGMP | Construction | Site Work | DELETED | DH1100 |  |  |  |  |
| QTS-22841 | *Deleted* D East Phase 4 // Erect Trash Enclosure Tilt Panels | 1d | 2025-05-14 A | 2025-05-14 A | QTS-1371 SS | 100% |  |  | Site Improvements | IGMP | Construction | Site Work | DELETED | DH1100 |  |  |  |  |
| QTS-22871 | *Deleted* D East Phase 4 // Field Measure Trash Enclosure Gates | 1d | 2025-05-14 A | 2025-05-14 A | QTS-1371 SS | 100% |  |  | Site Improvements | IGMP | Construction | Site Work | DELETED | DH1100 |  |  |  |  |
| QTS-22881 | *Deleted* D East Phase 4 // Stringline for Curb | 1d | 2025-05-14 A | 2025-05-14 A | QTS-1371 SS | 100% |  |  | Site Improvements | IGMP | Construction | Site Work | DELETED | DH1100 |  |  |  |  |
| QTS-22941 | *Deleted* D East Phase 4 // Fabricate & Deliver Trash Enclosure Gates | 5d | 2025-05-14 A | 2025-05-20 A | QTS-1371 SS | 100% |  |  | Site Improvements | IGMP | Construction | Site Work | DELETED | DH1100 |  |  |  |  |
| QTS-22951 | *Deleted* C South Phase 3 // Pull Electrical Wire & Make Up to Light Poles | 8d | 2025-05-14 A | 2025-05-23 A | QTS-1371 SS | 100% |  |  | Site Improvements | IGMP | Construction | Site Work | DELETED | DH1100 |  |  |  |  |
| QTS-22961 | *Deleted* D East Phase 4 // Machine Curb | 2d | 2025-05-14 A | 2025-05-15 A | QTS-1371 SS | 100% |  |  | Site Improvements | IGMP | Construction | Site Work | DELETED | DH1100 |  |  |  |  |
| QTS-22971 | *Deleted* D East Phase 4 // Drill & Reinforce Light Pole Bases | 3d | 2025-05-14 A | 2025-05-16 A | QTS-1371 SS | 100% |  |  | Site Improvements | IGMP | Construction | Site Work | DELETED | DH1100 |  |  |  |  |
| QTS-23081 | *Deleted* D East Phase 4 // Form & Place Curb Tie Ins | 2d | 2025-05-14 A | 2025-05-15 A | QTS-1371 SS | 100% |  |  | Site Improvements | IGMP | Construction | Site Work | DELETED | DH1100 |  |  |  |  |
| QTS-23101 | *Deleted* D East Phase 4 // Stub Up Electrical to Light Poles | 4d | 2025-05-14 A | 2025-05-19 A | QTS-1371 SS | 100% |  |  | Site Improvements | IGMP | Construction | Site Work | DELETED | DH1100 |  |  |  |  |
| QTS-23131 | *Deleted* D East Phase 4 // Install Irrigation Main Lines | 2d | 2025-05-14 A | 2025-05-15 A | QTS-1371 SS | 100% |  |  | Site Improvements | IGMP | Construction | Site Work | DELETED | DH1100 |  |  |  |  |
| QTS-23151 | *Deleted* D East Phase 4 // Prep & Place Heavy Duty Concrete Paving | 5d | 2025-05-14 A | 2025-05-20 A | QTS-1371 SS | 100% |  |  | Site Improvements | IGMP | Construction | Site Work | DELETED | DH1100 |  |  |  |  |
| QTS-23161 | *Deleted* D East Phase 4 // Prep & Place Sidewalks | 6d | 2025-05-14 A | 2025-05-21 A | QTS-1371 SS | 100% |  |  | Site Improvements | IGMP | Construction | Site Work | DELETED | DH1100 |  |  |  |  |
| QTS-23221 | *Deleted* B North Phase 2 // Set Precast Screen Wall Concrete Columns East | 8d | 2025-05-14 A | 2025-05-23 A | QTS-1371 SS | 100% |  |  | Site Improvements | IGMP | Construction | Site Work | DELETED | DH1100 |  |  |  |  |
| QTS-23231 | *Deleted* B North Phase 2 // Excavate, Form, & Pour Screen Wall Footings West | 8d | 2025-05-14 A | 2025-05-23 A | QTS-1371 SS | 100% |  |  | Site Improvements | IGMP | Construction | Site Work | DELETED | DH1100 |  |  |  |  |
| QTS-23241 | *Deleted* D East Phase 4 // Install Trash Enclosure Gates | 1d | 2025-05-14 A | 2025-05-14 A | QTS-1371 SS | 100% |  |  | Site Improvements | IGMP | Construction | Site Work | DELETED | DH1100 |  |  |  |  |
| QTS-23271 | *Deleted* D East Phase 4 // Install Irrigation Laterals | 4d | 2025-05-14 A | 2025-05-19 A | QTS-1371 SS | 100% |  |  | Site Improvements | IGMP | Construction | Site Work | DELETED | DH1100 |  |  |  |  |
| QTS-23291 | DH 2100 / Electrical Gallery 2102 // Paint Walls for South 2102 Wall *Deleted* | 1d | 2025-05-14 A | 2025-05-15 A | QTS-1371 SS | 100% | 2025-06-05 | 2025-06-05 | Build Out | IGMP | Construction | DH2100 | DELETED | DH1100 | Level 2 | Doug Hayes |  |  |
| QTS-23371 | *Deleted* D East Phase 4 // Pour Light Pole Bases | 2d | 2025-05-14 A | 2025-05-15 A | QTS-1371 SS | 100% |  |  | Site Improvements | IGMP | Construction | Site Work | DELETED | DH1100 |  |  |  |  |
| QTS-23411 | *Deleted* C South Phase 3 // Sack & Patch Light Pole Bases | 3d | 2025-05-14 A | 2025-05-16 A | QTS-1371 SS | 100% |  |  | Site Improvements | IGMP | Construction | Site Work | DELETED | DH1100 |  |  |  |  |
| QTS-23481 | *Deleted* D East Phase 4 // Set Light Poles | 2d | 2025-05-14 A | 2025-05-15 A | QTS-1371 SS | 100% |  |  | Site Improvements | IGMP | Construction | Site Work | DELETED | DH1100 |  |  |  |  |
| QTS-23491 | *Deleted* D East Phase 4 // Prep & Place Medium Duty Asphalt Pavement | 3d | 2025-05-14 A | 2025-05-16 A | QTS-1371 SS | 100% |  |  | Site Improvements | IGMP | Construction | Site Work | DELETED | DH1100 |  |  |  |  |
| QTS-23661 | *Deleted* D East Phase 4 // Pull Electrical Wire & Make Up to Light Poles | 4d | 2025-05-14 A | 2025-05-19 A | QTS-1371 SS | 100% |  |  | Site Improvements | IGMP | Construction | Site Work | DELETED | DH1100 |  |  |  |  |
| QTS-23721 | *Deleted* D East Phase 4 // Utility Adjustments (Raise Cans & Collars) | 2d | 2025-05-14 A | 2025-05-15 A | QTS-1371 SS | 100% |  |  | Site Improvements | IGMP | Construction | Site Work | DELETED | DH1100 |  |  |  |  |
| QTS-23771 | *Deleted* B North Phase 2 // Install Ameristar Security Fence & Controller East | 5d | 2025-05-14 A | 2025-05-20 A | QTS-1371 SS | 100% |  |  | Site Improvements | IGMP | Construction | Site Work | DELETED | DH1100 |  |  |  |  |
| QTS-23781 | *Deleted* B North Phase 2 // Set Precast Screen Wall Concrete Columns West | 8d | 2025-05-14 A | 2025-05-23 A | QTS-1371 SS | 100% |  |  | Site Improvements | IGMP | Construction | Site Work | DELETED | DH1100 |  |  |  |  |
| QTS-23811 | *Deleted* D East Phase 4 // Site Striping | 1d | 2025-05-14 A | 2025-05-14 A | QTS-1371 SS | 100% |  |  | Site Improvements | IGMP | Construction | Site Work | DELETED | DH1100 |  |  |  |  |
| QTS-23941 | *Deleted* A West Phase 1 // Site Striping | 1d | 2025-05-14 A | 2025-05-14 A | QTS-1371 SS | 100% |  |  | Site Improvements | IGMP | Construction | Site Work | DELETED | DH1100 | Level 1 |  |  |  |
| QTS-23951 | *Deleted* D East Phase 4 // Sack & Patch Light Pole Bases | 3d | 2025-05-14 A | 2025-05-16 A | QTS-1371 SS | 100% |  |  | Site Improvements | IGMP | Construction | Site Work | DELETED | DH1100 |  |  |  |  |
| QTS-23961 | *Deleted* D East Phase 4 // Install Signage | 1d | 2025-05-14 A | 2025-05-14 A | QTS-1371 SS | 100% |  |  | Site Improvements | IGMP | Construction | Site Work | DELETED | DH1100 |  |  |  |  |
| QTS-24051 | *Deleted* B North Phase 2 // Site Striping | 1d | 2025-05-14 A | 2025-05-14 A | QTS-1371 SS | 100% |  |  | Site Improvements | IGMP | Construction | Site Work | DELETED | DH1100 |  |  |  |  |
| QTS-24061 | *Deleted* A West Phase 1 // Install Signage | 1d | 2025-05-14 A | 2025-05-14 A | QTS-1371 SS | 100% |  |  | Site Improvements | IGMP | Construction | Site Work | DELETED | DH1100 | Level 1 |  |  |  |
| QTS-24341 | *Deleted* B North Phase 2 // Install Ameristar Security Fence West | 5d | 2025-05-14 A | 2025-05-20 A | QTS-1371 SS | 100% |  |  | Site Improvements | IGMP | Construction | Site Work | DELETED | DH1100 |  |  |  |  |
| QTS-24381 | Zone 1 Gridlines 1-21 / Frame For Metal Panels *Deleted* | 5d | 2025-05-14 A | 2025-05-20 A | QTS-1371 SS | 100% |  |  | Core & Shell | IGMP |  |  | DELETED | DH1100 |  |  | Construction | Phase 1 |
| QTS-24781 | *Deleted* B North Phase 2 // Paint Screen Wall | 6d | 2025-05-14 A | 2025-05-21 A | QTS-1371 SS | 100% |  |  | Site Improvements | IGMP | Construction | Site Work | DELETED | DH1100 |  |  |  |  |
| QTS-24791 | DH 2100 / Electrical Gallery 2102 // Set Non Critical Load XFMRs *Deleted* | 1d | 2025-05-14 A | 2025-05-15 A | QTS-1371 SS | 100% | 2025-05-14 | 2025-05-14 | Electrical | IGMP | Construction | DH2100 | DELETED | DH1100 | Level 2 |  |  |  |
| QTS-24871 | *Deleted* C South Phase 3 // Prep & Place Sidewalks | 6d | 2025-05-14 A | 2025-05-21 A | QTS-1371 SS | 100% |  |  | Site Improvements | IGMP | Construction | Site Work | DELETED | DH1100 |  |  |  |  |
| QTS-24951 | DH 2100 / Electrical Gallery 2102 // Pull LV Cables from XFMRs to Panels *Deleted* | 1d | 2025-05-14 A | 2025-05-15 A | QTS-1371 SS | 100% | 2025-05-16 | 2025-05-16 | Electrical | IGMP | Construction | DH2100 | DELETED | DH1100 | Level 2 |  |  |  |
| QTS-25201 | *Deleted* B North Phase 2 // Install Signage | 1d | 2025-05-14 A | 2025-05-14 A | QTS-1371 SS | 100% |  |  | Site Improvements | IGMP | Construction | Site Work | DELETED | DH1100 |  |  |  |  |
| QTS-25211 | *Deleted* B North Phase 2 // Install Screen Wall Louvers & Doors | 4d | 2025-05-14 A | 2025-05-19 A | QTS-1371 SS | 100% |  |  | Site Improvements | IGMP | Construction | Site Work | DELETED | DH1100 |  |  |  |  |
| QTS-25311 | *Deleted* C South Phase 3 // Install Landscaping & Planting | 10d | 2025-05-14 A | 2025-05-28 A | QTS-1371 SS | 100% |  |  | Site Improvements | IGMP | Construction | Site Work | DELETED | DH1100 |  |  |  |  |
| QTS-25321 | *Deleted* C South Phase 3 // Site Striping | 2d | 2025-05-14 A | 2025-05-15 A | QTS-1371 SS | 100% |  |  | Site Improvements | IGMP | Construction | Site Work | DELETED | DH1100 |  |  |  |  |
| QTS-25471 | *Deleted* C South Phase 3 // Install Signage | 1d | 2025-05-14 A | 2025-05-14 A | QTS-1371 SS | 100% |  |  | Site Improvements | IGMP | Construction | Site Work | DELETED | DH1100 |  |  |  |  |
| QTS-25681 | Zone 1 Gridlines 1-21 / Field Scan for Metal Panels *Deleted* | 1d | 2025-05-14 A | 2025-05-14 A | QTS-1371 SS | 100% |  |  | Core & Shell | IGMP |  |  | DELETED | DH1100 |  |  | Construction | Phase 1 |

| ID | Activity | Duration | Start | Finish | Predecessors | Complete | Planned start | Planned finish | Layton Discipline | Baseline | Project Section-1 | Location | DELETED | D | Project Section | Phase-1 | Level | Precon Phase | Phase-1-1 | Layton Super |
| --- | --- | --- | --- | --- | --- | --- | --- | --- | --- | --- | --- | --- | --- | --- | --- | --- | --- | --- | --- | --- |
| QTS-25811 | *Deleted* D East Phase 4 // Install Landscaping & Planting | 10d | 2025-05-14 A | 2025-05-28 A | QTS-1371 SS | 100% |  |  | Site Improvements | IGMP | Construction | Site Work | DELETED | DH1100 |  |  |  |  |  |  |
| QTS-25831 | Zone 2 / Gridline 21-30 // Frame for Metal Panels *Deleted* | 8d | 2025-05-14 A | 2025-05-23 A | QTS-1371 SS | 100% |  |  | Core & Shell | IGMP |  |  | DELETED | DH1100 | Construction | Phase 2 |  |  |  |  |
| QTS-26451 | *Deleted* D East Phase 4 // Place DG | 5d | 2025-05-14 A | 2025-05-20 A | QTS-1371 SS | 100% |  |  | Site Improvements | IGMP | Construction | Site Work | DELETED | DH1100 |  |  |  |  |  |  |
| QTS-27141 | *Deleted* A West Phase 1 // Place DG | 3d | 2025-05-14 A | 2025-05-16 A | QTS-1371 SS | 100% |  |  | Site Improvements | IGMP | Construction | Site Work | DELETED | DH1100 |  |  | Level 1 |  |  |  |
| QTS-27561 | *Deleted* B North Phase 2 // Place DG | 5d | 2025-05-14 A | 2025-05-20 A | QTS-1371 SS | 100% |  |  | Site Improvements | IGMP | Construction | Site Work | DELETED | DH1100 |  |  |  |  |  |  |
| QTS-28211 | *Deleted* C South Phase 3 // Place DG | 5d | 2025-05-14 A | 2025-05-20 A | QTS-1371 SS | 100% |  |  | Site Improvements | IGMP | Construction | Site Work | DELETED | DH1100 |  |  |  |  |  |  |
| QTS-34211 | DH 2100 / CRAH #33 (Electrical Gallery) *Deleted* | 20d | 2025-05-14 A | 2025-06-11 A | QTS-1371 | 100% |  |  | Electrical | GMP | Preconstruction |  | DELETED | DH1100 |  |  |  | OFCI Procurement |  |  |
| QTS-34221 | DH 2100 / CRAH #34 (Electrical Gallery) *Deleted* | 20d | 2025-05-14 A | 2025-06-11 A | QTS-1371 | 100% |  |  | Electrical | GMP | Preconstruction |  | DELETED | DH1100 |  |  |  | OFCI Procurement |  |  |
| QTS-34571 | DH 1100 / CRAH #33 (Electrical Gallery) *Deleted* | 20d | 2025-05-14 A | 2025-06-11 A | QTS-1371 | 100% |  |  | Electrical | GMP | Preconstruction |  | DELETED | DH1100 |  |  |  | OFCI Procurement |  |  |
| QTS-34581 | DH 1100 / CRAH #34 (Electrical Gallery) *Deleted* | 20d | 2025-05-14 A | 2025-06-11 A | QTS-1371 | 100% |  |  | Electrical | GMP | Preconstruction |  | DELETED | DH1100 |  |  |  | OFCI Procurement |  |  |
| QTS-34931 | DH 2200 / CRAH #33 (Electrical Gallery) *Deleted* | 20d | 2025-05-14 A | 2025-06-11 A | QTS-1371 | 100% |  |  | Electrical | GMP | Preconstruction |  | DELETED | DH1100 |  |  |  | OFCI Procurement |  |  |
| QTS-34941 | DH 2200 / CRAH #34 (Electrical Gallery) *Deleted* | 20d | 2025-05-14 A | 2025-06-11 A | QTS-1371 | 100% |  |  | Electrical | GMP | Preconstruction |  | DELETED | DH1100 |  |  |  | OFCI Procurement |  |  |
| QTS-35291 | DH 1200 / CRAH #33 (Electrical Gallery) *Deleted* | 20d | 2025-05-14 A | 2025-06-11 A | QTS-1371 | 100% |  |  | Electrical | GMP | Preconstruction |  | DELETED | DH1100 |  |  |  | OFCI Procurement |  |  |
| QTS-35301 | DH 1200 / CRAH #34 (Electrical Gallery) *Deleted* | 20d | 2025-05-14 A | 2025-06-11 A | QTS-1371 | 100% |  |  | Electrical | GMP | Preconstruction |  | DELETED | DH1100 |  |  |  | OFCI Procurement |  |  |
| QTS-37101 | DH 2300 / CRAH #33 (Electrical Gallery) *Deleted* | 20d | 2025-05-14 A | 2025-06-11 A | QTS-1371 | 100% |  |  | Electrical | GMP | Preconstruction |  | DELETED | DH1100 |  |  |  | OFCI Procurement |  |  |
| QTS-37111 | DH 2300 / CRAH #34 (Electrical Gallery) *Deleted* | 20d | 2025-05-14 A | 2025-06-11 A | QTS-1371 | 100% |  |  | Electrical | GMP | Preconstruction |  | DELETED | DH1100 |  |  |  | OFCI Procurement |  |  |
| QTS-37941 | DH 1300 / CRAH #33 (Electrical Gallery) *Deleted* | 20d | 2025-05-14 A | 2025-06-11 A | QTS-1371 | 100% |  |  | Electrical | GMP | Preconstruction |  | DELETED | DH1100 |  |  |  | OFCI Procurement |  |  |
| QTS-37951 | DH 1300 / CRAH #34 (Electrical Gallery) *Deleted* | 20d | 2025-05-14 A | 2025-06-11 A | QTS-1371 | 100% |  |  | Electrical | GMP | Preconstruction |  | DELETED | DH1100 |  |  |  | OFCI Procurement |  |  |
| QTS-3891 | Gallery 1102 / Lineup R1100 // OFCI - L2 SET IN PLACE - Eq Type # - MOD-02 CRAH - 1 unit *Deleted* | 1d | 2025-05-14 A | 2025-05-15 A | QTS-1371 SS | 100% | 2025-05-27 | 2025-05-27 | Electrical | IGMP | Construction | DH1100 | DELETED | DH1100 |  |  | Level 1 |  | Phase 1 |  |
| QTS-3981 | Gallery 2202 / Lineup R2200 // OFCI - L2 SET IN PLACE - Eq Type # - MOD-02 CRAH - 1 unit *Deleted* | 1d | 2025-05-14 A | 2025-05-15 A | QTS-1371 SS | 100% | 2025-06-06 | 2025-06-06 | Electrical | IGMP | Construction | DH2200 | DELETED | DH1100 |  |  |  |  | Phase 2 |  |
| QTS-4071 | Gallery 1202 / Lineup R1200 // OFCI - L2 SET IN PLACE - Eq Type # - MOD-02 CRAH - 1 unit *Deleted* | 1d | 2025-05-14 A | 2025-05-15 A | QTS-1371 SS | 100% | 2025-06-12 | 2025-06-12 | Electrical | IGMP | Construction | DH1200 | DELETED | DH1100 |  |  |  |  | Phase 2 |  |
| QTS-4161 | Gallery 2302 / Lineup R2300 // OFCI - L2 SET IN PLACE - Eq Type # - MOD-02 CRAH - 1 unit *Deleted* | 1d | 2025-05-14 A | 2025-05-15 A | QTS-1371 SS | 100% | 2025-06-20 | 2025-06-20 | Electrical | IGMP | Construction | DH2300 | DELETED | DH1100 |  |  |  |  | Phase 3 |  |
| QTS-42101 | Gallery 2202 / Lineup R2200 // OFCI - L2 SET IN PLACE - Eq Type # - MOD-03 CDU - 1 unit *Deleted* | 1d | 2025-05-14 A | 2025-05-15 A | QTS-1371 SS | 100% | 2025-06-10 | 2025-06-10 | Electrical | IGMP | Construction | DH2200 | DELETED | DH1100 |  |  |  |  | Phase 2 |  |
| QTS-42121 | Gallery 1202 / Lineup R1200 // OFCI - L2 SET IN PLACE - Eq Type # - MOD-03 CDU - 1 unit *Deleted* | 1d | 2025-05-14 A | 2025-05-15 A | QTS-1371 SS | 100% | 2025-06-16 | 2025-06-16 | Electrical | IGMP | Construction | DH1200 | DELETED | DH1100 |  |  |  |  | Phase 2 |  |
| QTS-42131 | Gallery 2302 / Lineup R2300 // OFCI - L2 SET IN PLACE - Eq Type # - MOD-03 CDU - 1 unit *Deleted* | 1d | 2025-05-14 A | 2025-05-15 A | QTS-1371 SS | 100% | 2025-06-24 | 2025-06-24 | Electrical | IGMP | Construction | DH2300 | DELETED | DH1100 |  |  |  |  | Phase 3 |  |
| QTS-42141 | Gallery 1302 / Lineup R1300 // OFCI - L2 SET IN PLACE - Eq Type # - MOD-03 CDU - 1 unit *Deleted* | 1d | 2025-05-14 A | 2025-05-15 A | QTS-1371 SS | 100% | 2025-07-07 | 2025-07-07 | Electrical | IGMP | Construction | DH1300 | DELETED | DH1100 |  |  |  |  | Phase 3 |  |
| QTS-4251 | Gallery 1302 / Lineup R1300 // OFCI - L2 SET IN PLACE - Eq Type # - MOD-02 CRAH - 1 unit *Deleted* | 1d | 2025-05-14 A | 2025-05-15 A | QTS-1371 SS | 100% | 2025-07-02 | 2025-07-02 | Electrical | IGMP | Construction | DH1300 | DELETED | DH1100 |  |  |  |  | Phase 3 |  |
| QTS-42761 | DH 1100 / Mechanical Yard // Form, Reinforce, & Pour Thickened Slab On Grade for Transformer #2 *Deleted* | 5d | 2025-05-14 A | 2025-05-20 A | QTS-1371 SS | 100% |  |  | Core & Shell | IGMP | Construction | Gen Yard | DELETED | DH1100 |  |  | Level 1 |  | Phase 1 |  |
| QTS-42811 | DH 2100 / Mechanical Yard // Form, Reinforce, & Pour Thickened Slab On Grade for Transformers #2 *Deleted* | 5d | 2025-05-14 A | 2025-05-20 A | QTS-1371 SS | 100% |  |  | Core & Shell | IGMP | Construction | Gen Yard | DELETED | DH1100 |  |  | Level 2 |  | Phase 1 |  |
| QTS-42831 | DH 2200 / Mechanical Yard // Form, Reinforce, & Pour Thickened Slab On Grade for Transformers #2 *Deleted* | 5d | 2025-05-14 A | 2025-05-20 A | QTS-1371 SS | 100% |  |  | Core & Shell | IGMP | Construction | Gen Yard | DELETED | DH1100 |  |  | Level 1 |  | Phase 2 |  |
| QTS-42841 | DH 1200 / Mechanical Yard // Form, Reinforce, & Pour Thickened Slab On Grade for Transformers #2 *Deleted* | 5d | 2025-05-14 A | 2025-05-20 A | QTS-1371 SS | 100% |  |  | Core & Shell | IGMP | Construction | Gen Yard | DELETED | DH1100 |  |  | Level 1 |  | Phase 2 |  |
| QTS-42861 | DH 2300 / Mechanical Yard // Form, Reinforce, & Pour Thickened Slab On Grade for Transformers #2 *Deleted* | 5d | 2025-05-14 A | 2025-05-20 A | QTS-1371 SS | 100% |  |  | Core & Shell | IGMP | Construction | Gen Yard | DELETED | DH1100 |  |  | Level 1 |  | Phase 3 |  |
| QTS-42901 | DH 1300 / Mechanical Yard // Form, Reinforce, & Pour Thickened Slab On Grade for Transformers #2 *Deleted* | 5d | 2025-05-14 A | 2025-05-20 A | QTS-1371 SS | 100% |  |  | Core & Shell | IGMP | Construction | Gen Yard | DELETED | DH1100 |  |  | Level 1 |  | Phase 3 |  |
| QTS-44731 | Zone 1 Gridlines 10-21 / Corridor 1011 // Layout for Framing Corridor Exterior Walls *Deleted* | 1d | 2025-05-14 A | 2025-05-15 A | QTS-1371 SS | 100% | 2025-07-07 | 2025-07-07 | Build Out | IGMP | Construction |  | DELETED | DH1100 |  |  | Level 1 |  |  | Doug Hayes |
| QTS-44741 | Zone 1 Gridlines 10-21 / Corridor 1011 // Layout for Electrical *Deleted* | 1d | 2025-05-14 A | 2025-05-15 A | QTS-1371 SS | 100% | 2025-07-09 | 2025-07-09 | Electrical | IGMP | Construction |  | DELETED | DH1100 |  |  | Level 1 |  |  |  |
| QTS-44751 | Zone 1 Gridlines 10-21 / Corridor 1011 // Layout for MEP *Deleted* | 1d | 2025-05-14 A | 2025-05-15 A | QTS-1371 SS | 100% | 2025-07-14 | 2025-07-14 | Mechanical | IGMP | Construction |  | DELETED | DH1100 |  |  | Level 1 |  |  |  |
| QTS-4551 | Gallery 1102 / Lineup R1100 // Pull LV Cables from POD to MOD-02/03 *Deleted* | 1d | 2025-05-14 A | 2025-05-15 A | QTS-1371 SS | 100% | 2025-05-29 | 2025-05-29 | Electrical | IGMP | Construction | DH1100 | DELETED | DH1100 |  |  | Level 1 |  | Phase 1 |  |
| QTS-4591 | Gallery 2202 / Lineup R2200 // Pull LV Cables from POD to MOD-02/03 *Deleted* | 1d | 2025-05-14 A | 2025-05-15 A | QTS-1371 SS | 100% | 2025-06-12 | 2025-06-12 | Electrical | IGMP | Construction | DH2200 | DELETED | DH1100 |  |  |  |  | Phase 2 |  |
| QTS-4631 | Gallery 1202 / Lineup R1200 // Pull LV Cables from POD to MOD-02/03 *Deleted* | 1d | 2025-05-14 A | 2025-05-15 A | QTS-1371 SS | 100% | 2025-06-18 | 2025-06-18 | Electrical | IGMP | Construction | DH1200 | DELETED | DH1100 |  |  |  |  | Phase 2 |  |
| QTS-4671 | Gallery 2302 / Lineup R2300 // Pull LV Cables from POD to MOD-02/03 *Deleted* | 1d | 2025-05-14 A | 2025-05-15 A | QTS-1371 SS | 100% | 2025-06-26 | 2025-06-26 | Electrical | IGMP | Construction | DH2300 | DELETED | DH1100 |  |  |  |  | Phase 3 |  |
| QTS-47041 | *Deleted* A West Phase 1 // Excavate, Install, & Backfill Domestic Water Line | 3d | 2025-05-14 A | 2025-05-16 A | QTS-1371 SS | 100% |  |  | Site Improvements | IGMP | Construction | Site Work | DELETED | DH1100 |  |  | Level 1 |  |  |  |
| QTS-47051 | *Deleted* A West Phase 1 // Excavate, Install, & Backfill Fire Water Line | 3d | 2025-05-14 A | 2025-05-16 A | QTS-1371 SS | 100% |  |  | Site Improvements | IGMP | Construction | Site Work | DELETED | DH1100 |  |  | Level 1 |  |  |  |
| QTS-4711 | Gallery 1302 / Lineup R1300 // Pull LV Cables from POD to MOD-02/03 *Deleted* | 1d | 2025-05-14 A | 2025-05-15 A | QTS-1371 SS | 100% | 2025-07-09 | 2025-07-09 | Electrical | IGMP | Construction | DH1300 | DELETED | DH1100 |  |  |  |  | Phase 3 |  |
| QTS-5571 | Gallery 1102 / Lineup R1100 // Pull LV Cables from MOD-02 to CRAHs *Deleted* | 1d | 2025-05-14 A | 2025-05-15 A | QTS-1371 SS | 100% | 2025-06-02 | 2025-06-02 | Electrical | IGMP | Construction | DH1100 | DELETED | DH1100 |  |  | Level 1 |  | Phase 1 |  |
| QTS-5591 | Gallery 2202 / Lineup R2200 // Pull LV Cables from MOD-02 to CRAHs *Deleted* | 1d | 2025-05-14 A | 2025-05-15 A | QTS-1371 SS | 100% | 2025-06-16 | 2025-06-16 | Electrical | IGMP | Construction | DH2200 | DELETED | DH1100 |  |  |  |  | Phase 2 |  |
| QTS-5611 | Gallery 1202 / Lineup R1200 // Pull LV Cables from MOD-02 to CRAHs *Deleted* | 1d | 2025-05-14 A | 2025-05-15 A | QTS-1371 SS | 100% | 2025-06-20 | 2025-06-20 | Electrical | IGMP | Construction | DH1200 | DELETED | DH1100 |  |  |  |  | Phase 2 |  |
| QTS-5621 | Gallery 2302 / Lineup R2300 // Pull LV Cables from TIE SWD to Reserve Busway *Deleted* | 1d | 2025-05-14 A | 2025-05-15 A | QTS-1371 SS | 100% | 2025-06-24 | 2025-06-24 | Electrical | IGMP | Construction | DH2300 | DELETED | DH1100 |  |  |  |  | Phase 3 |  |
| QTS-5631 | Gallery 2302 / Lineup R2300 // Pull LV Cables from MOD-02 to CRAHs *Deleted* | 1d | 2025-05-14 A | 2025-05-15 A | QTS-1371 SS | 100% | 2025-06-30 | 2025-06-30 | Electrical | IGMP | Construction | DH2300 | DELETED | DH1100 |  |  |  |  | Phase 3 |  |
| QTS-5651 | Gallery 1302 / Lineup R1300 // Pull LV Cables from MOD-02 to CRAHs *Deleted* | 1d | 2025-05-14 A | 2025-05-15 A | QTS-1371 SS | 100% | 2025-07-11 | 2025-07-11 | Electrical | IGMP | Construction | DH1300 | DELETED | DH1100 |  |  |  |  | Phase 3 |  |
| QTS-7041 | Gallery 2102 / Lineup R2100 // Terminate POD Equipment Load Side *Deleted* | 1d | 2025-05-14 A | 2025-05-15 A | QTS-1371 SS | 100% | 2025-07-23 | 2025-07-23 | Electrical | IGMP | Construction | DH2100 | DELETED | DH1100 |  |  | Level 2 |  | Phase 1 |  |
| QTS-7091 | Gallery 1102 / Lineup R1100 // Pull LV Cables from POD to Reserve Busway *Deleted* | 1d | 2025-05-14 A | 2025-05-15 A | QTS-1371 SS | 100% | 2025-07-17 | 2025-07-17 | Electrical | IGMP | Construction | DH1100 | DELETED | DH1100 |  |  | Level 1 |  | Phase 1 |  |
| QTS-7141 | Gallery 2202 / Lineup R2200 // Terminate & Torque COD *Deleted* | 1d | 2025-05-14 A | 2025-05-15 A | QTS-1371 SS | 100% | 2025-07-30 | 2025-07-30 | Electrical | IGMP | Construction | DH2200 | DELETED | DH1100 |  |  |  |  | Phase 2 |  |
| QTS-7191 | Gallery 1202 / Lineup R1200 // Terminate & Torque COD *Deleted* | 1d | 2025-05-14 A | 2025-05-15 A | QTS-1371 SS | 100% | 2025-08-06 | 2025-08-06 | Electrical | IGMP | Construction | DH1200 | DELETED | DH1100 |  |  |  |  | Phase 2 |  |
| QTS-7291 | Gallery 1302 / Lineup R1300 // Terminate & Torque COD *Deleted* | 1d | 2025-05-14 A | 2025-05-15 A | QTS-1371 SS | 100% | 2025-08-13 | 2025-08-13 | Electrical | IGMP | Construction | DH1300 | DELETED | DH1100 |  |  |  |  | Phase 3 |  |
| QTS-25331 | DH 2100 / Electrical Gallery 2102 // Terminate XFMRs *Deleted* | 1d | 2025-05-23 A | 2025-05-23 A | QTS-1371 SS | 100% |  |  | Electrical | IGMP | Construction | DH2100 | DELETED | DH1100 |  |  | Level 2 |  |  |  |
| QTS-42091 | Gallery 1102 / Lineup R1100 // OFCI - L2 SET IN PLACE - Eq Type # - MOD-03 CDU - 1 unit *Deleted* | 2d | 2025-05-29 A | 2025-05-30 A | QTS-1371 SS | 100% |  |  | Electrical | IGMP | Construction | DH1100 | DELETED | DH1100 |  |  | Level 1 |  | Phase 1 |  |
| QTS-18251 | DH 1100 / Electrical Gallery 1102 // Terminate XFMRs *Deleted* | 1d | 2025-05-30 A | 2025-05-30 A | QTS-1371 SS | 100% |  |  | Electrical | IGMP | Construction | DH1100 | DELETED | DH1100 |  |  | Level 1 |  | Phase 1 |  |
| QTS-6801 | Gallery 1102 / Lineup R1100 // Terminate CRAH MOD-02 *Deleted* | 2d | 2025-06-06 A | 2025-06-09 A | QTS-1371 SS | 100% |  |  | Electrical | IGMP | Construction | DH1100 | DELETED | DH1100 |  |  | Level 1 |  | Phase 1 |  |
| QTS-23581 | DH 2100 / Electrical Gallery 2102 // Top of Wall Fire Stop for South 2102 Wall *Deleted* | 2d | 2025-06-10 A | 2025-06-11 A | QTS-1371 SS | 100% |  |  | Build Out | IGMP | Construction | DH2100 | DELETED | DH1100 |  |  | Level 2 |  |  | Doug Hayes |
| QTS-18271 | DH 2200 / Electrical Gallery 2202 // Terminate XFMRs *Deleted* | 1d | 2025-06-11 A | 2025-06-11 A | QTS-1371 SS | 100% |  |  | Electrical | IGMP | Construction | DH2200 | DELETED | DH1100 |  |  |  |  | Phase 2 |  |
| QTS-14101 | DH 1100 / Electrical Gallery 1102 // Top of Wall Fire Stop for South 1102 Wall *Deleted* | 2d | 2025-06-12 A | 2025-06-12 A | QTS-1371 SS | 100% | 2025-06-12 | 2025-06-13 | Build Out | IGMP | Construction | DH1100 | DELETED | DH1100 |  |  | Level 1 |  | Phase 1 | Doug Hayes |
| QTS-14161 | DH 2200 / Electrical Gallery 2202 // Top of Wall Fire Stop for 2202 South Wall *Deleted* | 2d | 2025-06-12 A | 2025-06-12 A | QTS-1371 SS | 100% | 2025-06-26 | 2025-06-27 | Build Out | IGMP | Construction | DH2200 | DELETED | DH1100 |  |  |  |  | Phase 2 | Doug Hayes |
| QTS-14221 | DH 1200 / Electrical Gallery 1202 // Top of Wall Fire Stop for 1202 South Wall *Deleted* | 2d | 2025-06-12 A | 2025-06-12 A | QTS-1371 SS | 100% | 2025-07-02 | 2025-07-03 | Build Out | IGMP | Construction | DH1200 | DELETED | DH1100 |  |  |  |  | Phase 2 | Doug Hayes |
| QTS-14281 | DH 2300 / Electrical Gallery 2302 // Top of Wall Fire Stop for 2302 South Wall *Deleted* | 2d | 2025-06-12 A | 2025-06-12 A | QTS-1371 SS | 100% | 2025-07-11 | 2025-07-14 | Build Out | IGMP | Construction | DH2300 | DELETED | DH1100 |  |  |  |  | Phase 3 | Doug Hayes |
| QTS-14341 | DH 1300 / Electrical Gallery 1302 // Top of Wall Fire Stop for 1302 South Wall *Deleted* | 2d | 2025-06-12 A | 2025-06-12 A | QTS-1371 SS | 100% | 2025-07-23 | 2025-07-24 | Build Out | IGMP | Construction | DH1300 | DELETED | DH1100 |  |  |  |  | Phase 3 | Doug Hayes |
| QTS-18291 | DH 1200 / Electrical Gallery 1202 // Terminate XFMRs *Deleted* | 1d | 2025-06-12 A | 2025-06-12 A | QTS-1371 SS | 100% | 2025-12-15 | 2025-12-15 | Electrical | IGMP | Construction | DH1200 | DELETED | DH1100 |  |  |  |  | Phase 2 |  |
| QTS-18311 | DH 2300 / Electrical Gallery 2302 // Terminate XFMRs *Deleted* | 1d | 2025-06-12 A | 2025-06-12 A | QTS-1371 SS | 100% | 2025-06-25 | 2025-06-25 | Electrical | IGMP | Construction | DH2300 | DELETED | DH1100 |  |  |  |  | Phase 3 |  |
| QTS-18331 | DH 1300 / Electrical Gallery 1302 // Terminate XFMRs *Deleted* | 1d | 2025-06-12 A | 2025-06-12 A | QTS-1371 SS | 100% | 2025-07-08 | 2025-07-08 | Electrical | IGMP | Construction | DH1300 | DELETED | DH1100 |  |  |  |  | Phase 3 |  |
| QTS-6811 | Gallery 2202 / Lineup R2200 // Terminate CRAH MOD-02 *Deleted* | 2d | 2025-06-12 A | 2025-06-12 A | QTS-1371 SS | 100% | 2025-06-20 | 2025-06-23 | Electrical | IGMP | Construction | DH2200 | DELETED | DH1100 |  |  |  |  | Phase 2 |  |
| QTS-6821 | Gallery 1202 / Lineup R1200 // Terminate CRAH MOD-02 *Deleted* | 2d | 2025-06-12 A | 2025-06-12 A | QTS-1371 SS | 100% | 2025-06-26 | 2025-06-27 | Electrical | IGMP | Construction | DH1200 | DELETED | DH1100 |  |  |  |  | Phase 2 |  |

| ID | Activity | Type | Duration | Start | Finish | Predecessors | Complete | Planned start | Planned finish | Layton Discipline | Baseline | Phase-1-1 | Project Section-1 | Location | DELETED | D | Precon Phase | Fragnet | Contract | Project Section | Phase-1 | Allucent CSI Group | Layton PM | Level | Layton Super |
| --- | --- | --- | --- | --- | --- | --- | --- | --- | --- | --- | --- | --- | --- | --- | --- | --- | --- | --- | --- | --- | --- | --- | --- | --- | --- |
| QTS-6831 | Gallery 2302 / Lineup R2300 // Terminate CRAH MOD-02 *Deleted* |  | 2d | 2025-06-12 A | 2025-06-12 A | QTS-1371 SS | 100% | 2025-07-07 | 2025-07-08 | Electrical | IGMP | Phase 3 | Construction | DH2300 | DELETED | DH1100 |  |  |  |  |  |  |  |  |  |
| QTS-6841 | Gallery 1302 / Lineup R1300 // Terminate CRAH MOD-02 *Deleted* |  | 2d | 2025-06-12 A | 2025-06-12 A | QTS-1371 SS | 100% | 2025-07-17 | 2025-07-18 | Electrical | IGMP | Phase 3 | Construction | DH1300 | DELETED | DH1100 |  |  |  |  |  |  |  |  |  |
| QTS-1012490 | **DELETED** DUPLICATE HMIS acceptance for UPS Systems within House Equipment and received permit | milestone | 0d | 2025-06-18 A | 2025-06-18 A | QTS-1020 | 100% | 2025-02-06 | 2025-02-06 | Precon |  |  | Preconstruction |  | DELETED |  | Permitting | Fragnet | BAB |  |  |  |  |  |  |
| QTS-13251 | Zone 3 Gridlines 30-41 / South // Install Spandrel Window Framing *Delete* |  | 10d | 2025-07-14 A | 2025-07-16 A | QTS-1371 SS, QTS-1020 FF | 100% | 2025-07-23 | 2025-08-05 | Core & Shell | IGMP |  |  |  | DELETED | DH1100 |  |  |  | Construction | Phase 3 |  |  |  |  |
| QTS-15051 | Zone 3 Gridlines 30-41 / South // Measure for Spandrel Window Glass *Delete* |  | 1d | 2025-07-14 A | 2025-07-16 A | QTS-1020 FF | 100% | 2025-07-23 | 2025-07-23 | Core & Shell | IGMP |  |  |  | DELETED | DH1100 |  |  |  | Construction | Phase 3 |  |  |  |  |
| QTS-15991 | Zone 3 Gridlines 30-41 / South // Install Spandrel Window Glass *Delete* |  | 5d | 2025-07-14 A | 2025-07-16 A | QTS-1020 FF | 100% | 2025-07-23 | 2025-07-29 | Core & Shell | IGMP |  |  |  | DELETED | DH1100 |  |  |  | Construction | Phase 3 |  |  |  |  |
| QTS-16791 | Zone 3 Gridlines 30-41 / South // Spandrel Window Caulking *Delete* |  | 7d | 2025-07-14 A | 2025-07-16 A | QTS-1020 FF | 100% | 2025-07-23 | 2025-07-31 | Core & Shell | IGMP |  |  |  | DELETED | DH1100 |  |  |  | Construction | Phase 3 |  |  |  |  |
| QTS-24601 | East Elevation // Install Curtain Wall Framing *Delete* |  | 10d | 2025-07-14 A | 2025-07-16 A | QTS-1371 SS, QTS-1020 FF | 100% | 2025-07-23 | 2025-08-05 | Core & Shell | IGMP |  |  |  | DELETED | DH1100 |  |  |  | Construction | Phase 3 |  |  |  |  |
| QTS-24631 | Zone 3 Gridlines 30-41 / North // Set Window Frames *Delete* |  | 3d | 2025-07-14 A | 2025-07-16 A | QTS-1371 SS, QTS-1020 FF | 100% | 2025-07-23 | 2025-07-25 | Core & Shell | IGMP |  |  |  | DELETED | DH1100 |  |  |  | Construction | Phase 3 |  |  |  |  |
| QTS-24841 | Zone 2 Gridlines 21-30 / South // Set Spandrel Window Frames *Delete* |  | 4d | 2025-07-14 A | 2025-07-16 A | QTS-1371 SS, QTS-1020 FF | 100% | 2025-07-23 | 2025-07-28 | Core & Shell | IGMP |  |  |  | DELETED | DH1100 |  |  |  | Construction | Phase 2 |  |  |  |  |
| QTS-24901 | Zone 3 Gridlines 30-41 / North // Set Window Glass *Delete* |  | 3d | 2025-07-14 A | 2025-07-16 A | QTS-24631 SS, QTS-1020 FF | 100% | 2025-07-23 | 2025-07-25 | Core & Shell | IGMP |  |  |  | DELETED | DH1100 |  |  |  | Construction | Phase 3 |  |  |  |  |
| QTS-24961 | West Elevation // Set Window Glass *Delete* |  | 10d | 2025-07-14 A | 2025-07-16 A | QTS-1371 SS | 100% | 2025-07-23 | 2025-08-05 | Core & Shell | IGMP |  |  |  | DELETED | DH1100 |  |  |  | Construction | Phase 1 |  |  |  |  |
| QTS-25131 | Zone 2 Gridlines 21-30 / South // Set Spandrel Window Glass *Delete* |  | 3d | 2025-07-14 A | 2025-07-16 A | QTS-1371, QTS-1020 FF | 100% | 2025-07-23 | 2025-07-25 | Core & Shell | IGMP |  |  |  | DELETED | DH1100 |  |  |  | Construction | Phase 2 |  |  |  |  |
| QTS-25261 | Zone 3 Gridlines 30-41 / North // Caulk Windows *Delete* |  | 2d | 2025-07-14 A | 2025-07-16 A | QTS-24901 SS, QTS-1020 FF | 100% | 2025-07-23 | 2025-07-24 | Core & Shell | IGMP |  |  |  | DELETED | DH1100 |  |  |  | Construction | Phase 3 |  |  |  |  |
| QTS-25361 | Zone 2 Gridlines 21-30 / South // Caulk Windows *Delete* |  | 2d | 2025-07-14 A | 2025-07-16 A | QTS-1020 FF | 100% | 2025-07-23 | 2025-07-24 | Core & Shell | IGMP |  |  |  | DELETED | DH1100 |  |  |  | Construction | Phase 2 |  |  |  |  |
| QTS-25401 | Zone 1 Gridlines 10-21 / North // Set Louvered Metal Screen Wall *Deleted* |  | 5d | 2025-07-14 A | 2025-07-14 A | QTS-1030 SS | 100% | 2025-07-16 | 2025-07-22 | Core & Shell | IGMP |  |  |  | DELETED | DH1100 |  |  |  | Construction | Phase 1 |  |  |  |  |
| QTS-25581 | East Elevation // Measure for Curtain Wall Glass *Delete* |  | 1d | 2025-07-14 A | 2025-07-16 A | QTS-1020 FF | 100% | 2025-07-23 | 2025-07-23 | Core & Shell | IGMP |  |  |  | DELETED | DH1100 |  |  |  | Construction | Phase 3 |  |  |  |  |
| QTS-25691 | East Elevation // Install Curtain Wall Glass *Delete* |  | 3d | 2025-07-14 A | 2025-07-16 A | QTS-25581 SS, QTS-1020 FF | 100% | 2025-07-23 | 2025-07-25 | Core & Shell | IGMP |  |  |  | DELETED | DH1100 |  |  |  | Construction | Phase 3 |  |  |  |  |
| QTS-25701 | East Elevation // Curtain Wall Caulking *Delete* |  | 5d | 2025-07-14 A | 2025-07-16 A | QTS-1020 FF | 100% | 2025-07-23 | 2025-07-29 | Core & Shell | IGMP |  |  |  | DELETED | DH1100 |  |  |  | Construction | Phase 3 |  |  |  |  |
| QTS-26671 | West Elevation // Install Metal Panels *Delete* |  | 10d | 2025-07-14 A | 2025-07-16 A | QTS-1371 SS | 100% | 2025-07-23 | 2025-08-05 | Core & Shell | IGMP |  |  |  | DELETED | DH1100 |  |  |  | Construction | Phase 1 |  |  |  |  |
| QTS-27941 | Zone 2 Gridlines 21-30 / South // Install Metal Panels North *Delete* |  | 10d | 2025-07-14 A | 2025-07-16 A | QTS-1371 SS | 100% | 2025-07-23 | 2025-08-05 | Core & Shell | IGMP |  |  |  | DELETED | DH1100 |  |  |  | Construction | Phase 2 |  |  |  |  |
| QTS-42711 | Zone 1 Gridlines 1-21 / East // Sack & Patch Panels *Deleted* |  | 2d | 2025-07-14 A | 2025-07-14 A | QTS-1030 SS | 100% | 2025-08-12 | 2025-08-13 | Core & Shell | IGMP | Phase 1 | Construction |  | DELETED | DH1100 |  |  |  | Construction |  |  |  |  |  |
| QTS-42721 | Zone 1 Gridlines 1-21 / East // Power Wash Tilt Panels *Deleted* |  | 1d | 2025-07-14 A | 2025-07-14 A | QTS-1020 | 100% | 2025-08-14 | 2025-08-14 | Core & Shell | IGMP | Phase 1 | Construction |  | DELETED | DH1100 |  |  |  | Construction |  |  |  |  |  |
| QTS-42731 | Zone 1 Gridlines 1-21 / East // Prime & Paint Tilt Panels *Deleted* |  | 3d | 2025-07-14 A | 2025-07-14 A | QTS-1020 | 100% | 2025-08-26 | 2025-08-28 | Core & Shell | IGMP | Phase 1 | Construction |  | DELETED | DH1100 |  |  |  | Construction |  |  |  |  |  |
| QTS-42741 | Zone 1 Gridlines 1-21 / East // Caulk Panel Joints *Deleted* |  | 3d | 2025-07-14 A | 2025-07-14 A | QTS-1020 | 100% | 2025-09-02 | 2025-09-04 | Core & Shell | IGMP | Phase 1 | Construction |  | DELETED | DH1100 |  |  |  | Construction |  |  |  |  |  |
| QTS-42751 | Zone 1 Gridlines 1-21 / East // Set Louvered Metal Screen Wall *Deleted* |  | 5d | 2025-07-14 A | 2025-07-14 A | QTS-1030 SS | 100% | 2025-11-19 | 2025-11-25 | Core & Shell | IGMP | Phase 1 | Construction |  | DELETED | DH1100 |  |  |  | Construction |  |  |  |  |  |
| QTS-49521 | Zone 2 Gridlines 21-30 / South // Install Weather Barrier & Insulation *Delete* |  | 5d | 2025-07-14 A | 2025-07-16 A | QTS-1371 SS | 100% | 2025-07-23 | 2025-07-29 | Core & Shell | IGMP |  | Construction |  | DELETED | DH1100 |  |  |  | Construction | Phase 1 |  |  |  |  |
| QTS-49531 | Zone 2 Gridlines 21-30 / South // Inspect Weather Barrier *Delete* |  | 1d | 2025-07-14 A | 2025-07-16 A | QTS-49521 | 100% | 2025-07-30 | 2025-07-30 | Core & Shell | IGMP |  | Construction |  | DELETED | DH1100 |  |  |  | Construction | Phase 1 |  |  |  |  |
| QTS-6721 | Zone 2 Gridlines 21-30 / North // Install Scuppers & Downspouts *Delete* |  | 4d | 2025-07-14 A | 2025-07-16 A | QTS-1371 SS | 100% | 2025-07-23 | 2025-07-28 | Core & Shell | IGMP | Phase 2 | Construction |  | DELETED | DH1100 |  |  |  | Construction |  |  |  |  |  |
| QTS-13601 | Design Team Review & Approve Water Meter Vault Submittals *Deleted* |  | 10d | 2025-07-21 A | 2025-09-03 A | QTS-13481 | 100% | 2025-07-21 | 2025-08-01 | Precon | GMP |  | Preconstruction |  | DELETED | DH1100 | CFCI Procurement |  |  | Preconstruction |  | 01ADMIN | CPeral |  |  |
| QTS-17921 | Zone 3 / Gridlines 30-41 // Panel Embeds, Jamb Steel & Ledgers Shake Out *Delete* |  | 5d | 2025-08-04 A | 2025-08-08 A | QTS-1371 SS | 100% |  |  | Core & Shell | IGMP | Phase 3 | Construction |  | DELETED | DH1100 |  |  |  | Construction |  | 01ADMIN |  |  |  |
| QTS-18371 | Zone 3 / Gridlines 30-41 // Panel Embeds, Jamb Steel & Ledgers *Delete* |  | 1d | 2025-08-04 A | 2025-08-04 A | QTS-1371 SS | 100% |  |  | Core & Shell | IGMP | Phase 3 | Construction |  | DELETED | DH1100 |  |  |  | Construction |  | 01ADMIN |  |  |  |
| QTS-20911 | DH 2100 // Polish Floors *Delete* |  | 7d | 2025-08-04 A | 2025-08-08 A | QTS-1371 SS | 100% | 2025-08-13 | 2025-08-21 | Build Out | IGMP |  | Construction | DH2100 | DELETED | DH1100 |  |  |  | Construction |  | 01ADMIN |  | Level 2 | Doug Hayes |
| QTS-25611 | TI Area B // Install Floor Protection *Delete* |  | 4d | 2025-08-04 A | 2025-08-08 A | QTS-1371 SS | 100% | 2025-08-13 | 2025-08-18 | Build Out | IGMP |  |  | FOH | DELETED | DH1100 |  |  |  | Construction | Phase 1 |  |  | Level 1 | Doug Hayes |
| QTS-25621 | TI Area A // Install Floor Protection *Delete* |  | 4d | 2025-08-04 A | 2025-08-08 A | QTS-1371 SS | 100% | 2025-08-13 | 2025-08-18 | Build Out | IGMP |  |  | FOH | DELETED | DH1100 |  |  |  | Construction | Phase 1 |  |  | Level 2 | Doug Hayes |
| QTS-25631 | TI Area B // Install Floor Protection *Delete* |  | 4d | 2025-08-04 A | 2025-08-08 A | QTS-1371 SS | 100% | 2025-08-13 | 2025-08-18 | Build Out | IGMP |  |  | FOH | DELETED | DH1100 |  |  |  | Construction | Phase 1 | 01ADMIN |  | Level 2 | Doug Hayes |
| QTS-30241 | TI Area B // Remove Floor Protection *Delete* |  | 2d | 2025-08-04 A | 2025-08-08 A | QTS-1371 SS | 100% | 2025-08-13 | 2025-08-14 | Build Out | IGMP |  |  | FOH | DELETED | DH1100 |  |  |  | Construction | Phase 1 |  |  | Level 2 | Doug Hayes |
| QTS-30321 | TI Area B // Remove Floor Protection *Delete* |  | 2d | 2025-08-04 A | 2025-08-08 A | QTS-1371 SS | 100% | 2025-08-13 | 2025-08-14 | Build Out | IGMP |  |  | FOH | DELETED | DH1100 |  |  |  | Construction | Phase 1 |  |  | Level 1 | Doug Hayes |
| QTS-30331 | TI Area A // Remove Floor Protection *Delete* |  | 2d | 2025-08-04 A | 2025-08-08 A | QTS-1371 SS | 100% | 2025-08-13 | 2025-08-14 | Build Out | IGMP |  |  | FOH | DELETED | DH1100 |  |  |  | Construction | Phase 1 |  |  | Level 2 | Doug Hayes |
| QTS-4531 | DH 1100 // Polish Floors *Delete* |  | 7d | 2025-08-04 A | 2025-08-08 A | QTS-1371 SS | 100% | 2025-08-13 | 2025-08-21 | Build Out | IGMP | Phase 1 | Construction | DH1100 | DELETED | DH1100 |  |  |  | Construction |  |  |  | Level 1 | Doug Hayes |
| QTS-4571 | DH 2200 // Polish Floors *Delete* |  | 4d | 2025-08-04 A | 2025-08-08 A | QTS-1371 SS | 100% | 2025-08-13 | 2025-08-18 | Build Out | IGMP | Phase 2 | Construction | DH2200 | DELETED | DH1100 |  |  |  | Construction |  |  |  |  | Doug Hayes |
| QTS-4611 | DH 1200 // Polish Floors *Delete* |  | 4d | 2025-08-04 A | 2025-08-08 A | QTS-1371 SS | 100% | 2025-08-13 | 2025-08-18 | Build Out | IGMP | Phase 2 | Construction | DH1200 | DELETED | DH1100 |  |  |  | Construction |  |  |  |  | Doug Hayes |
| QTS-4651 | DH 2300 // Polish Floors *Delete* |  | 4d | 2025-08-04 A | 2025-08-08 A | QTS-1371 SS | 100% | 2025-08-13 | 2025-08-18 | Build Out | IGMP | Phase 3 | Construction | DH2300 | DELETED | DH1100 |  |  |  | Construction |  |  |  |  | Doug Hayes |
| QTS-4691 | DH 1300 // Polish Floors *Delete* |  | 4d | 2025-08-04 A | 2025-08-08 A | QTS-1371 SS | 100% | 2025-08-13 | 2025-08-18 | Build Out | IGMP | Phase 3 | Construction | DH1300 | DELETED | DH1100 |  |  |  | Construction |  |  |  |  | Doug Hayes |
| QTS-23711 | TI Area J & K // Install Floor Protection *Deleted* |  | 4d | 2025-08-11 A | 2025-08-14 A | QTS-1371 SS | 100% |  |  | Build Out | IGMP | Phase 1 | Construction | BOH | DELETED | DH1100 |  |  |  | Construction |  |  |  | Level 2 | Doug Hayes |
| QTS-25601 | TI Area A // Install Floor Protection *Deleted* |  | 4d | 2025-08-11 A | 2025-08-14 A | QTS-1371 SS | 100% |  |  | Build Out | IGMP |  |  | FOH | DELETED | DH1100 |  |  |  | Construction | Phase 1 |  |  | Level 1 | Doug Hayes |
| QTS-25641 | TI Area J & K // Install Floor Protection *Deleted* |  | 4d | 2025-08-11 A | 2025-08-14 A | QTS-1371 SS | 100% |  |  | Build Out | IGMP | Phase 1 | Construction | BOH | DELETED | DH1100 |  |  |  | Construction |  |  |  | Level 1 | Doug Hayes |
| QTS-25851 | Zone 3 Gridlines 30-41 Corridor 2307 // Install Floor Protection *Deleted* |  | 2d | 2025-08-11 A | 2025-08-12 A | QTS-1371 SS | 100% |  |  | Build Out | IGMP |  |  |  | DELETED | DH1100 |  |  |  | Construction |  |  |  | Level 2 | Doug Hayes |
| QTS-25861 | Zone 1 Gridlines 10-21 / Corridor 2010 // Install Floor Protection *Deleted* |  | 2d | 2025-08-11 A | 2025-08-12 A | QTS-1371 SS | 100% |  |  | Build Out | IGMP |  |  |  | DELETED | DH1100 |  |  |  | Construction |  | 01ADMIN |  | Level 2 | Doug Hayes |
| QTS-25871 | Zone 2 Gridline 21-30 / Corridor 2010 // Install Floor Protection *Deleted* |  | 2d | 2025-08-11 A | 2025-08-12 A | QTS-1371 SS | 100% |  |  | Build Out | IGMP |  |  |  | DELETED | DH1100 |  |  |  | Construction |  |  |  | Level 2 | Doug Hayes |
| QTS-25881 | Zone 3 Gridlines 30-41 Corridor 1012 // Install Floor Protection *Deleted* |  | 2d | 2025-08-11 A | 2025-08-12 A | QTS-1371 SS | 100% |  |  | Build Out | IGMP |  |  |  | DELETED | DH1100 |  |  |  | Construction |  |  |  | Level 1 | Doug Hayes |
| QTS-28491 | Zone 1 Gridlines 10-21 / Corridor 1011 // Install Floor Protection *Deleted* |  | 2d | 2025-08-11 A | 2025-08-12 A | QTS-1371 SS | 100% |  |  | Build Out | IGMP |  |  |  | DELETED | DH1100 |  |  |  | Construction |  |  |  | Level 1 | Doug Hayes |
| QTS-28501 | Zone 2 Gridline 21-30 / Corridor 1013 // Install Floor Protection *Deleted* |  | 2d | 2025-08-11 A | 2025-08-12 A | QTS-1371 SS | 100% |  |  | Build Out | IGMP |  |  |  | DELETED | DH1100 |  |  |  | Construction |  |  |  | Level 1 | Doug Hayes |
| QTS-29991 | TI Area A // Remove Floor Protection *Deleted* |  | 2d | 2025-08-11 A | 2025-08-12 A | QTS-1371 SS | 100% |  |  | Build Out | IGMP |  |  | FOH | DELETED | DH1100 |  |  |  | Construction | Phase 1 |  |  | Level 1 | Doug Hayes |
| QTS-30021 | TI Area J & K // Remove Floor Protection *Deleted* |  | 2d | 2025-08-11 A | 2025-08-12 A | QTS-1371 SS | 100% |  |  | Build Out | IGMP | Phase 1 | Construction | BOH | DELETED | DH1100 |  |  |  | Construction |  |  |  | Level 2 | Doug Hayes |
| QTS-30411 | TI Area J & K // Remove Floor Protection *Deleted* |  | 2d | 2025-08-11 A | 2025-08-12 A | QTS-1371 SS | 100% |  |  | Build Out | IGMP | Phase 1 | Construction | BOH | DELETED | DH1100 |  |  |  | Construction |  |  |  | Level 1 | Doug Hayes |
| QTS-41551 | FOH / Mechanical Yard // Form, Reinforce, & Pour Thickened Slab On Grade for Generators *Delete* |  | 7d | 2025-09-02 A | 2025-09-10 A | QTS-1371 SS | 100% |  |  | Core & Shell | IGMP | Phase 1 | Construction | Gen Yard | DELETED | DH1100 |  |  |  | Construction |  |  |  | Level 1 |  |
| QTS-41611 | FOH / Mechanical Yard // Prep for Equipment Pads *Delete* |  | 3d | 2025-09-02 A | 2025-09-04 A | QTS-41671 | 100% |  |  | Core & Shell | IGMP | Phase 1 | Construction | Gen Yard | DELETED | DH1100 |  |  |  | Construction |  |  |  | Level 1 |  |
| QTS-41661 | FOH / Mechanical Yard // Prep & Place Base for Slab On Grade *Delete* |  | 3d | 2025-09-02 A | 2025-09-04 A | QTS-1371 SS | 100% |  |  | Core & Shell | IGMP | Phase 1 | Construction | Gen Yard | DELETED | DH1100 |  |  |  | Construction |  |  |  | Level 1 |  |
| QTS-41671 | FOH / Mechanical Yard // Pour Slab On Grade *Delete* |  | 2d | 2025-09-02 A | 2025-09-03 A | QTS-41661 | 100% |  |  | Core & Shell | IGMP | Phase 1 | Construction | Gen Yard | DELETED | DH1100 |  |  |  | Construction |  |  |  | Level 1 |  |
| QTS-41741 | BOH / Mechanical Yard // Form, Reinforce, & Pour Thickened Slab On Grade for Generators *Delete* |  | 6d | 2025-09-02 A | 2025-09-09 A | QTS-1371 SS | 100% |  |  | Core & Shell | IGMP | Phase 1 | Construction | Gen Yard | DELETED | DH1100 |  |  |  | Construction |  |  |  | Level 1 |  |
| QTS-41791 | BOH / Mechanical Yard // Prep for Equipment Pads *Delete* |  | 3d | 2025-09-02 A | 2025-09-04 A | QTS-1371 SS | 100% |  |  | Core & Shell | IGMP | Phase 1 | Construction | Gen Yard | DELETED | DH1100 |  |  |  | Construction |  |  |  | Level 1 |  |
| QTS-41841 | BOH / Mechanical Yard // Prep & Place Base for Slab On Grade *Delete* |  | 3d | 2025-09-02 A | 2025-09-04 A | QTS-1371 SS | 100% |  |  | Core & Shell | IGMP | Phase 1 | Construction | Gen Yard | DELETED | DH1100 |  |  |  | Construction |  |  |  | Level 1 |  |
| QTS-41851 | BOH / Mechanical Yard // Pour Slab On Grade *Delete* |  | 2d | 2025-09-02 A | 2025-09-03 A | QTS-1371 SS | 100% |  |  | Core & Shell | IGMP | Phase 1 | Construction | Gen Yard | DELETED | DH1100 |  |  |  | Construction |  |  |  | Level 1 |  |
| QTS-6931 | DH 1200 // Install Fire Caulking *Delete* |  | 3d | 2025-09-03 A | 2025-09-05 A | QTS-1371 SS | 100% |  |  | Build Out | IGMP | Phase 2 | Construction | DH1200 | DELETED | DH1100 |  |  |  | Construction |  |  |  |  | Doug Hayes |
| QTS-15541 | Water Meter Vault Procurement *Deleted* |  | 1d | 2025-09-04 A | 2025-09-04 A | QTS-13601 SS | 100% |  |  | Precon | GMP |  | Preconstruction |  | DELETED | DH1100 | CFCI Procurement |  |  | Preconstruction |  | 01ADMIN | CPeral |  |  |
| QTS-10021 | DH 1300 / Rooftop Mechanical // Install Mainline Piping from Pumps to Doghouses *Deleted* |  | 8d | 2025-09-15 A | 2025-09-16 A | QTS-1030 SS | 100% | 2026-02-11 | 2026-02-20 | Mechanical | IGMP | Phase 3 | Construction | DH1300 | DELETED | DH1100 |  |  |  | Construction |  |  |  |  |  |
| QTS-11761 | DH 1100 / Rooftop Mechanical // Install Branch Line Piping (Supply) *Deleted* |  | 8d | 2025-09-15 A | 2025-09-16 A | QTS-1030 SS | 100% | 2025-12-05 | 2025-12-16 | Mechanical | IGMP | Phase 1 | Construction | DH1100 | DELETED | DH1100 |  |  |  | Construction |  |  |  | Level 1 |  |
| QTS-11771 | DH 1100 / Rooftop Mechanical // Install Mainline Piping from Doghouses to Galleries *Deleted* |  | 7d | 2025-09-15 A | 2025-09-16 A | QTS-1030 SS | 100% | 2025-11-24 | 2025-12-04 | Mechanical | IGMP | Phase 1 | Construction | DH1100 | DELETED | DH1100 |  |  |  | Construction |  |  |  | Level 1 |  |
| QTS-11781 | DH 2200 / Rooftop Mechanical // Install Branch Line Piping (Supply) *Deleted* |  | 8d | 2025-09-15 A | 2025-09-16 A | QTS-1030 SS | 100% | 2025-12-29 | 2026-01-09 | Mechanical | IGMP | Phase 2 | Construction | DH2200 | DELETED | DH1100 |  |  |  | Construction |  |  |  |  |  |

Notes:
- QTS-13601: allucent_notes: 2025-08-12 18:08 - User: Jason Johnston - Date Added: 2025-08-12 18:08 - Note: Need response from team / 2025-08-19 16:08 - User: Jason Johnston - Date Added: 2025-08-19 16:08 - Note: Need to evaluate the need and responsibility for this item. / 2025-08
- QTS-20911: allucent_notes: Zack Goertz on 2025-08-05T18:31:15.220Z: We are changing the seqence of this task. We will be polishing floors towards the end of the job.
- QTS-25631: allucent_notes: Zack Goertz on 2025-08-05T18:31:53.122Z: We are changing the sequence of this task. We will be polishing floors towards the end of the job.

| ID | Activity | Duration | Start | Finish | Predecessors | Complete | Planned start | Planned finish | Project Section | Layton Discipline | Baseline | Phase-1-1 | Project Section-1 | Location | DELETED | D | Level | Allucent CSI Group | Phase-1 | Layton Super |
| --- | --- | --- | --- | --- | --- | --- | --- | --- | --- | --- | --- | --- | --- | --- | --- | --- | --- | --- | --- | --- |
| QTS-11791 | DH 2200 / Rooftop Mechanical // Install Mainline Piping from Doghouses to Galleries *Deleted* | 7d | 2025-09-15 A | 2025-09-16 A | QTS-1030 SS | 100% | 2025-12-17 | 2025-12-30 | Construction | Mechanical | IGMP | Phase 2 | Construction | DH2200 | DELETED | DH1100 |  |  |  |  |
| QTS-11801 | DH 1200 / Rooftop Mechanical // Install Branch Line Piping (Supply) *Deleted* | 8d | 2025-09-15 A | 2025-09-16 A | QTS-1030 SS | 100% | 2026-01-21 | 2026-01-30 | Construction | Mechanical | IGMP | Phase 2 | Construction | DH1200 | DELETED | DH1100 |  |  |  |  |
| QTS-11811 | DH 1200 / Rooftop Mechanical // Install Mainline Piping from Doghouses to Galleries *Deleted* | 7d | 2025-09-15 A | 2025-09-16 A | QTS-1030 SS | 100% | 2026-01-09 | 2026-01-20 | Construction | Mechanical | IGMP | Phase 2 | Construction | DH1200 | DELETED | DH1100 |  |  |  |  |
| QTS-11821 | DH 2300 / Rooftop Mechanical // Install Branch Line Piping (Supply) *Deleted* | 8d | 2025-09-15 A | 2025-09-16 A | QTS-1030 SS | 100% | 2026-02-11 | 2026-02-20 | Construction | Mechanical | IGMP | Phase 3 | Construction | DH2300 | DELETED | DH1100 |  |  |  |  |
| QTS-11831 | DH 2300 / Rooftop Mechanical // Install Mainline Piping from Doghouses to Galleries *Deleted* | 7d | 2025-09-15 A | 2025-09-16 A | QTS-1030 SS | 100% | 2026-02-02 | 2026-02-10 | Construction | Mechanical | IGMP | Phase 3 | Construction | DH2300 | DELETED | DH1100 |  |  |  |  |
| QTS-11841 | DH 1300 / Rooftop Mechanical // Install Branch Line Piping (Supply) *Deleted* | 8d | 2025-09-15 A | 2025-09-16 A | QTS-1030 SS | 100% | 2026-03-04 | 2026-03-13 | Construction | Mechanical | IGMP | Phase 3 | Construction | DH1300 | DELETED | DH1100 |  |  |  |  |
| QTS-11851 | DH 1300 / Rooftop Mechanical // Install Mainline Piping from Doghouses to Galleries *Deleted* | 7d | 2025-09-15 A | 2025-09-16 A | QTS-1030 SS | 100% | 2026-02-23 | 2026-03-03 | Construction | Mechanical | IGMP | Phase 3 | Construction | DH1300 | DELETED | DH1100 |  |  |  |  |
| QTS-13191 | DH 1100 / Rooftop Mechanical // Install Branch Line Piping (Return) *Deleted* | 7d | 2025-09-15 A | 2025-09-16 A | QTS-1030 SS | 100% | 2025-12-17 | 2025-12-30 | Construction | Mechanical | IGMP | Phase 1 | Construction | DH1100 | DELETED | DH1100 | Level 1 |  |  |  |
| QTS-13201 | DH 2200 / Rooftop Mechanical // Install Branch Line Piping (Return) *Deleted* | 7d | 2025-09-15 A | 2025-09-16 A | QTS-1030 SS | 100% | 2026-01-09 | 2026-01-20 | Construction | Mechanical | IGMP | Phase 2 | Construction | DH2200 | DELETED | DH1100 |  |  |  |  |
| QTS-13211 | DH 1200 / Rooftop Mechanical // Install Branch Line Piping (Return) *Deleted* | 7d | 2025-09-15 A | 2025-09-16 A | QTS-1030 SS | 100% | 2026-02-02 | 2026-02-10 | Construction | Mechanical | IGMP | Phase 2 | Construction | DH1200 | DELETED | DH1100 |  |  |  |  |
| QTS-13221 | DH 2300 / Rooftop Mechanical // Install Branch Line Piping (Return) *Deleted* | 7d | 2025-09-15 A | 2025-09-16 A | QTS-10021 | 100% | 2026-02-23 | 2026-03-03 | Construction | Mechanical | IGMP | Phase 3 | Construction | DH2300 | DELETED | DH1100 |  |  |  |  |
| QTS-13231 | DH 1300 / Rooftop Mechanical // Install Branch Line Piping (Return) *Deleted* | 7d | 2025-09-15 A | 2025-09-16 A | QTS-1030 SS | 100% | 2026-03-16 | 2026-03-24 | Construction | Mechanical | IGMP | Phase 3 | Construction | DH1300 | DELETED | DH1100 |  |  |  |  |
| QTS-21661 | DH 2100 / Rooftop Mechanical // Install Mainline Piping from Pumps to Chillers (Supply) *Deleted* | 8d | 2025-09-15 A | 2025-09-16 A | QTS-1030 SS | 100% | 2025-09-15 | 2025-09-24 |  | Mechanical |  |  |  |  | DELETED | DH1100 |  | 01ADMIN |  |  |
| QTS-22181 | DH 2100 / Rooftop Mechanical // Install Mainline Piping from Pumps to Chillers (Return) *Deleted* | 7d | 2025-09-15 A | 2025-09-16 A | QTS-1030 SS | 100% | 2025-10-22 | 2025-10-30 |  | Mechanical |  |  |  |  | DELETED | DH1100 |  | 01ADMIN |  |  |
| QTS-22661 | DH 2100 / Rooftop Mechanical // Install Mainline Piping from Pumps to Doghouses *Deleted* | 8d | 2025-09-15 A | 2025-09-16 A | QTS-1030 SS | 100% | 2025-10-22 | 2025-10-31 |  | Mechanical |  |  |  |  | DELETED | DH1100 |  | 01ADMIN |  |  |
| QTS-44631 | DH 1100 / Rooftop Mechanical // Detail Chiller to Pump Branch Piping Connections *Deleted* | 5d | 2025-09-15 A | 2025-09-16 A | QTS-1030 SS | 100% | 2025-12-17 | 2025-12-23 | Construction | Mechanical | IGMP | Phase 1 | Construction | DH2100 | DELETED | DH1100 | Level 2 |  |  |  |
| QTS-44641 | DH 1100 / Rooftop Mechanical // Fabrication & Installation Chiller to Pump Branch Piping Connections *Deleted* | 10d | 2025-09-15 A | 2025-09-16 A | QTS-1030 SS | 100% | 2025-12-29 | 2026-01-13 | Construction | Mechanical | IGMP | Phase 1 | Construction | DH2100 | DELETED | DH1100 | Level 2 |  |  |  |
| QTS-44651 | DH 2200 / Rooftop Mechanical // Detail Chiller to Pump Branch Piping Connections *Deleted* | 5d | 2025-09-15 A | 2025-09-16 A | QTS-1030 SS | 100% | 2026-01-09 | 2026-01-15 | Construction | Mechanical | IGMP | Phase 1 | Construction | DH2100 | DELETED | DH1100 | Level 2 |  |  |  |
| QTS-44661 | DH 2200 / Rooftop Mechanical // Fabrication & Installation Chiller to Pump Branch Piping Connections *Deleted* | 10d | 2025-09-15 A | 2025-09-16 A | QTS-1030 SS | 100% | 2026-01-16 | 2026-01-30 | Construction | Mechanical | IGMP | Phase 1 | Construction | DH2100 | DELETED | DH1100 | Level 2 |  |  |  |
| QTS-44671 | DH 1200 / Rooftop Mechanical // Detail Chiller to Pump Branch Piping Connections *Deleted* | 5d | 2025-09-15 A | 2025-09-16 A | QTS-1030 SS | 100% | 2026-02-02 | 2026-02-06 | Construction | Mechanical | IGMP | Phase 1 | Construction | DH2100 | DELETED | DH1100 | Level 2 |  |  |  |
| QTS-44681 | DH 1200 / Rooftop Mechanical // Fabrication & Installation Chiller to Pump Branch Piping Connections *Deleted* | 10d | 2025-09-15 A | 2025-09-16 A | QTS-1030 SS | 100% | 2026-02-09 | 2026-02-20 | Construction | Mechanical | IGMP | Phase 1 | Construction | DH2100 | DELETED | DH1100 | Level 2 |  |  |  |
| QTS-44691 | DH 2300 / Rooftop Mechanical // Detail Chiller to Pump Branch Piping Connections *Deleted* | 5d | 2025-09-15 A | 2025-09-16 A | QTS-1030 SS | 100% | 2026-02-23 | 2026-02-27 | Construction | Mechanical | IGMP | Phase 1 | Construction | DH2100 | DELETED | DH1100 | Level 2 |  |  |  |
| QTS-44701 | DH 2300 / Rooftop Mechanical // Fabrication & Installation Chiller to Pump Branch Piping Connections *Deleted* | 10d | 2025-09-15 A | 2025-09-16 A | QTS-1030 SS | 100% | 2026-03-02 | 2026-03-13 | Construction | Mechanical | IGMP | Phase 1 | Construction | DH2100 | DELETED | DH1100 | Level 2 |  |  |  |
| QTS-44711 | DH 1300 / Rooftop Mechanical // Detail Chiller to Pump Branch Piping Connections *Deleted* | 5d | 2025-09-15 A | 2025-09-16 A | QTS-1030 SS | 100% | 2026-03-16 | 2026-03-20 | Construction | Mechanical | IGMP | Phase 1 | Construction | DH2100 | DELETED | DH1100 | Level 2 |  |  |  |
| QTS-44721 | DH 1300 / Rooftop Mechanical // Fabrication & Installation Chiller to Pump Branch Piping Connections *Deleted* | 10d | 2025-09-15 A | 2025-09-16 A | QTS-1030 SS | 100% | 2026-03-23 | 2026-04-03 | Construction | Mechanical | IGMP | Phase 1 | Construction | DH2100 | DELETED | DH1100 | Level 2 |  |  |  |
| QTS-4521 | DH 1100 / Rooftop Mechanical // Install Mainline Piping from Pumps to Chillers (Supply) *Deleted* | 8d | 2025-09-15 A | 2025-09-16 A | QTS-1030 SS | 100% | 2025-10-22 | 2025-10-31 | Construction | Mechanical | IGMP | Phase 1 | Construction | DH1100 | DELETED | DH1100 | Level 1 | 01ADMIN |  |  |
| QTS-4561 | DH 2200 / Rooftop Mechanical // Install Mainline Piping from Pumps to Chillers (Supply) *Deleted* | 8d | 2025-09-15 A | 2025-09-16 A | QTS-1030 SS | 100% | 2025-11-12 | 2025-11-21 | Construction | Mechanical | IGMP | Phase 2 | Construction | DH2200 | DELETED | DH1100 |  |  |  |  |
| QTS-4601 | DH 1200 / Rooftop Mechanical // Install Mainline Piping from Pumps to Chillers (Supply) *Deleted* | 8d | 2025-09-15 A | 2025-09-16 A | QTS-1030 SS | 100% | 2025-12-05 | 2025-12-16 | Construction | Mechanical | IGMP | Phase 2 | Construction | DH1200 | DELETED | DH1100 |  |  |  |  |
| QTS-4641 | DH 2300 / Rooftop Mechanical // Install Mainline Piping from Pumps to Chillers (Supply) *Deleted* | 8d | 2025-09-15 A | 2025-09-16 A | QTS-1030 SS | 100% | 2025-12-29 | 2026-01-09 | Construction | Mechanical | IGMP | Phase 3 | Construction | DH2300 | DELETED | DH1100 |  |  |  |  |
| QTS-4681 | DH 1300 / Rooftop Mechanical // Install Mainline Piping from Pumps to Chillers (Supply) *Deleted* | 8d | 2025-09-15 A | 2025-09-16 A | QTS-1030 SS | 100% | 2026-01-21 | 2026-01-30 | Construction | Mechanical | IGMP | Phase 3 | Construction | DH1300 | DELETED | DH1100 |  |  |  |  |
| QTS-50151 | DH 1100 / Rooftop Mechanical // Rough In Controls from to DOAS *Deleted* | 1d | 2025-09-15 A | 2025-09-16 A | QTS-1030 SS | 100% | 2025-10-22 | 2025-10-22 | Construction | Mechanical | DC | Phase 1 | Construction | FOH | DELETED | DH1100 | Roof |  |  |  |
| QTS-50161 | DH 1100 / Rooftop Mechanical // Pre Energization Inspection DOAS *Deleted* | 1d | 2025-09-15 A | 2025-09-16 A | QTS-1030 SS | 100% | 2025-10-23 | 2025-10-23 | Construction | Mechanical | DC | Phase 1 | Construction | FOH | DELETED | DH1100 | Roof |  |  |  |
| QTS-7051 | DH 1100 / Rooftop Mechanical // Install Mainline Piping from Pumps to Chillers (Return) *Deleted* | 7d | 2025-09-15 A | 2025-09-16 A | QTS-1030 SS | 100% | 2025-11-03 | 2025-11-11 | Construction | Mechanical | IGMP | Phase 1 | Construction | DH1100 | DELETED | DH1100 | Level 1 | 01ADMIN |  |  |
| QTS-7101 | DH 2200 / Rooftop Mechanical // Install Mainline Piping from Pumps to Chillers (Return) *Deleted* | 7d | 2025-09-15 A | 2025-09-16 A | QTS-1030 SS | 100% | 2025-11-24 | 2025-12-04 | Construction | Mechanical | IGMP | Phase 2 | Construction | DH2200 | DELETED | DH1100 |  |  |  |  |
| QTS-7151 | DH 1200 / Rooftop Mechanical // Install Mainline Piping from Pumps to Chillers (Return) *Deleted* | 7d | 2025-09-15 A | 2025-09-16 A | QTS-1030 SS | 100% | 2025-12-17 | 2025-12-30 | Construction | Mechanical | IGMP | Phase 2 | Construction | DH1200 | DELETED | DH1100 |  |  |  |  |
| QTS-7201 | DH 2300 / Rooftop Mechanical // Install Mainline Piping from Pumps to Chillers (Return) *Deleted* | 7d | 2025-09-15 A | 2025-09-16 A | QTS-1030 SS | 100% | 2026-01-09 | 2026-01-20 | Construction | Mechanical | IGMP | Phase 3 | Construction | DH2300 | DELETED | DH1100 |  |  |  |  |
| QTS-7251 | DH 1300 / Rooftop Mechanical // Install Mainline Piping from Pumps to Chillers (Return) *Deleted* | 7d | 2025-09-15 A | 2025-09-16 A | QTS-1030 SS | 100% | 2026-02-02 | 2026-02-10 | Construction | Mechanical | IGMP | Phase 3 | Construction | DH1300 | DELETED | DH1100 |  |  |  |  |
| QTS-9901 | DH 1100 / Rooftop Mechanical // Install Mainline Piping from Pumps to Doghouses *Deleted* | 8d | 2025-09-15 A | 2025-09-16 A | QTS-1030 SS | 100% | 2025-11-12 | 2025-11-21 | Construction | Mechanical | IGMP | Phase 1 | Construction | DH1100 | DELETED | DH1100 | Level 1 |  |  |  |
| QTS-9931 | DH 2200 / Rooftop Mechanical // Install Mainline Piping from Pumps to Doghouses *Deleted* | 8d | 2025-09-15 A | 2025-09-16 A | QTS-1030 SS | 100% | 2025-12-05 | 2025-12-16 | Construction | Mechanical | IGMP | Phase 2 | Construction | DH2200 | DELETED | DH1100 |  |  |  |  |
| QTS-9961 | DH 1200 / Rooftop Mechanical // Install Mainline Piping from Pumps to Doghouses *Deleted* | 8d | 2025-09-15 A | 2025-09-16 A | QTS-1030 SS | 100% | 2025-12-29 | 2026-01-09 | Construction | Mechanical | IGMP | Phase 2 | Construction | DH1200 | DELETED | DH1100 |  |  |  |  |
| QTS-9991 | DH 2300 / Rooftop Mechanical // Install Mainline Piping from Pumps to Doghouses *Deleted* | 8d | 2025-09-15 A | 2025-09-16 A | QTS-1030 SS | 100% | 2026-01-21 | 2026-01-30 | Construction | Mechanical | IGMP | Phase 3 | Construction | DH2300 | DELETED | DH1100 |  |  |  |  |
| QTS-49511 | Zone 2 Gridlines 21-30 / South // Hang Sheathing for Metal Panels *Delete* | 4d | 2025-10-06 A | 2025-10-09 A | QTS-1030 SS | 100% |  |  | Construction | Build Out | IGMP |  | Construction |  | DELETED | DH1100 |  |  | Phase 1 | Doug Hayes |
| QTS-23601 | DH 2100 / Mechanical Gallery 2103 // Top of Wall Fire Stop *Delete* | 2d | 2025-10-20 A | 2025-10-23 A | QTS-1030 SS | 100% | 2025-10-28 | 2025-10-29 | Construction | Build Out | IGMP |  | Construction | DH2100 | DELETED | DH1100 | Level 2 | 01ADMIN |  | Doug Hayes |
| QTS-29191 | TI Area B // Install Structural Support for Bifold Door *Delete* | 4d | 2025-10-21 A | 2025-10-23 A | QTS-1030 SS | 100% | 2025-10-28 | 2025-10-31 | Construction | Build Out | IGMP |  |  | FOH | DELETED | DH1100 | Level 1 | 01ADMIN | Phase 1 | Doug Hayes |
| QTS-24701 | Zone 2 Gridline 21-30 / Corridor 2010 // Install Electrical Equipment & Stand *Delete* | 1d | 2025-11-03 A | 2025-11-03 A | QTS-1030 SS | 100% |  |  | Construction | Electrical | IGMP |  |  |  | DELETED | DH1100 | Level 2 |  |  |  |
| QTS-25091 | Zone 2 Gridline 21-30 / Corridor 2010 // Pull & Terminate to Electrical Equipment *Delete* | 1d | 2025-11-03 A | 2025-11-03 A | QTS-1030 SS | 100% |  |  | Construction | Electrical | IGMP |  |  |  | DELETED | DH1100 | Level 2 |  |  |  |
| QTS-26171 | Zone 2 Gridline 21-30 / Corridor 1013 // Install Electrical Equipment & Stand *Delete* | 1d | 2025-11-03 A | 2025-11-03 A | QTS-1030 SS | 100% |  |  | Construction | Electrical | IGMP |  |  |  | DELETED | DH1100 | Level 1 |  |  |  |
| QTS-26471 | Zone 2 Gridline 21-30 / Corridor 1013 // Pull & Terminate to Electrical Equipment *Delete* | 1d | 2025-11-03 A | 2025-11-03 A | QTS-1030 SS | 100% |  |  | Construction | Electrical | IGMP |  |  |  | DELETED | DH1100 | Level 1 |  |  |  |
| QTS-3121 | Fire Riser #0171 // In Wall Rough Plumbing *Delete* | 5d | 2025-11-12 A | 2025-11-12 A | QTS-1030 SS | 100% | 2025-11-05 | 2025-11-11 | Construction | Mechanical | IGMP |  |  | FOH | DELETED | DH1100 | Level 1 | 01ADMIN | Phase 1 |  |
| QTS-27301 | Electrical Room #0222 // Set Static Transfer Switch *Delete* | 2d | 2025-11-17 A | 2025-11-18 A | QTS-1030 SS | 100% |  |  | Construction | Electrical | IGMP | Phase 1 | Construction | FOH | DELETED | DH1100 | Level 2 | 01ADMIN |  |  |
| QTS-27321 | Electrical Room #0222 // Set UPS *Delete* | 2d | 2025-11-17 A | 2025-11-18 A | QTS-1030 SS | 100% |  |  | Construction | Electrical | IGMP | Phase 1 | Construction | FOH | DELETED | DH1100 | Level 2 | 01ADMIN |  |  |
| QTS-27231 | Electrical Room #0172 // Plywood Install *Delete* | 1d | 2025-11-20 A | 2025-11-20 A | QTS-1030 SS | 100% |  |  | Construction | Build Out | IGMP |  |  | FOH | DELETED | DH1100 | Level 1 | 01ADMIN | Phase 1 |  |
| QTS-27861 | Electrical Room #1066/1081 // Plywood Install *Delete* | 1d | 2025-12-01 A | 2025-12-01 A | QTS-1030 SS | 100% |  |  | Construction | Build Out | IGMP |  |  | BOH | DELETED | DH1100 | Level 1 |  | Phase 1 |  |
| QTS-28521 | Electrical Room #2085 // Plywood Install *Delete* | 1d | 2025-12-01 A | 2025-12-01 A | QTS-1030 SS | 100% |  |  | Construction | Build Out | IGMP |  |  | BOH | DELETED | DH1100 | Level 2 | 01ADMIN | Phase 1 |  |
| QTS-43491 | FOH // Commission RTU's *Delete* | 1d | 2025-12-01 A | 2025-12-01 A | QTS-1030 SS | 100% |  |  |  | Commissioning |  |  |  |  | DELETED | DH1100 |  |  |  |  |
| QTS-43511 | BOH // Final Commissioning *Delete* | 1d | 2025-12-01 A | 2025-12-01 A | QTS-1030 SS | 100% |  |  |  | Commissioning |  |  |  |  | DELETED | DH1100 |  |  |  |  |
| QTS-43521 | BOH / Electrical // Prefunctional Testing Transformers *Delete* | 1d | 2025-12-01 A | 2025-12-01 A | QTS-1030 SS | 100% |  |  |  | Commissioning |  |  |  |  | DELETED | DH1100 |  |  |  |  |
| QTS-43531 | BOH / Electrical // Prefunctional Testing Static Transfer Switches *Delete* | 1d | 2025-12-01 A | 2025-12-01 A | QTS-1030 SS | 100% |  |  |  | Commissioning |  |  |  |  | DELETED | DH1100 |  |  |  |  |
| QTS-43541 | BOH / Electrical // Prefunctional Testing UPS *Delete* | 1d | 2025-12-01 A | 2025-12-01 A | QTS-1030 SS | 100% |  |  |  | Commissioning |  |  |  |  | DELETED | DH1100 |  |  |  |  |
| QTS-43551 | BOH / Electrical // Prefunctional Testing Generators *Delete* | 1d | 2025-12-01 A | 2025-12-01 A | QTS-1030 SS | 100% |  |  |  | Commissioning |  |  |  |  | DELETED | DH1100 |  |  |  |  |
| QTS-43561 | BOH // Commission Generators *Delete* | 1d | 2025-12-01 A | 2025-12-01 A | QTS-1030 SS | 100% |  |  |  | Commissioning |  |  |  |  | DELETED | DH1100 |  |  |  |  |
| QTS-43571 | BOH // L3 - Energization *Delete* | 1d | 2025-12-01 A | 2025-12-01 A | QTS-1030 SS | 100% |  |  |  | Commissioning |  |  |  |  | DELETED | DH1100 |  |  |  |  |
| QTS-43581 | BOH / Mechanical // Test & Balance RTU's *Delete* | 1d | 2025-12-01 A | 2025-12-01 A | QTS-1030 SS | 100% |  |  |  | Commissioning |  |  |  |  | DELETED | DH1100 |  |  |  |  |
| QTS-99040 | FOH // Final Commissioning *Delete* | 1d | 2025-12-01 A | 2025-12-01 A | QTS-1030 SS | 100% |  |  |  | Commissioning |  |  |  |  | DELETED | DH1100 |  |  |  |  |
| QTS-99050 | FOH / Electrical // Prefunctional Testing Transformers *Delete* | 1d | 2025-12-01 A | 2025-12-01 A | QTS-1030 SS | 100% |  |  |  | Commissioning |  |  |  |  | DELETED | DH1100 |  |  |  |  |
| QTS-99060 | FOH / Electrical // Prefunctional Testing Static Transfer Switches *Delete* | 1d | 2025-12-01 A | 2025-12-01 A | QTS-1030 SS | 100% |  |  |  | Commissioning |  |  |  |  | DELETED | DH1100 |  |  |  |  |
| QTS-99070 | FOH / Electrical // Prefunctional Testing UPS *Delete* | 1d | 2025-12-01 A | 2025-12-01 A | QTS-1030 SS | 100% |  |  |  | Commissioning |  |  |  |  | DELETED | DH1100 |  |  |  |  |
| QTS-99080 | FOH / Electrical // Prefunctional Testing Generators *Delete* | 1d | 2025-12-01 A | 2025-12-01 A | QTS-1030 SS | 100% |  |  |  | Commissioning |  |  |  |  | DELETED | DH1100 |  |  |  |  |
| QTS-99090 | FOH // Commission Generators *Delete* | 1d | 2025-12-01 A | 2025-12-01 A | QTS-1030 SS | 100% |  |  |  | Commissioning |  |  |  |  | DELETED | DH1100 |  |  |  |  |
| QTS-99100 | FOH // L3 - Energization *Delete* | 1d | 2025-12-01 A | 2025-12-01 A | QTS-1030 SS | 100% |  |  |  | Commissioning |  |  |  |  | DELETED | DH1100 |  |  |  |  |

Notes:
- QTS-21661: allucent_notes: 2025-09-02 10:09 - User: David Wiltberger - Date Added: 2025-09-02 10:09 - Note: Moving to accommodate roofing in Zone 1 / 2025-09-30 12:09 - User: David Wiltberger - Date Added: 2025-09-30 12:09 - Note: BAM did not complete / 2025-10-08 08:10 - User: J
- QTS-44631: allucent_notes: Brandon Feather on 2025-01-07 08:01: Date moved from 1/3/25 as the roof decking isnt released yet. rough date it is expected is mid to end of feb for Phase 1. BSF-1.7.25
- QTS-44651: allucent_notes: Brandon Feather on 2025-01-07 08:01: Date moved from 1/3/25 as the roof decking isnt released yet. rough date it is expected is mid to end of feb for Phase 1. BSF-1.7.25
- QTS-44671: allucent_notes: Brandon Feather on 2025-01-07 08:01: Date moved from 1/3/25 as the roof decking isnt released yet. rough date it is expected is mid to end of feb for Phase 1. BSF-1.7.25
- QTS-44691: allucent_notes: Brandon Feather on 2025-01-07 08:01: Date moved from 1/3/25 as the roof decking isnt released yet. rough date it is expected is mid to end of feb for Phase 1. BSF-1.7.25
- QTS-23601: allucent_notes_20251028_163138: Jason Johnston on 2025-10-28T22:44:14.102Z: Doesn't exist in drawings - delete / allucent_notes: 2025-10-28T22:44:14.102Z - User: Jason Johnston - Date Added: 2025-10-28T22:44:14.102Z - Note: Doesn't exist in drawings - delete
- QTS-29191: allucent_notes_20251028_163138: Jason Johnston on 2025-10-27 16:10: Need to reconfirm with the team what this line item is / Jason Johnston on 2025-10-28T22:02:51.968Z: Delete - not in plans. / allucent_notes_20251027_224008: Jason Johnston on 2025-10-27 16:10: Need to reconfirm with the team what this line item is / allucent_notes: 2025-10-27 16:10 - User: Jason Johnston - Date Added: 2025-10-27 16:10 - Note: Need to reconfirm with the team what this line item is / 2025-10-28T22:02:51.968Z - User: Jason Johnston - Date Added: 2025-10-28T22:02:51.968Z - Note: Delete - not in plans.
- QTS-3121: allucent_notes_20251209_203830: Jason Johnston on 2025-11-03 14:11: Need to fix a design clash. / Luis Vea on 2025-11-10 11:11: plumbing is outside of the walls / Jason Johnston on 2025-11-11 17:11: SWO / David Wiltberger on 2025-12-02 06:19: Walls were delayed his impacted setting the eads / allucent_notes_20251202_153722: Jason Johnston on 2025-11-03 14:11: Need to fix a design clash. / Luis Vea on 2025-11-10 11:11: plumbing is outside of the walls / Jason Johnston on 2025-11-11 17:11: SWO / David Wiltberger on 2025-12-02 06:19: Walls were delayed his impacted setting the eads / allucent_notes_20251118_192630: Jason Johnston on 2025-11-03 14:11: Need to fix a design clash. / Luis Vea on 2025-11-10 11:11: plumbing is outside of the walls / Jason Johnston on 2025-11-11 17:11: SWO / allucent_notes_20251111_182405: Jason Johnston on 2025-11-03 14:11: Need to fix a design clash. / Luis Vea on 2025-11-10 11:11: plumbing is outside of the walls / Jason Johnston on 2025-11-11 17:11: SWO / allucent_notes_20251104_160200: Jason Johnston on 2025-11-03 14:11: Need to fix a design clash. / allucent_notes: 2025-11-03 14:11 - User: Jason Johnston - Date Added: 2025-11-03 14:11 - Note: Need to fix a design clash. / 2025-11-10 11:11 - User: Luis Vea - Date Added: 2025-11-10 11:11 - Note: plumbing is outside of the walls / 2025-11-11 17:11 - User: Jason Johns
- QTS-27301: allucent_notes_20251118_192630: Jason Johnston on 2025-11-04 12:11: Need better predecessor for this equipment set. / Jason Johnston on 2025-11-11 15:11: Looking for predecessor. / JD Kitchens on 2025-11-18T20:44:12.712Z: No equipment / JD Kitchens on 2025-11-18T20:44:35.508Z: Please remove / JD Kitchens on 2025-11-18T20:44:39.054Z: null / allucent_notes_20251111_182405: Jason Johnston on 2025-11-04 12:11: Need better predecessor for this equipment set. / Jason Johnston on 2025-11-11 15:11: Looking for predecessor. / allucent_notes_20251104_160200: Jason Johnston on 2025-11-04 12:11: Need better predecessor for this equipment set. / allucent_notes: 2025-11-04 12:11 - User: Jason Johnston - Date Added: 2025-11-04 12:11 - Note: Need better predecessor for this equipment set. / 2025-11-11 15:11 - User: Jason Johnston - Date Added: 2025-11-11 15:11 - Note: Looking for predecessor. / 2025-11-18T20:44:1
- QTS-27321: allucent_notes_20251118_192630: Jason Johnston on 2025-11-04 12:11: Need better predecessor for this equipment set. / Jason Johnston on 2025-11-11 15:11: need by 12/10. / JD Kitchens on 2025-11-18T20:45:14.589Z: No equipment in this room please remove / allucent_notes_20251111_182405: Jason Johnston on 2025-11-04 12:11: Need better predecessor for this equipment set. / Jason Johnston on 2025-11-11 15:11: need by 12/10. / allucent_notes_20251104_160200: Jason Johnston on 2025-11-04 12:11: Need better predecessor for this equipment set. / allucent_notes: 2025-11-04 12:11 - User: Jason Johnston - Date Added: 2025-11-04 12:11 - Note: Need better predecessor for this equipment set. / 2025-11-11 15:11 - User: Jason Johnston - Date Added: 2025-11-11 15:11 - Note: need by 12/10. / 2025-11-18T20:45:14.589Z - U
- QTS-27231: allucent_notes_20251202_153722: Sean Waisner on 2025-12-02 15:23: Had a scissor lift broke down in the room for a week / allucent_notes: 2025-12-02 15:23 - User: Sean Waisner - Date Added: 2025-12-02 15:23 - Note: Had a scissor lift broke down in the room for a week

| ID | Activity | Duration | Start | Finish | Predecessors | Complete | Planned start | Planned finish | Layton Discipline | DELETED | D | Allucent CSI Group | Project Section | Phase-1 | Baseline | Location | Level | Phase-1-1 | Project Section-1 |
| --- | --- | --- | --- | --- | --- | --- | --- | --- | --- | --- | --- | --- | --- | --- | --- | --- | --- | --- | --- |
| QTS-99110 | FOH / Mechanical // Test & Balance RTU's *Delete* | 1d | 2025-12-01 A | 2025-12-01 A | QTS-1030 SS | 100% |  |  | Commissioning | DELETED | DH1100 |  |  |  |  |  |  |  |  |
| QTS-99120 | BOH // Commission RTU's *Delete* | 1d | 2025-12-01 A | 2025-12-01 A | QTS-1030 SS | 100% |  |  | Commissioning | DELETED | DH1100 |  |  |  |  |  |  |  |  |
| QTS-100310 | DH 2100 / Rooftop Mechanical // Pre Energization Inspection CHW Pumps (Roof) *Delete* | 5d | 2025-12-02 A | 2025-12-02 A | QTS-1030 SS | 100% | 2026-02-09 | 2026-02-13 | Mechanical | DELETED | DH1100 | 01ADMIN | Construction | Phase 1 | IGMP | DH2100 | Level 2 |  |  |
| QTS-100320 | DH 2100 / Rooftop Mechanical // Start Up CHW Pumps (Roof) *Delete* | 1d | 2025-12-02 A | 2025-12-02 A | QTS-1030 SS | 100% | 2026-02-16 | 2026-02-16 | Mechanical | DELETED | DH1100 | 01ADMIN | Construction | Phase 1 | IGMP | DH2100 | Level 2 |  |  |
| QTS-100560 | DH 1100 / Rooftop Mechanical // Pre Energization Inspection CHW Pumps (Roof) *Delete* | 5d | 2025-12-02 A | 2025-12-02 A | QTS-1030 SS | 100% | 2026-02-09 | 2026-02-13 | Mechanical | DELETED | DH1100 | 01ADMIN | Construction | Phase 1 | IGMP | DH2100 | Level 2 |  |  |
| QTS-100570 | DH 1100 / Rooftop Mechanical // Start Up CHW Pumps (Roof) *Delete* | 1d | 2025-12-02 A | 2025-12-02 A | QTS-1030 SS | 100% | 2026-02-16 | 2026-02-16 | Mechanical | DELETED | DH1100 | 01ADMIN | Construction | Phase 1 | IGMP | DH2100 | Level 2 |  |  |
| QTS-100860 | DH 2200 / Rooftop Mechanical // Pre Energization Inspection CHW Pumps (Roof) *Delete* | 5d | 2025-12-02 A | 2025-12-02 A | QTS-1030 SS | 100% | 2026-03-02 | 2026-03-06 | Mechanical | DELETED | DH1100 | 01ADMIN | Construction | Phase 1 | IGMP | DH2100 | Level 2 |  |  |
| QTS-100870 | DH 2200 / Rooftop Mechanical // Start Up CHW Pumps (Roof) *Delete* | 1d | 2025-12-02 A | 2025-12-02 A | QTS-1030 SS | 100% | 2026-03-09 | 2026-03-09 | Mechanical | DELETED | DH1100 | 01ADMIN | Construction | Phase 1 | IGMP | DH2100 | Level 2 |  |  |
| QTS-101100 | DH 1200 / Rooftop Mechanical // Pre Energization Inspection CHW Pumps (Roof) *Delete* | 5d | 2025-12-02 A | 2025-12-02 A | QTS-1030 SS | 100% | 2026-03-02 | 2026-03-06 | Mechanical | DELETED | DH1100 | 01ADMIN | Construction | Phase 1 | IGMP | DH2100 | Level 2 |  |  |
| QTS-101110 | DH 1200 / Rooftop Mechanical // Start Up CHW Pumps (Roof) *Delete* | 1d | 2025-12-02 A | 2025-12-02 A | QTS-1030 SS | 100% | 2026-03-09 | 2026-03-09 | Mechanical | DELETED | DH1100 | 01ADMIN | Construction | Phase 1 | IGMP | DH2100 | Level 2 |  |  |
| QTS-101340 | DH 1300 / Rooftop Mechanical // Pre Energization Inspection CHW Pumps (Roof) *Delete* | 5d | 2025-12-02 A | 2025-12-02 A | QTS-1030 SS | 100% | 2026-04-27 | 2026-05-01 | Mechanical | DELETED | DH1100 | 01ADMIN | Construction | Phase 1 | IGMP | DH2100 | Level 2 |  |  |
| QTS-101350 | DH 1300 / Rooftop Mechanical // Start Up CHW Pumps (Roof) *Delete* | 1d | 2025-12-02 A | 2025-12-02 A | QTS-1030 SS | 100% | 2026-05-04 | 2026-05-04 | Mechanical | DELETED | DH1100 | 01ADMIN | Construction | Phase 1 | IGMP | DH2100 | Level 2 |  |  |
| QTS-101580 | DH 2300 / Rooftop Mechanical // Pre Energization Inspection CHW Pumps (Roof) *Delete* | 5d | 2025-12-02 A | 2025-12-02 A | QTS-1030 SS | 100% | 2026-04-27 | 2026-05-01 | Mechanical | DELETED | DH1100 | 01ADMIN | Construction | Phase 1 | IGMP | DH2100 | Level 2 |  |  |
| QTS-101590 | DH 2300 / Rooftop Mechanical // Start Up CHW Pumps (Roof) *Delete* | 1d | 2025-12-02 A | 2025-12-02 A | QTS-1030 SS | 100% | 2026-05-04 | 2026-05-04 | Mechanical | DELETED | DH1100 | 01ADMIN | Construction | Phase 1 | IGMP | DH2100 | Level 2 |  |  |
| QTS-19151 | DH 1100 / Electrical // Energization *Delete* | 10d | 2025-12-02 A | 2025-12-02 A | QTS-1030 SS | 100% | 2026-02-05 | 2026-02-18 | Electrical | DELETED | DH1100 |  | Construction |  | IGMP | DH1100 | Level 1 | Phase 1 | Construction |
| QTS-19161 | DH 2200 / Electrical // Energization *Delete* | 10d | 2025-12-02 A | 2025-12-02 A | QTS-1030 SS | 100% | 2026-04-14 | 2026-04-27 | Electrical | DELETED | DH1100 |  | Construction |  | IGMP | DH2200 |  | Phase 2 | Construction |
| QTS-19171 | DH 1200 / Electrical // Energization *Delete* | 10d | 2025-12-02 A | 2025-12-02 A | QTS-1030 SS | 100% | 2026-03-09 | 2026-03-20 | Electrical | DELETED | DH1100 |  | Construction |  | IGMP | DH1200 |  | Phase 2 | Construction |
| QTS-19181 | DH 2300 / Electrical // Energization *Delete* | 10d | 2025-12-02 A | 2025-12-02 A | QTS-1030 SS | 100% | 2026-03-30 | 2026-04-10 | Electrical | DELETED | DH1100 |  | Construction |  | IGMP | DH2300 |  | Phase 3 | Construction |
| QTS-19191 | DH 1300 / Electrical // Energization *Delete* | 10d | 2025-12-02 A | 2025-12-02 A | QTS-1030 SS | 100% | 2026-03-27 | 2026-04-09 | Electrical | DELETED | DH1100 |  | Construction |  | IGMP | DH1300 |  | Phase 3 | Construction |
| QTS-19211 | DH 1100, FOH, BOH / Mechanical // Test & Balance RTU's *Delete* | 10d | 2025-12-02 A | 2025-12-02 A | QTS-1030 SS | 100% | 2026-02-12 | 2026-02-25 | Mechanical | DELETED | DH1100 |  | Construction |  | IGMP | DH1100 | Level 1 | Phase 1 | Construction |
| QTS-19221 | DH 2200 / Mechanical // Test & Balance RTU's *Delete* | 10d | 2025-12-02 A | 2025-12-02 A | QTS-1030 SS | 100% | 2026-04-16 | 2026-04-29 | Mechanical | DELETED | DH1100 |  | Construction |  | IGMP | DH2200 |  | Phase 2 | Construction |
| QTS-19231 | DH 1200 / Mechanical // Test & Balance RTU's *Delete* | 10d | 2025-12-02 A | 2025-12-02 A | QTS-1030 SS | 100% | 2026-03-17 | 2026-03-30 | Mechanical | DELETED | DH1100 |  | Construction |  | IGMP | DH1200 |  | Phase 2 | Construction |
| QTS-19241 | DH 2300, FOH, BOH / Mechanical // Test & Balance RTU's *Delete* | 10d | 2025-12-02 A | 2025-12-02 A | QTS-1030 SS | 100% | 2026-04-06 | 2026-04-17 | Mechanical | DELETED | DH1100 |  | Construction |  | IGMP | DH2300 |  | Phase 3 | Construction |
| QTS-19251 | DH 1300, FOH, BOH / Mechanical // Test & Balance RTU's *Delete* | 10d | 2025-12-02 A | 2025-12-02 A | QTS-1030 SS | 100% | 2026-04-06 | 2026-04-17 | Mechanical | DELETED | DH1100 |  | Construction |  | IGMP | DH1300 |  | Phase 3 | Construction |
| QTS-19321 | DH 1100 / Mechanical // Prefunctional Testing Chillers *Delete* | 10d | 2025-12-02 A | 2025-12-02 A | QTS-1030 SS | 100% | 2026-02-19 | 2026-03-04 | Mechanical | DELETED | DH1100 |  | Construction |  | IGMP | DH1100 | Level 1 | Phase 1 | Construction |
| QTS-19331 | DH 1100 / Mechanical // Prefunctional Testing CRAH Units 1-17 *Delete* | 7d | 2025-12-02 A | 2025-12-02 A | QTS-1030 SS | 100% | 2026-02-18 | 2026-02-26 | Mechanical | DELETED | DH1100 |  | Construction |  | IGMP | DH1100 | Level 1 | Phase 1 | Construction |
| QTS-19341 | DH 1100 / Electrical // Prefunctional Testing Transformers *Delete* | 10d | 2025-12-02 A | 2025-12-02 A | QTS-1030 SS | 100% | 2026-02-19 | 2026-03-04 | Electrical | DELETED | DH1100 |  | Construction |  | IGMP | DH1100 | Level 1 | Phase 1 | Construction |
| QTS-19351 | DH 2200 / Mechanical // Prefunctional Testing Chillers *Delete* | 10d | 2025-12-02 A | 2025-12-02 A | QTS-1030 SS | 100% | 2026-04-28 | 2026-05-11 | Mechanical | DELETED | DH1100 |  | Construction |  | IGMP | DH2200 |  | Phase 2 | Construction |
| QTS-19361 | DH 2200 / Mechanical // Prefunctional Testing CRAH Units 1-17 *Delete* | 10d | 2025-12-02 A | 2025-12-02 A | QTS-1030 SS | 100% | 2026-04-17 | 2026-04-30 | Mechanical | DELETED | DH1100 |  | Construction |  | IGMP | DH2200 |  | Phase 2 | Construction |
| QTS-19371 | DH 2200 / Electrical // Prefunctional Testing Transformers *Delete* | 10d | 2025-12-02 A | 2025-12-02 A | QTS-1030 SS | 100% | 2026-04-28 | 2026-05-11 | Electrical | DELETED | DH1100 |  | Construction |  | IGMP | DH2200 |  | Phase 2 | Construction |
| QTS-19381 | DH 1200 / Mechanical // Prefunctional Testing Chillers *Delete* | 10d | 2025-12-02 A | 2025-12-02 A | QTS-1030 SS | 100% | 2026-03-23 | 2026-04-03 | Mechanical | DELETED | DH1100 |  | Construction |  | IGMP | DH1200 |  | Phase 2 | Construction |
| QTS-19391 | DH 1200 / Mechanical // Prefunctional Testing CRAH Units 1-17 *Delete* | 10d | 2025-12-02 A | 2025-12-02 A | QTS-1030 SS | 100% | 2026-03-12 | 2026-03-25 | Mechanical | DELETED | DH1100 |  | Construction |  | IGMP | DH1200 |  | Phase 2 | Construction |
| QTS-19401 | DH 1200 / Electrical // Prefunctional Testing Transformers *Delete* | 10d | 2025-12-02 A | 2025-12-02 A | QTS-1030 SS | 100% | 2026-03-23 | 2026-04-03 | Electrical | DELETED | DH1100 |  | Construction |  | IGMP | DH1200 |  | Phase 2 | Construction |
| QTS-19411 | DH 2300 / Mechanical // Prefunctional Testing Chillers *Delete* | 10d | 2025-12-02 A | 2025-12-02 A | QTS-1030 SS | 100% | 2026-04-13 | 2026-04-24 | Mechanical | DELETED | DH1100 |  | Construction |  | IGMP | DH2300 |  | Phase 3 | Construction |
| QTS-19421 | DH 2300 / Mechanical // Prefunctional Testing CRAH Units 1-17 *Delete* | 10d | 2025-12-02 A | 2025-12-02 A | QTS-1030 SS | 100% | 2026-04-02 | 2026-04-15 | Mechanical | DELETED | DH1100 |  | Construction |  | IGMP | DH2300 |  | Phase 3 | Construction |
| QTS-19431 | DH 2300 / Electrical // Prefunctional Testing Transformers *Delete* | 10d | 2025-12-02 A | 2025-12-02 A | QTS-1030 SS | 100% | 2026-04-13 | 2026-04-24 | Electrical | DELETED | DH1100 |  | Construction |  | IGMP | DH2300 |  | Phase 3 | Construction |
| QTS-19441 | DH 1300 / Mechanical // Prefunctional Testing Chillers *Delete* | 10d | 2025-12-02 A | 2025-12-02 A | QTS-1030 SS | 100% | 2026-04-10 | 2026-04-23 | Electrical | DELETED | DH1100 |  | Construction |  | IGMP | DH1300 |  | Phase 3 | Construction |
| QTS-19451 | DH 1300 / Mechanical // Prefunctional Testing CRAH Units 1-17 *Delete* | 10d | 2025-12-02 A | 2025-12-02 A | QTS-1030 SS | 100% | 2026-04-09 | 2026-04-22 | Mechanical | DELETED | DH1100 |  | Construction |  | IGMP | DH1300 |  | Phase 3 | Construction |
| QTS-19461 | DH 1300 / Electrical // Prefunctional Testing Transformers *Delete* | 10d | 2025-12-02 A | 2025-12-02 A | QTS-1030 SS | 100% | 2026-04-10 | 2026-04-23 | Electrical | DELETED | DH1100 |  | Construction |  | IGMP | DH1300 |  | Phase 3 | Construction |
| QTS-19681 | DH 1100 / Electrical // Prefunctional Testing UPS Pods *Delete* | 10d | 2025-12-02 A | 2025-12-02 A | QTS-1030 SS | 100% | 2026-02-26 | 2026-03-11 | Electrical | DELETED | DH1100 |  | Construction |  | IGMP | DH1100 | Level 1 | Phase 1 | Construction |
| QTS-19691 | DH 2200 / Electrical // Prefunctional Testing UPS Pods *Delete* | 10d | 2025-12-02 A | 2025-12-02 A | QTS-1030 SS | 100% | 2026-05-05 | 2026-05-18 | Electrical | DELETED | DH1100 |  | Construction |  | IGMP | DH2200 |  | Phase 2 | Construction |
| QTS-19701 | DH 1200 / Electrical // Prefunctional Testing UPS Pods *Delete* | 10d | 2025-12-02 A | 2025-12-02 A | QTS-1030 SS | 100% | 2026-03-30 | 2026-04-10 | Electrical | DELETED | DH1100 |  | Construction |  | IGMP | DH1200 |  | Phase 2 | Construction |
| QTS-19711 | DH 2300 / Electrical // Prefunctional Testing UPS Pods *Delete* | 10d | 2025-12-02 A | 2025-12-02 A | QTS-1030 SS | 100% | 2026-04-27 | 2026-05-08 | Electrical | DELETED | DH1100 |  | Construction |  | IGMP | DH2300 |  | Phase 3 | Construction |
| QTS-19721 | DH 1300 / Electrical // Prefunctional Testing UPS Pods *Delete* | 10d | 2025-12-02 A | 2025-12-02 A | QTS-1030 SS | 100% | 2026-04-24 | 2026-05-07 | Electrical | DELETED | DH1100 |  | Construction |  | IGMP | DH1300 |  | Phase 3 | Construction |
| QTS-19751 | DH 1100 / Electrical // Prefunctional Testing MOD, COD, Chillers, CRAH, & Humidifiers *Delete* | 10d | 2025-12-02 A | 2025-12-02 A | QTS-1030 SS | 100% | 2026-03-02 | 2026-03-13 | Electrical | DELETED | DH1100 |  | Construction |  | IGMP | DH1100 | Level 1 | Phase 1 | Construction |
| QTS-19761 | DH 2200 / Electrical // Prefunctional Testing MOD, COD, Chillers, CRAH, & Humidifiers *Delete* | 10d | 2025-12-02 A | 2025-12-02 A | QTS-1030 SS | 100% | 2026-05-07 | 2026-05-20 | Electrical | DELETED | DH1100 |  | Construction |  | IGMP | DH2200 |  | Phase 2 | Construction |
| QTS-19771 | DH 1200 / Electrical // Prefunctional Testing MOD, COD, Chillers, CRAH, & Humidifiers *Delete* | 10d | 2025-12-02 A | 2025-12-02 A | QTS-1030 SS | 100% | 2026-04-01 | 2026-04-14 | Electrical | DELETED | DH1100 |  | Construction |  | IGMP | DH1200 |  | Phase 2 | Construction |
| QTS-19781 | DH 2300 / Electrical // Prefunctional Testing MOD, COD, Chillers, CRAH, & Humidifiers *Delete* | 10d | 2025-12-02 A | 2025-12-02 A | QTS-1030 SS | 100% | 2026-05-11 | 2026-05-22 | Electrical | DELETED | DH1100 |  | Construction |  | IGMP | DH2300 |  | Phase 3 | Construction |
| QTS-19791 | DH 1300 / Electrical // Prefunctional Testing MOD, COD, Chillers, CRAH, & Humidifiers *Delete* | 10d | 2025-12-02 A | 2025-12-02 A | QTS-1030 SS | 100% | 2026-05-08 | 2026-05-21 | Electrical | DELETED | DH1100 |  | Construction |  | IGMP | DH1300 |  | Phase 3 | Construction |
| QTS-19931 | DH 1100 // Commission RTU's *Delete* | 5d | 2025-12-02 A | 2025-12-02 A | QTS-1030 SS | 100% | 2026-02-26 | 2026-03-04 | Mechanical | DELETED | DH1100 |  | Construction |  | IGMP | DH1100 | Level 1 | Phase 1 | Construction |
| QTS-19941 | DH 2200 // Commission RTU's *Delete* | 5d | 2025-12-02 A | 2025-12-02 A | QTS-1030 SS | 100% | 2026-04-30 | 2026-05-06 | Mechanical | DELETED | DH1100 |  | Construction |  | IGMP | DH2200 |  | Phase 2 | Construction |
| QTS-19951 | DH 1200 // Commission RTU's *Delete* | 5d | 2025-12-02 A | 2025-12-02 A | QTS-1030 SS | 100% | 2026-03-31 | 2026-04-06 | Mechanical | DELETED | DH1100 |  | Construction |  | IGMP | DH1200 |  | Phase 2 | Construction |
| QTS-19961 | DH 2300 // Commission RTU's *Delete* | 5d | 2025-12-02 A | 2025-12-02 A | QTS-1030 SS | 100% | 2026-04-20 | 2026-04-24 | Mechanical | DELETED | DH1100 |  | Construction |  | IGMP | DH2300 |  | Phase 3 | Construction |
| QTS-19971 | DH 1300 // Commission RTU's *Delete* | 5d | 2025-12-02 A | 2025-12-02 A | QTS-1030 SS | 100% | 2026-04-20 | 2026-04-24 | Mechanical | DELETED | DH1100 |  | Construction |  | IGMP | DH1300 |  | Phase 3 | Construction |
| QTS-20061 | DH 1100 / Mechanical // Prefunctional Testing CRAH Units 18-34 *Delete* | 7d | 2025-12-02 A | 2025-12-02 A | QTS-1030 SS | 100% | 2026-02-27 | 2026-03-09 | Mechanical | DELETED | DH1100 |  | Construction |  | IGMP | DH1100 | Level 1 | Phase 1 | Construction |
| QTS-20071 | DH 1100 / Electrical // Prefunctional Testing Generators *Delete* | 10d | 2025-12-02 A | 2025-12-02 A | QTS-1030 SS | 100% | 2026-03-05 | 2026-03-18 | Electrical | DELETED | DH1100 |  | Construction |  | IGMP | DH1100 | Level 1 | Phase 1 | Construction |
| QTS-20081 | DH 2200 / Mechanical // Prefunctional Testing CRAH Units 18-34 *Delete* | 10d | 2025-12-02 A | 2025-12-02 A | QTS-1030 SS | 100% | 2026-05-01 | 2026-05-14 | Mechanical | DELETED | DH1100 |  | Construction |  | IGMP | DH2200 |  | Phase 2 | Construction |
| QTS-20091 | DH 2200 / Electrical // Prefunctional Testing Generators *Delete* | 10d | 2025-12-02 A | 2025-12-02 A | QTS-1030 SS | 100% | 2026-05-12 | 2026-05-26 | Electrical | DELETED | DH1100 |  | Construction |  | IGMP | DH2200 |  | Phase 2 | Construction |
| QTS-20101 | DH 1200 / Mechanical // Prefunctional Testing CRAH Units 18-34 *Delete* | 10d | 2025-12-02 A | 2025-12-02 A | QTS-1030 SS | 100% | 2026-03-26 | 2026-04-08 | Mechanical | DELETED | DH1100 |  | Construction |  | IGMP | DH1200 |  | Phase 2 | Construction |
| QTS-20111 | DH 1200 / Electrical // Prefunctional Testing Generators *Delete* | 10d | 2025-12-02 A | 2025-12-02 A | QTS-1030 SS | 100% | 2026-04-06 | 2026-04-17 | Electrical | DELETED | DH1100 |  | Construction |  | IGMP | DH1200 |  | Phase 2 | Construction |
| QTS-20121 | DH 2300 / Mechanical // Prefunctional Testing CRAH Units 18-34 *Delete* | 10d | 2025-12-02 A | 2025-12-02 A | QTS-1030 SS | 100% | 2026-04-16 | 2026-04-29 | Mechanical | DELETED | DH1100 |  | Construction |  | IGMP | DH2300 |  | Phase 3 | Construction |
| QTS-20131 | DH 2300 / Electrical // Prefunctional Testing Generators *Delete* | 10d | 2025-12-02 A | 2025-12-02 A | QTS-1030 SS | 100% | 2026-04-27 | 2026-05-08 | Electrical | DELETED | DH1100 |  | Construction |  | IGMP | DH2300 |  | Phase 3 | Construction |
| QTS-20141 | DH 1300 / Mechanical // Prefunctional Testing CRAH Units 18-34 *Delete* | 10d | 2025-12-02 A | 2025-12-02 A | QTS-1030 SS | 100% | 2026-04-23 | 2026-05-06 | Mechanical | DELETED | DH1100 |  | Construction |  | IGMP | DH1300 |  | Phase 3 | Construction |
| QTS-20151 | DH 1300 / Electrical // Prefunctional Testing Generators *Delete* | 10d | 2025-12-02 A | 2025-12-02 A | QTS-1030 SS | 100% | 2026-04-24 | 2026-05-07 | Electrical | DELETED | DH1100 |  | Construction |  | IGMP | DH1300 |  | Phase 3 | Construction |
| QTS-20201 | DH 1100 // Commission Chillers *Delete* | 10d | 2025-12-02 A | 2025-12-02 A | QTS-1030 SS | 100% | 2026-03-09 | 2026-03-20 | Mechanical | DELETED | DH1100 |  | Construction |  | IGMP | DH1100 | Level 1 | Phase 1 | Construction |
| QTS-20211 | DH 1100 // Commission CRAH Units 1-17 *Delete* | 10d | 2025-12-02 A | 2025-12-02 A | QTS-1030 SS | 100% | 2026-03-09 | 2026-03-20 | Mechanical | DELETED | DH1100 |  | Construction |  | IGMP | DH1100 | Level 1 | Phase 1 | Construction |
| QTS-20221 | DH 1100 / Electrical // Prefunctional Testing Transfer Switches & PDU's *Delete* | 10d | 2025-12-02 A | 2025-12-02 A | QTS-1030 SS | 100% | 2026-03-09 | 2026-03-20 | Electrical | DELETED | DH1100 |  | Construction |  | IGMP | DH1100 | Level 1 | Phase 1 | Construction |
| QTS-20231 | DH 2200 // Commission Chillers *Delete* | 10d | 2025-12-02 A | 2025-12-02 A | QTS-1030 SS | 100% | 2026-05-21 | 2026-06-04 | Mechanical | DELETED | DH1100 |  | Construction |  | IGMP | DH2200 |  | Phase 2 | Construction |
| QTS-20241 | DH 2200 // Commission CRAH Units 1-17 *Delete* | 10d | 2025-12-02 A | 2025-12-02 A | QTS-1030 SS | 100% | 2026-06-05 | 2026-06-18 | Mechanical | DELETED | DH1100 |  | Construction |  | IGMP | DH2200 |  | Phase 2 | Construction |
| QTS-20251 | DH 2200 / Electrical // Prefunctional Testing Transfer Switches & PDU's *Delete* | 10d | 2025-12-02 A | 2025-12-02 A | QTS-1030 SS | 100% | 2026-05-14 | 2026-05-28 | Electrical | DELETED | DH1100 |  | Construction |  | IGMP | DH2200 |  | Phase 2 | Construction |

Notes:
- QTS-100310: allucent_notes_20251014_152335: David Wiltberger on 2025-08-19 09:08: changed pick order / David Wiltberger on 2025-09-02 10:09: Moving to accommodate roofing in Zone 1 / David Wiltberger on 2025-09-24 04:09: BAM not completed Potential Delay / David Wiltberger on 2025-09-30 12:09: BAM did not complete / David Wiltberger on 2025-10-14 10:10: set on recovery schedule / allucent_notes: David Wiltberger on 2025-08-19 09:08: changed pick order / allucent_notes: 2025-08-19 09:08 - User: David Wiltberger - Date Added: 2025-08-19 09:08 - Note: changed pick order / 2025-09-02 10:09 - User: David Wiltberger - Date Added: 2025-09-02 10:09 - Note: Moving to accommodate roofing in Zone 1 / 2025-09-24 04:09 - User: Dav
- QTS-100320: allucent_notes_20251014_152335: David Wiltberger on 2025-08-19 09:08: changed pick order / David Wiltberger on 2025-09-02 10:09: Moving to accommodate roofing in Zone 1 / David Wiltberger on 2025-09-24 04:09: BAM not completed Potential Delay / David Wiltberger on 2025-09-30 12:09: BAM did not complete / David Wiltberger on 2025-10-14 10:10: set on recovery schedule / allucent_notes: David Wiltberger on 2025-08-19 09:08: changed pick order / allucent_notes: 2025-08-19 09:08 - User: David Wiltberger - Date Added: 2025-08-19 09:08 - Note: changed pick order / 2025-09-02 10:09 - User: David Wiltberger - Date Added: 2025-09-02 10:09 - Note: Moving to accommodate roofing in Zone 1 / 2025-09-24 04:09 - User: Dav
- QTS-100560: allucent_notes_20251014_152335: David Wiltberger on 2025-08-19 09:08: changed pick order / David Wiltberger on 2025-09-02 10:09: Moving to accommodate roofing in Zone 1 / David Wiltberger on 2025-09-24 04:09: BAM not completed Potential Delay / David Wiltberger on 2025-09-30 12:09: BAM did not complete / David Wiltberger on 2025-10-14 10:10: set on recovery schedule / allucent_notes: David Wiltberger on 2025-08-19 09:08: changed pick order / allucent_notes: 2025-08-19 09:08 - User: David Wiltberger - Date Added: 2025-08-19 09:08 - Note: changed pick order / 2025-09-02 10:09 - User: David Wiltberger - Date Added: 2025-09-02 10:09 - Note: Moving to accommodate roofing in Zone 1 / 2025-09-24 04:09 - User: Dav
- QTS-100570: allucent_notes_20251014_152335: David Wiltberger on 2025-08-19 09:08: changed pick order / David Wiltberger on 2025-09-02 10:09: Moving to accommodate roofing in Zone 1 / David Wiltberger on 2025-09-24 04:09: BAM not completed Potential Delay / David Wiltberger on 2025-09-30 12:09: BAM did not complete / David Wiltberger on 2025-10-14 10:10: set on recovery schedule / allucent_notes: David Wiltberger on 2025-08-19 09:08: changed pick order / allucent_notes: 2025-08-19 09:08 - User: David Wiltberger - Date Added: 2025-08-19 09:08 - Note: changed pick order / 2025-09-02 10:09 - User: David Wiltberger - Date Added: 2025-09-02 10:09 - Note: Moving to accommodate roofing in Zone 1 / 2025-09-24 04:09 - User: Dav
- QTS-100860: allucent_notes_20251014_152335: David Wiltberger on 2025-08-19 09:08: changed pick order / David Wiltberger on 2025-09-02 10:09: Moving to accommodate roofing in Zone 1 / David Wiltberger on 2025-09-24 04:09: BAM not completed Potential Delay / David Wiltberger on 2025-09-30 12:09: BAM did not complete / David Wiltberger on 2025-10-14 10:10: set on recovery schedule / allucent_notes: David Wiltberger on 2025-08-19 09:08: changed pick order / allucent_notes: 2025-08-19 09:08 - User: David Wiltberger - Date Added: 2025-08-19 09:08 - Note: changed pick order / 2025-09-02 10:09 - User: David Wiltberger - Date Added: 2025-09-02 10:09 - Note: Moving to accommodate roofing in Zone 1 / 2025-09-24 04:09 - User: Dav
- QTS-100870: allucent_notes_20251014_152335: David Wiltberger on 2025-08-19 09:08: changed pick order / David Wiltberger on 2025-09-02 10:09: Moving to accommodate roofing in Zone 1 / David Wiltberger on 2025-09-24 04:09: BAM not completed Potential Delay / David Wiltberger on 2025-09-30 12:09: BAM did not complete / David Wiltberger on 2025-10-14 10:10: set on recovery schedule / allucent_notes: David Wiltberger on 2025-08-19 09:08: changed pick order / allucent_notes: 2025-08-19 09:08 - User: David Wiltberger - Date Added: 2025-08-19 09:08 - Note: changed pick order / 2025-09-02 10:09 - User: David Wiltberger - Date Added: 2025-09-02 10:09 - Note: Moving to accommodate roofing in Zone 1 / 2025-09-24 04:09 - User: Dav
- QTS-101100: allucent_notes_20251014_152335: David Wiltberger on 2025-08-19 09:08: changed pick order / David Wiltberger on 2025-09-02 10:09: Moving to accommodate roofing in Zone 1 / David Wiltberger on 2025-09-24 04:09: BAM not completed Potential Delay / David Wiltberger on 2025-09-30 12:09: BAM did not complete / David Wiltberger on 2025-10-14 10:10: set on recovery schedule / allucent_notes: David Wiltberger on 2025-08-19 09:08: changed pick order
- QTS-101110: allucent_notes_20251014_152335: David Wiltberger on 2025-08-19 09:08: changed pick order / David Wiltberger on 2025-09-02 10:09: Moving to accommodate roofing in Zone 1 / David Wiltberger on 2025-09-24 04:09: BAM not completed Potential Delay / David Wiltberger on 2025-09-30 12:09: BAM did not complete / David Wiltberger on 2025-10-14 10:10: set on recovery schedule / allucent_notes: David Wiltberger on 2025-08-19 09:08: changed pick order
- QTS-101340: allucent_notes_20251014_152335: David Wiltberger on 2025-08-19 09:08: changed pick order / David Wiltberger on 2025-09-02 10:09: Moving to accommodate roofing in Zone 1 / David Wiltberger on 2025-09-24 04:09: BAM not completed Potential Delay / David Wiltberger on 2025-09-30 12:09: BAM did not complete / David Wiltberger on 2025-10-14 10:10: set on recovery schedule / allucent_notes: David Wiltberger on 2025-08-19 09:08: changed pick order / allucent_notes: 2025-08-19 09:08 - User: David Wiltberger - Date Added: 2025-08-19 09:08 - Note: changed pick order / 2025-09-02 10:09 - User: David Wiltberger - Date Added: 2025-09-02 10:09 - Note: Moving to accommodate roofing in Zone 1 / 2025-09-24 04:09 - User: Dav
- QTS-101350: allucent_notes_20251014_152335: David Wiltberger on 2025-08-19 09:08: changed pick order / David Wiltberger on 2025-09-02 10:09: Moving to accommodate roofing in Zone 1 / David Wiltberger on 2025-09-24 04:09: BAM not completed Potential Delay / David Wiltberger on 2025-09-30 12:09: BAM did not complete / David Wiltberger on 2025-10-14 10:10: set on recovery schedule / allucent_notes: David Wiltberger on 2025-08-19 09:08: changed pick order / allucent_notes: 2025-08-19 09:08 - User: David Wiltberger - Date Added: 2025-08-19 09:08 - Note: changed pick order / 2025-09-02 10:09 - User: David Wiltberger - Date Added: 2025-09-02 10:09 - Note: Moving to accommodate roofing in Zone 1 / 2025-09-24 04:09 - User: Dav
- QTS-101580: allucent_notes_20251014_152335: David Wiltberger on 2025-08-19 09:08: changed pick order / David Wiltberger on 2025-09-02 10:09: Moving to accommodate roofing in Zone 1 / David Wiltberger on 2025-09-24 04:09: BAM not completed Potential Delay / David Wiltberger on 2025-09-30 12:09: BAM did not complete / David Wiltberger on 2025-10-14 10:10: set on recovery schedule / allucent_notes: David Wiltberger on 2025-08-19 09:08: changed pick order / allucent_notes: 2025-08-19 09:08 - User: David Wiltberger - Date Added: 2025-08-19 09:08 - Note: changed pick order / 2025-09-02 10:09 - User: David Wiltberger - Date Added: 2025-09-02 10:09 - Note: Moving to accommodate roofing in Zone 1 / 2025-09-24 04:09 - User: Dav
- QTS-101590: allucent_notes_20251014_152335: David Wiltberger on 2025-08-19 09:08: changed pick order / David Wiltberger on 2025-09-02 10:09: Moving to accommodate roofing in Zone 1 / David Wiltberger on 2025-09-24 04:09: BAM not completed Potential Delay / David Wiltberger on 2025-09-30 12:09: BAM did not complete / David Wiltberger on 2025-10-14 10:10: set on recovery schedule / allucent_notes: David Wiltberger on 2025-08-19 09:08: changed pick order / allucent_notes: 2025-08-19 09:08 - User: David Wiltberger - Date Added: 2025-08-19 09:08 - Note: changed pick order / 2025-09-02 10:09 - User: David Wiltberger - Date Added: 2025-09-02 10:09 - Note: Moving to accommodate roofing in Zone 1 / 2025-09-24 04:09 - User: Dav

| ID | Activity | Duration | Start | Finish | Predecessors | Complete | Planned start | Planned finish | Project Section | Layton Discipline | Baseline | Phase-1-1 | Project Section-1 | Location | DELETED | D | Level | TFO-CONST ONLY | Contract | NICK | Allucent CSI Group | Phase-1 |
| --- | --- | --- | --- | --- | --- | --- | --- | --- | --- | --- | --- | --- | --- | --- | --- | --- | --- | --- | --- | --- | --- | --- |
| QTS-20261 | DH 1200 // Commission Chillers *Delete* | 10d | 2025-12-02 A | 2025-12-02 A | QTS-1030 SS | 100% | 2026-04-15 | 2026-04-28 | Construction | Mechanical | IGMP | Phase 2 | Construction | DH1200 | DELETED | DH1100 |  |  |  |  |  |  |
| QTS-20271 | DH 1200 // Commission CRAH Units 1-17 *Delete* | 10d | 2025-12-02 A | 2025-12-02 A | QTS-1030 SS | 100% | 2026-04-29 | 2026-05-12 | Construction | Mechanical | IGMP | Phase 2 | Construction | DH1200 | DELETED | DH1100 |  |  |  |  |  |  |
| QTS-20281 | DH 1200 / Electrical // Prefunctional Testing Transfer Switches & PDU's *Delete* | 10d | 2025-12-02 A | 2025-12-02 A | QTS-1030 SS | 100% | 2026-04-08 | 2026-04-21 | Construction | Electrical | IGMP | Phase 2 | Construction | DH1200 | DELETED | DH1100 |  |  |  |  |  |  |
| QTS-20291 | DH 2300 // Commission Chillers *Delete* | 10d | 2025-12-02 A | 2025-12-02 A | QTS-1030 SS | 100% | 2026-05-26 | 2026-06-08 | Construction | Electrical | IGMP | Phase 3 | Construction | DH2300 | DELETED | DH1100 |  |  |  |  |  |  |
| QTS-20301 | DH 2300 // Commission CRAH Units 1-17 *Delete* | 10d | 2025-12-02 A | 2025-12-02 A | QTS-1030 SS | 100% | 2026-06-09 | 2026-06-22 | Construction | Mechanical | IGMP | Phase 3 | Construction | DH2300 | DELETED | DH1100 |  |  |  |  |  |  |
| QTS-20311 | DH 2300 / Electrical // Prefunctional Testing Transfer Switches & PDU's *Delete* | 10d | 2025-12-02 A | 2025-12-02 A | QTS-1030 SS | 100% | 2026-05-18 | 2026-06-01 | Construction | Electrical | IGMP | Phase 3 | Construction | DH2300 | DELETED | DH1100 |  |  |  |  |  |  |
| QTS-20321 | DH 1300 // Commission Chillers *Delete* | 10d | 2025-12-02 A | 2025-12-02 A | QTS-1030 SS | 100% | 2026-05-22 | 2026-06-05 | Construction | Mechanical | IGMP | Phase 3 | Construction | DH1300 | DELETED | DH1100 |  |  |  |  |  |  |
| QTS-20331 | DH 1300 // Commission CRAH Units 1-17 *Delete* | 10d | 2025-12-02 A | 2025-12-02 A | QTS-1030 SS | 100% | 2026-06-08 | 2026-06-19 | Construction | Mechanical | IGMP | Phase 3 | Construction | DH1300 | DELETED | DH1100 |  |  |  |  |  |  |
| QTS-20341 | DH 1300 / Electrical // Prefunctional Testing Transfer Switches & PDU's *Delete* | 10d | 2025-12-02 A | 2025-12-02 A | QTS-1030 SS | 100% | 2026-05-15 | 2026-05-29 | Construction | Electrical | IGMP | Phase 3 | Construction | DH1300 | DELETED | DH1100 |  |  |  |  |  |  |
| QTS-20571 | DH 1100 // Commission Generators *Delete* | 10d | 2025-12-02 A | 2025-12-02 A | QTS-1030 SS | 100% | 2026-03-13 | 2026-03-26 | Construction | Electrical | IGMP | Phase 1 | Construction | DH1100 | DELETED | DH1100 | Level 1 |  |  |  |  |  |
| QTS-20581 | DH 2200 // Commission Generators *Delete* | 10d | 2025-12-02 A | 2025-12-02 A | QTS-1030 SS | 100% | 2026-05-27 | 2026-06-09 | Construction | Electrical | IGMP | Phase 2 | Construction | DH2200 | DELETED | DH1100 |  |  |  |  |  |  |
| QTS-20591 | DH 1200 // Commission Generators *Delete* | 10d | 2025-12-02 A | 2025-12-02 A | QTS-1030 SS | 100% | 2026-04-13 | 2026-04-24 | Construction | Electrical | IGMP | Phase 2 | Construction | DH1200 | DELETED | DH1100 |  |  |  |  |  |  |
| QTS-20601 | DH 2300 // Commission Generators *Delete* | 10d | 2025-12-02 A | 2025-12-02 A | QTS-1030 | 100% | 2026-05-04 | 2026-05-15 | Construction | Mechanical | IGMP | Phase 3 | Construction | DH2300 | DELETED | DH1100 |  |  |  |  |  |  |
| QTS-20611 | DH 1300 // Commission Generators *Delete* | 10d | 2025-12-02 A | 2025-12-02 A | QTS-1030 SS | 100% | 2026-05-01 | 2026-05-14 | Construction | Electrical | IGMP | Phase 3 | Construction | DH1300 | DELETED | DH1100 |  |  |  |  |  |  |
| QTS-21101 | DH 1100 / Mechanical // Prefunctional Testing Humidifiers *Delete* | 5d | 2025-12-02 A | 2025-12-02 A | QTS-1030 SS | 100% | 2026-03-10 | 2026-03-16 | Construction | Mechanical | IGMP | Phase 1 | Construction | DH1100 | DELETED | DH1100 | Level 1 |  |  |  |  |  |
| QTS-21111 | DH 2200 / Mechanical // Prefunctional Testing Humidifiers *Delete* | 5d | 2025-12-02 A | 2025-12-02 A | QTS-1030 SS | 100% | 2026-05-15 | 2026-05-21 | Construction | Mechanical | IGMP | Phase 2 | Construction | DH2200 | DELETED | DH1100 |  |  |  |  |  |  |
| QTS-21121 | DH 1200 / Mechanical // Prefunctional Testing Humidifiers *Delete* | 5d | 2025-12-02 A | 2025-12-02 A | QTS-1030 SS | 100% | 2026-04-09 | 2026-04-15 | Construction | Mechanical | IGMP | Phase 2 | Construction | DH1200 | DELETED | DH1100 |  |  |  |  |  |  |
| QTS-21131 | DH 2300 / Mechanical // Prefunctional Testing Humidifiers *Delete* | 5d | 2025-12-02 A | 2025-12-02 A | QTS-1030 SS | 100% | 2026-04-30 | 2026-05-06 | Construction | Mechanical | IGMP | Phase 3 | Construction | DH2300 | DELETED | DH1100 |  |  |  |  |  |  |
| QTS-21141 | DH 1300 / Mechanical // Prefunctional Testing Humidifiers *Delete* | 5d | 2025-12-02 A | 2025-12-02 A | QTS-1030 SS | 100% | 2026-05-07 | 2026-05-13 | Construction | Mechanical | IGMP | Phase 3 | Construction | DH1300 | DELETED | DH1100 |  |  |  |  |  |  |
| QTS-21191 | DH 1100 // Commission CRAH Units 18-34 *Delete* | 10d | 2025-12-02 A | 2025-12-02 A | QTS-1030 SS | 100% | 2026-03-23 | 2026-04-03 | Construction | Mechanical | IGMP | Phase 1 | Construction | DH1100 | DELETED | DH1100 | Level 1 |  |  |  |  |  |
| QTS-21201 | DH 2200 // Commission CRAH Units 18-34 *Delete* | 10d | 2025-12-02 A | 2025-12-02 A | QTS-1030 SS | 100% | 2026-06-19 | 2026-07-02 | Construction | Mechanical | IGMP | Phase 2 | Construction | DH2200 | DELETED | DH1100 |  |  |  |  |  |  |
| QTS-21211 | DH 1200 // Commission CRAH Units 18-34 *Delete* | 10d | 2025-12-02 A | 2025-12-02 A | QTS-1030 SS | 100% | 2026-05-13 | 2026-05-27 | Construction | Mechanical | IGMP | Phase 2 | Construction | DH1200 | DELETED | DH1100 |  |  |  |  |  |  |
| QTS-21221 | DH 2300 // Commission CRAH Units 18-34 *Delete* | 10d | 2025-12-02 A | 2025-12-02 A | QTS-1030 SS | 100% | 2026-06-23 | 2026-07-07 | Construction | Mechanical | IGMP | Phase 3 | Construction | DH2300 | DELETED | DH1100 |  |  |  |  |  |  |
| QTS-21231 | DH 1300 // Commission CRAH Units 18-34 *Delete* | 10d | 2025-12-02 A | 2025-12-02 A | QTS-1030 SS | 100% | 2026-06-22 | 2026-07-06 | Construction | Mechanical | IGMP | Phase 3 | Construction | DH1300 | DELETED | DH1100 |  |  |  |  |  |  |
| QTS-21551 | DH 1100 // Commission Humidifiers *Delete* | 5d | 2025-12-02 A | 2025-12-02 A | QTS-1030 SS | 100% | 2026-03-17 | 2026-03-23 | Construction | Mechanical | IGMP | Phase 1 | Construction | DH1100 | DELETED | DH1100 | Level 1 |  |  |  |  |  |
| QTS-21561 | DH 2200 // Commission Humidifiers *Delete* | 5d | 2025-12-02 A | 2025-12-02 A | QTS-1030 SS | 100% | 2026-05-22 | 2026-05-29 | Construction | Mechanical | IGMP | Phase 2 | Construction | DH2200 | DELETED | DH1100 |  |  |  |  |  |  |
| QTS-21571 | DH 1200 // Commission Humidifiers *Delete* | 5d | 2025-12-02 A | 2025-12-02 A | QTS-1030 SS | 100% | 2026-04-16 | 2026-04-22 | Construction | Mechanical | IGMP | Phase 2 | Construction | DH1200 | DELETED | DH1100 |  |  |  |  |  |  |
| QTS-21581 | DH 2300 // Commission Humidifiers *Delete* | 5d | 2025-12-02 A | 2025-12-02 A | QTS-1030 SS | 100% | 2026-05-07 | 2026-05-13 | Construction | Mechanical | IGMP | Phase 3 | Construction | DH2300 | DELETED | DH1100 |  |  |  |  |  |  |
| QTS-21591 | DH 1300 // Commission Humidifiers *Delete* | 5d | 2025-12-02 A | 2025-12-02 A | QTS-1030 SS | 100% | 2026-05-14 | 2026-05-20 | Construction | Mechanical | IGMP | Phase 3 | Construction | DH1300 | DELETED | DH1100 |  |  |  |  |  |  |
| QTS-21891 | DH 1100 // Integrated Systems Testing *Delete* | 5d | 2025-12-02 A | 2025-12-02 A | QTS-1030 SS | 100% | 2026-04-08 | 2026-04-14 | Construction | Commissioning | IGMP | Phase 1 | Construction | DH1100 | DELETED | DH1100 | Level 1 |  |  |  |  |  |
| QTS-21901 | DH 2200 // Integrated Systems Testing *Delete* | 5d | 2025-12-02 A | 2025-12-02 A | QTS-1030 SS | 100% | 2026-07-06 | 2026-07-10 | Construction | Commissioning | IGMP | Phase 2 | Construction | DH2200 | DELETED | DH1100 |  |  |  |  |  |  |
| QTS-21911 | DH 1200 // Integrated Systems Testing *Delete* | 5d | 2025-12-02 A | 2025-12-02 A | QTS-1030 SS | 100% | 2026-05-28 | 2026-06-03 | Construction | Commissioning | IGMP | Phase 2 | Construction | DH1200 | DELETED | DH1100 |  |  |  |  |  |  |
| QTS-21921 | DH 2300 // Integrated Systems Testing *Delete* | 5d | 2025-12-02 A | 2025-12-02 A | QTS-1030 SS | 100% | 2026-07-08 | 2026-07-14 | Construction | Commissioning | IGMP | Phase 3 | Construction | DH2300 | DELETED | DH1100 |  |  |  |  |  |  |
| QTS-21931 | DH 1300 // Integrated Systems Testing *Delete* | 5d | 2025-12-02 A | 2025-12-02 A | QTS-1030 SS | 100% | 2026-07-07 | 2026-07-13 | Construction | Commissioning | IGMP | Phase 3 | Construction | DH1300 | DELETED | DH1100 |  |  |  |  |  |  |
| QTS-28581 | DH 2100 / Electrical // Energization *Delete* | 10d | 2025-12-02 A | 2025-12-02 A | QTS-1030 SS | 100% | 2026-02-06 | 2026-02-19 | Construction | Electrical | IGMP | Phase 1 | Construction | DH2100 | DELETED | DH1100 | Level 2 |  |  |  |  |  |
| QTS-28721 | DH 2100, FOH, BOH / Mechanical // Test & Balance RTU's *Delete* | 10d | 2025-12-02 A | 2025-12-02 A | QTS-1030 SS | 100% | 2026-02-13 | 2026-02-26 | Construction | Mechanical | IGMP | Phase 1 | Construction | DH2100 | DELETED | DH1100 | Level 2 |  |  |  |  |  |
| QTS-28861 | DH 2100 / Mechanical // Prefunctional Testing Chillers *Delete* | 10d | 2025-12-02 A | 2025-12-02 A | QTS-1030 SS | 100% | 2026-02-20 | 2026-03-05 | Construction | Mechanical | IGMP | Phase 1 | Construction | DH2100 | DELETED | DH1100 | Level 2 |  |  |  |  |  |
| QTS-28871 | DH 2100 / Mechanical // Prefunctional Testing CRAH Units 1-17 *Delete* | 10d | 2025-12-02 A | 2025-12-02 A | QTS-1030 SS | 100% | 2026-02-25 | 2026-03-10 | Construction | Mechanical | IGMP | Phase 1 | Construction | DH2100 | DELETED | DH1100 | Level 2 |  |  |  |  |  |
| QTS-28881 | DH 2100 / Electrical // Prefunctional Testing Transformers *Delete* | 10d | 2025-12-02 A | 2025-12-02 A | QTS-1030 SS | 100% | 2026-02-20 | 2026-03-05 | Construction | Electrical | IGMP | Phase 1 | Construction | DH2100 | DELETED | DH1100 | Level 2 |  |  |  |  |  |
| QTS-29131 | DH 2100 / Electrical // Prefunctional Testing UPS Pods *Delete* | 10d | 2025-12-02 A | 2025-12-02 A | QTS-1030 SS | 100% | 2026-02-27 | 2026-03-12 | Construction | Electrical | IGMP | Phase 1 | Construction | DH2100 | DELETED | DH1100 | Level 2 |  |  |  |  |  |
| QTS-29141 | DH 2100 / Electrical // Prefunctional Testing MOD, COD, Chillers, CRAH, & Humidifiers *Delete* | 10d | 2025-12-02 A | 2025-12-02 A | QTS-1030 SS | 100% | 2026-03-03 | 2026-03-16 | Construction | Electrical | IGMP | Phase 1 | Construction | DH2100 | DELETED | DH1100 | Level 2 |  |  |  |  |  |
| QTS-29311 | DH 2100 // Commission RTU's *Delete* | 5d | 2025-12-02 A | 2025-12-02 A | QTS-1030 SS | 100% | 2026-02-27 | 2026-03-05 | Construction | Mechanical | IGMP | Phase 1 | Construction | DH2100 | DELETED | DH1100 | Level 2 |  |  |  |  |  |
| QTS-29381 | DH 2100 / Mechanical // Prefunctional Testing CRAH Units 18-34 *Delete* | 10d | 2025-12-02 A | 2025-12-02 A | QTS-1030 SS | 100% | 2026-03-11 | 2026-03-24 | Construction | Mechanical | IGMP | Phase 1 | Construction | DH2100 | DELETED | DH1100 | Level 2 |  |  |  |  |  |
| QTS-29391 | DH 2100 / Electrical // Prefunctional Testing Generators *Delete* | 10d | 2025-12-02 A | 2025-12-02 A | QTS-1030 SS | 100% | 2026-03-06 | 2026-03-19 | Construction | Electrical | IGMP | Phase 1 | Construction | DH2100 | DELETED | DH1100 | Level 2 |  |  |  |  |  |
| QTS-29431 | DH 2100 // Commission Chillers *Delete* | 10d | 2025-12-02 A | 2025-12-02 A | QTS-1030 SS | 100% | 2026-03-10 | 2026-03-23 | Construction | Mechanical | IGMP | Phase 1 | Construction | DH2100 | DELETED | DH1100 | Level 2 |  |  |  |  |  |
| QTS-29441 | DH 2100 // Commission CRAH Units 1-17 *Delete* | 10d | 2025-12-02 A | 2025-12-02 A | QTS-1030 SS | 100% | 2026-03-11 | 2026-03-24 | Construction | Mechanical | IGMP | Phase 1 | Construction | DH2100 | DELETED | DH1100 | Level 2 |  |  |  |  |  |
| QTS-29451 | DH 2100 / Electrical // Prefunctional Testing Transfer Switches & PDU's *Delete* | 10d | 2025-12-02 A | 2025-12-02 A | QTS-1030 SS | 100% | 2026-03-10 | 2026-03-23 | Construction | Electrical | IGMP | Phase 1 | Construction | DH2100 | DELETED | DH1100 | Level 2 |  |  |  |  |  |
| QTS-29641 | DH 2100 // Commission Generators *Delete* | 10d | 2025-12-02 A | 2025-12-02 A | QTS-1030 SS | 100% | 2026-03-20 | 2026-04-02 | Construction | Electrical | IGMP | Phase 1 | Construction | DH2100 | DELETED | DH1100 | Level 2 |  |  |  |  |  |
| QTS-29791 | DH 2100 / Mechanical // Prefunctional Testing Humidifiers *Delete* | 5d | 2025-12-02 A | 2025-12-02 A | QTS-1030 SS | 100% | 2026-03-25 | 2026-03-31 | Construction | Mechanical | IGMP | Phase 1 | Construction | DH2100 | DELETED | DH1100 | Level 2 |  |  |  |  |  |
| QTS-29801 | DH 2100 // Commission CRAH Units 18-34 *Delete* | 10d | 2025-12-02 A | 2025-12-02 A | QTS-1030 SS | 100% | 2026-03-25 | 2026-04-07 | Construction | Mechanical | IGMP | Phase 1 | Construction | DH2100 | DELETED | DH1100 | Level 2 |  |  |  |  |  |
| QTS-30031 | DH 2100 // Commission Humidifiers *Delete* | 5d | 2025-12-02 A | 2025-12-02 A | QTS-1030 SS | 100% | 2026-04-01 | 2026-04-07 | Construction | Mechanical | IGMP | Phase 1 | Construction | DH2100 | DELETED | DH1100 | Level 2 |  |  |  |  |  |
| QTS-30261 | DH 2100 // Integrated Systems Testing *Delete* | 5d | 2025-12-02 A | 2025-12-02 A | QTS-1030 SS | 100% | 2026-04-08 | 2026-04-14 | Construction | Commissioning | IGMP | Phase 1 | Construction | DH2100 | DELETED | DH1100 | Level 2 |  |  |  |  |  |
| QTS-15891 | DH 2200 / Mechanical Yard // Measure for FRP Platforms *Delete* | 1d | 2025-12-03 A | 2025-12-03 A | QTS-1030 SS | 100% |  |  | Construction | Core & Shell | IGMP | Phase 2 | Construction | Gen Yard | DELETED | DH1100 | Level 1 | TFO CONST | TFO | NICK |  |  |
| QTS-15921 | DH 1200 / Mechanical Yard // Measure for FRP Platforms *Delete* | 1d | 2025-12-03 A | 2025-12-03 A | QTS-1030 SS | 100% |  |  | Construction | Core & Shell | IGMP | Phase 2 | Construction | Gen Yard | DELETED | DH1100 | Level 1 | TFO CONST | TFO | NICK |  |  |
| QTS-15951 | DH 2300 / Mechanical Yard // Measure for FRP Platforms *Delete* | 1d | 2025-12-03 A | 2025-12-03 A | QTS-1030 SS | 100% |  |  | Construction | Core & Shell | IGMP | Phase 3 | Construction | Gen Yard | DELETED | DH1100 | Level 1 | TFO CONST | TFO | NICK |  |  |
| QTS-15981 | DH 1300 / Mechanical Yard // Measure for FRP Platforms *Delete* | 1d | 2025-12-03 A | 2025-12-03 A | QTS-1030 SS | 100% |  |  | Construction | Core & Shell | IGMP | Phase 3 | Construction | Gen Yard | DELETED | DH1100 | Level 1 | TFO CONST | TFO | NICK |  |  |
| QTS-20451 | Zone 3 Gridlines 30-41 Corridor 2307 // In Wall Rough Plumbing *Delete* | 5d | 2025-12-03 A | 2025-12-03 A | QTS-1030 SS | 100% | 2025-12-10 | 2025-12-16 | Construction | Mechanical | IGMP |  |  |  | DELETED | DH1100 | Level 2 |  |  |  | 01ADMIN |  |
| QTS-21281 | Zone 3 Gridlines 30-41 Corridor 1012 // In Wall Rough Plumbing *Delete* | 10d | 2025-12-03 A | 2025-12-03 A | QTS-1030 SS | 100% | 2025-12-10 | 2025-12-23 | Construction | Mechanical | IGMP |  |  |  | DELETED | DH1100 | Level 1 |  |  |  | 01ADMIN |  |
| QTS-24011 | Zone 3 Gridlines 30-41 Corridor 1012 // Overhead Door Install *Delete* | 6d | 2025-12-03 A | 2025-12-03 A | QTS-1030 SS | 100% | 2025-12-10 | 2025-12-17 | Construction | Build Out | IGMP |  |  |  | DELETED | DH1100 | Level 1 |  |  |  |  |  |
| QTS-24031 | Zone 2 Gridline 21-30 / Corridor 2010 // Overhead Door Install *Delete* | 6d | 2025-12-03 A | 2025-12-03 A | QTS-1030 SS | 100% | 2026-01-29 | 2026-02-05 | Construction | Build Out | IGMP |  |  |  | DELETED | DH1100 | Level 2 |  |  |  |  |  |
| QTS-24041 | Zone 3 Gridlines 30-41 Corridor 2307 // Overhead Door Install *Delete* | 6d | 2025-12-03 A | 2025-12-03 A | QTS-1030 SS | 100% | 2025-12-10 | 2025-12-17 | Construction | Build Out | IGMP |  |  |  | DELETED | DH1100 | Level 2 |  |  |  |  |  |
| QTS-24131 | Zone 3 Gridlines 30-41 Corridor 1012 // Rough Electrical & Security to Overhead Door *Delete* | 4d | 2025-12-03 A | 2025-12-03 A | QTS-1030 SS | 100% | 2025-12-10 | 2025-12-15 | Construction | Electrical | IGMP |  |  |  | DELETED | DH1100 | Level 1 |  |  |  |  |  |
| QTS-24151 | Zone 2 Gridline 21-30 / Corridor 2010 // Rough Electrical & Security to Overhead Door *Delete* | 4d | 2025-12-03 A | 2025-12-03 A | QTS-1030 SS | 100% | 2026-02-06 | 2026-02-11 | Construction | Electrical | IGMP |  |  |  | DELETED | DH1100 | Level 2 |  |  |  |  |  |
| QTS-24161 | Zone 3 Gridlines 30-41 Corridor 2307 // Rough Electrical & Security to Overhead Door *Delete* | 4d | 2025-12-03 A | 2025-12-03 A | QTS-1030 SS | 100% | 2025-12-18 | 2025-12-23 | Construction | Electrical | IGMP |  |  |  | DELETED | DH1100 | Level 2 |  |  |  |  |  |
| QTS-28031 | Electrical Room #0172 // Install Cable Racks *Delete* | 5d | 2025-12-03 A | 2025-12-03 A | QTS-1030 SS | 100% | 2025-12-10 | 2025-12-16 | Construction | Electrical | IGMP |  |  | FOH | DELETED | DH1100 | Level 1 |  |  |  | 01ADMIN | Phase 1 |
| QTS-28961 | Electrical Room #2085 // Install Cable Racks *Delete* | 5d | 2025-12-03 A | 2025-12-03 A | QTS-1030 SS | 100% | 2025-12-03 | 2025-12-09 | Construction | Electrical | IGMP |  |  | BOH | DELETED | DH1100 | Level 2 |  |  |  |  | Phase 1 |
| QTS-43641 | Zone 2 Gridline 21-30 / Corridor 2010 // Rough Overhead Ductwork Gridline 24-27 *Delete* | 3d | 2025-12-03 A | 2025-12-03 A | QTS-1030 SS | 100% | 2025-12-10 | 2025-12-12 | Construction | Mechanical | IGMP |  | Construction |  | DELETED | DH1100 | Level 2 |  |  |  |  |  |
| QTS-43651 | Zone 2 Gridline 21-30 / Corridor 2010 // Rough Overhead Ductwork Gridline 27-30 *Delete* | 3d | 2025-12-03 A | 2025-12-03 A | QTS-1030 SS | 100% | 2025-12-10 | 2025-12-12 | Construction | Mechanical | IGMP |  | Construction |  | DELETED | DH1100 | Level 2 |  |  |  |  |  |
| QTS-43661 | Zone 3 Gridlines 30-41 Corridor 2307 // Rough Overhead Ductwork Gridlines 34-37 *Delete* | 8d | 2025-12-03 A | 2025-12-03 A | QTS-1030 SS | 100% | 2025-12-10 | 2025-12-19 | Construction | Mechanical | IGMP |  | Construction |  | DELETED | DH1100 | Level 2 |  |  |  |  |  |
| QTS-43671 | Zone 3 Gridlines 30-41 Corridor 2307 // Rough Overhead Ductwork Gridlines 37-41 *Delete* | 8d | 2025-12-03 A | 2025-12-03 A | QTS-1030 SS | 100% | 2025-12-10 | 2025-12-19 | Construction | Mechanical | IGMP |  | Construction |  | DELETED | DH1100 | Level 2 |  |  |  |  |  |

Notes:
- QTS-20451: allucent_notes_20251209_203830: David Wiltberger on 2025-10-21 13:10: Wall needs to be built, and wall insulated prior to install / Zack Goertz on 2025-11-17 13:11: Zone 3 is last priority. Framing has barely begun on level 2. Plus, a stop work has been issued. / Zack Goertz on 2025-12-01 10:37: Zone 3 is not a priority right now / Zack Goertz on 2025-12-09 10:54: Not a priority over zone 2. Zone 2 is behind / allucent_notes_20251202_153722: David Wiltberger on 2025-10-21 13:10: Wall needs to be built, and wall insulated prior to install / Zack Goertz on 2025-11-17 13:11: Zone 3 is last priority. Framing has barely begun on level 2. Plus, a stop work has been issued. / Zack Goertz on 2025-12-01 10:37: Zone 3 is not a priority right now / allucent_notes_20251118_192630: David Wiltberger on 2025-10-21 13:10: Wall needs to be built, and wall insulated prior to install / Zack Goertz on 2025-11-17 13:11: Zone 3 is last priority. Framing has barely begun on level 2. Plus, a stop work has been issued. / allucent_notes_20251111_182405: David Wiltberger on 2025-10-21 13:10: Wall needs to be built, and wall insulated prior to install / allucent_notes_20251104_160200: David Wiltberger on 2025-10-21 13:10: Wall needs to be built, and wall insulated prior to install / allucent_notes_20251028_163138: David Wiltberger on 2025-10-21 13:10: Wall needs to be built, and wall insulated prior to install / allucent_notes_20251027_224008: David Wiltberger on 2025-10-21 13:10: Wall needs to be built, and wall insulated prior to install / allucent_notes_20251021_145627: David Wiltberger on 2025-10-21 13:10: Wall needs to be built, and wall insulated prior to install / allucent_notes: 2025-10-21 13:10 - User: David Wiltberger - Date Added: 2025-10-21 13:10 - Note: Wall needs to be built, and wall insulated prior to install / 2025-11-17 13:11 - User: Zack Goertz - Date Added: 2025-11-17 13:11 - Note: Zone 3 is last priority. Framing ha

| ID | Activity | Duration | Start | Finish | Predecessors | Complete | Planned start | Planned finish | Calendar | Allucent CSI Group | Project Section | Layton Discipline | Baseline | Phase-1-1 | Project Section-1 | Location | Level | DELETED | D | Vendor Responsible Party | CX Level | Equipment | Notes | Phase-1 |
| --- | --- | --- | --- | --- | --- | --- | --- | --- | --- | --- | --- | --- | --- | --- | --- | --- | --- | --- | --- | --- | --- | --- | --- | --- |
| QTS-44231 | Electrical Room #0172 // Rough In Electrical - Cable Racks *Delete* | 10d | 2025-12-03 A | 2025-12-03 A | QTS-1030 SS | 100% | 2025-12-10 | 2025-12-23 |  | 01ADMIN | Construction | Electrical | IGMP | Phase 1 | Construction | FOH | Level 1 | DELETED | DH1100 |  |  |  |  |  |
| QTS-45681 | Gallery 2102 / Lineup A2100 // OFCI - L2 SET IN PLACE - Eq Type # - MPZ Panel - 2 unit *Delete* | 2d | 2025-12-03 A | 2025-12-03 A | QTS-1030 SS | 100% | 2025-12-12 | 2025-12-15 |  | 01ADMIN | Construction | Electrical | IGMP | Phase 1 | Construction | DH2100 | Level 2 | DELETED | DH1100 |  |  |  |  |  |
| QTS-45701 | Gallery 2102 / Lineup A2100 // Pull & Terminate LV Cables from POD to MPZ Panel *Delete* | 2d | 2025-12-03 A | 2025-12-03 A | QTS-1030 SS | 100% | 2025-12-16 | 2025-12-17 |  | 01ADMIN | Construction | Electrical | IGMP | Phase 1 | Construction | DH2100 | Level 2 | DELETED | DH1100 |  |  |  |  |  |
| QTS-46081 | Gallery 2102 / Lineup B2100 // OFCI - L2 SET IN PLACE - Eq Type # - MPZ Panel - 2 unit *Delete* | 2d | 2025-12-03 A | 2025-12-03 A | QTS-1030 SS | 100% | 2025-12-11 | 2025-12-12 |  | 01ADMIN | Construction | Electrical | IGMP | Phase 1 | Construction | DH2100 | Level 2 | DELETED | DH1100 |  |  |  |  |  |
| QTS-46091 | Gallery 2102 / Lineup B2100 // Pull & Terminate LV Cables from POD to MPZ Panel *Delete* | 2d | 2025-12-03 A | 2025-12-03 A | QTS-1030 SS | 100% | 2025-12-15 | 2025-12-16 |  | 01ADMIN | Construction | Electrical | IGMP | Phase 1 | Construction | DH2100 | Level 2 | DELETED | DH1100 |  |  |  |  |  |
| QTS-46101 | Gallery 2102 / Lineup C2100 // OFCI - L2 SET IN PLACE - Eq Type # - MPZ Panel - 2 unit *Delete* | 2d | 2025-12-03 A | 2025-12-03 A | QTS-1030 SS | 100% | 2025-12-15 | 2025-12-16 |  | 01ADMIN | Construction | Electrical | IGMP | Phase 1 | Construction | DH2100 | Level 2 | DELETED | DH1100 |  |  |  |  |  |
| QTS-46111 | Gallery 2102 / Lineup C2100 // Pull & Terminate LV Cables from POD to MPZ Panel *Delete* | 2d | 2025-12-03 A | 2025-12-03 A | QTS-1030 SS | 100% | 2025-12-17 | 2025-12-18 |  | 01ADMIN | Construction | Electrical | IGMP | Phase 1 | Construction | DH2100 | Level 2 | DELETED | DH1100 |  |  |  |  |  |
| QTS-46121 | Gallery 2102 / Lineup D2100 // OFCI - L2 SET IN PLACE - Eq Type # - MPZ Panel - 2 unit *Delete* | 2d | 2025-12-03 A | 2025-12-03 A | QTS-1030 SS | 100% | 2025-12-17 | 2025-12-18 |  | 01ADMIN | Construction | Electrical | IGMP | Phase 1 | Construction | DH2100 | Level 2 | DELETED | DH1100 |  |  |  |  |  |
| QTS-46131 | Gallery 2102 / Lineup D2100 // Pull & Terminate LV Cables from POD to MPZ Panel *Delete* | 2d | 2025-12-03 A | 2025-12-03 A | QTS-1030 SS | 100% | 2025-12-19 | 2025-12-22 |  | 01ADMIN | Construction | Electrical | IGMP | Phase 1 | Construction | DH2100 | Level 2 | DELETED | DH1100 |  |  |  |  |  |
| QTS-46141 | Gallery 2102 / Lineup E2100 // OFCI - L2 SET IN PLACE - Eq Type # - MPZ Panel - 2 unit *Delete* | 2d | 2025-12-03 A | 2025-12-03 A | QTS-1030 SS | 100% | 2025-12-19 | 2025-12-22 |  | 01ADMIN | Construction | Electrical | IGMP | Phase 1 | Construction | DH2100 | Level 2 | DELETED | DH1100 |  |  |  |  |  |
| QTS-46151 | Gallery 2102 / Lineup E2100 // Pull & Terminate LV Cables from POD to MPZ Panel *Delete* | 2d | 2025-12-03 A | 2025-12-03 A | QTS-1030 SS | 100% | 2025-12-23 | 2025-12-29 |  | 01ADMIN | Construction | Electrical | IGMP | Phase 1 | Construction | DH2100 | Level 2 | DELETED | DH1100 |  |  |  |  |  |
| QTS-46161 | Gallery 2102 / Lineup F2100 // OFCI - L2 SET IN PLACE - Eq Type # - MPZ Panel - 2 unit *Delete* | 2d | 2025-12-03 A | 2025-12-03 A | QTS-1030 SS | 100% | 2025-12-23 | 2025-12-29 |  | 01ADMIN | Construction | Electrical | IGMP | Phase 1 | Construction | DH2100 | Level 2 | DELETED | DH1100 |  |  |  |  |  |
| QTS-46171 | Gallery 2102 / Lineup F2100 // Pull & Terminate LV Cables from POD to MPZ Panel *Delete* | 2d | 2025-12-03 A | 2025-12-03 A | QTS-1030 SS | 100% | 2025-12-30 | 2025-12-31 |  | 01ADMIN | Construction | Electrical | IGMP | Phase 1 | Construction | DH2100 | Level 2 | DELETED | DH1100 |  |  |  |  |  |
| QTS-46181 | Gallery 2202 / Lineup A2200 // OFCI - L2 SET IN PLACE - Eq Type # - MPZ Panel - 2 unit *Delete* | 2d | 2025-12-03 A | 2025-12-03 A | QTS-1030 SS | 100% | 2026-01-05 | 2026-01-06 |  |  | Construction | Electrical | IGMP | Phase 1 | Construction | DH2100 | Level 2 | DELETED | DH1100 |  |  |  |  |  |
| QTS-46191 | Gallery 2202 / Lineup A2200 // Pull & Terminate LV Cables from POD to MPZ Panel *Delete* | 2d | 2025-12-03 A | 2025-12-03 A | QTS-1030 SS | 100% | 2026-01-07 | 2026-01-08 |  |  | Construction | Electrical | IGMP | Phase 1 | Construction | DH2100 | Level 2 | DELETED | DH1100 |  |  |  |  |  |
| QTS-46201 | Gallery 2202 / Lineup B2200 // OFCI - L2 SET IN PLACE - Eq Type # - MPZ Panel - 2 unit *Delete* | 2d | 2025-12-03 A | 2025-12-03 A | QTS-1030 SS | 100% | 2026-01-09 | 2026-01-12 |  |  | Construction | Electrical | IGMP | Phase 1 | Construction | DH2100 | Level 2 | DELETED | DH1100 |  |  |  |  |  |
| QTS-46211 | Gallery 2202 / Lineup B2200 // Pull & Terminate LV Cables from POD to MPZ Panel *Delete* | 2d | 2025-12-03 A | 2025-12-03 A | QTS-1030 SS | 100% | 2026-01-13 | 2026-01-14 |  |  | Construction | Electrical | IGMP | Phase 1 | Construction | DH2100 | Level 2 | DELETED | DH1100 |  |  |  |  |  |
| QTS-46221 | Gallery 2202 / Lineup C2200 // OFCI - L2 SET IN PLACE - Eq Type # - MPZ Panel - 2 unit *Delete* | 2d | 2025-12-03 A | 2025-12-03 A | QTS-1030 SS | 100% | 2026-01-15 | 2026-01-16 |  |  | Construction | Electrical | IGMP | Phase 1 | Construction | DH2100 | Level 2 | DELETED | DH1100 |  |  |  |  |  |
| QTS-46231 | Gallery 2202 / Lineup C2200 // Pull & Terminate LV Cables from POD to MPZ Panel *Delete* | 2d | 2025-12-03 A | 2025-12-03 A | QTS-1030 SS | 100% | 2026-01-20 | 2026-01-21 |  |  | Construction | Electrical | IGMP | Phase 1 | Construction | DH2100 | Level 2 | DELETED | DH1100 |  |  |  |  |  |
| QTS-46241 | Gallery 2202 / Lineup D2200 // OFCI - L2 SET IN PLACE - Eq Type # - MPZ Panel - 2 unit *Delete* | 2d | 2025-12-03 A | 2025-12-03 A | QTS-1030 SS | 100% | 2026-01-22 | 2026-01-23 |  |  | Construction | Electrical | IGMP | Phase 1 | Construction | DH2100 | Level 2 | DELETED | DH1100 |  |  |  |  |  |
| QTS-46251 | Gallery 2202 / Lineup D2200 // Pull & Terminate LV Cables from POD to MPZ Panel *Delete* | 2d | 2025-12-03 A | 2025-12-03 A | QTS-1030 SS | 100% | 2026-01-26 | 2026-01-27 |  |  | Construction | Electrical | IGMP | Phase 1 | Construction | DH2100 | Level 2 | DELETED | DH1100 |  |  |  |  |  |
| QTS-46261 | Gallery 2202 / Lineup E2200 // OFCI - L2 SET IN PLACE - Eq Type # - MPZ Panel - 2 unit *Delete* | 2d | 2025-12-03 A | 2025-12-03 A | QTS-1030 SS | 100% | 2026-01-28 | 2026-01-29 |  |  | Construction | Electrical | IGMP | Phase 1 | Construction | DH2100 | Level 2 | DELETED | DH1100 |  |  |  |  |  |
| QTS-46271 | Gallery 2202 / Lineup E2200 // Pull & Terminate LV Cables from POD to MPZ Panel *Delete* | 2d | 2025-12-03 A | 2025-12-03 A | QTS-1030 SS | 100% | 2026-01-30 | 2026-02-02 |  |  | Construction | Electrical | IGMP | Phase 1 | Construction | DH2100 | Level 2 | DELETED | DH1100 |  |  |  |  |  |
| QTS-46281 | Gallery 2202 / Lineup F2200 // OFCI - L2 SET IN PLACE - Eq Type # - MPZ Panel - 2 unit *Delete* | 2d | 2025-12-03 A | 2025-12-03 A | QTS-1030 SS | 100% | 2025-12-10 | 2025-12-11 |  |  | Construction | Electrical | IGMP | Phase 1 | Construction | DH2100 | Level 2 | DELETED | DH1100 |  |  |  |  |  |
| QTS-46291 | Gallery 2202 / Lineup F2200 // Pull & Terminate LV Cables from POD to MPZ Panel *Delete* | 2d | 2025-12-03 A | 2025-12-03 A | QTS-1030 SS | 100% | 2025-12-10 | 2025-12-11 |  |  | Construction | Electrical | IGMP | Phase 1 | Construction | DH2100 | Level 2 | DELETED | DH1100 |  |  |  |  |  |
| QTS-46301 | Gallery 2302 / Lineup A2300 // OFCI - L2 SET IN PLACE - Eq Type # - MPZ Panel - 2 unit *Delete* | 2d | 2025-12-03 A | 2025-12-03 A | QTS-1030 SS | 100% | 2026-01-21 | 2026-01-22 |  |  | Construction | Electrical | IGMP | Phase 1 | Construction | DH2100 | Level 2 | DELETED | DH1100 |  |  |  |  |  |
| QTS-46311 | Gallery 2302 / Lineup A2300 // Pull & Terminate LV Cables from POD to MPZ Panel *Delete* | 2d | 2025-12-03 A | 2025-12-03 A | QTS-1030 SS | 100% | 2026-02-18 | 2026-02-19 |  |  | Construction | Electrical | IGMP | Phase 1 | Construction | DH2100 | Level 2 | DELETED | DH1100 |  |  |  |  |  |
| QTS-46321 | Gallery 2302 / Lineup B2300 // OFCI - L2 SET IN PLACE - Eq Type # - MPZ Panel - 2 unit *Delete* | 2d | 2025-12-03 A | 2025-12-03 A | QTS-1030 SS | 100% | 2026-01-27 | 2026-01-28 |  |  | Construction | Electrical | IGMP | Phase 1 | Construction | DH2100 | Level 2 | DELETED | DH1100 |  |  |  |  |  |
| QTS-46331 | Gallery 2302 / Lineup B2300 // Pull & Terminate LV Cables from POD to MPZ Panel *Delete* | 2d | 2025-12-03 A | 2025-12-03 A | QTS-1030 SS | 100% | 2026-02-18 | 2026-02-19 |  |  | Construction | Electrical | IGMP | Phase 1 | Construction | DH2100 | Level 2 | DELETED | DH1100 |  |  |  |  |  |
| QTS-46341 | Gallery 2302 / Lineup C2300 // OFCI - L2 SET IN PLACE - Eq Type # - MPZ Panel - 2 unit *Delete* | 2d | 2025-12-03 A | 2025-12-03 A | QTS-1030 SS | 100% | 2026-02-02 | 2026-02-03 |  |  | Construction | Electrical | IGMP | Phase 1 | Construction | DH2100 | Level 2 | DELETED | DH1100 |  |  |  |  |  |
| QTS-46351 | Gallery 2302 / Lineup C2300 // Pull & Terminate LV Cables from POD to MPZ Panel *Delete* | 2d | 2025-12-03 A | 2025-12-03 A | QTS-1030 SS | 100% | 2026-02-18 | 2026-02-19 |  |  | Construction | Electrical | IGMP | Phase 1 | Construction | DH2100 | Level 2 | DELETED | DH1100 |  |  |  |  |  |
| QTS-46361 | Gallery 2302 / Lineup D2300 // OFCI - L2 SET IN PLACE - Eq Type # - MPZ Panel - 2 unit *Delete* | 2d | 2025-12-03 A | 2025-12-03 A | QTS-1030 SS | 100% | 2026-02-06 | 2026-02-09 |  |  | Construction | Electrical | IGMP | Phase 1 | Construction | DH2100 | Level 2 | DELETED | DH1100 |  |  |  |  |  |
| QTS-46371 | Gallery 2302 / Lineup D2300 // Pull & Terminate LV Cables from POD to MPZ Panel *Delete* | 2d | 2025-12-03 A | 2025-12-03 A | QTS-1030 SS | 100% | 2026-02-18 | 2026-02-19 |  |  | Construction | Electrical | IGMP | Phase 1 | Construction | DH2100 | Level 2 | DELETED | DH1100 |  |  |  |  |  |
| QTS-46381 | Gallery 2302 / Lineup E2300 // OFCI - L2 SET IN PLACE - Eq Type # - MPZ Panel - 2 unit *Delete* | 2d | 2025-12-03 A | 2025-12-03 A | QTS-1030 SS | 100% | 2026-02-12 | 2026-02-13 |  |  | Construction | Electrical | IGMP | Phase 1 | Construction | DH2100 | Level 2 | DELETED | DH1100 |  |  |  |  |  |
| QTS-46391 | Gallery 2302 / Lineup E2300 // Pull & Terminate LV Cables from POD to MPZ Panel *Delete* | 2d | 2025-12-03 A | 2025-12-03 A | QTS-1030 SS | 100% | 2026-02-18 | 2026-02-19 |  |  | Construction | Electrical | IGMP | Phase 1 | Construction | DH2100 | Level 2 | DELETED | DH1100 |  |  |  |  |  |
| QTS-46401 | Gallery 2302 / Lineup F2300 // OFCI - L2 SET IN PLACE - Eq Type # - MPZ Panel - 2 unit *Delete* | 2d | 2025-12-03 A | 2025-12-03 A | QTS-1030 SS | 100% | 2026-02-18 | 2026-02-19 |  |  | Construction | Electrical | IGMP | Phase 1 | Construction | DH2100 | Level 2 | DELETED | DH1100 |  |  |  |  |  |
| QTS-46411 | Gallery 2302 / Lineup F2300 // Pull & Terminate LV Cables from POD to MPZ Panel *Delete* | 2d | 2025-12-03 A | 2025-12-03 A | QTS-1030 SS | 100% | 2026-02-20 | 2026-02-23 |  |  | Construction | Electrical | IGMP | Phase 1 | Construction | DH2100 | Level 2 | DELETED | DH1100 |  |  |  |  |  |
| DC1-XFMR-L2-2340 | **DELETED** DH1300 XFMR-R13 L2 Checklist | 3d | 2025-12-09 A | 2026-07-15 A | QTS-1020 | 100% | 2025-12-09 | 2025-12-11 |  |  |  | Commissioning |  |  |  | DH1300 |  | DELETED | DH1100 | VTC | L2 | XFMR |  |  |
| QTS-100890 | DH 1200 / Rooftop Mechanical // Install 12" CHWS/R Run-Outs to RPH Vaults *Delete* | 13d | 2025-12-10 A | 2026-03-16 A | QTS-1371 SS | 100% | 2025-12-10 | 2025-12-24 | QTS-PHX3 DC1 - 6 day w/ Holidays | 01ADMIN | Construction | Mechanical | IGMP |  |  | DH2100 | Level 2 | DELETED | DH1100 |  |  |  | 3/19: Consolidating to be captured in zone 2 | Phase 1 |
| QTS-50101 | Zone 1 Gridlines 1-21 / South // Set Spandrel Window Frames *Delete* | 4d | 2025-12-15 A | 2025-12-18 A | QTS-1371 SS | 100% |  |  |  |  | Construction | Build Out | IGMP |  |  |  |  | DELETED | DH1100 |  |  |  |  | Phase 2 |
| QTS-50511 | Zone 1 Gridlines 1-21 / South // Install Strip Glass Window Glass - Upper *Delete* | 3d | 2025-12-15 A | 2025-12-17 A | QTS-1371 SS | 100% |  |  |  | 01ADMIN | Construction | Build Out | IGMP |  |  |  |  | DELETED | DH1100 |  |  |  |  | Phase 1 |
| QTS-50521 | Zone 1 Gridlines 1-21 / South // Install Strip Glass Window Exterior Caulking - Upper *Delete* | 2d | 2025-12-15 A | 2025-12-16 A | QTS-1371 SS | 100% |  |  |  | 01ADMIN | Construction | Build Out | IGMP |  |  |  |  | DELETED | DH1100 |  |  |  |  | Phase 1 |
| QTS-50531 | Zone 1 Gridlines 1-21 / South // Install Strip Glass Window Interior Caulking - Upper *Delete* | 2d | 2025-12-15 A | 2025-12-16 A | QTS-1371 SS | 100% |  |  |  |  | Construction | Build Out | IGMP |  |  |  |  | DELETED | DH1100 |  |  |  |  | Phase 1 |
| QTS-50541 | Zone 1 Gridlines 1-21 / South // Install Strip Glass Window Frames - Lower *Delete* | 3d | 2025-12-15 A | 2025-12-17 A | QTS-1371 SS | 100% |  |  |  | 01ADMIN | Construction | Build Out | IGMP |  |  |  |  | DELETED | DH1100 |  |  |  |  | Phase 1 |
| QTS-50551 | Zone 1 Gridlines 1-21 / South // Install Strip Glass Window Glass - Lower *Delete* | 3d | 2025-12-15 A | 2025-12-17 A | QTS-1371 SS | 100% |  |  |  | 01ADMIN | Construction | Build Out | IGMP |  |  |  |  | DELETED | DH1100 |  |  |  |  | Phase 1 |
| QTS-50561 | Zone 1 Gridlines 1-21 / South // Install Strip Glass Window Exterior Caulking - Lower *Delete* | 2d | 2025-12-15 A | 2025-12-16 A | QTS-1371 SS | 100% |  |  |  |  | Construction | Build Out | IGMP |  |  |  |  | DELETED | DH1100 |  |  |  |  | Phase 1 |
| QTS-50571 | Zone 1 Gridlines 1-21 / South // Install Strip Glass Window Interior Caulking - Lower *Delete* | 2d | 2025-12-15 A | 2025-12-16 A | QTS-1371 SS | 100% |  |  |  |  | Construction | Build Out | IGMP |  |  |  |  | DELETED | DH1100 |  |  |  |  | Phase 1 |
| QTS-50701 | Zone 1 Gridlines 11-21 / South // Frame for Metal Panels *Delete* | 8d | 2025-12-15 A | 2025-12-29 A | QTS-1371 SS | 100% |  |  |  |  | Construction | Build Out | IGMP |  | Construction |  |  | DELETED | DH1100 |  |  |  |  | Phase 1 |
| QTS-50711 | Zone 1 Gridlines 11-21 / South // Install Metal Panels *Delete* | 10d | 2025-12-15 A | 2025-12-29 A | QTS-1371 SS | 100% | 2025-12-15 | 2025-12-31 |  |  | Construction | Build Out | IGMP |  | Construction |  |  | DELETED | DH1100 |  |  |  |  | Phase 1 |
| DC1-XFMR-L2-2210 | **DELETED** DH2300 XFMR-A23 L2 Checklist | 3d | 2025-12-17 A | 2026-07-15 A | QTS-1020 | 100% | 2025-12-17 | 2025-12-19 |  |  |  | Commissioning |  |  |  | DH2300 |  | DELETED | DH1100 | VTC | L2 | XFMR |  |  |
| DC1-XFMR-L2-2270 | **DELETED** DH2300 XFMR-R23 L2 Checklist | 3d | 2025-12-17 A | 2026-07-15 A | QTS-1020 | 100% | 2025-12-17 | 2025-12-19 |  |  |  | Commissioning |  |  |  | DH2300 |  | DELETED | DH1100 | VTC | L2 | XFMR |  |  |
| QTS-14421 | Restrooms #0157 // Field Measure for Countertops *Delete* | 1d | 2026-01-05 A | 2026-01-05 A | QTS-1030 SS | 100% | 2026-01-07 | 2026-01-07 | QTS-PHX3 DC1 - 6 day w/ Holidays |  | Construction | Build Out | IGMP |  |  | FOH | Level 1 | DELETED | DH1100 |  |  |  |  | Phase 1 |
| QTS-14591 | Restrooms #0157 // Fabricate & Delivery Countertops *Delete* | 10d | 2026-01-05 A | 2026-01-05 A | QTS-1030 SS | 100% | 2026-01-07 | 2026-01-17 | QTS-PHX3 DC1 - 6 day w/ Holidays |  | Construction | Build Out | IGMP |  |  | FOH | Level 1 | DELETED | DH1100 |  |  |  |  | Phase 1 |
| QTS-17681 | Gallery 1102 / Lineup A1100 // Pull LV Cables from ATS to COD *Delete* | 2d | 2026-01-05 A | 2026-01-05 A | QTS-1030 SS | 100% | 2026-01-07 | 2026-01-08 | QTS-PHX3 DC1 - 6 day w/ Holidays | 01ADMIN | Construction | Electrical | IGMP | Phase 1 | Construction | DH1100 | Level 1 | DELETED | DH1100 |  |  |  |  |  |
| QTS-17721 | Gallery 2202 / Lineup A2200 // Pull LV Cables from ATS to COD *Delete* | 2d | 2026-01-05 A | 2026-01-05 A | QTS-1030 SS | 100% | 2026-01-30 | 2026-01-31 | QTS-PHX3 DC1 - 6 day w/ Holidays |  | Construction | Electrical | IGMP | Phase 2 | Construction | DH2200 |  | DELETED | DH1100 |  |  |  |  |  |
| QTS-17761 | Gallery 1202 / Lineup A1200 // Pull LV Cables from ATS to COD *Delete* | 2d | 2026-01-05 A | 2026-01-05 A | QTS-1030 SS | 100% | 2026-01-30 | 2026-01-31 | QTS-PHX3 DC1 - 6 day w/ Holidays |  | Construction | Electrical | IGMP | Phase 2 | Construction | DH1200 |  | DELETED | DH1100 |  |  |  |  |  |
| QTS-17801 | Gallery 2302 / Lineup A2300 // Pull LV Cables from ATS to COD *Delete* | 2d | 2026-01-05 A | 2026-01-05 A | QTS-1030 SS | 100% | 2026-04-24 | 2026-04-25 | QTS-PHX3 DC1 - 6 day w/ Holidays |  | Construction | Electrical | IGMP | Phase 3 | Construction | DH2300 |  | DELETED | DH1100 |  |  |  |  |  |
| QTS-17841 | Gallery 1302 / Lineup A1300 // Pull LV Cables from ATS to COD *Delete* | 2d | 2026-01-05 A | 2026-01-05 A | QTS-1030 SS | 100% | 2026-02-28 | 2026-03-02 | QTS-PHX3 DC1 - 6 day w/ Holidays |  | Construction | Electrical | IGMP | Phase 3 | Construction | DH1300 |  | DELETED | DH1100 |  |  |  |  |  |
| QTS-21961 | Fire Riser #0171 // Install VESDA *Delete* | 2d | 2026-01-05 A | 2026-01-05 A | QTS-1030 SS | 100% | 2026-01-07 | 2026-01-08 | QTS-PHX3 DC1 - 6 day w/ Holidays | 01ADMIN | Construction | Mechanical | IGMP |  |  | FOH | Level 1 | DELETED | DH1100 |  |  |  |  | Phase 1 |
| QTS-22161 | Zone 2 Gridline 21-30 / Corridor 2010 // Install VESDA *Delete* | 5d | 2026-01-05 A | 2026-01-05 A | QTS-1030 SS | 100% | 2026-01-07 | 2026-01-12 | QTS-PHX3 DC1 - 6 day w/ Holidays |  | Construction | Mechanical | IGMP |  |  |  | Level 2 | DELETED | DH1100 |  |  |  |  |  |
| QTS-24941 | Gallery 2102 / Lineup A2100 // Pull LV Cables from ATS to COD *Delete* | 2d | 2026-01-05 A | 2026-01-05 A | QTS-1030 SS | 100% | 2026-01-10 | 2026-01-12 | QTS-PHX3 DC1 - 6 day w/ Holidays | 01ADMIN | Construction | Electrical | IGMP | Phase 1 | Construction | DH2100 | Level 2 | DELETED | DH1100 |  |  |  |  |  |
| QTS-28931 | Telecom Riser #2069 // Install AC Unit (Early Access) *Delete* | 2d | 2026-01-05 A | 2026-01-05 A | QTS-1030 SS | 100% | 2026-01-07 | 2026-01-08 |  | 01ADMIN | Construction | Mechanical | IGMP | Phase 1 | Construction | BOH | Level 2 | DELETED | DH1100 |  |  |  |  |  |
| QTS-29011 | Fire Pump Room #1063 // Install VESDA *Delete* | 2d | 2026-01-05 A | 2026-01-05 A | QTS-1030 SS | 100% | 2026-01-07 | 2026-01-08 | QTS-PHX3 DC1 - 6 day w/ Holidays |  | Construction | Mechanical | IGMP |  |  | BOH | Level 1 | DELETED | DH1100 |  |  |  |  | Phase 1 |
| QTS-29331 | Fire Pump Room #2063 // Install VESDA *Delete* | 2d | 2026-01-05 A | 2026-01-05 A | QTS-1030 SS | 100% | 2026-01-07 | 2026-01-08 | QTS-PHX3 DC1 - 6 day w/ Holidays | 01ADMIN | Construction | Mechanical | IGMP |  |  | BOH | Level 2 | DELETED | DH1100 |  |  |  |  | Phase 1 |
| QTS-30161 | Fire Pump Room #1063 // Install Fire Pump *Delete* | 2d | 2026-01-05 A | 2026-01-06 A | QTS-1371 SS | 100% |  |  |  |  | Construction | Mechanical | IGMP |  |  | BOH | Level 1 | DELETED | DH1100 |  |  |  |  | Phase 1 |
| QTS-30381 | Fire Pump Room #2063 // Install Fire Pump *Delete* | 2d | 2026-01-05 A | 2026-01-05 A | QTS-1030 SS | 100% | 2026-01-07 | 2026-01-08 | QTS-PHX3 DC1 - 6 day w/ Holidays | 01ADMIN | Construction | Mechanical | IGMP |  |  | BOH | Level 2 | DELETED | DH1100 |  |  |  |  | Phase 1 |
| QTS-42261 | Telecom Riser #1069 // Install AC Unit (Early Access) *Delete* | 2d | 2026-01-05 A | 2026-01-05 A | QTS-1030 SS | 100% | 2026-01-12 | 2026-01-13 | QTS-PHX3 DC1 - 6 day w/ Holidays | 01ADMIN | Construction | Mechanical | IGMP | Phase 1 | Construction | BOH | Level 1 | DELETED | DH1100 |  |  |  |  |  |
| QTS-6341 | Gallery 2102 / Lineup B2100 // Pull LV Cables from ATS to COD *Delete* | 4d | 2026-01-05 A | 2026-01-05 A | QTS-1030 SS | 100% | 2026-01-15 | 2026-01-20 | QTS-PHX3 DC1 - 6 day w/ Holidays | 01ADMIN | Construction | Electrical | IGMP | Phase 1 | Construction | DH2100 | Level 2 | DELETED | DH1100 |  |  |  |  |  |
| QTS-7941 | Gallery 2102 / Lineup C2100 // Pull LV Cables from ATS to COD *Delete* | 2d | 2026-01-05 A | 2026-01-05 A | QTS-1030 SS | 100% | 2026-01-24 | 2026-01-26 | QTS-PHX3 DC1 - 6 day w/ Holidays | 01ADMIN | Construction | Electrical | IGMP | Phase 1 | Construction | DH2100 | Level 2 | DELETED | DH1100 |  |  |  |  |  |
| QTS-7961 | Gallery 2102 / Lineup D2100 // Pull LV Cables from ATS to COD *Delete* | 2d | 2026-01-05 A | 2026-01-05 A | QTS-1030 SS | 100% | 2026-01-24 | 2026-01-26 | QTS-PHX3 DC1 - 6 day w/ Holidays | 01ADMIN | Construction | Electrical | IGMP | Phase 1 | Construction | DH2100 | Level 2 | DELETED | DH1100 |  |  |  |  |  |

Notes:
- QTS-45681: allucent_notes_20251209_203830: Jason Johnston on 2025-11-19T02:23:50.079Z: undo / David Wiltberger on 2025-12-02 13:56: impacted by Stop work / allucent_notes_20251202_153722: Jason Johnston on 2025-11-19T02:23:50.079Z: undo / David Wiltberger on 2025-12-02 13:56: impacted by Stop work / allucent_notes_20251118_192630: Jason Johnston on 2025-11-19T02:23:50.079Z: undo / allucent_notes: 2025-11-19T02:23:50.079Z - User: Jason Johnston - Date Added: 2025-11-19T02:23:50.079Z - Note: undo / 2025-12-02 13:56 - User: David Wiltberger - Date Added: 2025-12-02 13:56 - Note: impacted by Stop work
- QTS-45701: allucent_notes_20251209_203830: Jason Johnston on 2025-11-19T02:23:53.649Z: undo / allucent_notes_20251202_153722: Jason Johnston on 2025-11-19T02:23:53.649Z: undo / allucent_notes_20251118_192630: Jason Johnston on 2025-11-19T02:23:53.649Z: undo / allucent_notes: 2025-11-19T02:23:53.649Z - User: Jason Johnston - Date Added: 2025-11-19T02:23:53.649Z - Note: undo
- DC1-XFMR-L2-2340: Steps: EC Installation Checklist; CC Installation Checklist; Vendor Pre-Energization Checklist (done); CXA Pre-Energization Inspection; PEI/Clean-Walk
- QTS-100890: allucent_notes_20251216_165335: David Wiltberger on 2025-12-02 06:49: work impacted by roofing install / allucent_notes_20251202_153722: David Wiltberger on 2025-12-02 06:49: work impacted by roofing install / allucent_notes_20251014_152335: David Wiltberger on 2025-08-19 09:08: changed pick order / David Wiltberger on 2025-09-02 10:09: Moving to accommodate roofing in Zone 1 / David Wiltberger on 2025-09-24 04:09: BAM not completed Potential Delay / David Wiltberger on 2025-09-30 12:09: BAM did not complete / David Wiltberger on 2025-10-14 10:10: set on recovery schedule / allucent_notes: David Wiltberger on 2025-08-19 09:08: changed pick order / allucent_notes_20251230_164549: David Wiltberger on 2025-12-02 06:49: work impacted by roofing install / allucent_notes: 2025-12-02 06:49 - User: David Wiltberger - Date Added: 2025-12-02 06:49 - Note: work impacted by roofing install
- DC1-XFMR-L2-2210: Steps: EC Installation Checklist; CC Installation Checklist; Vendor Pre-Energization Checklist (done); CXA Pre-Energization Inspection; PEI/Clean-Walk
- DC1-XFMR-L2-2270: Steps: EC Installation Checklist; CC Installation Checklist; Vendor Pre-Energization Checklist (done); CXA Pre-Energization Inspection; PEI/Clean-Walk
- QTS-21961: allucent_notes_20251216_165335: Scott Masterson on 2025-12-16 16:03: There are still other over head activitives that need completed. Mech, Elct. / allucent_notes_20251230_164549: Scott Masterson on 2025-12-16 16:03: There are still other over head activitives that need completed. Mech, Elct. / Jason Johnston on 2025-12-30 10:34: Delete Activity - There is only smoke detectors in fire riser room / allucent_notes: 2025-12-16 16:03 - User: Scott Masterson - Date Added: 2025-12-16 16:03 - Note: There are still other over head activitives that need completed. Mech, Elct. / 2025-12-30 10:34 - User: Jason Johnston - Date Added: 2025-12-30 10:34 - Note: Delete Activity

| ID | Activity | Duration | Start | Finish | Predecessors | Complete | Planned start | Planned finish | Calendar | Project Section | Layton Discipline | Baseline | Phase-1-1 | Project Section-1 | Location | Level | DELETED | D | Allucent CSI Group | Notes | Vendor Responsible Party |
| --- | --- | --- | --- | --- | --- | --- | --- | --- | --- | --- | --- | --- | --- | --- | --- | --- | --- | --- | --- | --- | --- |
| QTS-7981 | Gallery 2102 / Lineup E2100 // Pull LV Cables from ATS to COD *Delete* | 2d | 2026-01-05 A | 2026-01-05 A | QTS-1030 SS | 100% | 2026-02-02 | 2026-02-03 | QTS-PHX3 DC1 - 6 day w/ Holidays | Construction | Electrical | IGMP | Phase 1 | Construction | DH2100 | Level 2 | DELETED | DH1100 |  |  |  |
| QTS-8001 | Gallery 2102 / Lineup F2100 // Pull LV Cables from ATS to COD *Delete* | 2d | 2026-01-05 A | 2026-01-05 A | QTS-1030 SS | 100% | 2026-02-02 | 2026-02-03 | QTS-PHX3 DC1 - 6 day w/ Holidays | Construction | Electrical | IGMP | Phase 1 | Construction | DH2100 | Level 2 | DELETED | DH1100 |  |  |  |
| QTS-8021 | Gallery 1102 / Lineup B1100 // Pull LV Cables from ATS to COD *Delete* | 2d | 2026-01-05 A | 2026-01-05 A | QTS-1030 SS | 100% | 2026-01-23 | 2026-01-24 | QTS-PHX3 DC1 - 6 day w/ Holidays | Construction | Electrical | IGMP | Phase 1 | Construction | DH1100 | Level 1 | DELETED | DH1100 | 01ADMIN |  |  |
| QTS-8041 | Gallery 1102 / Lineup C1100 // Pull LV Cables from ATS to COD *Delete* | 2d | 2026-01-05 A | 2026-01-05 A | QTS-1030 SS | 100% | 2026-01-24 | 2026-01-26 | QTS-PHX3 DC1 - 6 day w/ Holidays | Construction | Electrical | IGMP | Phase 1 | Construction | DH1100 | Level 1 | DELETED | DH1100 |  |  |  |
| QTS-8061 | Gallery 1102 / Lineup D1100 // Pull LV Cables from ATS to COD *Delete* | 2d | 2026-01-05 A | 2026-01-05 A | QTS-1030 SS | 100% | 2026-01-27 | 2026-01-28 | QTS-PHX3 DC1 - 6 day w/ Holidays | Construction | Electrical | IGMP | Phase 1 | Construction | DH1100 | Level 1 | DELETED | DH1100 |  |  |  |
| QTS-8081 | Gallery 1102 / Lineup E1100 // Pull LV Cables from ATS to COD *Delete* | 2d | 2026-01-05 A | 2026-01-05 A | QTS-1030 SS | 100% | 2026-01-31 | 2026-02-02 | QTS-PHX3 DC1 - 6 day w/ Holidays | Construction | Electrical | IGMP | Phase 1 | Construction | DH1100 | Level 1 | DELETED | DH1100 |  |  |  |
| QTS-8101 | Gallery 1102 / Lineup F1100 // Pull LV Cables from ATS to COD *Delete* | 2d | 2026-01-05 A | 2026-01-05 A | QTS-1030 SS | 100% | 2026-02-02 | 2026-02-03 | QTS-PHX3 DC1 - 6 day w/ Holidays | Construction | Electrical | IGMP | Phase 1 | Construction | DH1100 | Level 1 | DELETED | DH1100 |  |  |  |
| QTS-8121 | Gallery 2202 / Lineup B2200 // Pull LV Cables from ATS to COD *Delete* | 2d | 2026-01-05 A | 2026-01-05 A | QTS-1030 SS | 100% | 2026-02-04 | 2026-02-05 | QTS-PHX3 DC1 - 6 day w/ Holidays | Construction | Electrical | IGMP | Phase 2 | Construction | DH2200 |  | DELETED | DH1100 |  |  |  |
| QTS-8141 | Gallery 2202 / Lineup C2200 // Pull LV Cables from ATS to COD *Delete* | 2d | 2026-01-05 A | 2026-01-05 A | QTS-1030 SS | 100% | 2026-02-09 | 2026-02-10 | QTS-PHX3 DC1 - 6 day w/ Holidays | Construction | Electrical | IGMP | Phase 2 | Construction | DH2200 |  | DELETED | DH1100 |  |  |  |
| QTS-8161 | Gallery 2202 / Lineup D2200 // Pull LV Cables from ATS to COD *Delete* | 2d | 2026-01-05 A | 2026-01-05 A | QTS-1030 SS | 100% | 2026-02-13 | 2026-02-14 | QTS-PHX3 DC1 - 6 day w/ Holidays | Construction | Electrical | IGMP | Phase 2 | Construction | DH2200 |  | DELETED | DH1100 |  |  |  |
| QTS-8181 | Gallery 2202 / Lineup E2200 // Pull LV Cables from ATS to COD *Delete* | 2d | 2026-01-05 A | 2026-01-05 A | QTS-1030 SS | 100% | 2026-02-18 | 2026-02-19 | QTS-PHX3 DC1 - 6 day w/ Holidays | Construction | Electrical | IGMP | Phase 2 | Construction | DH2200 |  | DELETED | DH1100 |  |  |  |
| QTS-8201 | Gallery 2202 / Lineup F2200 // Pull LV Cables from ATS to COD *Delete* | 2d | 2026-01-05 A | 2026-01-05 A | QTS-1030 SS | 100% | 2026-02-23 | 2026-02-24 | QTS-PHX3 DC1 - 6 day w/ Holidays | Construction | Electrical | IGMP | Phase 2 | Construction | DH2200 |  | DELETED | DH1100 |  |  |  |
| QTS-8221 | Gallery 1202 / Lineup B1200 // Pull LV Cables from ATS to COD *Delete* | 2d | 2026-01-05 A | 2026-01-05 A | QTS-1030 SS | 100% | 2026-01-30 | 2026-01-31 | QTS-PHX3 DC1 - 6 day w/ Holidays | Construction | Electrical | IGMP | Phase 2 | Construction | DH1200 |  | DELETED | DH1100 |  |  |  |
| QTS-8241 | Gallery 1202 / Lineup C1200 // Pull LV Cables from ATS to COD *Delete* | 2d | 2026-01-05 A | 2026-01-05 A | QTS-1030 SS | 100% | 2026-02-07 | 2026-02-09 | QTS-PHX3 DC1 - 6 day w/ Holidays | Construction | Electrical | IGMP | Phase 2 | Construction | DH1200 |  | DELETED | DH1100 |  |  |  |
| QTS-8261 | Gallery 1202 / Lineup D1200 // Pull LV Cables from ATS to COD *Delete* | 2d | 2026-01-05 A | 2026-01-05 A | QTS-1030 SS | 100% | 2026-02-07 | 2026-02-09 | QTS-PHX3 DC1 - 6 day w/ Holidays | Construction | Electrical | IGMP | Phase 2 | Construction | DH1200 |  | DELETED | DH1100 |  |  |  |
| QTS-8281 | Gallery 1202 / Lineup E1200 // Pull LV Cables from ATS to COD *Delete* | 2d | 2026-01-05 A | 2026-01-05 A | QTS-1030 SS | 100% | 2026-02-16 | 2026-02-17 | QTS-PHX3 DC1 - 6 day w/ Holidays | Construction | Electrical | IGMP | Phase 2 | Construction | DH1200 |  | DELETED | DH1100 |  |  |  |
| QTS-8301 | Gallery 1202 / Lineup F1200 // Pull LV Cables from ATS to COD *Delete* | 2d | 2026-01-05 A | 2026-01-05 A | QTS-1030 SS | 100% | 2026-02-16 | 2026-02-17 | QTS-PHX3 DC1 - 6 day w/ Holidays | Construction | Electrical | IGMP | Phase 2 | Construction | DH1200 |  | DELETED | DH1100 |  |  |  |
| QTS-8321 | Gallery 2302 / Lineup B2300 // Pull LV Cables from ATS to COD *Delete* | 2d | 2026-01-05 A | 2026-01-05 A | QTS-1030 SS | 100% | 2026-04-24 | 2026-04-25 | QTS-PHX3 DC1 - 6 day w/ Holidays | Construction | Electrical | IGMP | Phase 3 | Construction | DH2300 |  | DELETED | DH1100 |  |  |  |
| QTS-8341 | Gallery 2302 / Lineup C2300 // Pull LV Cables from ATS to COD *Delete* | 2d | 2026-01-05 A | 2026-01-05 A | QTS-1030 SS | 100% | 2026-05-02 | 2026-05-04 | QTS-PHX3 DC1 - 6 day w/ Holidays | Construction | Electrical | IGMP | Phase 3 | Construction | DH2300 |  | DELETED | DH1100 |  |  |  |
| QTS-8361 | Gallery 2302 / Lineup D2300 // Pull LV Cables from ATS to COD *Delete* | 2d | 2026-01-05 A | 2026-01-05 A | QTS-1030 SS | 100% | 2026-05-02 | 2026-05-04 | QTS-PHX3 DC1 - 6 day w/ Holidays | Construction | Electrical | IGMP | Phase 3 | Construction | DH2300 |  | DELETED | DH1100 |  |  |  |
| QTS-8381 | Gallery 2302 / Lineup E2300 // Pull LV Cables from ATS to COD *Delete* | 2d | 2026-01-05 A | 2026-01-05 A | QTS-1030 SS | 100% | 2026-05-11 | 2026-05-12 | QTS-PHX3 DC1 - 6 day w/ Holidays | Construction | Electrical | IGMP | Phase 3 | Construction | DH2300 |  | DELETED | DH1100 |  |  |  |
| QTS-8401 | Gallery 2302 / Lineup F2300 // Pull LV Cables from ATS to COD *Delete* | 2d | 2026-01-05 A | 2026-01-05 A | QTS-1030 SS | 100% | 2026-05-11 | 2026-05-12 | QTS-PHX3 DC1 - 6 day w/ Holidays | Construction | Electrical | IGMP | Phase 3 | Construction | DH2300 |  | DELETED | DH1100 |  |  |  |
| QTS-8421 | Gallery 1302 / Lineup B1300 // Pull LV Cables from ATS to COD *Delete* | 2d | 2026-01-05 A | 2026-01-05 A | QTS-1030 SS | 100% | 2026-02-28 | 2026-03-02 | QTS-PHX3 DC1 - 6 day w/ Holidays | Construction | Electrical | IGMP | Phase 3 | Construction | DH1300 |  | DELETED | DH1100 |  |  |  |
| QTS-8441 | Gallery 1302 / Lineup C1300 // Pull LV Cables from ATS to COD *Delete* | 2d | 2026-01-05 A | 2026-01-05 A | QTS-1030 SS | 100% | 2026-03-09 | 2026-03-10 | QTS-PHX3 DC1 - 6 day w/ Holidays | Construction | Electrical | IGMP | Phase 3 | Construction | DH1300 |  | DELETED | DH1100 |  |  |  |
| QTS-8461 | Gallery 1302 / Lineup D1300 // Pull LV Cables from ATS to COD *Delete* | 2d | 2026-01-05 A | 2026-01-05 A | QTS-1030 SS | 100% | 2026-03-09 | 2026-03-10 | QTS-PHX3 DC1 - 6 day w/ Holidays | Construction | Electrical | IGMP | Phase 3 | Construction | DH1300 |  | DELETED | DH1100 |  |  |  |
| QTS-8481 | Gallery 1302 / Lineup E1300 // Pull LV Cables from ATS to COD *Delete* | 2d | 2026-01-05 A | 2026-01-05 A | QTS-1030 SS | 100% | 2026-03-17 | 2026-03-18 | QTS-PHX3 DC1 - 6 day w/ Holidays | Construction | Electrical | IGMP | Phase 3 | Construction | DH1300 |  | DELETED | DH1100 |  |  |  |
| QTS-8501 | Gallery 1302 / Lineup F1300 // Pull LV Cables from ATS to COD *Delete* | 2d | 2026-01-05 A | 2026-01-05 A | QTS-1030 SS | 100% | 2026-03-17 | 2026-03-18 | QTS-PHX3 DC1 - 6 day w/ Holidays | Construction | Electrical | IGMP | Phase 3 | Construction | DH1300 |  | DELETED | DH1100 |  |  |  |
| DC1-POD-AC-L2-1000 | DH2100 COMP-A21-01 L2 Checklist *Delete* | 3d | 2026-01-06 A | 2026-01-06 A | QTS-1030 SS | 100% | 2025-12-18 | 2025-12-22 |  |  | Commissioning |  |  |  |  |  | DELETED | DH1100 | 01ADMIN | Do these need a L2 as they are Factory | CAP |
| DC1-POD-AC-L2-1010 | DH2100 FAN-A21-01 L2 Checklist *Delete* | 3d | 2026-01-06 A | 2026-01-06 A | QTS-1030 SS | 100% | 2025-12-18 | 2025-12-22 |  |  | Commissioning |  |  |  |  |  | DELETED | DH1100 | 01ADMIN |  | CAP |
| DC1-POD-AC-L2-1020 | DH2100 COMP-A21-02 L2 Checklist *Delete* | 3d | 2026-01-06 A | 2026-01-06 A | QTS-1030 SS | 100% | 2025-12-18 | 2025-12-22 |  |  | Commissioning |  |  |  |  |  | DELETED | DH1100 | 01ADMIN |  | CAP |
| DC1-POD-AC-L2-1030 | DH2100 FAN-A21-02 L2 Checklist *Delete* | 3d | 2026-01-06 A | 2026-01-06 A | QTS-1030 SS | 100% | 2025-12-18 | 2025-12-22 |  |  | Commissioning |  |  |  |  |  | DELETED | DH1100 | 01ADMIN |  | CAP |
| DC1-POD-AC-L2-1040 | DH2100 COMP-B21-01 L2 Checklist *Delete* | 3d | 2026-01-06 A | 2026-01-06 A | QTS-1030 SS | 100% | 2025-12-23 | 2025-12-30 |  |  | Commissioning |  |  |  |  |  | DELETED | DH1100 | 01ADMIN |  | CAP |
| DC1-POD-AC-L2-1050 | DH2100 FAN-B21-01 L2 Checklist *Delete* | 3d | 2026-01-06 A | 2026-01-06 A | QTS-1030 SS | 100% | 2025-12-23 | 2025-12-30 |  |  | Commissioning |  |  |  |  |  | DELETED | DH1100 | 01ADMIN |  | CAP |
| DC1-POD-AC-L2-1060 | DH2100 COMP-B21-02 L2 Checklist *Delete* | 3d | 2026-01-06 A | 2026-01-06 A | QTS-1030 SS | 100% | 2025-12-23 | 2025-12-30 |  |  | Commissioning |  |  |  |  |  | DELETED | DH1100 | 01ADMIN |  | CAP |
| DC1-POD-AC-L2-1070 | DH2100 FAN-B21-02 L2 Checklist *Delete* | 3d | 2026-01-06 A | 2026-01-06 A | QTS-1030 SS | 100% | 2025-12-23 | 2025-12-30 |  |  | Commissioning |  |  |  |  |  | DELETED | DH1100 | 01ADMIN |  | CAP |
| DC1-POD-AC-L2-1080 | DH2100 COMP-C21-01 L2 Checklist *Delete* | 3d | 2026-01-06 A | 2026-01-06 A | QTS-1030 SS | 100% | 2026-01-08 | 2026-01-12 |  |  | Commissioning |  |  |  |  |  | DELETED | DH1100 | 01ADMIN |  | CAP |
| DC1-POD-AC-L2-1090 | DH2100 FAN-C21-01 L2 Checklist *Delete* | 3d | 2026-01-06 A | 2026-01-06 A | QTS-1030 SS | 100% | 2026-01-08 | 2026-01-12 |  |  | Commissioning |  |  |  |  |  | DELETED | DH1100 | 01ADMIN |  | CAP |
| DC1-POD-AC-L2-1100 | DH2100 COMP-C21-02 L2 Checklist *Delete* | 3d | 2026-01-06 A | 2026-01-06 A | QTS-1030 SS | 100% | 2026-01-08 | 2026-01-12 |  |  | Commissioning |  |  |  |  |  | DELETED | DH1100 | 01ADMIN |  | CAP |
| DC1-POD-AC-L2-1110 | DH2100 FAN-C21-02 L2 Checklist *Delete* | 3d | 2026-01-06 A | 2026-01-06 A | QTS-1030 SS | 100% | 2026-01-08 | 2026-01-12 |  |  | Commissioning |  |  |  |  |  | DELETED | DH1100 | 01ADMIN |  | CAP |
| DC1-POD-AC-L2-1120 | DH2100 COMP-D21-01 L2 Checklist *Delete* | 3d | 2026-01-06 A | 2026-01-06 A | QTS-1030 SS | 100% | 2026-01-13 | 2026-01-15 |  |  | Commissioning |  |  |  |  |  | DELETED | DH1100 | 01ADMIN |  | CAP |
| DC1-POD-AC-L2-1130 | DH2100 FAN-D21-01 L2 Checklist *Delete* | 3d | 2026-01-06 A | 2026-01-06 A | QTS-1030 SS | 100% | 2026-01-13 | 2026-01-15 |  |  | Commissioning |  |  |  |  |  | DELETED | DH1100 | 01ADMIN |  | CAP |
| DC1-POD-AC-L2-1140 | DH2100 COMP-D21-02 L2 Checklist *Delete* | 3d | 2026-01-06 A | 2026-01-06 A | QTS-1030 SS | 100% | 2026-01-13 | 2026-01-15 |  |  | Commissioning |  |  |  |  |  | DELETED | DH1100 | 01ADMIN |  | CAP |
| DC1-POD-AC-L2-1150 | DH2100 FAN-D21-02 L2 Checklist *Delete* | 3d | 2026-01-06 A | 2026-01-06 A | QTS-1030 SS | 100% | 2026-01-13 | 2026-01-15 |  |  | Commissioning |  |  |  |  |  | DELETED | DH1100 | 01ADMIN |  | CAP |
| DC1-POD-AC-L2-1160 | DH2100 COMP-E21-01 L2 Checklist *Delete* | 3d | 2026-01-06 A | 2026-01-06 A | QTS-1030 SS | 100% | 2026-01-16 | 2026-01-21 |  |  | Commissioning |  |  |  |  |  | DELETED | DH1100 | 01ADMIN |  | CAP |
| DC1-POD-AC-L2-1170 | DH2100 FAN-E21-01 L2 Checklist *Delete* | 3d | 2026-01-06 A | 2026-01-06 A | QTS-1030 SS | 100% | 2026-01-16 | 2026-01-21 |  |  | Commissioning |  |  |  |  |  | DELETED | DH1100 | 01ADMIN |  | CAP |
| DC1-POD-AC-L2-1180 | DH2100 COMP-E21-02 L2 Checklist *Delete* | 3d | 2026-01-06 A | 2026-01-06 A | QTS-1030 SS | 100% | 2026-01-16 | 2026-01-21 |  |  | Commissioning |  |  |  |  |  | DELETED | DH1100 | 01ADMIN |  | CAP |
| DC1-POD-AC-L2-1190 | DH2100 FAN-E21-02 L2 Checklist *Delete* | 3d | 2026-01-06 A | 2026-01-06 A | QTS-1030 SS | 100% | 2026-01-16 | 2026-01-21 |  |  | Commissioning |  |  |  |  |  | DELETED | DH1100 | 01ADMIN |  | CAP |
| DC1-POD-AC-L2-1200 | DH2100 COMP-F21-01 L2 Checklist *Delete* | 3d | 2026-01-06 A | 2026-01-06 A | QTS-1030 SS | 100% | 2026-01-22 | 2026-01-26 |  |  | Commissioning |  |  |  |  |  | DELETED | DH1100 | 01ADMIN |  | CAP |
| DC1-POD-AC-L2-1210 | DH2100 FAN-F21-01 L2 Checklist *Delete* | 3d | 2026-01-06 A | 2026-01-06 A | QTS-1030 SS | 100% | 2026-01-22 | 2026-01-26 |  |  | Commissioning |  |  |  |  |  | DELETED | DH1100 | 01ADMIN |  | CAP |
| DC1-POD-AC-L2-1220 | DH2100 COMP-F21-02 L2 Checklist *Delete* | 3d | 2026-01-06 A | 2026-01-06 A | QTS-1030 SS | 100% | 2026-01-22 | 2026-01-26 |  |  | Commissioning |  |  |  |  |  | DELETED | DH1100 | 01ADMIN |  | CAP |
| DC1-POD-AC-L2-1230 | DH2100 FAN-F21-02 L2 Checklist *Delete* | 3d | 2026-01-06 A | 2026-01-06 A | QTS-1030 SS | 100% | 2026-01-22 | 2026-01-26 |  |  | Commissioning |  |  |  |  |  | DELETED | DH1100 | 01ADMIN |  | CAP |
| DC1-POD-AC-L2-1240 | DH2100 COMP-R21-01 L2 Checklist *Delete* | 3d | 2026-01-06 A | 2026-01-06 A | QTS-1030 SS | 100% | 2026-01-27 | 2026-01-29 |  |  | Commissioning |  |  |  |  |  | DELETED | DH1100 |  |  | CAP |
| DC1-POD-AC-L2-1250 | DH2100 FAN-R21-01 L2 Checklist *Delete* | 3d | 2026-01-06 A | 2026-01-06 A | QTS-1030 SS | 100% | 2026-01-27 | 2026-01-29 |  |  | Commissioning |  |  |  |  |  | DELETED | DH1100 |  |  | CAP |
| DC1-POD-AC-L2-1260 | DH2100 COMP-R21-02 L2 Checklist *Delete* | 3d | 2026-01-06 A | 2026-01-06 A | QTS-1030 SS | 100% | 2026-01-27 | 2026-01-29 |  |  | Commissioning |  |  |  |  |  | DELETED | DH1100 |  |  | CAP |
| DC1-POD-AC-L2-1270 | DH2100 FAN-R21-02 L2 Checklist *Delete* | 3d | 2026-01-06 A | 2026-01-06 A | QTS-1030 SS | 100% | 2026-01-27 | 2026-01-29 |  |  | Commissioning |  |  |  |  |  | DELETED | DH1100 |  |  | CAP |
| DC1-POD-AC-L2-2000 | DH1100 COMP-A11-01 L2 Checklist *Delete* | 3d | 2026-01-06 A | 2026-01-06 A | QTS-1030 SS | 100% | 2025-12-22 | 2025-12-29 |  |  | Commissioning |  |  |  |  |  | DELETED | DH1100 | 01ADMIN |  | CAP |
| DC1-POD-AC-L2-2010 | DH1100 FAN-A11-01 L2 Checklist *Delete* | 3d | 2026-01-06 A | 2026-01-06 A | QTS-1030 SS | 100% | 2025-12-22 | 2025-12-29 |  |  | Commissioning |  |  |  |  |  | DELETED | DH1100 | 01ADMIN |  | CAP |
| DC1-POD-AC-L2-2020 | DH1100 COMP-A11-02 L2 Checklist *Delete* | 3d | 2026-01-06 A | 2026-01-06 A | QTS-1030 SS | 100% | 2025-12-22 | 2025-12-29 |  |  | Commissioning |  |  |  |  |  | DELETED | DH1100 | 01ADMIN |  | CAP |
| DC1-POD-AC-L2-2030 | DH1100 FAN-A11-02 L2 Checklist *Delete* | 3d | 2026-01-06 A | 2026-01-06 A | QTS-1030 SS | 100% | 2025-12-22 | 2025-12-29 |  |  | Commissioning |  |  |  |  |  | DELETED | DH1100 | 01ADMIN |  | CAP |
| DC1-POD-AC-L2-2040 | DH1100 COMP-B11-01 L2 Checklist *Delete* | 3d | 2026-01-06 A | 2026-01-06 A | QTS-1030 SS | 100% | 2026-01-09 | 2026-01-13 |  |  | Commissioning |  |  |  |  |  | DELETED | DH1100 | 01ADMIN |  | CAP |
| DC1-POD-AC-L2-2050 | DH1100 FAN-B11-01 L2 Checklist *Delete* | 3d | 2026-01-06 A | 2026-01-06 A | QTS-1030 SS | 100% | 2026-01-09 | 2026-01-13 |  |  | Commissioning |  |  |  |  |  | DELETED | DH1100 | 01ADMIN |  | CAP |
| DC1-POD-AC-L2-2060 | DH1100 COMP-B11-02 L2 Checklist *Delete* | 3d | 2026-01-06 A | 2026-01-06 A | QTS-1030 SS | 100% | 2026-01-09 | 2026-01-13 |  |  | Commissioning |  |  |  |  |  | DELETED | DH1100 | 01ADMIN |  | CAP |
| DC1-POD-AC-L2-2070 | DH1100 FAN-B11-02 L2 Checklist *Delete* | 3d | 2026-01-06 A | 2026-01-06 A | QTS-1030 SS | 100% | 2026-01-09 | 2026-01-13 |  |  | Commissioning |  |  |  |  |  | DELETED | DH1100 | 01ADMIN |  | CAP |
| DC1-POD-AC-L2-2080 | DH1100 COMP-C11-01 L2 Checklist *Delete* | 3d | 2026-01-06 A | 2026-01-06 A | QTS-1030 SS | 100% | 2026-01-14 | 2026-01-16 |  |  | Commissioning |  |  |  |  |  | DELETED | DH1100 | 01ADMIN |  | CAP |
| DC1-POD-AC-L2-2090 | DH1100 FAN-C11-01 L2 Checklist *Delete* | 3d | 2026-01-06 A | 2026-01-06 A | QTS-1030 SS | 100% | 2026-01-14 | 2026-01-16 |  |  | Commissioning |  |  |  |  |  | DELETED | DH1100 | 01ADMIN |  | CAP |
| DC1-POD-AC-L2-2100 | DH1100 COMP-C11-02 L2 Checklist *Delete* | 3d | 2026-01-06 A | 2026-01-06 A | QTS-1030 SS | 100% | 2026-01-14 | 2026-01-16 |  |  | Commissioning |  |  |  |  |  | DELETED | DH1100 | 01ADMIN |  | CAP |
| DC1-POD-AC-L2-2110 | DH1100 FAN-C11-02 L2 Checklist *Delete* | 3d | 2026-01-06 A | 2026-01-06 A | QTS-1030 SS | 100% | 2026-01-14 | 2026-01-16 |  |  | Commissioning |  |  |  |  |  | DELETED | DH1100 | 01ADMIN |  | CAP |
| DC1-POD-AC-L2-2120 | DH1100 COMP-D11-01 L2 Checklist *Delete* | 3d | 2026-01-06 A | 2026-01-06 A | QTS-1030 SS | 100% | 2026-01-20 | 2026-01-22 |  |  | Commissioning |  |  |  |  |  | DELETED | DH1100 | 01ADMIN |  | CAP |
| DC1-POD-AC-L2-2130 | DH1100 FAN-D11-01 L2 Checklist *Delete* | 3d | 2026-01-06 A | 2026-01-06 A | QTS-1030 SS | 100% | 2026-01-20 | 2026-01-22 |  |  | Commissioning |  |  |  |  |  | DELETED | DH1100 | 01ADMIN |  | CAP |
| DC1-POD-AC-L2-2140 | DH1100 COMP-D11-02 L2 Checklist *Delete* | 3d | 2026-01-06 A | 2026-01-06 A | QTS-1030 SS | 100% | 2026-01-20 | 2026-01-22 |  |  | Commissioning |  |  |  |  |  | DELETED | DH1100 | 01ADMIN |  | CAP |

Notes:
- DC1-POD-AC-L2-1000: allucent_notes_20251216_165335: Jason Johnston on 2025-12-09 15:17: Need to confirm who is responsible for updating this / Riley Warring on 2025-12-16 14:34: Not started as of 12/16 / allucent_notes_20251209_203830: Jason Johnston on 2025-12-09 15:17: Need to confirm who is responsible for updating this / allucent_notes_20251230_164549: Jason Johnston on 2025-12-09 15:17: Need to confirm who is responsible for updating this / Riley Warring on 2025-12-16 14:34: Not started as of 12/16 / Steps: Vendor Pre-Energization Checklist; CXA Pre-Energization Inspection; PEI/Clean-Walk / allucent_notes: 2025-12-09 15:17 - User: Jason Johnston - Date Added: 2025-12-09 15:17 - Note: Need to confirm who is responsible for updating this / 2025-12-16 14:34 - User: Riley Warring - Date Added: 2025-12-16 14:34 - Note: Not started as of 12/16
- DC1-POD-AC-L2-1010: allucent_notes_20251216_165335: Jason Johnston on 2025-12-09 15:17: Need to confirm who is responsible for updating this / Riley Warring on 2025-12-16 14:34: Not started as of 12/16 / allucent_notes_20251209_203830: Jason Johnston on 2025-12-09 15:17: Need to confirm who is responsible for updating this / allucent_notes_20251230_164549: Jason Johnston on 2025-12-09 15:17: Need to confirm who is responsible for updating this / Riley Warring on 2025-12-16 14:34: Not started as of 12/16 / Jason Johnston on 2025-12-30 16:44: No update / Steps: Vendor Pre-Energization Checklist; CXA Pre-Energization Inspection; PEI/Clean-Walk / allucent_notes: 2025-12-09 15:17 - User: Jason Johnston - Date Added: 2025-12-09 15:17 - Note: Need to confirm who is responsible for updating this / 2025-12-16 14:34 - User: Riley Warring - Date Added: 2025-12-16 14:34 - Note: Not started as of 12/16 / 2025-12-30 16:4
- DC1-POD-AC-L2-1020: allucent_notes_20251216_165335: Jason Johnston on 2025-12-09 15:17: Need to confirm who is responsible for updating this / Riley Warring on 2025-12-16 14:34: Not started as of 12/16 / allucent_notes_20251209_203830: Jason Johnston on 2025-12-09 15:17: Need to confirm who is responsible for updating this / allucent_notes_20251230_164549: Jason Johnston on 2025-12-09 15:17: Need to confirm who is responsible for updating this / Riley Warring on 2025-12-16 14:34: Not started as of 12/16 / Jason Johnston on 2025-12-30 16:44: No update / Steps: Vendor Pre-Energization Checklist; CXA Pre-Energization Inspection; PEI/Clean-Walk / allucent_notes: 2025-12-09 15:17 - User: Jason Johnston - Date Added: 2025-12-09 15:17 - Note: Need to confirm who is responsible for updating this / 2025-12-16 14:34 - User: Riley Warring - Date Added: 2025-12-16 14:34 - Note: Not started as of 12/16 / 2025-12-30 16:4
- DC1-POD-AC-L2-1030: allucent_notes_20251216_165335: Jason Johnston on 2025-12-09 15:17: Need to confirm who is responsible for updating this / Riley Warring on 2025-12-16 14:34: Not started as of 12/16 / allucent_notes_20251209_203830: Jason Johnston on 2025-12-09 15:17: Need to confirm who is responsible for updating this / allucent_notes_20251230_164549: Jason Johnston on 2025-12-09 15:17: Need to confirm who is responsible for updating this / Riley Warring on 2025-12-16 14:34: Not started as of 12/16 / Jason Johnston on 2025-12-30 16:44: No update / Steps: Vendor Pre-Energization Checklist; CXA Pre-Energization Inspection; PEI/Clean-Walk / allucent_notes: 2025-12-09 15:17 - User: Jason Johnston - Date Added: 2025-12-09 15:17 - Note: Need to confirm who is responsible for updating this / 2025-12-16 14:34 - User: Riley Warring - Date Added: 2025-12-16 14:34 - Note: Not started as of 12/16 / 2025-12-30 16:4
- DC1-POD-AC-L2-1040: allucent_notes_20251230_164549: Jason Johnston on 2025-12-30 16:44: No update / Steps: Vendor Pre-Energization Checklist; CXA Pre-Energization Inspection; PEI/Clean-Walk / allucent_notes: 2025-12-30 16:44 - User: Jason Johnston - Date Added: 2025-12-30 16:44 - Note: No update
- DC1-POD-AC-L2-1050: allucent_notes_20251230_164549: Jason Johnston on 2025-12-30 16:44: No update / Steps: Vendor Pre-Energization Checklist; CXA Pre-Energization Inspection; PEI/Clean-Walk / allucent_notes: 2025-12-30 16:44 - User: Jason Johnston - Date Added: 2025-12-30 16:44 - Note: No update
- DC1-POD-AC-L2-1060: allucent_notes_20251230_164549: Jason Johnston on 2025-12-30 16:44: No update / Steps: Vendor Pre-Energization Checklist; CXA Pre-Energization Inspection; PEI/Clean-Walk / allucent_notes: 2025-12-30 16:44 - User: Jason Johnston - Date Added: 2025-12-30 16:44 - Note: No update
- DC1-POD-AC-L2-1070: allucent_notes_20251230_164549: Jason Johnston on 2025-12-30 16:44: No update / Steps: Vendor Pre-Energization Checklist; CXA Pre-Energization Inspection; PEI/Clean-Walk / allucent_notes: 2025-12-30 16:44 - User: Jason Johnston - Date Added: 2025-12-30 16:44 - Note: No update
- DC1-POD-AC-L2-1080: Steps: Vendor Pre-Energization Checklist; CXA Pre-Energization Inspection; PEI/Clean-Walk
- DC1-POD-AC-L2-1090: Steps: Vendor Pre-Energization Checklist; CXA Pre-Energization Inspection; PEI/Clean-Walk
- DC1-POD-AC-L2-1100: Steps: Vendor Pre-Energization Checklist; CXA Pre-Energization Inspection; PEI/Clean-Walk
- DC1-POD-AC-L2-1110: Steps: Vendor Pre-Energization Checklist; CXA Pre-Energization Inspection; PEI/Clean-Walk
- DC1-POD-AC-L2-1120: Steps: Vendor Pre-Energization Checklist; CXA Pre-Energization Inspection; PEI/Clean-Walk
- DC1-POD-AC-L2-1130: Steps: Vendor Pre-Energization Checklist; CXA Pre-Energization Inspection; PEI/Clean-Walk
- DC1-POD-AC-L2-1140: Steps: Vendor Pre-Energization Checklist; CXA Pre-Energization Inspection; PEI/Clean-Walk
- DC1-POD-AC-L2-1150: Steps: Vendor Pre-Energization Checklist; CXA Pre-Energization Inspection; PEI/Clean-Walk
- DC1-POD-AC-L2-1160: Steps: Vendor Pre-Energization Checklist; CXA Pre-Energization Inspection; PEI/Clean-Walk
- DC1-POD-AC-L2-1170: Steps: Vendor Pre-Energization Checklist; CXA Pre-Energization Inspection; PEI/Clean-Walk
- DC1-POD-AC-L2-1180: Steps: Vendor Pre-Energization Checklist; CXA Pre-Energization Inspection; PEI/Clean-Walk
- DC1-POD-AC-L2-1190: Steps: Vendor Pre-Energization Checklist; CXA Pre-Energization Inspection; PEI/Clean-Walk
- DC1-POD-AC-L2-1200: Steps: Vendor Pre-Energization Checklist; CXA Pre-Energization Inspection; PEI/Clean-Walk
- DC1-POD-AC-L2-1210: Steps: Vendor Pre-Energization Checklist; CXA Pre-Energization Inspection; PEI/Clean-Walk
- DC1-POD-AC-L2-1220: Steps: Vendor Pre-Energization Checklist; CXA Pre-Energization Inspection; PEI/Clean-Walk
- DC1-POD-AC-L2-1230: Steps: Vendor Pre-Energization Checklist; CXA Pre-Energization Inspection; PEI/Clean-Walk
- DC1-POD-AC-L2-1240: Steps: Vendor Pre-Energization Checklist; CXA Pre-Energization Inspection; PEI/Clean-Walk
- DC1-POD-AC-L2-1250: Steps: Vendor Pre-Energization Checklist; CXA Pre-Energization Inspection; PEI/Clean-Walk
- DC1-POD-AC-L2-1260: Steps: Vendor Pre-Energization Checklist; CXA Pre-Energization Inspection; PEI/Clean-Walk
- DC1-POD-AC-L2-1270: Steps: Vendor Pre-Energization Checklist; CXA Pre-Energization Inspection; PEI/Clean-Walk
- DC1-POD-AC-L2-2000: allucent_notes_20251216_165335: Jason Johnston on 2025-12-09 15:17: Need to confirm who is responsible for updating this / Riley Warring on 2025-12-16 14:36: Not started as of 12/16 / allucent_notes_20251209_203830: Jason Johnston on 2025-12-09 15:17: Need to confirm who is responsible for updating this / allucent_notes_20251230_164549: Jason Johnston on 2025-12-09 15:17: Need to confirm who is responsible for updating this / Riley Warring on 2025-12-16 14:36: Not started as of 12/16 / Riley Warring on 2025-12-29 12:12: Checklist not complete in Cx Alloy / Steps: Vendor Pre-Energization Checklist; CXA Pre-Energization Inspection; PEI/Clean-Walk / allucent_notes: 2025-12-09 15:17 - User: Jason Johnston - Date Added: 2025-12-09 15:17 - Note: Need to confirm who is responsible for updating this / 2025-12-16 14:36 - User: Riley Warring - Date Added: 2025-12-16 14:36 - Note: Not started as of 12/16 / 2025-12-29 12:1
- DC1-POD-AC-L2-2010: allucent_notes_20251216_165335: Jason Johnston on 2025-12-09 15:17: Need to confirm who is responsible for updating this / Riley Warring on 2025-12-16 14:36: Not started as of 12/16 / allucent_notes_20251209_203830: Jason Johnston on 2025-12-09 15:17: Need to confirm who is responsible for updating this / allucent_notes_20251230_164549: Jason Johnston on 2025-12-09 15:17: Need to confirm who is responsible for updating this / Riley Warring on 2025-12-16 14:36: Not started as of 12/16 / Riley Warring on 2025-12-29 12:12: Checklist not complete in Cx Alloy / Steps: Vendor Pre-Energization Checklist; CXA Pre-Energization Inspection; PEI/Clean-Walk / allucent_notes: 2025-12-09 15:17 - User: Jason Johnston - Date Added: 2025-12-09 15:17 - Note: Need to confirm who is responsible for updating this / 2025-12-16 14:36 - User: Riley Warring - Date Added: 2025-12-16 14:36 - Note: Not started as of 12/16 / 2025-12-29 12:1
- DC1-POD-AC-L2-2020: allucent_notes_20251216_165335: Jason Johnston on 2025-12-09 15:17: Need to confirm who is responsible for updating this / Riley Warring on 2025-12-16 14:36: Not started as of 12/16 / allucent_notes_20251209_203830: Jason Johnston on 2025-12-09 15:17: Need to confirm who is responsible for updating this / allucent_notes_20251230_164549: Jason Johnston on 2025-12-09 15:17: Need to confirm who is responsible for updating this / Riley Warring on 2025-12-16 14:36: Not started as of 12/16 / Riley Warring on 2025-12-29 12:13: Checklist not complete in Cx Alloy / Steps: Vendor Pre-Energization Checklist; CXA Pre-Energization Inspection; PEI/Clean-Walk / allucent_notes: 2025-12-09 15:17 - User: Jason Johnston - Date Added: 2025-12-09 15:17 - Note: Need to confirm who is responsible for updating this / 2025-12-16 14:36 - User: Riley Warring - Date Added: 2025-12-16 14:36 - Note: Not started as of 12/16 / 2025-12-29 12:1
- DC1-POD-AC-L2-2030: allucent_notes_20251216_165335: Jason Johnston on 2025-12-09 15:17: Need to confirm who is responsible for updating this / Riley Warring on 2025-12-16 14:36: Not started as of 12/16 / allucent_notes_20251209_203830: Jason Johnston on 2025-12-09 15:17: Need to confirm who is responsible for updating this / allucent_notes_20251230_164549: Jason Johnston on 2025-12-09 15:17: Need to confirm who is responsible for updating this / Riley Warring on 2025-12-16 14:36: Not started as of 12/16 / Riley Warring on 2025-12-29 12:13: Checklist not complete in Cx Alloy / Steps: Vendor Pre-Energization Checklist; CXA Pre-Energization Inspection; PEI/Clean-Walk / allucent_notes: 2025-12-09 15:17 - User: Jason Johnston - Date Added: 2025-12-09 15:17 - Note: Need to confirm who is responsible for updating this / 2025-12-16 14:36 - User: Riley Warring - Date Added: 2025-12-16 14:36 - Note: Not started as of 12/16 / 2025-12-29 12:1
- DC1-POD-AC-L2-2040: Steps: Vendor Pre-Energization Checklist; CXA Pre-Energization Inspection; PEI/Clean-Walk
- DC1-POD-AC-L2-2050: Steps: Vendor Pre-Energization Checklist; CXA Pre-Energization Inspection; PEI/Clean-Walk
- DC1-POD-AC-L2-2060: Steps: Vendor Pre-Energization Checklist; CXA Pre-Energization Inspection; PEI/Clean-Walk
- DC1-POD-AC-L2-2070: Steps: Vendor Pre-Energization Checklist; CXA Pre-Energization Inspection; PEI/Clean-Walk
- DC1-POD-AC-L2-2080: Steps: Vendor Pre-Energization Checklist; CXA Pre-Energization Inspection; PEI/Clean-Walk
- DC1-POD-AC-L2-2090: Steps: Vendor Pre-Energization Checklist; CXA Pre-Energization Inspection; PEI/Clean-Walk
- DC1-POD-AC-L2-2100: Steps: Vendor Pre-Energization Checklist; CXA Pre-Energization Inspection; PEI/Clean-Walk
- DC1-POD-AC-L2-2110: Steps: Vendor Pre-Energization Checklist; CXA Pre-Energization Inspection; PEI/Clean-Walk
- DC1-POD-AC-L2-2120: Steps: Vendor Pre-Energization Checklist; CXA Pre-Energization Inspection; PEI/Clean-Walk
- DC1-POD-AC-L2-2130: Steps: Vendor Pre-Energization Checklist; CXA Pre-Energization Inspection; PEI/Clean-Walk
- DC1-POD-AC-L2-2140: Steps: Vendor Pre-Energization Checklist; CXA Pre-Energization Inspection; PEI/Clean-Walk

| ID | Activity | Duration | Start | Finish | Predecessors | Complete | Planned start | Planned finish | Vendor Responsible Party | Allucent CSI Group | Layton Discipline | DELETED | D | Notes |
| --- | --- | --- | --- | --- | --- | --- | --- | --- | --- | --- | --- | --- | --- | --- |
| DC1-POD-AC-L2-2150 | DH1100 FAN-D11-02 L2 Checklist *Delete* | 3d | 2026-01-06 A | 2026-01-06 A | QTS-1030 SS | 100% | 2026-01-20 | 2026-01-22 | CAP | 01ADMIN | Commissioning | DELETED | DH1100 |  |
| DC1-POD-AC-L2-2160 | DH1100 COMP-E11-01 L2 Checklist *Delete* | 3d | 2026-01-06 A | 2026-01-06 A | QTS-1030 SS | 100% | 2026-01-23 | 2026-01-27 | CAP | 01ADMIN | Commissioning | DELETED | DH1100 |  |
| DC1-POD-AC-L2-2170 | DH1100 FAN-E11-01 L2 Checklist *Delete* | 3d | 2026-01-06 A | 2026-01-06 A | QTS-1030 SS | 100% | 2026-01-23 | 2026-01-27 | CAP | 01ADMIN | Commissioning | DELETED | DH1100 |  |
| DC1-POD-AC-L2-2180 | DH1100 COMP-E11-02 L2 Checklist *Delete* | 3d | 2026-01-06 A | 2026-01-06 A | QTS-1030 SS | 100% | 2026-01-23 | 2026-01-27 | CAP | 01ADMIN | Commissioning | DELETED | DH1100 |  |
| DC1-POD-AC-L2-2190 | DH1100 FAN-E11-02 L2 Checklist *Delete* | 3d | 2026-01-06 A | 2026-01-06 A | QTS-1030 SS | 100% | 2026-01-23 | 2026-01-27 | CAP | 01ADMIN | Commissioning | DELETED | DH1100 |  |
| DC1-POD-AC-L2-2200 | DH1100 COMP-F11-01 L2 Checklist *Delete* | 3d | 2026-01-06 A | 2026-01-06 A | QTS-1030 SS | 100% | 2026-01-28 | 2026-01-30 | CAP | 01ADMIN | Commissioning | DELETED | DH1100 |  |
| DC1-POD-AC-L2-2210 | DH1100 FAN-F11-01 L2 Checklist *Delete* | 3d | 2026-01-06 A | 2026-01-06 A | QTS-1030 SS | 100% | 2026-01-28 | 2026-01-30 | CAP | 01ADMIN | Commissioning | DELETED | DH1100 |  |
| DC1-POD-AC-L2-2220 | DH1100 COMP-F11-02 L2 Checklist *Delete* | 3d | 2026-01-06 A | 2026-01-06 A | QTS-1030 SS | 100% | 2026-01-28 | 2026-01-30 | CAP | 01ADMIN | Commissioning | DELETED | DH1100 |  |
| DC1-POD-AC-L2-2230 | DH1100 FAN-F11-02 L2 Checklist *Delete* | 3d | 2026-01-06 A | 2026-01-06 A | QTS-1030 SS | 100% | 2026-01-28 | 2026-01-30 | CAP | 01ADMIN | Commissioning | DELETED | DH1100 |  |
| DC1-POD-AC-L2-2240 | DH1100 COMP-R11-01 L2 Checklist *Delete* | 3d | 2026-01-06 A | 2026-01-06 A | QTS-1030 SS | 100% | 2026-02-02 | 2026-02-04 | CAP |  | Commissioning | DELETED | DH1100 | Do we need L2s? |
| DC1-POD-AC-L2-2250 | DH1100 FAN-R11-01 L2 Checklist *Delete* | 3d | 2026-01-06 A | 2026-01-06 A | QTS-1030 SS | 100% | 2026-02-02 | 2026-02-04 | CAP |  | Commissioning | DELETED | DH1100 | Do we need L2s? |
| DC1-POD-AC-L2-2260 | DH1100 COMP-R11-02 L2 Checklist *Delete* | 3d | 2026-01-06 A | 2026-01-06 A | QTS-1030 SS | 100% | 2026-02-02 | 2026-02-04 | CAP |  | Commissioning | DELETED | DH1100 | Do we need L2s? |
| DC1-POD-AC-L2-2270 | DH1100 FAN-R11-02 L2 Checklist *Delete* | 3d | 2026-01-06 A | 2026-01-06 A | QTS-1030 SS | 100% | 2026-02-02 | 2026-02-04 | CAP |  | Commissioning | DELETED | DH1100 | Do we need L2s? |
| DC1-POD-AC-L2-2280 | DH2200 COMP-A22-01 L2 Checklist *Delete* | 3d | 2026-01-06 A | 2026-01-06 A | QTS-1030 SS | 100% | 2026-01-29 | 2026-02-02 | CAP | 01ADMIN | Commissioning | DELETED | DH1100 | Do we need? |
| DC1-POD-AC-L2-2290 | DH2200 FAN-A22-01 L2 Checklist *Delete* | 3d | 2026-01-06 A | 2026-01-06 A | QTS-1030 SS | 100% | 2026-01-29 | 2026-02-02 | CAP | 01ADMIN | Commissioning | DELETED | DH1100 | Do we need? |
| DC1-POD-AC-L2-2300 | DH2200 COMP-A22-02 L2 Checklist *Delete* | 3d | 2026-01-06 A | 2026-01-06 A | QTS-1030 SS | 100% | 2026-01-29 | 2026-02-02 | CAP | 01ADMIN | Commissioning | DELETED | DH1100 | Do we need? |
| DC1-POD-AC-L2-2310 | DH2200 FAN-A22-02 L2 Checklist *Delete* | 3d | 2026-01-06 A | 2026-01-06 A | QTS-1030 SS | 100% | 2026-01-29 | 2026-02-02 | CAP | 01ADMIN | Commissioning | DELETED | DH1100 | Do we need? |
| DC1-POD-AC-L2-2320 | DH2200 COMP-B22-01 L2 Checklist *Delete* | 3d | 2026-01-06 A | 2026-01-06 A | QTS-1030 SS | 100% | 2026-02-03 | 2026-02-05 | CAP | 01ADMIN | Commissioning | DELETED | DH1100 | Do we need? |
| DC1-POD-AC-L2-2330 | DH2200 FAN-B22-01 L2 Checklist *Delete* | 3d | 2026-01-06 A | 2026-01-06 A | QTS-1030 SS | 100% | 2026-02-03 | 2026-02-05 | CAP | 01ADMIN | Commissioning | DELETED | DH1100 | Do we need? |
| DC1-POD-AC-L2-2340 | DH2200 COMP-B22-02 L2 Checklist *Delete* | 3d | 2026-01-06 A | 2026-01-06 A | QTS-1030 SS | 100% | 2026-02-03 | 2026-02-05 | CAP | 01ADMIN | Commissioning | DELETED | DH1100 | Do we need? |
| DC1-POD-AC-L2-2350 | DH2200 FAN-B22-02 L2 Checklist *Delete* | 3d | 2026-01-06 A | 2026-01-06 A | QTS-1030 SS | 100% | 2026-02-03 | 2026-02-05 | CAP | 01ADMIN | Commissioning | DELETED | DH1100 | Do we need? |
| DC1-POD-AC-L2-2360 | DH2200 COMP-C22-01 L2 Checklist *Delete* | 3d | 2026-01-06 A | 2026-01-06 A | QTS-1030 SS | 100% | 2026-02-06 | 2026-02-10 | CAP |  | Commissioning | DELETED | DH1100 | Do we need? |
| DC1-POD-AC-L2-2370 | DH2200 FAN-C22-01 L2 Checklist *Delete* | 3d | 2026-01-06 A | 2026-01-06 A | QTS-1030 SS | 100% | 2026-02-06 | 2026-02-10 | CAP |  | Commissioning | DELETED | DH1100 | Do we need? |
| DC1-POD-AC-L2-2380 | DH2200 COMP-C22-02 L2 Checklist *Delete* | 3d | 2026-01-06 A | 2026-01-06 A | QTS-1030 SS | 100% | 2026-02-06 | 2026-02-10 | CAP |  | Commissioning | DELETED | DH1100 | Do we need? |
| DC1-POD-AC-L2-2390 | DH2200 FAN-C22-02 L2 Checklist *Delete* | 3d | 2026-01-06 A | 2026-01-06 A | QTS-1030 SS | 100% | 2026-02-06 | 2026-02-10 | CAP |  | Commissioning | DELETED | DH1100 | Do we need? |
| DC1-POD-AC-L2-2400 | DH2200 COMP-D22-01 L2 Checklist *Delete* | 3d | 2026-01-06 A | 2026-01-06 A | QTS-1030 SS | 100% | 2026-02-11 | 2026-02-13 | CAP |  | Commissioning | DELETED | DH1100 | Do we need? |
| DC1-POD-AC-L2-2410 | DH2200 FAN-D22-01 L2 Checklist *Delete* | 3d | 2026-01-06 A | 2026-01-06 A | QTS-1030 SS | 100% | 2026-02-11 | 2026-02-13 | CAP |  | Commissioning | DELETED | DH1100 | Do we need? |
| DC1-POD-AC-L2-2420 | DH2200 COMP-D22-02 L2 Checklist *Delete* | 3d | 2026-01-06 A | 2026-01-06 A | QTS-1030 SS | 100% | 2026-02-11 | 2026-02-13 | CAP |  | Commissioning | DELETED | DH1100 | Do we need? |
| DC1-POD-AC-L2-2430 | DH2200 FAN-D22-02 L2 Checklist *Delete* | 3d | 2026-01-06 A | 2026-01-06 A | QTS-1030 SS | 100% | 2026-02-11 | 2026-02-13 | CAP |  | Commissioning | DELETED | DH1100 | Do we need? |
| DC1-POD-AC-L2-2440 | DH2200 COMP-E22-01 L2 Checklist *Delete* | 3d | 2026-01-06 A | 2026-01-06 A | QTS-1030 SS | 100% | 2026-02-16 | 2026-02-18 | CAP |  | Commissioning | DELETED | DH1100 | Do we need? |
| DC1-POD-AC-L2-2450 | DH2200 FAN-E22-01 L2 Checklist *Delete* | 3d | 2026-01-06 A | 2026-01-06 A | QTS-1030 SS | 100% | 2026-02-16 | 2026-02-18 | CAP |  | Commissioning | DELETED | DH1100 | Do we need? |
| DC1-POD-AC-L2-2460 | DH2200 COMP-E22-02 L2 Checklist *Delete* | 3d | 2026-01-06 A | 2026-01-06 A | QTS-1030 SS | 100% | 2026-02-16 | 2026-02-18 | CAP |  | Commissioning | DELETED | DH1100 | Do we need? |
| DC1-POD-AC-L2-2470 | DH2200 FAN-E22-02 L2 Checklist *Delete* | 3d | 2026-01-06 A | 2026-01-06 A | QTS-1030 SS | 100% | 2026-02-16 | 2026-02-18 | CAP |  | Commissioning | DELETED | DH1100 | Do we need? |
| DC1-POD-AC-L2-2480 | DH2200 COMP-F22-01 L2 Checklist *Delete* | 3d | 2026-01-06 A | 2026-01-06 A | QTS-1030 SS | 100% | 2026-02-19 | 2026-02-23 | CAP |  | Commissioning | DELETED | DH1100 | Do we need? |
| DC1-POD-AC-L2-2490 | DH2200 FAN-F22-01 L2 Checklist *Delete* | 3d | 2026-01-06 A | 2026-01-06 A | QTS-1030 SS | 100% | 2026-02-19 | 2026-02-23 | CAP |  | Commissioning | DELETED | DH1100 | Do we need? |
| DC1-POD-AC-L2-2500 | DH2200 COMP-F22-02 L2 Checklist *Delete* | 3d | 2026-01-06 A | 2026-01-06 A | QTS-1030 SS | 100% | 2026-02-19 | 2026-02-23 | CAP |  | Commissioning | DELETED | DH1100 | Do we need? |
| DC1-POD-AC-L2-2510 | DH2200 FAN-F22-02 L2 Checklist *Delete* | 3d | 2026-01-06 A | 2026-01-06 A | QTS-1030 SS | 100% | 2026-02-19 | 2026-02-23 | CAP |  | Commissioning | DELETED | DH1100 | Do we need? |
| DC1-POD-AC-L2-2520 | DH2200 COMP-R22-01 L2 Checklist *Delete* | 3d | 2026-01-06 A | 2026-01-06 A | QTS-1030 SS | 100% | 2026-02-24 | 2026-02-26 | CAP |  | Commissioning | DELETED | DH1100 | Do we need? |
| DC1-POD-AC-L2-2530 | DH2200 FAN-R22-01 L2 Checklist *Delete* | 3d | 2026-01-06 A | 2026-01-06 A | QTS-1030 SS | 100% | 2026-02-24 | 2026-02-26 | CAP |  | Commissioning | DELETED | DH1100 | Do we need? |
| DC1-POD-AC-L2-2540 | DH2200 COMP-R22-02 L2 Checklist *Delete* | 3d | 2026-01-06 A | 2026-01-06 A | QTS-1030 SS | 100% | 2026-02-24 | 2026-02-26 | CAP |  | Commissioning | DELETED | DH1100 | Do we need? |
| DC1-POD-AC-L2-2550 | DH2200 FAN-R22-02 L2 Checklist *Delete* | 3d | 2026-01-06 A | 2026-01-06 A | QTS-1030 SS | 100% | 2026-02-24 | 2026-02-26 | CAP |  | Commissioning | DELETED | DH1100 | Do we need? |
| DC1-POD-AC-L2-2560 | DH1200 COMP-A12-01 L2 Checklist *Delete* | 3d | 2026-01-06 A | 2026-01-06 A | QTS-1030 SS | 100% | 2026-01-07 | 2026-01-09 | CAP | 01ADMIN | Commissioning | DELETED | DH1100 |  |
| DC1-POD-AC-L2-2570 | DH1200 FAN-A12-01 L2 Checklist *Delete* | 3d | 2026-01-06 A | 2026-01-06 A | QTS-1030 SS | 100% | 2026-01-07 | 2026-01-09 | CAP | 01ADMIN | Commissioning | DELETED | DH1100 |  |
| DC1-POD-AC-L2-2580 | DH1200 COMP-A12-02 L2 Checklist *Delete* | 3d | 2026-01-06 A | 2026-01-06 A | QTS-1030 SS | 100% | 2026-01-07 | 2026-01-09 | CAP | 01ADMIN | Commissioning | DELETED | DH1100 |  |
| DC1-POD-AC-L2-2590 | DH1200 FAN-A12-02 L2 Checklist *Delete* | 3d | 2026-01-06 A | 2026-01-06 A | QTS-1030 SS | 100% | 2026-01-07 | 2026-01-09 | CAP | 01ADMIN | Commissioning | DELETED | DH1100 |  |
| DC1-POD-AC-L2-2600 | DH1200 COMP-B12-01 L2 Checklist *Delete* | 3d | 2026-01-06 A | 2026-01-06 A | QTS-1030 SS | 100% | 2026-01-12 | 2026-01-14 | CAP | 01ADMIN | Commissioning | DELETED | DH1100 |  |
| DC1-POD-AC-L2-2610 | DH1200 FAN-B12-01 L2 Checklist *Delete* | 3d | 2026-01-06 A | 2026-01-06 A | QTS-1030 SS | 100% | 2026-01-12 | 2026-01-14 | CAP | 01ADMIN | Commissioning | DELETED | DH1100 |  |
| DC1-POD-AC-L2-2620 | DH1200 COMP-B12-02 L2 Checklist *Delete* | 3d | 2026-01-06 A | 2026-01-06 A | QTS-1030 SS | 100% | 2026-01-12 | 2026-01-14 | CAP | 01ADMIN | Commissioning | DELETED | DH1100 |  |
| DC1-POD-AC-L2-2630 | DH1200 FAN-B12-02 L2 Checklist *Delete* | 3d | 2026-01-06 A | 2026-01-06 A | QTS-1030 SS | 100% | 2026-01-12 | 2026-01-14 | CAP | 01ADMIN | Commissioning | DELETED | DH1100 |  |
| DC1-POD-AC-L2-2640 | DH1200 COMP-C12-01 L2 Checklist *Delete* | 3d | 2026-01-06 A | 2026-01-06 A | QTS-1030 SS | 100% | 2026-01-15 | 2026-01-20 | CAP |  | Commissioning | DELETED | DH1100 |  |
| DC1-POD-AC-L2-2650 | DH1200 FAN-C12-01 L2 Checklist *Delete* | 3d | 2026-01-06 A | 2026-01-06 A | QTS-1030 SS | 100% | 2026-01-15 | 2026-01-20 | CAP |  | Commissioning | DELETED | DH1100 |  |
| DC1-POD-AC-L2-2660 | DH1200 COMP-C12-02 L2 Checklist *Delete* | 3d | 2026-01-06 A | 2026-01-06 A | QTS-1030 SS | 100% | 2026-01-15 | 2026-01-20 | CAP |  | Commissioning | DELETED | DH1100 |  |
| DC1-POD-AC-L2-2670 | DH1200 FAN-C12-02 L2 Checklist *Delete* | 3d | 2026-01-06 A | 2026-01-06 A | QTS-1030 SS | 100% | 2026-01-15 | 2026-01-20 | CAP |  | Commissioning | DELETED | DH1100 |  |
| DC1-POD-AC-L2-2680 | DH1200 COMP-D12-01 L2 Checklist *Delete* | 3d | 2026-01-06 A | 2026-01-06 A | QTS-1030 SS | 100% | 2026-01-21 | 2026-01-23 | CAP |  | Commissioning | DELETED | DH1100 |  |
| DC1-POD-AC-L2-2690 | DH1200 FAN-D12-01 L2 Checklist *Delete* | 3d | 2026-01-06 A | 2026-01-06 A | QTS-1030 SS | 100% | 2026-01-21 | 2026-01-23 | CAP |  | Commissioning | DELETED | DH1100 |  |
| DC1-POD-AC-L2-2700 | DH1200 COMP-D12-02 L2 Checklist *Delete* | 3d | 2026-01-06 A | 2026-01-06 A | QTS-1030 SS | 100% | 2026-01-21 | 2026-01-23 | CAP |  | Commissioning | DELETED | DH1100 |  |
| DC1-POD-AC-L2-2710 | DH1200 FAN-D12-02 L2 Checklist *Delete* | 3d | 2026-01-06 A | 2026-01-06 A | QTS-1030 SS | 100% | 2026-01-21 | 2026-01-23 | CAP |  | Commissioning | DELETED | DH1100 |  |
| DC1-POD-AC-L2-2720 | DH1200 COMP-E12-01 L2 Checklist *Delete* | 3d | 2026-01-06 A | 2026-01-06 A | QTS-1030 SS | 100% | 2026-01-26 | 2026-01-28 | CAP |  | Commissioning | DELETED | DH1100 |  |
| DC1-POD-AC-L2-2730 | DH1200 FAN-E12-01 L2 Checklist *Delete* | 3d | 2026-01-06 A | 2026-01-06 A | QTS-1030 SS | 100% | 2026-01-26 | 2026-01-28 | CAP |  | Commissioning | DELETED | DH1100 |  |
| DC1-POD-AC-L2-2740 | DH1200 COMP-E12-02 L2 Checklist *Delete* | 3d | 2026-01-06 A | 2026-01-06 A | QTS-1030 SS | 100% | 2026-01-26 | 2026-01-28 | CAP |  | Commissioning | DELETED | DH1100 |  |
| DC1-POD-AC-L2-2750 | DH1200 FAN-E12-02 L2 Checklist *Delete* | 3d | 2026-01-06 A | 2026-01-06 A | QTS-1030 SS | 100% | 2026-01-26 | 2026-01-28 | CAP |  | Commissioning | DELETED | DH1100 |  |
| DC1-POD-AC-L2-2760 | DH1200 COMP-F12-01 L2 Checklist *Delete* | 3d | 2026-01-06 A | 2026-01-06 A | QTS-1030 SS | 100% | 2026-01-29 | 2026-02-02 | CAP |  | Commissioning | DELETED | DH1100 | Do we need? |
| DC1-POD-AC-L2-2770 | DH1200 FAN-F12-01 L2 Checklist *Delete* | 3d | 2026-01-06 A | 2026-01-06 A | QTS-1030 SS | 100% | 2026-01-29 | 2026-02-02 | CAP |  | Commissioning | DELETED | DH1100 | Do we need? |
| DC1-POD-AC-L2-2780 | DH1200 COMP-F12-02 L2 Checklist *Delete* | 3d | 2026-01-06 A | 2026-01-06 A | QTS-1030 SS | 100% | 2026-01-29 | 2026-02-02 | CAP |  | Commissioning | DELETED | DH1100 | Do we need? |
| DC1-POD-AC-L2-2790 | DH1200 FAN-F12-02 L2 Checklist *Delete* | 3d | 2026-01-06 A | 2026-01-06 A | QTS-1030 SS | 100% | 2026-01-29 | 2026-02-02 | CAP |  | Commissioning | DELETED | DH1100 | Do we need? |
| DC1-POD-AC-L2-2800 | DH1200 COMP-R12-01 L2 Checklist *Delete* | 3d | 2026-01-06 A | 2026-01-06 A | QTS-1030 SS | 100% | 2026-02-03 | 2026-02-05 | CAP |  | Commissioning | DELETED | DH1100 | Do we need? |
| DC1-POD-AC-L2-2810 | DH1200 FAN-R12-01 L2 Checklist *Delete* | 3d | 2026-01-06 A | 2026-01-06 A | QTS-1030 SS | 100% | 2026-02-03 | 2026-02-05 | CAP |  | Commissioning | DELETED | DH1100 | Do we need? |
| DC1-POD-AC-L2-2820 | DH1200 COMP-R12-02 L2 Checklist *Delete* | 3d | 2026-01-06 A | 2026-01-06 A | QTS-1030 SS | 100% | 2026-02-03 | 2026-02-05 | CAP |  | Commissioning | DELETED | DH1100 | Do we need? |
| DC1-POD-AC-L2-2830 | DH1200 FAN-R12-02 L2 Checklist *Delete* | 3d | 2026-01-06 A | 2026-01-06 A | QTS-1030 SS | 100% | 2026-02-03 | 2026-02-05 | CAP |  | Commissioning | DELETED | DH1100 | Do we need? |
| DC1-POD-AC-L2-2840 | DH2300 COMP-A23-01 L2 Checklist *Delete* | 3d | 2026-01-06 A | 2026-01-06 A | QTS-1030 SS | 100% | 2026-02-23 | 2026-02-25 | CAP |  | Commissioning | DELETED | DH1100 | Do we need? |

Notes:
- DC1-POD-AC-L2-2150: Steps: Vendor Pre-Energization Checklist; CXA Pre-Energization Inspection; PEI/Clean-Walk
- DC1-POD-AC-L2-2160: Steps: Vendor Pre-Energization Checklist; CXA Pre-Energization Inspection; PEI/Clean-Walk
- DC1-POD-AC-L2-2170: Steps: Vendor Pre-Energization Checklist; CXA Pre-Energization Inspection; PEI/Clean-Walk
- DC1-POD-AC-L2-2180: Steps: Vendor Pre-Energization Checklist; CXA Pre-Energization Inspection; PEI/Clean-Walk
- DC1-POD-AC-L2-2190: Steps: Vendor Pre-Energization Checklist; CXA Pre-Energization Inspection; PEI/Clean-Walk
- DC1-POD-AC-L2-2200: Steps: Vendor Pre-Energization Checklist; CXA Pre-Energization Inspection; PEI/Clean-Walk
- DC1-POD-AC-L2-2210: Steps: Vendor Pre-Energization Checklist; CXA Pre-Energization Inspection; PEI/Clean-Walk
- DC1-POD-AC-L2-2220: Steps: Vendor Pre-Energization Checklist; CXA Pre-Energization Inspection; PEI/Clean-Walk
- DC1-POD-AC-L2-2230: Steps: Vendor Pre-Energization Checklist; CXA Pre-Energization Inspection; PEI/Clean-Walk
- DC1-POD-AC-L2-2240: Steps: Vendor Pre-Energization Checklist; CXA Pre-Energization Inspection; PEI/Clean-Walk
- DC1-POD-AC-L2-2250: Steps: Vendor Pre-Energization Checklist; CXA Pre-Energization Inspection; PEI/Clean-Walk
- DC1-POD-AC-L2-2260: Steps: Vendor Pre-Energization Checklist; CXA Pre-Energization Inspection; PEI/Clean-Walk
- DC1-POD-AC-L2-2270: Steps: Vendor Pre-Energization Checklist; CXA Pre-Energization Inspection; PEI/Clean-Walk
- DC1-POD-AC-L2-2280: Steps: Vendor Pre-Energization Checklist; CXA Pre-Energization Inspection; PEI/Clean-Walk
- DC1-POD-AC-L2-2290: Steps: Vendor Pre-Energization Checklist; CXA Pre-Energization Inspection; PEI/Clean-Walk
- DC1-POD-AC-L2-2300: Steps: Vendor Pre-Energization Checklist; CXA Pre-Energization Inspection; PEI/Clean-Walk
- DC1-POD-AC-L2-2310: Steps: Vendor Pre-Energization Checklist; CXA Pre-Energization Inspection; PEI/Clean-Walk
- DC1-POD-AC-L2-2320: Steps: Vendor Pre-Energization Checklist; CXA Pre-Energization Inspection; PEI/Clean-Walk
- DC1-POD-AC-L2-2330: Steps: Vendor Pre-Energization Checklist; CXA Pre-Energization Inspection; PEI/Clean-Walk
- DC1-POD-AC-L2-2340: Steps: Vendor Pre-Energization Checklist; CXA Pre-Energization Inspection; PEI/Clean-Walk
- DC1-POD-AC-L2-2350: Steps: Vendor Pre-Energization Checklist; CXA Pre-Energization Inspection; PEI/Clean-Walk
- DC1-POD-AC-L2-2360: Steps: Vendor Pre-Energization Checklist; CXA Pre-Energization Inspection; PEI/Clean-Walk
- DC1-POD-AC-L2-2370: Steps: Vendor Pre-Energization Checklist; CXA Pre-Energization Inspection; PEI/Clean-Walk
- DC1-POD-AC-L2-2380: Steps: Vendor Pre-Energization Checklist; CXA Pre-Energization Inspection; PEI/Clean-Walk
- DC1-POD-AC-L2-2390: Steps: Vendor Pre-Energization Checklist; CXA Pre-Energization Inspection; PEI/Clean-Walk
- DC1-POD-AC-L2-2400: Steps: Vendor Pre-Energization Checklist; CXA Pre-Energization Inspection; PEI/Clean-Walk
- DC1-POD-AC-L2-2410: Steps: Vendor Pre-Energization Checklist; CXA Pre-Energization Inspection; PEI/Clean-Walk
- DC1-POD-AC-L2-2420: Steps: Vendor Pre-Energization Checklist; CXA Pre-Energization Inspection; PEI/Clean-Walk
- DC1-POD-AC-L2-2430: Steps: Vendor Pre-Energization Checklist; CXA Pre-Energization Inspection; PEI/Clean-Walk
- DC1-POD-AC-L2-2440: Steps: Vendor Pre-Energization Checklist; CXA Pre-Energization Inspection; PEI/Clean-Walk
- DC1-POD-AC-L2-2450: Steps: Vendor Pre-Energization Checklist; CXA Pre-Energization Inspection; PEI/Clean-Walk
- DC1-POD-AC-L2-2460: Steps: Vendor Pre-Energization Checklist; CXA Pre-Energization Inspection; PEI/Clean-Walk
- DC1-POD-AC-L2-2470: Steps: Vendor Pre-Energization Checklist; CXA Pre-Energization Inspection; PEI/Clean-Walk
- DC1-POD-AC-L2-2480: Steps: Vendor Pre-Energization Checklist; CXA Pre-Energization Inspection; PEI/Clean-Walk
- DC1-POD-AC-L2-2490: Steps: Vendor Pre-Energization Checklist; CXA Pre-Energization Inspection; PEI/Clean-Walk
- DC1-POD-AC-L2-2500: Steps: Vendor Pre-Energization Checklist; CXA Pre-Energization Inspection; PEI/Clean-Walk
- DC1-POD-AC-L2-2510: Steps: Vendor Pre-Energization Checklist; CXA Pre-Energization Inspection; PEI/Clean-Walk
- DC1-POD-AC-L2-2520: Steps: Vendor Pre-Energization Checklist; CXA Pre-Energization Inspection; PEI/Clean-Walk
- DC1-POD-AC-L2-2530: Steps: Vendor Pre-Energization Checklist; CXA Pre-Energization Inspection; PEI/Clean-Walk
- DC1-POD-AC-L2-2540: Steps: Vendor Pre-Energization Checklist; CXA Pre-Energization Inspection; PEI/Clean-Walk
- DC1-POD-AC-L2-2550: Steps: Vendor Pre-Energization Checklist; CXA Pre-Energization Inspection; PEI/Clean-Walk
- DC1-POD-AC-L2-2560: Steps: Vendor Pre-Energization Checklist; CXA Pre-Energization Inspection; PEI/Clean-Walk
- DC1-POD-AC-L2-2570: Steps: Vendor Pre-Energization Checklist; CXA Pre-Energization Inspection; PEI/Clean-Walk
- DC1-POD-AC-L2-2580: Steps: Vendor Pre-Energization Checklist; CXA Pre-Energization Inspection; PEI/Clean-Walk
- DC1-POD-AC-L2-2590: Steps: Vendor Pre-Energization Checklist; CXA Pre-Energization Inspection; PEI/Clean-Walk
- DC1-POD-AC-L2-2600: Steps: Vendor Pre-Energization Checklist; CXA Pre-Energization Inspection; PEI/Clean-Walk
- DC1-POD-AC-L2-2610: Steps: Vendor Pre-Energization Checklist; CXA Pre-Energization Inspection; PEI/Clean-Walk
- DC1-POD-AC-L2-2620: Steps: Vendor Pre-Energization Checklist; CXA Pre-Energization Inspection; PEI/Clean-Walk
- DC1-POD-AC-L2-2630: Steps: Vendor Pre-Energization Checklist; CXA Pre-Energization Inspection; PEI/Clean-Walk
- DC1-POD-AC-L2-2640: Steps: Vendor Pre-Energization Checklist; CXA Pre-Energization Inspection; PEI/Clean-Walk
- DC1-POD-AC-L2-2650: Steps: Vendor Pre-Energization Checklist; CXA Pre-Energization Inspection; PEI/Clean-Walk
- DC1-POD-AC-L2-2660: Steps: Vendor Pre-Energization Checklist; CXA Pre-Energization Inspection; PEI/Clean-Walk
- DC1-POD-AC-L2-2670: Steps: Vendor Pre-Energization Checklist; CXA Pre-Energization Inspection; PEI/Clean-Walk
- DC1-POD-AC-L2-2680: Steps: Vendor Pre-Energization Checklist; CXA Pre-Energization Inspection; PEI/Clean-Walk
- DC1-POD-AC-L2-2690: Steps: Vendor Pre-Energization Checklist; CXA Pre-Energization Inspection; PEI/Clean-Walk
- DC1-POD-AC-L2-2700: Steps: Vendor Pre-Energization Checklist; CXA Pre-Energization Inspection; PEI/Clean-Walk
- DC1-POD-AC-L2-2710: Steps: Vendor Pre-Energization Checklist; CXA Pre-Energization Inspection; PEI/Clean-Walk
- DC1-POD-AC-L2-2720: Steps: Vendor Pre-Energization Checklist; CXA Pre-Energization Inspection; PEI/Clean-Walk
- DC1-POD-AC-L2-2730: Steps: Vendor Pre-Energization Checklist; CXA Pre-Energization Inspection; PEI/Clean-Walk
- DC1-POD-AC-L2-2740: Steps: Vendor Pre-Energization Checklist; CXA Pre-Energization Inspection; PEI/Clean-Walk
- DC1-POD-AC-L2-2750: Steps: Vendor Pre-Energization Checklist; CXA Pre-Energization Inspection; PEI/Clean-Walk
- DC1-POD-AC-L2-2760: Steps: Vendor Pre-Energization Checklist; CXA Pre-Energization Inspection; PEI/Clean-Walk
- DC1-POD-AC-L2-2770: Steps: Vendor Pre-Energization Checklist; CXA Pre-Energization Inspection; PEI/Clean-Walk
- DC1-POD-AC-L2-2780: Steps: Vendor Pre-Energization Checklist; CXA Pre-Energization Inspection; PEI/Clean-Walk
- DC1-POD-AC-L2-2790: Steps: Vendor Pre-Energization Checklist; CXA Pre-Energization Inspection; PEI/Clean-Walk
- DC1-POD-AC-L2-2800: Steps: Vendor Pre-Energization Checklist; CXA Pre-Energization Inspection; PEI/Clean-Walk
- DC1-POD-AC-L2-2810: Steps: Vendor Pre-Energization Checklist; CXA Pre-Energization Inspection; PEI/Clean-Walk
- DC1-POD-AC-L2-2820: Steps: Vendor Pre-Energization Checklist; CXA Pre-Energization Inspection; PEI/Clean-Walk
- DC1-POD-AC-L2-2830: Steps: Vendor Pre-Energization Checklist; CXA Pre-Energization Inspection; PEI/Clean-Walk
- DC1-POD-AC-L2-2840: Steps: Vendor Pre-Energization Checklist; CXA Pre-Energization Inspection; PEI/Clean-Walk

| ID | Activity | Duration | Start | Finish | Predecessors | Complete | Planned start | Planned finish | Calendar | Notes | Vendor Responsible Party | Layton Discipline | DELETED | D | Allucent CSI Group | Project Section | Phase-1 | Baseline | Project Section-1 | Location | CX Level | Equipment | Level | NICK |
| --- | --- | --- | --- | --- | --- | --- | --- | --- | --- | --- | --- | --- | --- | --- | --- | --- | --- | --- | --- | --- | --- | --- | --- | --- |
| DC1-POD-AC-L2-2850 | DH2300 FAN-A23-01 L2 Checklist *Delete* | 3d | 2026-01-06 A | 2026-01-06 A | QTS-1030 SS | 100% | 2026-02-23 | 2026-02-25 |  | Do we need? | CAP | Commissioning | DELETED | DH1100 |  |  |  |  |  |  |  |  |  |  |
| DC1-POD-AC-L2-2860 | DH2300 COMP-A23-02 L2 Checklist *Delete* | 3d | 2026-01-06 A | 2026-01-06 A | QTS-1030 SS | 100% | 2026-02-23 | 2026-02-25 |  | Do we need? | CAP | Commissioning | DELETED | DH1100 |  |  |  |  |  |  |  |  |  |  |
| DC1-POD-AC-L2-2870 | DH2300 FAN-A23-02 L2 Checklist *Delete* | 3d | 2026-01-06 A | 2026-01-06 A | QTS-1030 SS | 100% | 2026-02-23 | 2026-02-25 |  | Do we need? | CAP | Commissioning | DELETED | DH1100 |  |  |  |  |  |  |  |  |  |  |
| DC1-POD-AC-L2-2880 | DH2300 COMP-B23-01 L2 Checklist *Delete* | 3d | 2026-01-06 A | 2026-01-06 A | QTS-1030 SS | 100% | 2026-02-26 | 2026-03-02 |  | Do we need? | CAP | Commissioning | DELETED | DH1100 |  |  |  |  |  |  |  |  |  |  |
| DC1-POD-AC-L2-2890 | DH2300 FAN-B23-01 L2 Checklist *Delete* | 3d | 2026-01-06 A | 2026-01-06 A | QTS-1030 SS | 100% | 2026-02-26 | 2026-03-02 |  | Do we need? | CAP | Commissioning | DELETED | DH1100 |  |  |  |  |  |  |  |  |  |  |
| DC1-POD-AC-L2-2900 | DH2300 COMP-B23-02 L2 Checklist *Delete* | 3d | 2026-01-06 A | 2026-01-06 A | QTS-1030 SS | 100% | 2026-02-26 | 2026-03-02 |  | Do we need? | CAP | Commissioning | DELETED | DH1100 |  |  |  |  |  |  |  |  |  |  |
| DC1-POD-AC-L2-2910 | DH2300 FAN-B23-02 L2 Checklist *Delete* | 3d | 2026-01-06 A | 2026-01-06 A | QTS-1030 SS | 100% | 2026-02-26 | 2026-03-02 |  | Do we need? | CAP | Commissioning | DELETED | DH1100 |  |  |  |  |  |  |  |  |  |  |
| DC1-POD-AC-L2-2920 | DH2300 COMP-C23-01 L2 Checklist *Delete* | 3d | 2026-01-06 A | 2026-01-06 A | QTS-1030 SS | 100% | 2026-03-03 | 2026-03-05 |  | Do we need? | CAP | Commissioning | DELETED | DH1100 |  |  |  |  |  |  |  |  |  |  |
| DC1-POD-AC-L2-2930 | DH2300 FAN-C23-01 L2 Checklist *Delete* | 3d | 2026-01-06 A | 2026-01-06 A | QTS-1030 SS | 100% | 2026-03-03 | 2026-03-05 |  | Do we need? | CAP | Commissioning | DELETED | DH1100 |  |  |  |  |  |  |  |  |  |  |
| DC1-POD-AC-L2-2940 | DH2300 COMP-C23-02 L2 Checklist *Delete* | 3d | 2026-01-06 A | 2026-01-06 A | QTS-1030 SS | 100% | 2026-03-03 | 2026-03-05 |  | Do we need? | CAP | Commissioning | DELETED | DH1100 |  |  |  |  |  |  |  |  |  |  |
| DC1-POD-AC-L2-2950 | DH2300 FAN-C23-02 L2 Checklist *Delete* | 3d | 2026-01-06 A | 2026-01-06 A | QTS-1030 SS | 100% | 2026-03-03 | 2026-03-05 |  | Do we need? | CAP | Commissioning | DELETED | DH1100 |  |  |  |  |  |  |  |  |  |  |
| DC1-POD-AC-L2-2960 | DH2300 COMP-D23-01 L2 Checklist *Delete* | 3d | 2026-01-06 A | 2026-01-06 A | QTS-1030 SS | 100% | 2026-03-06 | 2026-03-10 |  | Do we need? | CAP | Commissioning | DELETED | DH1100 |  |  |  |  |  |  |  |  |  |  |
| DC1-POD-AC-L2-2970 | DH2300 FAN-D23-01 L2 Checklist *Delete* | 3d | 2026-01-06 A | 2026-01-06 A | QTS-1030 SS | 100% | 2026-03-06 | 2026-03-10 |  | Do we need? | CAP | Commissioning | DELETED | DH1100 |  |  |  |  |  |  |  |  |  |  |
| DC1-POD-AC-L2-2980 | DH2300 COMP-D23-02 L2 Checklist *Delete* | 3d | 2026-01-06 A | 2026-01-06 A | QTS-1030 SS | 100% | 2026-03-06 | 2026-03-10 |  | Do we need? | CAP | Commissioning | DELETED | DH1100 |  |  |  |  |  |  |  |  |  |  |
| DC1-POD-AC-L2-2990 | DH2300 FAN-D23-02 L2 Checklist *Delete* | 3d | 2026-01-06 A | 2026-01-06 A | QTS-1030 SS | 100% | 2026-03-06 | 2026-03-10 |  | Do we need? | CAP | Commissioning | DELETED | DH1100 |  |  |  |  |  |  |  |  |  |  |
| DC1-POD-AC-L2-3000 | DH2300 COMP-E23-01 L2 Checklist *Delete* | 3d | 2026-01-06 A | 2026-01-06 A | QTS-1030 SS | 100% | 2026-03-11 | 2026-03-13 |  | Do we need? | CAP | Commissioning | DELETED | DH1100 |  |  |  |  |  |  |  |  |  |  |
| DC1-POD-AC-L2-3010 | DH2300 FAN-E23-01 L2 Checklist *Delete* | 3d | 2026-01-06 A | 2026-01-06 A | QTS-1030 SS | 100% | 2026-03-11 | 2026-03-13 |  | Do we need? | CAP | Commissioning | DELETED | DH1100 |  |  |  |  |  |  |  |  |  |  |
| DC1-POD-AC-L2-3020 | DH2300 COMP-E23-02 L2 Checklist *Delete* | 3d | 2026-01-06 A | 2026-01-06 A | QTS-1030 SS | 100% | 2026-03-11 | 2026-03-13 |  | Do we need? | CAP | Commissioning | DELETED | DH1100 |  |  |  |  |  |  |  |  |  |  |
| DC1-POD-AC-L2-3030 | DH2300 FAN-E23-02 L2 Checklist *Delete* | 3d | 2026-01-06 A | 2026-01-06 A | QTS-1030 SS | 100% | 2026-03-11 | 2026-03-13 |  | Do we need? | CAP | Commissioning | DELETED | DH1100 |  |  |  |  |  |  |  |  |  |  |
| DC1-POD-AC-L2-3040 | DH2300 COMP-F23-01 L2 Checklist *Delete* | 3d | 2026-01-06 A | 2026-01-06 A | QTS-1030 SS | 100% | 2026-03-16 | 2026-03-18 |  | Do we need? | CAP | Commissioning | DELETED | DH1100 |  |  |  |  |  |  |  |  |  |  |
| DC1-POD-AC-L2-3050 | DH2300 FAN-F23-01 L2 Checklist *Delete* | 3d | 2026-01-06 A | 2026-01-06 A | QTS-1030 SS | 100% | 2026-03-16 | 2026-03-18 |  | Do we need? | CAP | Commissioning | DELETED | DH1100 |  |  |  |  |  |  |  |  |  |  |
| DC1-POD-AC-L2-3060 | DH2300 COMP-F23-02 L2 Checklist *Delete* | 3d | 2026-01-06 A | 2026-01-06 A | QTS-1030 SS | 100% | 2026-03-16 | 2026-03-18 |  | Do we need? | CAP | Commissioning | DELETED | DH1100 |  |  |  |  |  |  |  |  |  |  |
| DC1-POD-AC-L2-3070 | DH2300 FAN-F23-02 L2 Checklist *Delete* | 3d | 2026-01-06 A | 2026-01-06 A | QTS-1030 SS | 100% | 2026-03-16 | 2026-03-18 |  | Do we need? | CAP | Commissioning | DELETED | DH1100 |  |  |  |  |  |  |  |  |  |  |
| DC1-POD-AC-L2-3080 | DH2300 COMP-R23-01 L2 Checklist *Delete* | 3d | 2026-01-06 A | 2026-01-06 A | QTS-1030 SS | 100% | 2026-03-19 | 2026-03-23 |  | Do we need? | CAP | Commissioning | DELETED | DH1100 |  |  |  |  |  |  |  |  |  |  |
| DC1-POD-AC-L2-3090 | DH2300 FAN-R23-01 L2 Checklist *Delete* | 3d | 2026-01-06 A | 2026-01-06 A | QTS-1030 SS | 100% | 2026-03-19 | 2026-03-23 |  | Do we need? | CAP | Commissioning | DELETED | DH1100 |  |  |  |  |  |  |  |  |  |  |
| DC1-POD-AC-L2-3100 | DH2300 COMP-R23-02 L2 Checklist *Delete* | 3d | 2026-01-06 A | 2026-01-06 A | QTS-1030 SS | 100% | 2026-03-19 | 2026-03-23 |  | Do we need? | CAP | Commissioning | DELETED | DH1100 |  |  |  |  |  |  |  |  |  |  |
| DC1-POD-AC-L2-3110 | DH2300 FAN-R23-02 L2 Checklist *Delete* | 3d | 2026-01-06 A | 2026-01-06 A | QTS-1030 SS | 100% | 2026-03-19 | 2026-03-23 |  | Do we need? | CAP | Commissioning | DELETED | DH1100 |  |  |  |  |  |  |  |  |  |  |
| DC1-POD-AC-L2-3120 | DH1300 COMP-A13-01 L2 Checklist *Delete* | 3d | 2026-01-06 A | 2026-01-06 A | QTS-1030 SS | 100% | 2026-02-20 | 2026-02-24 |  | Do we need these? | CAP | Commissioning | DELETED | DH1100 |  |  |  |  |  |  |  |  |  |  |
| DC1-POD-AC-L2-3130 | DH1300 FAN-A13-01 L2 Checklist *Delete* | 3d | 2026-01-06 A | 2026-01-06 A | QTS-1030 SS | 100% | 2026-02-20 | 2026-02-24 |  | Do we need these? | CAP | Commissioning | DELETED | DH1100 |  |  |  |  |  |  |  |  |  |  |
| DC1-POD-AC-L2-3140 | DH1300 COMP-A13-02 L2 Checklist *Delete* | 3d | 2026-01-06 A | 2026-01-06 A | QTS-1030 SS | 100% | 2026-02-20 | 2026-02-24 |  | Do we need these? | CAP | Commissioning | DELETED | DH1100 |  |  |  |  |  |  |  |  |  |  |
| DC1-POD-AC-L2-3150 | DH1300 FAN-A13-02 L2 Checklist *Delete* | 3d | 2026-01-06 A | 2026-01-06 A | QTS-1030 SS | 100% | 2026-02-20 | 2026-02-24 |  | Do we need these? | CAP | Commissioning | DELETED | DH1100 |  |  |  |  |  |  |  |  |  |  |
| DC1-POD-AC-L2-3160 | DH1300 COMP-B13-01 L2 Checklist *Delete* | 3d | 2026-01-06 A | 2026-01-06 A | QTS-1030 SS | 100% | 2026-02-25 | 2026-02-27 |  | Do we need these? | CAP | Commissioning | DELETED | DH1100 |  |  |  |  |  |  |  |  |  |  |
| DC1-POD-AC-L2-3170 | DH1300 FAN-B13-01 L2 Checklist *Delete* | 3d | 2026-01-06 A | 2026-01-06 A | QTS-1030 SS | 100% | 2026-02-25 | 2026-02-27 |  | Do we need these? | CAP | Commissioning | DELETED | DH1100 |  |  |  |  |  |  |  |  |  |  |
| DC1-POD-AC-L2-3180 | DH1300 COMP-B13-02 L2 Checklist *Delete* | 3d | 2026-01-06 A | 2026-01-06 A | QTS-1030 SS | 100% | 2026-02-25 | 2026-02-27 |  | Do we need these? | CAP | Commissioning | DELETED | DH1100 |  |  |  |  |  |  |  |  |  |  |
| DC1-POD-AC-L2-3190 | DH1300 FAN-B13-02 L2 Checklist *Delete* | 3d | 2026-01-06 A | 2026-01-06 A | QTS-1030 SS | 100% | 2026-02-25 | 2026-02-27 |  | Do we need these? | CAP | Commissioning | DELETED | DH1100 |  |  |  |  |  |  |  |  |  |  |
| DC1-POD-AC-L2-3200 | DH1300 COMP-C13-01 L2 Checklist *Delete* | 3d | 2026-01-06 A | 2026-01-06 A | QTS-1030 SS | 100% | 2026-03-02 | 2026-03-04 |  | Do we need these? | CAP | Commissioning | DELETED | DH1100 |  |  |  |  |  |  |  |  |  |  |
| DC1-POD-AC-L2-3210 | DH1300 FAN-C13-01 L2 Checklist *Delete* | 3d | 2026-01-06 A | 2026-01-06 A | QTS-1030 SS | 100% | 2026-03-02 | 2026-03-04 |  | Do we need these? | CAP | Commissioning | DELETED | DH1100 |  |  |  |  |  |  |  |  |  |  |
| DC1-POD-AC-L2-3220 | DH1300 COMP-C13-02 L2 Checklist *Delete* | 3d | 2026-01-06 A | 2026-01-06 A | QTS-1030 SS | 100% | 2026-03-02 | 2026-03-04 |  | Do we need these? | CAP | Commissioning | DELETED | DH1100 |  |  |  |  |  |  |  |  |  |  |
| DC1-POD-AC-L2-3230 | DH1300 FAN-C13-02 L2 Checklist *Delete* | 3d | 2026-01-06 A | 2026-01-06 A | QTS-1030 SS | 100% | 2026-03-02 | 2026-03-04 |  | Do we need these? | CAP | Commissioning | DELETED | DH1100 |  |  |  |  |  |  |  |  |  |  |
| DC1-POD-AC-L2-3240 | DH1300 COMP-D13-01 L2 Checklist *Delete* | 3d | 2026-01-06 A | 2026-01-06 A | QTS-1030 SS | 100% | 2026-03-05 | 2026-03-09 |  | Do we need these? | CAP | Commissioning | DELETED | DH1100 |  |  |  |  |  |  |  |  |  |  |
| DC1-POD-AC-L2-3250 | DH1300 FAN-D13-01 L2 Checklist *Delete* | 3d | 2026-01-06 A | 2026-01-06 A | QTS-1030 SS | 100% | 2026-03-05 | 2026-03-09 |  | Do we need these? | CAP | Commissioning | DELETED | DH1100 |  |  |  |  |  |  |  |  |  |  |
| DC1-POD-AC-L2-3260 | DH1300 COMP-D13-02 L2 Checklist *Delete* | 3d | 2026-01-06 A | 2026-01-06 A | QTS-1030 SS | 100% | 2026-03-05 | 2026-03-09 |  | Do we need these? | CAP | Commissioning | DELETED | DH1100 |  |  |  |  |  |  |  |  |  |  |
| DC1-POD-AC-L2-3270 | DH1300 FAN-D13-02 L2 Checklist *Delete* | 3d | 2026-01-06 A | 2026-01-06 A | QTS-1030 SS | 100% | 2026-03-05 | 2026-03-09 |  | Do we need these? | CAP | Commissioning | DELETED | DH1100 |  |  |  |  |  |  |  |  |  |  |
| DC1-POD-AC-L2-3280 | DH1300 COMP-E13-01 L2 Checklist *Delete* | 3d | 2026-01-06 A | 2026-01-06 A | QTS-1030 SS | 100% | 2026-03-10 | 2026-03-12 |  | Do we need these? | CAP | Commissioning | DELETED | DH1100 |  |  |  |  |  |  |  |  |  |  |
| DC1-POD-AC-L2-3290 | DH1300 FAN-E13-01 L2 Checklist *Delete* | 3d | 2026-01-06 A | 2026-01-06 A | QTS-1030 SS | 100% | 2026-03-10 | 2026-03-12 |  | Do we need these? | CAP | Commissioning | DELETED | DH1100 |  |  |  |  |  |  |  |  |  |  |
| DC1-POD-AC-L2-3300 | DH1300 COMP-E13-02 L2 Checklist *Delete* | 3d | 2026-01-06 A | 2026-01-06 A | QTS-1030 SS | 100% | 2026-03-10 | 2026-03-12 |  | Do we need these? | CAP | Commissioning | DELETED | DH1100 |  |  |  |  |  |  |  |  |  |  |
| DC1-POD-AC-L2-3310 | DH1300 FAN-E13-02 L2 Checklist *Delete* | 3d | 2026-01-06 A | 2026-01-06 A | QTS-1030 SS | 100% | 2026-03-10 | 2026-03-12 |  | Do we need these? | CAP | Commissioning | DELETED | DH1100 |  |  |  |  |  |  |  |  |  |  |
| DC1-POD-AC-L2-3320 | DH1300 COMP-F13-01 L2 Checklist *Delete* | 3d | 2026-01-06 A | 2026-01-06 A | QTS-1030 SS | 100% | 2026-03-13 | 2026-03-17 |  | Do we need these? | CAP | Commissioning | DELETED | DH1100 |  |  |  |  |  |  |  |  |  |  |
| DC1-POD-AC-L2-3330 | DH1300 FAN-F13-01 L2 Checklist *Delete* | 3d | 2026-01-06 A | 2026-01-06 A | QTS-1030 SS | 100% | 2026-03-13 | 2026-03-17 |  | Do we need these? | CAP | Commissioning | DELETED | DH1100 |  |  |  |  |  |  |  |  |  |  |
| DC1-POD-AC-L2-3340 | DH1300 COMP-F13-02 L2 Checklist *Delete* | 3d | 2026-01-06 A | 2026-01-06 A | QTS-1030 SS | 100% | 2026-03-13 | 2026-03-17 |  | Do we need these? | CAP | Commissioning | DELETED | DH1100 |  |  |  |  |  |  |  |  |  |  |
| DC1-POD-AC-L2-3350 | DH1300 FAN-F13-02 L2 Checklist *Delete* | 3d | 2026-01-06 A | 2026-01-06 A | QTS-1030 SS | 100% | 2026-03-13 | 2026-03-17 |  | Do we need these? | CAP | Commissioning | DELETED | DH1100 |  |  |  |  |  |  |  |  |  |  |
| DC1-POD-AC-L2-3360 | DH1300 COMP-R13-01 L2 Checklist *Delete* | 3d | 2026-01-06 A | 2026-01-06 A | QTS-1030 SS | 100% | 2026-03-18 | 2026-03-20 |  | Do we need these? | CAP | Commissioning | DELETED | DH1100 |  |  |  |  |  |  |  |  |  |  |
| DC1-POD-AC-L2-3370 | DH1300 FAN-R13-01 L2 Checklist *Delete* | 3d | 2026-01-06 A | 2026-01-06 A | QTS-1030 SS | 100% | 2026-03-18 | 2026-03-20 |  | Do we need these? | CAP | Commissioning | DELETED | DH1100 |  |  |  |  |  |  |  |  |  |  |
| DC1-POD-AC-L2-3380 | DH1300 COMP-R13-02 L2 Checklist *Delete* | 3d | 2026-01-06 A | 2026-01-06 A | QTS-1030 SS | 100% | 2026-03-18 | 2026-03-20 |  | Do we need these? | CAP | Commissioning | DELETED | DH1100 |  |  |  |  |  |  |  |  |  |  |
| DC1-POD-AC-L2-3390 | DH1300 FAN-R13-02 L2 Checklist *Delete* | 3d | 2026-01-06 A | 2026-01-06 A | QTS-1030 SS | 100% | 2026-03-18 | 2026-03-20 |  | Do we need these? | CAP | Commissioning | DELETED | DH1100 |  |  |  |  |  |  |  |  |  |  |
| QTS-12481 | Zone 3 Gridlines 30-41 / South // Frame Soffit *Delete* | 5d | 2026-01-06 A | 2026-01-06 A | QTS-1371 SS | 100% | 2026-03-04 | 2026-03-10 |  |  |  | Build Out | DELETED | DH1100 | 01ADMIN | Construction | Phase 3 | IGMP |  |  |  |  |  |  |
| QTS-13261 | Zone 3 Gridlines 30-41 / South // Rough Electrical for Soffit Lighting *Delete* | 3d | 2026-01-06 A | 2026-01-06 A | QTS-1371 SS | 100% | 2026-01-07 | 2026-01-09 |  |  |  | Build Out | DELETED | DH1100 | 01ADMIN | Construction | Phase 3 | IGMP |  |  |  |  |  |  |
| QTS-13271 | East Elevation // Frame Soffit *Delete* | 5d | 2026-01-06 A | 2026-01-06 A | QTS-1371 SS | 100% | 2026-03-11 | 2026-03-17 |  |  |  | Build Out | DELETED | DH1100 | 01ADMIN | Construction | Phase 3 | IGMP |  |  |  |  |  |  |
| QTS-14011 | East Elevation // Rough Electrical for Soffit Lighting *Delete* | 3d | 2026-01-06 A | 2026-01-06 A | QTS-1371 SS | 100% | 2026-01-07 | 2026-01-09 |  |  |  | Build Out | DELETED | DH1100 |  | Construction | Phase 3 | IGMP |  |  |  |  |  |  |
| QTS-14391 | Zone 3 Gridlines 30-41 / South // Hang Soffit Sheathing *Delete* | 4d | 2026-01-06 A | 2026-01-06 A | QTS-1371 SS | 100% | 2026-05-01 | 2026-05-06 |  |  |  | Build Out | DELETED | DH1100 |  | Construction | Phase 3 | IGMP |  |  |  |  |  |  |
| QTS-15211 | Zone 3 Gridlines 30-41 / South // Install ISO Board *Delete* | 3d | 2026-01-06 A | 2026-01-06 A | QTS-1371 SS | 100% | 2026-05-07 | 2026-05-11 |  |  |  | Build Out | DELETED | DH1100 |  | Construction | Phase 3 | IGMP |  |  |  |  |  |  |
| QTS-50691 | Zone 1 Gridlines 1-21 / South // Frame Metal Panels - Furr Out *Delete* | 8d | 2026-01-06 A | 2026-01-06 A | QTS-1371 SS | 100% | 2026-01-07 | 2026-01-16 |  |  |  | Build Out | DELETED | DH1100 | 01ADMIN | Construction | Phase 1 | IGMP | Construction |  |  |  |  |  |
| DC1-XFMR-L2-2320 | **DELETED** DH1300 XFMR-E13 L2 Checklist | 3d | 2026-01-09 A | 2026-07-15 A | QTS-1020 | 100% | 2026-01-09 | 2026-01-13 |  |  | VTC | Commissioning | DELETED | DH1100 |  |  |  |  |  | DH1300 | L2 | XFMR |  |  |
| QTS-22521 | Zone 3 Gridlines 30-41 Corridor 2307 // Install VESDA *Delete* | 5d | 2026-01-12 A | 2026-01-16 A | QTS-1030 SS | 100% |  |  | QTS-PHX3 DC1 - 6 day w/ Holidays |  |  | Mechanical | DELETED | DH1100 | 01ADMIN | Construction |  | IGMP |  |  |  |  | Level 2 |  |
| QTS-22751 | Zone 2 Gridline 21-30 / Corridor 1013 // Install VESDA *Delete* | 5d | 2026-01-12 A | 2026-01-16 A | QTS-1030 SS | 100% |  |  | QTS-PHX3 DC1 - 6 day w/ Holidays |  |  | Mechanical | DELETED | DH1100 |  | Construction |  | IGMP |  |  |  |  | Level 1 |  |
| QTS-23071 | Zone 3 Gridlines 30-41 Corridor 1012 // Install VESDA *Delete* | 5d | 2026-01-12 A | 2026-01-16 A | QTS-1030 SS | 100% |  |  | QTS-PHX3 DC1 - 6 day w/ Holidays |  |  | Mechanical | DELETED | DH1100 |  | Construction |  | IGMP |  |  |  |  | Level 1 |  |
| DC1-DH1100-LB-1020 | DC1-DH1100 Connect Loadbanks (Connect to RPP Whips) *Delete* | 10d | 2026-01-13 A | 2026-01-13 A | QTS-1371 SS | 100% | 2026-01-14 | 2026-01-28 |  |  | PHE | Commissioning | DELETED | DH1100 |  |  |  |  |  |  |  |  |  | NICK |
| DC1-DH1200-LB-1020 | DC1-DH1200 Connect Loadbanks (Connect to RPP Whips) *Delete* | 10d | 2026-01-13 A | 2026-01-13 A | QTS-1371 SS | 100% | 2026-01-14 | 2026-01-28 |  |  | PHE | Commissioning | DELETED | DH1100 |  |  |  |  |  |  |  |  |  | NICK |
| DC1-DH1300-LB-1020 | DC1-DH1300 Connect Loadbanks (Connect to RPP Whips) *Delete* | 10d | 2026-01-13 A | 2026-01-13 A | QTS-1371 SS | 100% | 2026-01-14 | 2026-01-28 |  |  | PHE | Commissioning | DELETED | DH1100 |  |  |  |  |  |  |  |  |  | NICK |
| DC1-DH2100-LB-1030 | DC1-DH2100 Connect RPP Whips *Delete* | 6d | 2026-01-13 A | 2026-01-13 A | QTS-1371 SS | 100% | 2026-01-14 | 2026-01-22 |  |  | PHE | Commissioning | DELETED | DH1100 |  |  |  |  |  |  |  |  |  |  |

Notes:
- DC1-POD-AC-L2-2850: Steps: Vendor Pre-Energization Checklist; CXA Pre-Energization Inspection; PEI/Clean-Walk
- DC1-POD-AC-L2-2860: Steps: Vendor Pre-Energization Checklist; CXA Pre-Energization Inspection; PEI/Clean-Walk
- DC1-POD-AC-L2-2870: Steps: Vendor Pre-Energization Checklist; CXA Pre-Energization Inspection; PEI/Clean-Walk
- DC1-POD-AC-L2-2880: Steps: Vendor Pre-Energization Checklist; CXA Pre-Energization Inspection; PEI/Clean-Walk
- DC1-POD-AC-L2-2890: Steps: Vendor Pre-Energization Checklist; CXA Pre-Energization Inspection; PEI/Clean-Walk
- DC1-POD-AC-L2-2900: Steps: Vendor Pre-Energization Checklist; CXA Pre-Energization Inspection; PEI/Clean-Walk
- DC1-POD-AC-L2-2910: Steps: Vendor Pre-Energization Checklist; CXA Pre-Energization Inspection; PEI/Clean-Walk
- DC1-POD-AC-L2-2920: Steps: Vendor Pre-Energization Checklist; CXA Pre-Energization Inspection; PEI/Clean-Walk
- DC1-POD-AC-L2-2930: Steps: Vendor Pre-Energization Checklist; CXA Pre-Energization Inspection; PEI/Clean-Walk
- DC1-POD-AC-L2-2940: Steps: Vendor Pre-Energization Checklist; CXA Pre-Energization Inspection; PEI/Clean-Walk
- DC1-POD-AC-L2-2950: Steps: Vendor Pre-Energization Checklist; CXA Pre-Energization Inspection; PEI/Clean-Walk
- DC1-POD-AC-L2-2960: Steps: Vendor Pre-Energization Checklist; CXA Pre-Energization Inspection; PEI/Clean-Walk
- DC1-POD-AC-L2-2970: Steps: Vendor Pre-Energization Checklist; CXA Pre-Energization Inspection; PEI/Clean-Walk
- DC1-POD-AC-L2-2980: Steps: Vendor Pre-Energization Checklist; CXA Pre-Energization Inspection; PEI/Clean-Walk
- DC1-POD-AC-L2-2990: Steps: Vendor Pre-Energization Checklist; CXA Pre-Energization Inspection; PEI/Clean-Walk
- DC1-POD-AC-L2-3000: Steps: Vendor Pre-Energization Checklist; CXA Pre-Energization Inspection; PEI/Clean-Walk
- DC1-POD-AC-L2-3010: Steps: Vendor Pre-Energization Checklist; CXA Pre-Energization Inspection; PEI/Clean-Walk
- DC1-POD-AC-L2-3020: Steps: Vendor Pre-Energization Checklist; CXA Pre-Energization Inspection; PEI/Clean-Walk
- DC1-POD-AC-L2-3030: Steps: Vendor Pre-Energization Checklist; CXA Pre-Energization Inspection; PEI/Clean-Walk
- DC1-POD-AC-L2-3040: Steps: Vendor Pre-Energization Checklist; CXA Pre-Energization Inspection; PEI/Clean-Walk
- DC1-POD-AC-L2-3050: Steps: Vendor Pre-Energization Checklist; CXA Pre-Energization Inspection; PEI/Clean-Walk
- DC1-POD-AC-L2-3060: Steps: Vendor Pre-Energization Checklist; CXA Pre-Energization Inspection; PEI/Clean-Walk
- DC1-POD-AC-L2-3070: Steps: Vendor Pre-Energization Checklist; CXA Pre-Energization Inspection; PEI/Clean-Walk
- DC1-POD-AC-L2-3080: Steps: Vendor Pre-Energization Checklist; CXA Pre-Energization Inspection; PEI/Clean-Walk
- DC1-POD-AC-L2-3090: Steps: Vendor Pre-Energization Checklist; CXA Pre-Energization Inspection; PEI/Clean-Walk
- DC1-POD-AC-L2-3100: Steps: Vendor Pre-Energization Checklist; CXA Pre-Energization Inspection; PEI/Clean-Walk
- DC1-POD-AC-L2-3110: Steps: Vendor Pre-Energization Checklist; CXA Pre-Energization Inspection; PEI/Clean-Walk
- DC1-POD-AC-L2-3120: Steps: Vendor Pre-Energization Checklist; CXA Pre-Energization Inspection; PEI/Clean-Walk
- DC1-POD-AC-L2-3130: Steps: Vendor Pre-Energization Checklist; CXA Pre-Energization Inspection; PEI/Clean-Walk
- DC1-POD-AC-L2-3140: Steps: Vendor Pre-Energization Checklist; CXA Pre-Energization Inspection; PEI/Clean-Walk
- DC1-POD-AC-L2-3150: Steps: Vendor Pre-Energization Checklist; CXA Pre-Energization Inspection; PEI/Clean-Walk
- DC1-POD-AC-L2-3160: Steps: Vendor Pre-Energization Checklist; CXA Pre-Energization Inspection; PEI/Clean-Walk
- DC1-POD-AC-L2-3170: Steps: Vendor Pre-Energization Checklist; CXA Pre-Energization Inspection; PEI/Clean-Walk
- DC1-POD-AC-L2-3180: Steps: Vendor Pre-Energization Checklist; CXA Pre-Energization Inspection; PEI/Clean-Walk
- DC1-POD-AC-L2-3190: Steps: Vendor Pre-Energization Checklist; CXA Pre-Energization Inspection; PEI/Clean-Walk
- DC1-POD-AC-L2-3200: Steps: Vendor Pre-Energization Checklist; CXA Pre-Energization Inspection; PEI/Clean-Walk
- DC1-POD-AC-L2-3210: Steps: Vendor Pre-Energization Checklist; CXA Pre-Energization Inspection; PEI/Clean-Walk
- DC1-POD-AC-L2-3220: Steps: Vendor Pre-Energization Checklist; CXA Pre-Energization Inspection; PEI/Clean-Walk
- DC1-POD-AC-L2-3230: Steps: Vendor Pre-Energization Checklist; CXA Pre-Energization Inspection; PEI/Clean-Walk
- DC1-POD-AC-L2-3240: Steps: Vendor Pre-Energization Checklist; CXA Pre-Energization Inspection; PEI/Clean-Walk
- DC1-POD-AC-L2-3250: Steps: Vendor Pre-Energization Checklist; CXA Pre-Energization Inspection; PEI/Clean-Walk
- DC1-POD-AC-L2-3260: Steps: Vendor Pre-Energization Checklist; CXA Pre-Energization Inspection; PEI/Clean-Walk
- DC1-POD-AC-L2-3270: Steps: Vendor Pre-Energization Checklist; CXA Pre-Energization Inspection; PEI/Clean-Walk
- DC1-POD-AC-L2-3280: Steps: Vendor Pre-Energization Checklist; CXA Pre-Energization Inspection; PEI/Clean-Walk
- DC1-POD-AC-L2-3290: Steps: Vendor Pre-Energization Checklist; CXA Pre-Energization Inspection; PEI/Clean-Walk
- DC1-POD-AC-L2-3300: Steps: Vendor Pre-Energization Checklist; CXA Pre-Energization Inspection; PEI/Clean-Walk
- DC1-POD-AC-L2-3310: Steps: Vendor Pre-Energization Checklist; CXA Pre-Energization Inspection; PEI/Clean-Walk
- DC1-POD-AC-L2-3320: Steps: Vendor Pre-Energization Checklist; CXA Pre-Energization Inspection; PEI/Clean-Walk
- DC1-POD-AC-L2-3330: Steps: Vendor Pre-Energization Checklist; CXA Pre-Energization Inspection; PEI/Clean-Walk
- DC1-POD-AC-L2-3340: Steps: Vendor Pre-Energization Checklist; CXA Pre-Energization Inspection; PEI/Clean-Walk
- DC1-POD-AC-L2-3350: Steps: Vendor Pre-Energization Checklist; CXA Pre-Energization Inspection; PEI/Clean-Walk
- DC1-POD-AC-L2-3360: Steps: Vendor Pre-Energization Checklist; CXA Pre-Energization Inspection; PEI/Clean-Walk
- DC1-POD-AC-L2-3370: Steps: Vendor Pre-Energization Checklist; CXA Pre-Energization Inspection; PEI/Clean-Walk
- DC1-POD-AC-L2-3380: Steps: Vendor Pre-Energization Checklist; CXA Pre-Energization Inspection; PEI/Clean-Walk
- DC1-POD-AC-L2-3390: Steps: Vendor Pre-Energization Checklist; CXA Pre-Energization Inspection; PEI/Clean-Walk
- DC1-XFMR-L2-2320: Steps: EC Installation Checklist; CC Installation Checklist; Vendor Pre-Energization Checklist (done); CXA Pre-Energization Inspection; PEI/Clean-Walk

| ID | Activity | Duration | Start | Finish | Predecessors | Complete | Planned start | Planned finish | Calendar | Vendor Responsible Party | Layton Discipline | DELETED | NICK | D | Allucent CSI Group | Project Section | Baseline | Phase-1-1 | Project Section-1 | Location | Level | CX Level | Equipment | Phase-1 | Notes | Fragnet | Fragnet Responsible Party | TFO-CONST ONLY | Contract | Layton Super |
| --- | --- | --- | --- | --- | --- | --- | --- | --- | --- | --- | --- | --- | --- | --- | --- | --- | --- | --- | --- | --- | --- | --- | --- | --- | --- | --- | --- | --- | --- | --- |
| DC1-DH2200-LB-1020 | DC1-DH2200 Connect Loadbanks (Connect to RPP Whips) *Delete* | 10d | 2026-01-13 A | 2026-01-13 A | QTS-1371 SS | 100% | 2026-01-14 | 2026-01-28 |  | PHE | Commissioning | DELETED | NICK | DH1100 |  |  |  |  |  |  |  |  |  |  |  |  |  |  |  |  |
| DC1-DH2300-LB-1020 | DC1-DH2300 Connect Loadbanks (Connect to RPP Whips) *Delete* | 10d | 2026-01-13 A | 2026-01-13 A | QTS-1371 SS | 100% | 2026-01-14 | 2026-01-28 |  | PHE | Commissioning | DELETED | NICK | DH1100 |  |  |  |  |  |  |  |  |  |  |  |  |  |  |  |  |
| QTS-14121 | DH 1100 / Mechanical Gallery 1103 // Top of Wall Fire Stop *Delete* | 2d | 2026-01-14 A | 2026-01-14 A | QTS-1371 SS | 100% | 2026-01-14 | 2026-01-15 | QTS-PHX3 DC1 - 6 day w/ Holidays |  | Build Out | DELETED |  | DH1100 | 01ADMIN | Construction | IGMP | Phase 1 | Construction | DH1100 | Level 1 |  |  |  |  |  |  |  |  |  |
| QTS-49401 | DH 2100 / Rooftop Mechanical // Rough In Plumbing from to DOAS *Delete* | 1d | 2026-01-14 A | 2026-01-14 A | QTS-1371 SS | 100% | 2026-01-21 | 2026-01-21 | QTS-PHX3 DC1 - 6 day w/ Holidays |  | Mechanical | DELETED |  | DH1100 | 01ADMIN |  |  |  |  |  |  |  |  |  |  |  |  |  |  |  |
| DC1-XFMR-L2-2230 | **DELETED** DH2300 XFMR-C23 L2 Checklist | 3d | 2026-01-15 A | 2026-07-15 A | QTS-1020 | 100% | 2026-01-15 | 2026-01-20 |  | VTC | Commissioning | DELETED |  | DH1100 |  |  |  |  |  | DH2300 |  | L2 | XFMR |  |  |  |  |  |  |  |
| DC1-XFMR-L2-2260 | **DELETED** DH2300 XFMR-F23 L2 Checklist | 3d | 2026-01-15 A | 2026-07-15 A | QTS-1020 | 100% | 2026-01-15 | 2026-01-20 |  | VTC | Commissioning | DELETED |  | DH1100 |  |  |  |  |  | DH2300 |  | L2 | XFMR |  |  |  |  |  |  |  |
| DC1-XFMR-L2-2280 | **DELETED** DH1300 XFMR-A13 L2 Checklist | 3d | 2026-01-15 A | 2026-07-15 A | QTS-1020 | 100% | 2026-01-15 | 2026-01-20 |  | VTC | Commissioning | DELETED |  | DH1100 |  |  |  |  |  | DH1300 |  | L2 | XFMR |  |  |  |  |  |  |  |
| DC1-XFMR-L2-2300 | **DELETED** DH1300 XFMR-C13 L2 Checklist | 3d | 2026-01-15 A | 2026-07-15 A | QTS-1020 | 100% | 2026-01-15 | 2026-01-20 |  | VTC | Commissioning | DELETED |  | DH1100 |  |  |  |  |  | DH1300 |  | L2 | XFMR |  |  |  |  |  |  |  |
| DC1-XFMR-L2-2330 | **DELETED** DH1300 XFMR-F13 L2 Checklist | 3d | 2026-01-15 A | 2026-07-15 A | QTS-1020 | 100% | 2026-01-15 | 2026-01-20 |  | VTC | Commissioning | DELETED |  | DH1100 |  |  |  |  |  | DH1300 |  | L2 | XFMR |  |  |  |  |  |  |  |
| DC1-XFMR-L2-2220 | **DELETED** DH2300 XFMR-B23 L2 Checklist | 3d | 2026-01-21 A | 2026-07-15 A | QTS-1020 | 100% | 2026-06-16 | 2026-06-18 |  | VTC | Commissioning | DELETED |  | DH1100 |  |  |  |  |  | DH2300 |  | L2 | XFMR |  |  |  |  |  |  |  |
| DC1-XFMR-L2-2240 | **DELETED** DH2300 XFMR-D23 L2 Checklist | 3d | 2026-01-21 A | 2026-07-15 A | QTS-1020 | 100% | 2026-01-21 | 2026-01-23 |  | VTC | Commissioning | DELETED |  | DH1100 |  |  |  |  |  | DH2300 |  | L2 | XFMR |  |  |  |  |  |  |  |
| DC1-XFMR-L2-2250 | **DELETED** DH2300 XFMR-E23 L2 Checklist | 3d | 2026-01-21 A | 2026-07-15 A | QTS-1020 | 100% | 2026-01-21 | 2026-01-23 |  | VTC | Commissioning | DELETED |  | DH1100 |  |  |  |  |  | DH2300 |  | L2 | XFMR |  |  |  |  |  |  |  |
| DC1-XFMR-L2-2310 | **DELETED** DH1300 XFMR-D13 L2 Checklist | 3d | 2026-01-21 A | 2026-07-15 A | QTS-1020 | 100% | 2026-01-21 | 2026-01-23 |  | VTC | Commissioning | DELETED |  | DH1100 |  |  |  |  |  | DH1300 |  | L2 | XFMR |  |  |  |  |  |  |  |
| QTS-24561 | DH 2100 / Electrical Gallery 2102 // House Panels *Delete* | 2d | 2026-01-23 A | 2026-01-24 A | QTS-1371 SS | 100% |  |  | QTS-PHX3 DC1 - 6 day w/ Holidays |  | Electrical | DELETED |  | DH1100 | 01ADMIN | Construction | IGMP |  | Construction | DH2100 | Level 2 |  |  |  |  |  |  |  |  |  |
| QTS-25341 | DH 2100 / Electrical Gallery 2102 // Pull LV Cables Branch Circuits *Delete* | 5d | 2026-01-24 A | 2026-01-28 A | QTS-1371 SS | 100% | 2026-01-24 | 2026-01-29 | QTS-PHX3 DC1 - 6 day w/ Holidays |  | Electrical | DELETED |  | DH1100 | 01ADMIN | Construction | IGMP |  | Construction | DH2100 | Level 2 |  |  |  |  |  |  |  |  |  |
| DC1-L4-Cx-1015 | DC1 Data Hall 2100 Generator Connect Loadbanks to A21 & B21 *Deleted* | 1d | 2026-01-27 A | 2026-01-27 A | QTS-1371 SS | 100% | 2026-01-28 | 2026-01-28 |  | HLT | Electrical | DELETED | NICK | DH1100 |  |  |  |  |  |  |  |  |  |  |  |  |  |  |  |  |
| DC1-L4-Cx-1025 | DC1 Data Hall 2100 Generator Connect Loadbanks to C21 & D21 *Deleted* | 1d | 2026-01-27 A | 2026-01-27 A | QTS-1371 SS | 100% | 2026-01-28 | 2026-01-28 |  | HLT | Electrical | DELETED | NICK | DH1100 |  |  |  |  |  |  |  |  |  |  |  |  |  |  |  |  |
| DC1-L4-Cx-1035 | DC1 Data Hall 2100 Generator Connect Loadbanks to E21 & F21 *Deleted* | 1d | 2026-01-27 A | 2026-01-27 A | QTS-1371 SS | 100% | 2026-01-28 | 2026-01-28 |  | HLT | Electrical | DELETED | NICK | DH1100 |  |  |  |  |  |  |  |  |  |  |  |  |  |  |  |  |
| DC1-L4-Cx-1045 | DC1 Data Hall 2100 Generator Connect Loadbanks to R21 & FOH HSE *Deleted* | 1d | 2026-01-27 A | 2026-01-27 A | QTS-1371 SS | 100% | 2026-01-28 | 2026-01-28 |  | HLT | Electrical | DELETED | NICK | DH1100 |  |  |  |  |  |  |  |  |  |  |  |  |  |  |  |  |
| QTS-100290 | DH 2100 / Rooftop Mechanical // Hydro-Test (Water) Industrial Loop (Roof) *Delete* | 1d | 2026-02-02 A | 2026-02-02 A | QTS-1371 SS | 100% | 2026-02-28 | 2026-02-28 | QTS-PHX3 DC1 - 6 day w/ Holidays |  | Mechanical | DELETED |  | DH1100 | 01ADMIN | Construction | IGMP |  |  | DH2100 | Level 2 |  |  | Phase 1 |  |  |  |  |  |  |
| QTS-100510 | DH 1100 / Rooftop Mechanical // Install Temp Flush Pump, Power Source for Pump & Other Associated Components *Delete* | 5d | 2026-02-02 A | 2026-02-02 A | QTS-1371 SS | 100% | 2026-02-02 | 2026-02-06 | QTS-PHX3 DC1 - 6 day w/ Holidays |  | Mechanical | DELETED |  | DH1100 | 01ADMIN | Construction | IGMP |  |  | DH2100 | Level 2 |  |  | Phase 1 |  |  |  |  |  |  |
| QTS-100540 | DH 1100 / Rooftop Mechanical // Hydro-Test (Water) Industrial Loop (Roof) *Delete* | 1d | 2026-02-02 A | 2026-02-02 A | QTS-1371 SS | 100% | 2026-02-06 | 2026-02-06 | QTS-PHX3 DC1 - 6 day w/ Holidays |  | Mechanical | DELETED |  | DH1100 | 01ADMIN | Construction | IGMP |  |  | DH2100 | Level 2 |  |  | Phase 1 |  |  |  |  |  |  |
| QTS-100580 | DH 1100 / Rooftop Mechanical // Pressure Test (Air) Industrial Loop (TES Tank) *Delete* | 1d | 2026-02-02 A | 2026-02-02 A | QTS-1371 SS | 100% |  |  | QTS-PHX3 DC1 - 6 day w/ Holidays |  | Mechanical | DELETED |  | DH1100 | 01ADMIN | Construction | IGMP |  |  | DH2100 | Level 2 |  |  | Phase 1 |  |  |  |  |  |  |
| QTS-100590 | DH 1100 / Rooftop Mechanical // Hydro-Test (Water) Industrial Loop (TES Tank) *Delete* | 1d | 2026-02-02 A | 2026-02-02 A | QTS-1371 SS | 100% |  |  | QTS-PHX3 DC1 - 6 day w/ Holidays |  | Mechanical | DELETED |  | DH1100 | 01ADMIN | Construction | IGMP |  |  | DH2100 | Level 2 |  |  | Phase 1 |  |  |  |  |  |  |
| QTS-100600 | DH 1100 / Rooftop Mechanical // Fill and Flush Industrial Loop (TES Tank) *Delete* | 7d | 2026-02-02 A | 2026-02-02 A | QTS-1371 SS | 100% | 2026-02-02 | 2026-02-08 | QTS-PHX3 DC1 - 7 day No Holidays |  | Mechanical | DELETED |  | DH1100 | 01ADMIN | Construction | IGMP |  |  | DH2100 | Level 2 |  |  | Phase 1 |  |  |  |  |  |  |
| QTS-100610 | DH 2100 / Rooftop Mechanical // Pressure Test (Air) Industrial Loop (TES Tank) *Delete* | 1d | 2026-02-02 A | 2026-02-02 A | QTS-1371 SS | 100% |  |  | QTS-PHX3 DC1 - 6 day w/ Holidays |  | Mechanical | DELETED |  | DH1100 | 01ADMIN | Construction | IGMP |  |  | DH2100 | Level 2 |  |  | Phase 1 |  |  |  |  |  |  |
| QTS-100620 | DH 2100 / Rooftop Mechanical // Hydro-Test (Water) Industrial Loop (TES Tank) *Delete* | 1d | 2026-02-02 A | 2026-02-02 A | QTS-1371 SS | 100% |  |  | QTS-PHX3 DC1 - 6 day w/ Holidays |  | Mechanical | DELETED |  | DH1100 | 01ADMIN | Construction | IGMP |  |  | DH2100 | Level 2 |  |  | Phase 1 |  |  |  |  |  |  |
| QTS-100630 | DH 2100 / Rooftop Mechanical // Fill and Flush Industrial Loop (TES Tank) *Delete* | 7d | 2026-02-02 A | 2026-02-02 A | QTS-1371 SS | 100% | 2026-02-02 | 2026-02-08 | QTS-PHX3 DC1 - 7 day No Holidays |  | Mechanical | DELETED |  | DH1100 | 01ADMIN | Construction | IGMP |  |  | DH2100 | Level 2 |  |  | Phase 1 |  |  |  |  |  |  |
| QTS-28731 | West Elevation // Install QTS Signage *Delete* | 2d | 2026-02-02 A | 2026-02-02 A | QTS-1371 SS | 100% | 2026-02-02 | 2026-02-03 |  |  | Build Out | DELETED |  | DH1100 |  | Construction | IGMP |  |  |  |  |  |  | Phase 1 |  |  |  |  |  |  |
| QTS-1004830 | Fragnet / DH 1200 / Rooftop Mechanical // Procure Grating, Toe Kicks, And Hand Rails *Delete* | 25d | 2026-02-03 A | 2026-03-16 A | QTS-1371 SS | 100% | 2026-02-03 | 2026-03-09 |  |  | Core & Shell | DELETED |  | DH1100 | 01ADMIN | Construction | IGMP |  |  | DH2100 | Level 2 |  |  | Phase 1 | 3/19: Consolidating to be captured in zone 2 | Fragnet | Bel-Aire Mechanical. LLC |  |  |  |
| QTS-45311 | DELETED Lobby / Erect Platform Scaffold In Stairs & Lobby | 2d | 2026-02-10 A | 2026-02-10 A | QTS-1371 SS | 100% | 2026-02-11 | 2026-02-12 | QTS-PHX3 DC1 - 6 day w/ Holidays |  | Build Out | DELETED | NICK | DH1100 | 01ADMIN | Construction | IGMP | Phase 1 | Construction | FOH | Level 1 |  |  |  |  |  |  | TFO CONST | TFO |  |
| QTS-14781 | **DELETED** DH 2300 / Mechanical Gallery 2303 // Install VESDA | 8d | 2026-02-11 A | 2026-07-14 A | QTS-1020 | 100% | 2026-02-11 | 2026-02-19 | QTS-PHX3 DC1 - 6 day w/ Holidays |  | Electrical | DELETED |  | DH1100 | 01ADMIN | Construction | IGMP | Phase 3 | Construction | DH2300 |  |  |  |  |  |  |  |  | BAB | Oscar Armenta |
| QTS - 15130 | TFO Scope // DH 1100 / Lineup C - D / Install QCool Arms *Delete* | 5d | 2026-02-16 A | 2026-02-16 A | QTS-1371 SS | 100% | 2026-02-18 | 2026-02-23 | QTS-PHX3 DC1 - 6 day w/ Holidays |  | Electrical | DELETED | NICK | DH1100 |  |  |  |  |  |  |  |  |  |  |  |  |  | TFO CONST | TFO |  |
| QTS - 24591 | TFO Scope // DH 1100 / Lineup E - F / Install QCool Arms *Delete* | 5d | 2026-02-16 A | 2026-02-16 A | QTS-1371 SS | 100% | 2026-02-18 | 2026-02-23 | QTS-PHX3 DC1 - 6 day w/ Holidays |  | Electrical | DELETED | NICK | DH1100 |  |  |  |  |  |  |  |  |  |  |  |  |  | TFO CONST | TFO |  |
| QTS-1002500 | DH 2200 / Mechanical Gallery 2201 // Tape & Finish Remaining Drywall for 2201-2202 Wall - Mech Gallery *Delete* | 5d | 2026-02-16 A | 2026-02-16 A | QTS-1002530, QTS-1371 SS | 100% | 2026-02-16 | 2026-02-20 | QTS-PHX3 DC1 - 6 day w/ Holidays |  | Build Out | DELETED |  | DH1100 | 01ADMIN | Construction | IGMP | Phase 2 | Construction | DH2200 |  |  |  |  | One Siding wall not topping out |  |  |  |  |  |
| QTS-1002510 | DH 2200 / Mechanical Gallery 2201 // Paint 2201-2202 Remaining Wall - Mech Gallery *Delete* | 2d | 2026-02-16 A | 2026-02-16 A | QTS-1371 SS | 100% | 2026-02-16 | 2026-02-17 | QTS-PHX3 DC1 - 6 day w/ Holidays |  | Build Out | DELETED |  | DH1100 | 01ADMIN | Construction | IGMP | Phase 2 | Construction | DH2200 |  |  |  |  | One Siding wall not topping out |  |  |  |  |  |
| QTS-1002560 | DH 2200 / Mechanical Gallery 2201 // Insulate Wall for 2201-2202 Wall - Mech Gallery - Remaining *Delete* | 1d | 2026-02-16 A | 2026-02-16 A | QTS-1371 SS | 100% |  |  | QTS-PHX3 DC1 - 6 day w/ Holidays |  | Build Out | DELETED |  | DH1100 | 01ADMIN | Construction | IGMP | Phase 2 | Construction | DH2200 |  |  |  |  | One Siding wall not topping out |  |  |  |  |  |
| QTS-1002570 | DH 2200 / Mechanical Gallery 2201 // Hang Remaining Drywall for 2201-2202 Wall - Mech Gallery *Delete* | 4d | 2026-02-16 A | 2026-02-16 A | QTS-10891, QTS-1371 SS | 100% | 2026-02-16 | 2026-02-19 | QTS-PHX3 DC1 - 6 day w/ Holidays |  | Build Out | DELETED |  | DH1100 | 01ADMIN | Construction | IGMP | Phase 2 | Construction | DH2200 |  |  |  |  | One Siding wall not topping out |  |  |  |  |  |
| QTS-1003450 | DH 1200 / Mechanical Gallery 1201 // Hang Drywall for 1201-1202 Wall - MG Side - Remaining *Delete* | 3d | 2026-02-16 A | 2026-02-16 A | QTS-1371 SS | 100% | 2026-02-16 | 2026-02-18 | QTS-PHX3 DC1 - 6 day w/ Holidays |  | Build Out | DELETED |  | DH1100 | 01ADMIN | Construction | IGMP | Phase 2 | Construction | DH1200 |  |  |  |  |  |  |  |  |  |  |
| QTS-1003460 | DH 1200 / Mechanical Gallery 1201 // Tape & Finish for 1201-1202 Wall - MG Side - Remaining *Delete* | 4d | 2026-02-16 A | 2026-02-16 A | QTS-1371 SS | 100% | 2026-02-16 | 2026-02-19 | QTS-PHX3 DC1 - 6 day w/ Holidays |  | Build Out | DELETED |  | DH1100 | 01ADMIN | Construction | IGMP | Phase 2 | Construction | DH1200 |  |  |  |  |  |  |  |  |  |  |
| QTS-1003470 | DH 1200 / Mechanical Gallery 1201 // Prime & Paint for 1201-1202 Wall - MG Side - Remaining *Delete* | 2d | 2026-02-16 A | 2026-02-16 A | QTS-1371 SS | 100% | 2026-02-16 | 2026-02-17 | QTS-PHX3 DC1 - 6 day w/ Holidays |  | Build Out | DELETED |  | DH1100 | 01ADMIN | Construction | IGMP | Phase 2 | Construction | DH1200 |  |  |  |  |  |  |  |  |  |  |
| QTS-1003890 | DH 1300 / Mechanical Gallery 1301 // Hang Drywall for 1301-1302 Wall - EG Side - Remaining *Delete* | 3d | 2026-02-16 A | 2026-02-16 A | QTS-1371 SS | 100% | 2026-02-16 | 2026-02-18 | QTS-PHX3 DC1 - 6 day w/ Holidays |  | Build Out | DELETED |  | DH1100 | 01ADMIN | Construction | IGMP | Phase 3 | Construction | DH1300 |  |  |  |  |  |  |  |  |  |  |
| QTS-1003900 | DH 1300 / Mechanical Gallery 1301 // Tape, & Finish Drywall for 1301-1302 Wall - EG Side - Remaining *Delete* | 4d | 2026-02-16 A | 2026-02-16 A | QTS-1371 SS | 100% | 2026-02-16 | 2026-02-19 | QTS-PHX3 DC1 - 6 day w/ Holidays |  | Build Out | DELETED |  | DH1100 | 01ADMIN | Construction | IGMP | Phase 3 | Construction | DH1300 |  |  |  |  |  |  |  |  |  |  |
| QTS-102540 | DH 1300 // One Side Data Hall / Corridor Wall 1012 (East) - Data Hall Side *Delete* | 3d | 2026-02-16 A | 2026-02-16 A | QTS-1371 SS | 100% | 2026-02-16 | 2026-02-18 | QTS-PHX3 DC1 - 6 day w/ Holidays |  | Build Out | DELETED |  | DH1100 | 01ADMIN | Construction | IGMP |  | Construction | DH2100 | Level 2 |  |  |  |  |  |  |  |  |  |
| QTS-13091 | DH 1300 / Mechanical Gallery 1301 // Paint Walls for 1301-1302 Wall - EG Side - Remaining *Delete* | 3d | 2026-02-16 A | 2026-02-16 A | QTS-1371 SS | 100% | 2026-02-16 | 2026-02-18 | QTS-PHX3 DC1 - 6 day w/ Holidays |  | Build Out | DELETED |  | DH1100 |  | Construction | IGMP | Phase 3 | Construction | DH1300 |  |  |  |  |  |  |  |  |  |  |
| QTS-30831 | DH 2100 / Closeout // Remove & Repair Temporary Hot Aisle Containment *Delete* | 10d | 2026-02-16 A | 2026-02-16 A | QTS-1371 SS | 100% | 2026-02-16 | 2026-02-27 |  |  | Build Out | DELETED |  | DH1100 |  | Close Out | IGMP |  |  |  | Level 2 |  |  | Phase 1 |  |  |  |  |  |  |
| QTS-1003260 | Zone 3 Gridlines 30-41 Corridor 1012 // Tape & Finish Corridor Wall - EG Side - Remaining *Delete* | 4d | 2026-02-23 A | 2026-02-23 A | QTS-1371 SS | 100% | 2026-02-23 | 2026-02-26 | QTS-PHX3 DC1 - 6 day w/ Holidays |  | Build Out | DELETED |  | DH1100 | 01ADMIN | Construction | IGMP |  |  |  | Level 1 |  |  |  |  |  |  |  |  |  |
| QTS-1003280 | Zone 3 Gridlines 30-41 Corridor 1012 // Hang Drywall Corridor Wall - EG Side - Remaining *Delete* | 3d | 2026-02-23 A | 2026-02-23 A | QTS-1371 SS | 100% | 2026-02-23 | 2026-02-25 | QTS-PHX3 DC1 - 6 day w/ Holidays |  | Build Out | DELETED |  | DH1100 | 01ADMIN | Construction | IGMP |  |  |  | Level 1 |  |  |  |  |  |  |  |  |  |
| QTS-1003340 | Zone 3 Gridlines 30-41 Corridor 1012 // Prime & Paint Corridor Wall - EG Side - Remaining *Delete* | 2d | 2026-02-23 A | 2026-02-23 A | QTS-1371 SS | 100% | 2026-02-23 | 2026-02-24 | QTS-PHX3 DC1 - 6 day w/ Holidays |  | Build Out | DELETED |  | DH1100 |  | Construction | IGMP |  |  |  | Level 1 |  |  |  |  |  |  |  |  |  |
| QTS-1003660 | DH 2300 / Mechanical Gallery 2301 // Hang Drywall for 2301-2302 Wall - MG Side - Remaining *Delete* | 3d | 2026-02-23 A | 2026-02-23 A | QTS-1003620, QTS-1371 SS | 100% | 2026-02-23 | 2026-02-25 | QTS-PHX3 DC1 - 6 day w/ Holidays |  | Build Out | DELETED |  | DH1100 | 01ADMIN | Construction | IGMP | Phase 3 | Construction | DH2300 |  |  |  |  |  |  |  |  |  |  |
| QTS-1003670 | DH 2300 / Mechanical Gallery 2301 // Tape & Drywall for 2301-2302 Wall - MG Side - Remaining *Delete* | 4d | 2026-02-23 A | 2026-02-23 A | QTS-1371 SS | 100% | 2026-02-23 | 2026-02-26 | QTS-PHX3 DC1 - 6 day w/ Holidays |  | Build Out | DELETED |  | DH1100 | 01ADMIN | Construction | IGMP | Phase 3 | Construction | DH2300 |  |  |  |  |  |  |  |  |  |  |
| QTS-1003680 | DH 2300 / Mechanical Gallery 2301 // Prime & Paint for 2301-2302 Wall - MG Side - Remaining *Delete* | 2d | 2026-02-23 A | 2026-02-23 A | QTS-1371 SS | 100% | 2026-02-23 | 2026-02-24 | QTS-PHX3 DC1 - 6 day w/ Holidays |  | Build Out | DELETED |  | DH1100 | 01ADMIN | Construction | IGMP | Phase 3 | Construction | DH2300 |  |  |  |  |  |  |  |  |  |  |
| QTS-1003690 | DH 2300 / Mechanical Gallery 2301 // Hang Drywall for 2301-2302 Wall - EG Side - Remaining *Delete* | 3d | 2026-02-23 A | 2026-02-23 A | QTS-1371 SS | 100% | 2026-02-23 | 2026-02-25 | QTS-PHX3 DC1 - 6 day w/ Holidays |  | Build Out | DELETED |  | DH1100 | 01ADMIN | Construction | IGMP | Phase 3 | Construction | DH2300 |  |  |  |  |  |  |  |  |  |  |
| QTS-1003700 | DH 2300 / Mechanical Gallery 2301 // Tape & Drywall for 2301-2302 Wall - EG Side - Remaining *Delete* | 4d | 2026-02-23 A | 2026-02-23 A | QTS-1371 SS | 100% | 2026-02-23 | 2026-02-26 | QTS-PHX3 DC1 - 6 day w/ Holidays |  | Build Out | DELETED |  | DH1100 | 01ADMIN | Construction | IGMP | Phase 3 | Construction | DH2300 |  |  |  |  |  |  |  |  |  |  |
| QTS-1003760 | Zone 3 Gridlines 30-41 Corridor 2307 // Tape & Finish Drywall on Corridor Wall - EG Side - Top Out *Delete* | 4d | 2026-02-23 A | 2026-02-23 A | QTS-1371 SS | 100% | 2026-02-23 | 2026-02-26 | QTS-PHX3 DC1 - 6 day w/ Holidays |  | Build Out | DELETED |  | DH1100 | 01ADMIN | Construction | IGMP |  |  |  | Level 2 |  |  |  |  |  |  |  |  |  |
| QTS-1003770 | Zone 3 Gridlines 30-41 Corridor 2307 // Prime & Paint Corridor Wall - EG Side - Top Out *Delete* | 2d | 2026-02-23 A | 2026-02-23 A | QTS-1371 SS | 100% | 2026-02-23 | 2026-02-24 | QTS-PHX3 DC1 - 6 day w/ Holidays |  | Build Out | DELETED |  | DH1100 | 01ADMIN | Construction | IGMP |  |  |  | Level 2 |  |  |  |  |  |  |  |  |  |
| QTS-13061 | DH 2300 / Mechanical Gallery 2301 // Paint Walls for 2301-2302 Wall - EG Side - Remaining *Delete* | 3d | 2026-02-23 A | 2026-02-23 A | QTS-1371 SS | 100% | 2026-02-23 | 2026-02-25 | QTS-PHX3 DC1 - 6 day w/ Holidays |  | Build Out | DELETED |  | DH1100 | 01ADMIN | Construction | IGMP | Phase 3 | Construction | DH2300 |  |  |  |  |  |  |  |  |  |  |
| QTS-13461 | DH 1300 / Mechanical Gallery 1301 // Top of Wall Fire Stop for 1301-1302 Wall *Delete* | 2d | 2026-02-23 A | 2026-02-23 A | QTS-1371 SS | 100% | 2026-02-23 | 2026-02-24 | QTS-PHX3 DC1 - 6 day w/ Holidays |  | Build Out | DELETED |  | DH1100 |  | Construction | IGMP | Phase 3 | Construction | DH1300 |  |  |  |  |  |  |  |  |  |  |
| QTS-14241 | DH 1200 / Mechanical Gallery 1203 // Top of Wall Fire Stop for 1203 Exterior Wall *Delete* | 2d | 2026-02-23 A | 2026-02-23 A | QTS-1371 SS | 100% | 2026-02-23 | 2026-02-24 | QTS-PHX3 DC1 - 6 day w/ Holidays |  | Build Out | DELETED |  | DH1100 |  | Construction | IGMP | Phase 2 | Construction | DH1200 |  |  |  |  |  |  |  |  |  |  |
| QTS-18261 | DH 1100 / Electrical Gallery 1102 // Pull LV Cables Branch Circuits *Delete* | 5d | 2026-02-23 A | 2026-03-02 A | QTS-1371 SS | 100% | 2026-02-23 | 2026-02-27 | QTS-PHX3 DC1 - 6 day w/ Holidays |  | Electrical | DELETED |  | DH1100 | 01ADMIN | Construction | IGMP | Phase 1 | Construction | DH1100 | Level 1 |  |  |  |  |  |  |  |  |  |
| QTS-50011 | DH 1300 / Mechanical Yard // Install Cable Bus *Delete* | 10d | 2026-02-23 A | 2026-03-16 A | QTS-49731, QTS-6631 | 100% | 2026-02-23 | 2026-03-05 | QTS-PHX3 DC1 - 6 day w/ Holidays |  | Electrical | DELETED |  | DH1100 |  | Construction | IGMP | Phase 1 | Construction | Gen Yard | Level 2 |  |  |  | Consolidating with 2300 to one activity |  |  |  |  |  |
| QTS-3811 | Gallery 2102 / Lineup R2100 // OFCI - L2 SET IN PLACE - Eq Type # - TIE SWD - 1 unit *Delete* | 1d | 2026-02-24 A | 2026-02-24 A | QTS-1371 SS | 100% |  |  | QTS-PHX3 DC1 - 6 day w/ Holidays |  | Electrical | DELETED |  | DH1100 |  | Construction | IGMP | Phase 1 | Construction | DH2100 | Level 2 |  |  |  |  |  |  |  |  |  |
| QTS-3901 | Gallery 1102 / Lineup R1100 // OFCI - L2 SET IN PLACE - Eq Type # - TIE SWD - 1 unit *Delete* | 1d | 2026-02-24 A | 2026-02-24 A | QTS-1371 SS | 100% |  |  | QTS-PHX3 DC1 - 6 day w/ Holidays |  | Electrical | DELETED |  | DH1100 | 01ADMIN | Construction | IGMP | Phase 1 | Construction | DH1100 | Level 1 |  |  |  |  |  |  |  |  |  |
| QTS-3991 | Gallery 2202 / Lineup R2200 // OFCI - L2 SET IN PLACE - Eq Type # - TIE SWD - 1 unit *Delete* | 1d | 2026-02-24 A | 2026-02-24 A | QTS-1371 SS | 100% |  |  | QTS-PHX3 DC1 - 6 day w/ Holidays |  | Electrical | DELETED |  | DH1100 |  | Construction | IGMP | Phase 2 | Construction | DH2200 |  |  |  |  |  |  |  |  |  |  |
| QTS-4081 | Gallery 1202 / Lineup R1200 // OFCI - L2 SET IN PLACE - Eq Type # - TIE SWD - 1 unit *Delete* | 1d | 2026-02-24 A | 2026-02-24 A | QTS-1371 SS | 100% |  |  | QTS-PHX3 DC1 - 6 day w/ Holidays |  | Electrical | DELETED |  | DH1100 |  | Construction | IGMP | Phase 2 | Construction | DH1200 |  |  |  |  |  |  |  |  |  |  |
| QTS-4171 | Gallery 2302 / Lineup R2300 // OFCI - L2 SET IN PLACE - Eq Type # - TIE SWD - 1 unit *Delete* | 1d | 2026-02-24 A | 2026-02-24 A | QTS-1371 SS | 100% |  |  | QTS-PHX3 DC1 - 6 day w/ Holidays |  | Electrical | DELETED |  | DH1100 |  | Construction | IGMP | Phase 3 | Construction | DH2300 |  |  |  |  |  |  |  |  |  |  |
| QTS-4261 | Gallery 1302 / Lineup R1300 // OFCI - L2 SET IN PLACE - Eq Type # - TIE SWD - 1 unit *Delete* | 1d | 2026-02-24 A | 2026-02-24 A | QTS-1371 SS | 100% |  |  | QTS-PHX3 DC1 - 6 day w/ Holidays |  | Electrical | DELETED |  | DH1100 |  | Construction | IGMP | Phase 3 | Construction | DH1300 |  |  |  |  |  |  |  |  |  |  |
| QTS-5541 | Gallery 2102 / Lineup R2100 // Pull LV Cables from TIE SWD to Reserve Busway *Delete* | 2d | 2026-02-24 A | 2026-02-24 A | QTS-1371 SS | 100% | 2026-02-24 | 2026-02-25 | QTS-PHX3 DC1 - 6 day w/ Holidays |  | Electrical | DELETED |  | DH1100 |  | Construction | IGMP | Phase 1 | Construction | DH2100 | Level 2 |  |  |  |  |  |  |  |  |  |
| QTS-5561 | Gallery 1102 / Lineup R1100 // Pull LV Cables from TIE SWD to Reserve Busway *Delete* | 2d | 2026-02-24 A | 2026-02-24 A | QTS-1371 SS | 100% | 2026-02-24 | 2026-02-25 | QTS-PHX3 DC1 - 6 day w/ Holidays |  | Electrical | DELETED |  | DH1100 | 01ADMIN | Construction | IGMP | Phase 1 | Construction | DH1100 | Level 1 |  |  |  |  |  |  |  |  |  |
| QTS-5581 | Gallery 2202 / Lineup R2200 // Pull LV Cables from TIE SWD to Reserve Busway *Delete* | 2d | 2026-02-24 A | 2026-02-24 A | QTS-1371 SS | 100% | 2026-02-24 | 2026-02-25 | QTS-PHX3 DC1 - 6 day w/ Holidays |  | Electrical | DELETED |  | DH1100 |  | Construction | IGMP | Phase 2 | Construction | DH2200 |  |  |  |  |  |  |  |  |  |  |

Notes:
- DC1-XFMR-L2-2230: Steps: EC Installation Checklist; CC Installation Checklist; Vendor Pre-Energization Checklist (done); CXA Pre-Energization Inspection; PEI/Clean-Walk
- DC1-XFMR-L2-2260: Steps: EC Installation Checklist; CC Installation Checklist; Vendor Pre-Energization Checklist (done); CXA Pre-Energization Inspection; PEI/Clean-Walk
- DC1-XFMR-L2-2280: Steps: EC Installation Checklist; CC Installation Checklist; Vendor Pre-Energization Checklist (done); CXA Pre-Energization Inspection; PEI/Clean-Walk
- DC1-XFMR-L2-2300: Steps: EC Installation Checklist; CC Installation Checklist; Vendor Pre-Energization Checklist (done); CXA Pre-Energization Inspection; PEI/Clean-Walk
- DC1-XFMR-L2-2330: Steps: EC Installation Checklist; CC Installation Checklist; Vendor Pre-Energization Checklist (done); CXA Pre-Energization Inspection; PEI/Clean-Walk
- DC1-XFMR-L2-2220: Steps: EC Installation Checklist; CC Installation Checklist; Vendor Pre-Energization Checklist; CXA Pre-Energization Inspection; PEI/Clean-Walk
- DC1-XFMR-L2-2240: Steps: EC Installation Checklist; CC Installation Checklist; Vendor Pre-Energization Checklist (done); CXA Pre-Energization Inspection; PEI/Clean-Walk
- DC1-XFMR-L2-2250: Steps: EC Installation Checklist; CC Installation Checklist; Vendor Pre-Energization Checklist (done); CXA Pre-Energization Inspection; PEI/Clean-Walk
- DC1-XFMR-L2-2310: Steps: EC Installation Checklist; CC Installation Checklist; Vendor Pre-Energization Checklist (done); CXA Pre-Energization Inspection; PEI/Clean-Walk
- QTS-100290: allucent_notes_20251014_152335: David Wiltberger on 2025-08-19 09:08: changed pick order / David Wiltberger on 2025-09-02 10:09: Moving to accommodate roofing in Zone 1 / David Wiltberger on 2025-09-24 04:09: BAM not completed Potential Delay / David Wiltberger on 2025-09-30 12:09: BAM did not complete / David Wiltberger on 2025-10-14 10:10: set on recovery schedule / allucent_notes: David Wiltberger on 2025-08-19 09:08: changed pick order / allucent_notes: 2025-08-19 09:08 - User: David Wiltberger - Date Added: 2025-08-19 09:08 - Note: changed pick order / 2025-09-02 10:09 - User: David Wiltberger - Date Added: 2025-09-02 10:09 - Note: Moving to accommodate roofing in Zone 1 / 2025-09-24 04:09 - User: Dav
- QTS-100510: allucent_notes_20251014_152335: David Wiltberger on 2025-08-19 09:08: changed pick order / David Wiltberger on 2025-09-02 10:09: Moving to accommodate roofing in Zone 1 / David Wiltberger on 2025-09-24 04:09: BAM not completed Potential Delay / David Wiltberger on 2025-09-30 12:09: BAM did not complete / David Wiltberger on 2025-10-14 10:10: set on recovery schedule / allucent_notes: David Wiltberger on 2025-08-19 09:08: changed pick order / allucent_notes: 2025-08-19 09:08 - User: David Wiltberger - Date Added: 2025-08-19 09:08 - Note: changed pick order / 2025-09-02 10:09 - User: David Wiltberger - Date Added: 2025-09-02 10:09 - Note: Moving to accommodate roofing in Zone 1 / 2025-09-24 04:09 - User: Dav
- QTS-100540: allucent_notes_20251014_152335: David Wiltberger on 2025-08-19 09:08: changed pick order / David Wiltberger on 2025-09-02 10:09: Moving to accommodate roofing in Zone 1 / David Wiltberger on 2025-09-24 04:09: BAM not completed Potential Delay / David Wiltberger on 2025-09-30 12:09: BAM did not complete / David Wiltberger on 2025-10-14 10:10: set on recovery schedule / allucent_notes: David Wiltberger on 2025-08-19 09:08: changed pick order / allucent_notes: 2025-08-19 09:08 - User: David Wiltberger - Date Added: 2025-08-19 09:08 - Note: changed pick order / 2025-09-02 10:09 - User: David Wiltberger - Date Added: 2025-09-02 10:09 - Note: Moving to accommodate roofing in Zone 1 / 2025-09-24 04:09 - User: Dav
- QTS-100580: allucent_notes_20251014_152335: David Wiltberger on 2025-08-19 09:08: changed pick order / David Wiltberger on 2025-09-02 10:09: Moving to accommodate roofing in Zone 1 / David Wiltberger on 2025-09-24 04:09: BAM not completed Potential Delay / David Wiltberger on 2025-09-30 12:09: BAM did not complete / David Wiltberger on 2025-10-14 10:10: set on recovery schedule / allucent_notes: David Wiltberger on 2025-08-19 09:08: changed pick order / allucent_notes: 2025-08-19 09:08 - User: David Wiltberger - Date Added: 2025-08-19 09:08 - Note: changed pick order / 2025-09-02 10:09 - User: David Wiltberger - Date Added: 2025-09-02 10:09 - Note: Moving to accommodate roofing in Zone 1 / 2025-09-24 04:09 - User: Dav
- QTS-100590: allucent_notes_20251014_152335: David Wiltberger on 2025-08-19 09:08: changed pick order / David Wiltberger on 2025-09-02 10:09: Moving to accommodate roofing in Zone 1 / David Wiltberger on 2025-09-24 04:09: BAM not completed Potential Delay / David Wiltberger on 2025-09-30 12:09: BAM did not complete / David Wiltberger on 2025-10-14 10:10: set on recovery schedule / allucent_notes: David Wiltberger on 2025-08-19 09:08: changed pick order / allucent_notes: 2025-08-19 09:08 - User: David Wiltberger - Date Added: 2025-08-19 09:08 - Note: changed pick order / 2025-09-02 10:09 - User: David Wiltberger - Date Added: 2025-09-02 10:09 - Note: Moving to accommodate roofing in Zone 1 / 2025-09-24 04:09 - User: Dav
- QTS-100600: allucent_notes_20251014_152335: David Wiltberger on 2025-08-19 09:08: changed pick order / David Wiltberger on 2025-09-02 10:09: Moving to accommodate roofing in Zone 1 / David Wiltberger on 2025-09-24 04:09: BAM not completed Potential Delay / David Wiltberger on 2025-09-30 12:09: BAM did not complete / David Wiltberger on 2025-10-14 10:10: set on recovery schedule / allucent_notes: David Wiltberger on 2025-08-19 09:08: changed pick order / allucent_notes: 2025-08-19 09:08 - User: David Wiltberger - Date Added: 2025-08-19 09:08 - Note: changed pick order / 2025-09-02 10:09 - User: David Wiltberger - Date Added: 2025-09-02 10:09 - Note: Moving to accommodate roofing in Zone 1 / 2025-09-24 04:09 - User: Dav
- QTS-100610: allucent_notes_20251014_152335: David Wiltberger on 2025-08-19 09:08: changed pick order / David Wiltberger on 2025-09-02 10:09: Moving to accommodate roofing in Zone 1 / David Wiltberger on 2025-09-24 04:09: BAM not completed Potential Delay / David Wiltberger on 2025-09-30 12:09: BAM did not complete / David Wiltberger on 2025-10-14 10:10: set on recovery schedule / allucent_notes: David Wiltberger on 2025-08-19 09:08: changed pick order / allucent_notes: 2025-08-19 09:08 - User: David Wiltberger - Date Added: 2025-08-19 09:08 - Note: changed pick order / 2025-09-02 10:09 - User: David Wiltberger - Date Added: 2025-09-02 10:09 - Note: Moving to accommodate roofing in Zone 1 / 2025-09-24 04:09 - User: Dav
- QTS-100620: allucent_notes_20251014_152335: David Wiltberger on 2025-08-19 09:08: changed pick order / David Wiltberger on 2025-09-02 10:09: Moving to accommodate roofing in Zone 1 / David Wiltberger on 2025-09-24 04:09: BAM not completed Potential Delay / David Wiltberger on 2025-09-30 12:09: BAM did not complete / David Wiltberger on 2025-10-14 10:10: set on recovery schedule / allucent_notes: David Wiltberger on 2025-08-19 09:08: changed pick order / allucent_notes: 2025-08-19 09:08 - User: David Wiltberger - Date Added: 2025-08-19 09:08 - Note: changed pick order / 2025-09-02 10:09 - User: David Wiltberger - Date Added: 2025-09-02 10:09 - Note: Moving to accommodate roofing in Zone 1 / 2025-09-24 04:09 - User: Dav
- QTS-100630: allucent_notes_20251014_152335: David Wiltberger on 2025-08-19 09:08: changed pick order / David Wiltberger on 2025-09-02 10:09: Moving to accommodate roofing in Zone 1 / David Wiltberger on 2025-09-24 04:09: BAM not completed Potential Delay / David Wiltberger on 2025-09-30 12:09: BAM did not complete / David Wiltberger on 2025-10-14 10:10: set on recovery schedule / allucent_notes: David Wiltberger on 2025-08-19 09:08: changed pick order / allucent_notes: 2025-08-19 09:08 - User: David Wiltberger - Date Added: 2025-08-19 09:08 - Note: changed pick order / 2025-09-02 10:09 - User: David Wiltberger - Date Added: 2025-09-02 10:09 - Note: Moving to accommodate roofing in Zone 1 / 2025-09-24 04:09 - User: Dav
- QTS-1004830: allucent_notes_20251216_165335: David Wiltberger on 2025-12-02 06:45: Grating install not complete for installation / allucent_notes_20251209_203830: David Wiltberger on 2025-12-02 06:45: Grating install not complete for installation / allucent_notes_20251202_153722: David Wiltberger on 2025-12-02 06:45: Grating install not complete for installation / allucent_notes_20251014_152335: David Wiltberger on 2025-08-19 09:08: changed pick order / David Wiltberger on 2025-09-02 10:09: Moving to accommodate roofing in Zone 1 / David Wiltberger on 2025-09-24 04:09: BAM not completed Potential Delay / David Wiltberger on 2025-09-30 12:09: BAM did not complete / David Wiltberger on 2025-10-14 10:10: set on recovery schedule / allucent_notes: David Wiltberger on 2025-08-19 09:08: changed pick order / allucent_notes: 2025-12-02 06:45 - User: David Wiltberger - Date Added: 2025-12-02 06:45 - Note: Grating install not complete for installation
- QTS-45311: allucent_notes_20251118_192630: Luis Vea on 2025-10-20T18:31:14.737Z: waiting for stairs to be installed to start coordinating / allucent_notes_20251111_182405: Luis Vea on 2025-10-20T18:31:14.737Z: waiting for stairs to be installed to start coordinating / allucent_notes_20251104_160200: Luis Vea on 2025-10-20T18:31:14.737Z: waiting for stairs to be installed to start coordinating / allucent_notes_20251028_163138: Luis Vea on 2025-10-20T18:31:14.737Z: waiting for stairs to be installed to start coordinating / allucent_notes_20251027_224008: Luis Vea on 2025-10-20T18:31:14.737Z: waiting for stairs to be installed to start coordinating / allucent_notes_20251021_145627: Luis Vea on 2025-10-20T18:31:14.737Z: waiting for stairs to be installed to start coordinating / Schedulers Notes: 02/11/26 - Activity removed. Scaffolding will not be used. PCI to use a / lift instead. / allucent_notes: 2025-10-20T18:31:14.737Z - User: Luis Vea - Date Added: 2025-10-20T18:31:14.737Z - Note: waiting for stairs to be installed to start coordinating
- QTS-14781: allucent_notes_20251230_164549: David Wiltberger on 2025-12-30 16:23: no update / allucent_notes: 2025-12-30 16:23 - User: David Wiltberger - Date Added: 2025-12-30 16:23 - Note: no update
- QTS-1002500: allucent_notes_20251216_165335: Zack Goertz on 2025-10-27T19:25:53.887Z: Not started working on recovery plan / Jason Johnston on 2025-10-27 16:10: Jake owes update / allucent_notes_20251209_203830: Zack Goertz on 2025-10-27T19:25:53.887Z: Not started working on recovery plan / Jason Johnston on 2025-10-27 16:10: Jake owes update / allucent_notes_20251202_153722: Zack Goertz on 2025-10-27T19:25:53.887Z: Not started working on recovery plan / Jason Johnston on 2025-10-27 16:10: Jake owes update / allucent_notes_20251118_192630: Zack Goertz on 2025-10-27T19:25:53.887Z: Not started working on recovery plan / Jason Johnston on 2025-10-27 16:10: Jake owes update / allucent_notes_20251111_182405: Zack Goertz on 2025-10-27T19:25:53.887Z: Not started working on recovery plan / Jason Johnston on 2025-10-27 16:10: Jake owes update / allucent_notes_20251104_160200: Zack Goertz on 2025-10-27T19:25:53.887Z: Not started working on recovery plan / Jason Johnston on 2025-10-27 16:10: Jake owes update / allucent_notes_20251028_163138: Zack Goertz on 2025-10-27T19:25:53.887Z: Not started working on recovery plan / Jason Johnston on 2025-10-27 16:10: Jake owes update / allucent_notes_20251027_224008: Zack Goertz on 2025-10-27T19:25:53.887Z: Not started working on recovery plan / Jason Johnston on 2025-10-27 16:10: Jake owes update / allucent_notes_20251230_164549: Zack Goertz on 2025-10-27T19:25:53.887Z: Not started working on recovery plan / Jason Johnston on 2025-10-27 16:10: Jake owes update / allucent_notes: 2025-10-27T19:25:53.887Z - User: Zack Goertz - Date Added: 2025-10-27T19:25:53.887Z - Note: Not started working on recovery plan / 2025-10-27 16:10 - User: Jason Johnston - Date Added: 2025-10-27 16:10 - Note: Jake owes update
- QTS-1002510: allucent_notes_20251216_165335: Zack Goertz on 2025-10-27T19:25:53.887Z: Not started working on recovery plan / Jason Johnston on 2025-10-27 16:10: Jake owes update / allucent_notes_20251209_203830: Zack Goertz on 2025-10-27T19:25:53.887Z: Not started working on recovery plan / Jason Johnston on 2025-10-27 16:10: Jake owes update / allucent_notes_20251202_153722: Zack Goertz on 2025-10-27T19:25:53.887Z: Not started working on recovery plan / Jason Johnston on 2025-10-27 16:10: Jake owes update / allucent_notes_20251118_192630: Zack Goertz on 2025-10-27T19:25:53.887Z: Not started working on recovery plan / Jason Johnston on 2025-10-27 16:10: Jake owes update / allucent_notes_20251111_182405: Zack Goertz on 2025-10-27T19:25:53.887Z: Not started working on recovery plan / Jason Johnston on 2025-10-27 16:10: Jake owes update / allucent_notes_20251104_160200: Zack Goertz on 2025-10-27T19:25:53.887Z: Not started working on recovery plan / Jason Johnston on 2025-10-27 16:10: Jake owes update / allucent_notes_20251028_163138: Zack Goertz on 2025-10-27T19:25:53.887Z: Not started working on recovery plan / Jason Johnston on 2025-10-27 16:10: Jake owes update / allucent_notes_20251027_224008: Zack Goertz on 2025-10-27T19:25:53.887Z: Not started working on recovery plan / Jason Johnston on 2025-10-27 16:10: Jake owes update / allucent_notes_20251230_164549: Zack Goertz on 2025-10-27T19:25:53.887Z: Not started working on recovery plan / Jason Johnston on 2025-10-27 16:10: Jake owes update / allucent_notes: 2025-10-27T19:25:53.887Z - User: Zack Goertz - Date Added: 2025-10-27T19:25:53.887Z - Note: Not started working on recovery plan / 2025-10-27 16:10 - User: Jason Johnston - Date Added: 2025-10-27 16:10 - Note: Jake owes update
- QTS-1002560: allucent_notes_20251216_165335: David Wiltberger on 2025-11-04 14:11: not in sequence right / David Wiltberger on 2025-11-17 16:11: out of sequence / Jason Johnston on 2025-12-01 10:37: Man power reallocated to FOH, BOH, and Zone 1. Rough in is incomplete. / Jason Johnston on 2025-12-16 07:58: Pushing inspection until BOH is complete and in wall can be closed out. / allucent_notes_20251209_203830: David Wiltberger on 2025-11-04 14:11: not in sequence right / David Wiltberger on 2025-11-17 16:11: out of sequence / Jason Johnston on 2025-12-01 10:37: Man power reallocated to FOH, BOH, and Zone 1. Rough in is incomplete. / allucent_notes_20251202_153722: David Wiltberger on 2025-11-04 14:11: not in sequence right / David Wiltberger on 2025-11-17 16:11: out of sequence / Jason Johnston on 2025-12-01 10:37: Man power reallocated to FOH, BOH, and Zone 1. Rough in is incomplete. / allucent_notes_20251118_192630: David Wiltberger on 2025-11-04 14:11: not in sequence right / David Wiltberger on 2025-11-17 16:11: out of sequence / allucent_notes_20251111_182405: David Wiltberger on 2025-11-04 14:11: not in sequence right / allucent_notes_20251104_160200: David Wiltberger on 2025-11-04 14:11: not in sequence right / allucent_notes_20251230_164549: David Wiltberger on 2025-11-04 14:11: not in sequence right / David Wiltberger on 2025-11-17 16:11: out of sequence / Jason Johnston on 2025-12-01 10:37: Man power reallocated to FOH, BOH, and Zone 1. Rough in is incomplete. / Jason Johnston on 2025-12-16 07:58: Pushing inspection until BOH is complete and in wall can be closed out. / allucent_notes: 2025-11-04 14:11 - User: David Wiltberger - Date Added: 2025-11-04 14:11 - Note: not in sequence right / 2025-11-17 16:11 - User: David Wiltberger - Date Added: 2025-11-17 16:11 - Note: out of sequence / 2025-12-01 10:37 - User: Jason Johnston - Date Ad
- QTS-1002570: allucent_notes_20251216_165335: Zack Goertz on 2025-10-27T19:25:53.887Z: Not started working on recovery plan / Jason Johnston on 2025-10-27 16:10: Jake owes update / allucent_notes_20251209_203830: Zack Goertz on 2025-10-27T19:25:53.887Z: Not started working on recovery plan / Jason Johnston on 2025-10-27 16:10: Jake owes update / allucent_notes_20251202_153722: Zack Goertz on 2025-10-27T19:25:53.887Z: Not started working on recovery plan / Jason Johnston on 2025-10-27 16:10: Jake owes update / allucent_notes_20251118_192630: Zack Goertz on 2025-10-27T19:25:53.887Z: Not started working on recovery plan / Jason Johnston on 2025-10-27 16:10: Jake owes update / allucent_notes_20251111_182405: Zack Goertz on 2025-10-27T19:25:53.887Z: Not started working on recovery plan / Jason Johnston on 2025-10-27 16:10: Jake owes update / allucent_notes_20251104_160200: Zack Goertz on 2025-10-27T19:25:53.887Z: Not started working on recovery plan / Jason Johnston on 2025-10-27 16:10: Jake owes update / allucent_notes_20251028_163138: Zack Goertz on 2025-10-27T19:25:53.887Z: Not started working on recovery plan / Jason Johnston on 2025-10-27 16:10: Jake owes update / allucent_notes_20251027_224008: Zack Goertz on 2025-10-27T19:25:53.887Z: Not started working on recovery plan / Jason Johnston on 2025-10-27 16:10: Jake owes update / allucent_notes_20251230_164549: Zack Goertz on 2025-10-27T19:25:53.887Z: Not started working on recovery plan / Jason Johnston on 2025-10-27 16:10: Jake owes update / allucent_notes: 2025-10-27T19:25:53.887Z - User: Zack Goertz - Date Added: 2025-10-27T19:25:53.887Z - Note: Not started working on recovery plan / 2025-10-27 16:10 - User: Jason Johnston - Date Added: 2025-10-27 16:10 - Note: Jake owes update
- QTS-1003450: allucent_notes_20251216_165335: Jason Johnston on 2025-12-16 08:03: late start / allucent_notes_20251230_164549: Jason Johnston on 2025-12-16 08:03: late start / David Wiltberger on 2025-12-30 16:21: no update / allucent_notes: 2025-12-16 08:03 - User: Jason Johnston - Date Added: 2025-12-16 08:03 - Note: late start / 2025-12-30 16:21 - User: David Wiltberger - Date Added: 2025-12-30 16:21 - Note: no update
- QTS-1003460: allucent_notes_20251216_165335: Jason Johnston on 2025-12-16 08:03: late start / allucent_notes_20251230_164549: Jason Johnston on 2025-12-16 08:03: late start / David Wiltberger on 2025-12-30 16:21: no update / allucent_notes: 2025-12-16 08:03 - User: Jason Johnston - Date Added: 2025-12-16 08:03 - Note: late start / 2025-12-30 16:21 - User: David Wiltberger - Date Added: 2025-12-30 16:21 - Note: no update
- QTS-1003470: allucent_notes_20251216_165335: Jason Johnston on 2025-12-16 08:03: late start / allucent_notes_20251230_164549: Jason Johnston on 2025-12-16 08:03: late start / David Wiltberger on 2025-12-30 16:21: no update / allucent_notes: 2025-12-16 08:03 - User: Jason Johnston - Date Added: 2025-12-16 08:03 - Note: late start / 2025-12-30 16:21 - User: David Wiltberger - Date Added: 2025-12-30 16:21 - Note: no update
- QTS-102540: allucent_notes_20251014_152335: Zack Goertz on 2025-09-08T20:45:26.651Z: Not started. PCI has been put on notice that they are behind / Jason Johnston on 2025-10-08 08:10: not done / allucent_notes: 2025-09-08T20:45:26.651Z - User: Zack Goertz - Date Added: 2025-09-08T20:45:26.651Z - Note: Not started. PCI has been put on notice that they are behind / 2025-10-08 08:10 - User: Jason Johnston - Date Added: 2025-10-08 08:10 - Note: not done
- QTS-1003260: allucent_notes_20251216_165335: Jason Johnston on 2025-12-16 07:48: man power reallocated to BOH. / allucent_notes_20251209_203830: Zack Goertz on 2025-12-09 10:53: Zone 2 is a priority / allucent_notes_20251230_164549: Jason Johnston on 2025-12-16 07:48: man power reallocated to BOH. / Jason Johnston on 2025-12-30 16:39: No update / allucent_notes: 2025-12-16 07:48 - User: Jason Johnston - Date Added: 2025-12-16 07:48 - Note: man power reallocated to BOH. / 2025-12-30 16:39 - User: Jason Johnston - Date Added: 2025-12-30 16:39 - Note: No update
- QTS-1003280: allucent_notes_20251216_165335: Jason Johnston on 2025-12-16 07:48: man power reallocated to BOH. / allucent_notes_20251209_203830: Zack Goertz on 2025-12-09 10:53: Zone 2 is a priority / allucent_notes_20251230_164549: Jason Johnston on 2025-12-16 07:48: man power reallocated to BOH. / Jason Johnston on 2025-12-30 16:39: No update / allucent_notes: 2025-12-16 07:48 - User: Jason Johnston - Date Added: 2025-12-16 07:48 - Note: man power reallocated to BOH. / 2025-12-30 16:39 - User: Jason Johnston - Date Added: 2025-12-30 16:39 - Note: No update
- QTS-1003660: allucent_notes_20251216_165335: Jason Johnston on 2025-11-04 16:11: Update needed / Zack Goertz on 2025-11-07T13:27:02.345Z: ZOne 2 is the first priority. No work is happening in zone 3 at this time / Zack Goertz on 2025-11-10T17:15:34.188Z: Finally able to get PCI to start framing zone 3. Exterior and corridor walls are first / Jason Johnston on 2025-11-11 16:11: need walls. / allucent_notes_20251209_203830: Jason Johnston on 2025-11-04 16:11: Update needed / Zack Goertz on 2025-11-07T13:27:02.345Z: ZOne 2 is the first priority. No work is happening in zone 3 at this time / Zack Goertz on 2025-11-10T17:15:34.188Z: Finally able to get PCI to start framing zone 3. Exterior and corridor walls are first / Jason Johnston on 2025-11-11 16:11: need walls. / allucent_notes_20251202_153722: Jason Johnston on 2025-11-04 16:11: Update needed / Zack Goertz on 2025-11-07T13:27:02.345Z: ZOne 2 is the first priority. No work is happening in zone 3 at this time / Zack Goertz on 2025-11-10T17:15:34.188Z: Finally able to get PCI to start framing zone 3. Exterior and corridor walls are first / Jason Johnston on 2025-11-11 16:11: need walls. / allucent_notes_20251118_192630: Jason Johnston on 2025-11-04 16:11: Update needed / Zack Goertz on 2025-11-07T13:27:02.345Z: ZOne 2 is the first priority. No work is happening in zone 3 at this time / Zack Goertz on 2025-11-10T17:15:34.188Z: Finally able to get PCI to start framing zone 3. Exterior and corridor walls are first / Jason Johnston on 2025-11-11 16:11: need walls. / allucent_notes_20251111_182405: Jason Johnston on 2025-11-04 16:11: Update needed / Zack Goertz on 2025-11-07T13:27:02.345Z: ZOne 2 is the first priority. No work is happening in zone 3 at this time / Zack Goertz on 2025-11-10T17:15:34.188Z: Finally able to get PCI to start framing zone 3. Exterior and corridor walls are first / Jason Johnston on 2025-11-11 16:11: need walls. / allucent_notes_20251104_160200: Jason Johnston on 2025-11-04 16:11: Update needed / allucent_notes_20251230_164549: Jason Johnston on 2025-11-04 16:11: Update needed / Zack Goertz on 2025-11-07T13:27:02.345Z: ZOne 2 is the first priority. No work is happening in zone 3 at this time / Zack Goertz on 2025-11-10T17:15:34.188Z: Finally able to get PCI to start framing zone 3. Exterior and corridor walls are first / Jason Johnston on 2025-11-11 16:11: need walls. / allucent_notes: 2025-11-04 16:11 - User: Jason Johnston - Date Added: 2025-11-04 16:11 - Note: Update needed / 2025-11-07T13:27:02.345Z - User: Zack Goertz - Date Added: 2025-11-07T13:27:02.345Z - Note: ZOne 2 is the first priority. No work is happening in zone 3 at thi
- QTS-1003670: allucent_notes_20251216_165335: Jason Johnston on 2025-11-04 16:11: Update needed / Zack Goertz on 2025-11-07T13:27:02.345Z: ZOne 2 is the first priority. No work is happening in zone 3 at this time / Zack Goertz on 2025-11-10T17:15:34.188Z: Finally able to get PCI to start framing zone 3. Exterior and corridor walls are first / Jason Johnston on 2025-11-11 16:11: need walls. / allucent_notes_20251209_203830: Jason Johnston on 2025-11-04 16:11: Update needed / Zack Goertz on 2025-11-07T13:27:02.345Z: ZOne 2 is the first priority. No work is happening in zone 3 at this time / Zack Goertz on 2025-11-10T17:15:34.188Z: Finally able to get PCI to start framing zone 3. Exterior and corridor walls are first / Jason Johnston on 2025-11-11 16:11: need walls. / allucent_notes_20251202_153722: Jason Johnston on 2025-11-04 16:11: Update needed / Zack Goertz on 2025-11-07T13:27:02.345Z: ZOne 2 is the first priority. No work is happening in zone 3 at this time / Zack Goertz on 2025-11-10T17:15:34.188Z: Finally able to get PCI to start framing zone 3. Exterior and corridor walls are first / Jason Johnston on 2025-11-11 16:11: need walls. / allucent_notes_20251118_192630: Jason Johnston on 2025-11-04 16:11: Update needed / Zack Goertz on 2025-11-07T13:27:02.345Z: ZOne 2 is the first priority. No work is happening in zone 3 at this time / Zack Goertz on 2025-11-10T17:15:34.188Z: Finally able to get PCI to start framing zone 3. Exterior and corridor walls are first / Jason Johnston on 2025-11-11 16:11: need walls. / allucent_notes_20251111_182405: Jason Johnston on 2025-11-04 16:11: Update needed / Zack Goertz on 2025-11-07T13:27:02.345Z: ZOne 2 is the first priority. No work is happening in zone 3 at this time / Zack Goertz on 2025-11-10T17:15:34.188Z: Finally able to get PCI to start framing zone 3. Exterior and corridor walls are first / Jason Johnston on 2025-11-11 16:11: need walls. / allucent_notes_20251104_160200: Jason Johnston on 2025-11-04 16:11: Update needed / allucent_notes_20251230_164549: Jason Johnston on 2025-11-04 16:11: Update needed / Zack Goertz on 2025-11-07T13:27:02.345Z: ZOne 2 is the first priority. No work is happening in zone 3 at this time / Zack Goertz on 2025-11-10T17:15:34.188Z: Finally able to get PCI to start framing zone 3. Exterior and corridor walls are first / Jason Johnston on 2025-11-11 16:11: need walls. / allucent_notes: 2025-11-04 16:11 - User: Jason Johnston - Date Added: 2025-11-04 16:11 - Note: Update needed / 2025-11-07T13:27:02.345Z - User: Zack Goertz - Date Added: 2025-11-07T13:27:02.345Z - Note: ZOne 2 is the first priority. No work is happening in zone 3 at thi
- QTS-1003680: allucent_notes_20251216_165335: Jason Johnston on 2025-11-04 16:11: Update needed / Zack Goertz on 2025-11-07T13:27:02.345Z: ZOne 2 is the first priority. No work is happening in zone 3 at this time / Zack Goertz on 2025-11-10T17:15:34.188Z: Finally able to get PCI to start framing zone 3. Exterior and corridor walls are first / Jason Johnston on 2025-11-11 16:11: need walls. / allucent_notes_20251209_203830: Jason Johnston on 2025-11-04 16:11: Update needed / Zack Goertz on 2025-11-07T13:27:02.345Z: ZOne 2 is the first priority. No work is happening in zone 3 at this time / Zack Goertz on 2025-11-10T17:15:34.188Z: Finally able to get PCI to start framing zone 3. Exterior and corridor walls are first / Jason Johnston on 2025-11-11 16:11: need walls. / allucent_notes_20251202_153722: Jason Johnston on 2025-11-04 16:11: Update needed / Zack Goertz on 2025-11-07T13:27:02.345Z: ZOne 2 is the first priority. No work is happening in zone 3 at this time / Zack Goertz on 2025-11-10T17:15:34.188Z: Finally able to get PCI to start framing zone 3. Exterior and corridor walls are first / Jason Johnston on 2025-11-11 16:11: need walls. / allucent_notes_20251118_192630: Jason Johnston on 2025-11-04 16:11: Update needed / Zack Goertz on 2025-11-07T13:27:02.345Z: ZOne 2 is the first priority. No work is happening in zone 3 at this time / Zack Goertz on 2025-11-10T17:15:34.188Z: Finally able to get PCI to start framing zone 3. Exterior and corridor walls are first / Jason Johnston on 2025-11-11 16:11: need walls. / allucent_notes_20251111_182405: Jason Johnston on 2025-11-04 16:11: Update needed / Zack Goertz on 2025-11-07T13:27:02.345Z: ZOne 2 is the first priority. No work is happening in zone 3 at this time / Zack Goertz on 2025-11-10T17:15:34.188Z: Finally able to get PCI to start framing zone 3. Exterior and corridor walls are first / Jason Johnston on 2025-11-11 16:11: need walls. / allucent_notes_20251104_160200: Jason Johnston on 2025-11-04 16:11: Update needed / allucent_notes_20251230_164549: Jason Johnston on 2025-11-04 16:11: Update needed / Zack Goertz on 2025-11-07T13:27:02.345Z: ZOne 2 is the first priority. No work is happening in zone 3 at this time / Zack Goertz on 2025-11-10T17:15:34.188Z: Finally able to get PCI to start framing zone 3. Exterior and corridor walls are first / Jason Johnston on 2025-11-11 16:11: need walls. / allucent_notes: 2025-11-04 16:11 - User: Jason Johnston - Date Added: 2025-11-04 16:11 - Note: Update needed / 2025-11-07T13:27:02.345Z - User: Zack Goertz - Date Added: 2025-11-07T13:27:02.345Z - Note: ZOne 2 is the first priority. No work is happening in zone 3 at thi
- QTS-1003690: allucent_notes_20251216_165335: Jason Johnston on 2025-11-04 16:11: Update needed / Zack Goertz on 2025-11-07T13:27:02.345Z: ZOne 2 is the first priority. No work is happening in zone 3 at this time / Zack Goertz on 2025-11-10T17:15:34.188Z: Finally able to get PCI to start framing zone 3. Exterior and corridor walls are first / Jason Johnston on 2025-11-11 16:11: need walls. / allucent_notes_20251209_203830: Jason Johnston on 2025-11-04 16:11: Update needed / Zack Goertz on 2025-11-07T13:27:02.345Z: ZOne 2 is the first priority. No work is happening in zone 3 at this time / Zack Goertz on 2025-11-10T17:15:34.188Z: Finally able to get PCI to start framing zone 3. Exterior and corridor walls are first / Jason Johnston on 2025-11-11 16:11: need walls. / allucent_notes_20251202_153722: Jason Johnston on 2025-11-04 16:11: Update needed / Zack Goertz on 2025-11-07T13:27:02.345Z: ZOne 2 is the first priority. No work is happening in zone 3 at this time / Zack Goertz on 2025-11-10T17:15:34.188Z: Finally able to get PCI to start framing zone 3. Exterior and corridor walls are first / Jason Johnston on 2025-11-11 16:11: need walls. / allucent_notes_20251118_192630: Jason Johnston on 2025-11-04 16:11: Update needed / Zack Goertz on 2025-11-07T13:27:02.345Z: ZOne 2 is the first priority. No work is happening in zone 3 at this time / Zack Goertz on 2025-11-10T17:15:34.188Z: Finally able to get PCI to start framing zone 3. Exterior and corridor walls are first / Jason Johnston on 2025-11-11 16:11: need walls. / allucent_notes_20251111_182405: Jason Johnston on 2025-11-04 16:11: Update needed / Zack Goertz on 2025-11-07T13:27:02.345Z: ZOne 2 is the first priority. No work is happening in zone 3 at this time / Zack Goertz on 2025-11-10T17:15:34.188Z: Finally able to get PCI to start framing zone 3. Exterior and corridor walls are first / Jason Johnston on 2025-11-11 16:11: need walls. / allucent_notes_20251104_160200: Jason Johnston on 2025-11-04 16:11: Update needed / allucent_notes_20251230_164549: Jason Johnston on 2025-11-04 16:11: Update needed / Zack Goertz on 2025-11-07T13:27:02.345Z: ZOne 2 is the first priority. No work is happening in zone 3 at this time / Zack Goertz on 2025-11-10T17:15:34.188Z: Finally able to get PCI to start framing zone 3. Exterior and corridor walls are first / Jason Johnston on 2025-11-11 16:11: need walls. / allucent_notes: 2025-11-04 16:11 - User: Jason Johnston - Date Added: 2025-11-04 16:11 - Note: Update needed / 2025-11-07T13:27:02.345Z - User: Zack Goertz - Date Added: 2025-11-07T13:27:02.345Z - Note: ZOne 2 is the first priority. No work is happening in zone 3 at thi
- QTS-1003700: allucent_notes_20251216_165335: Jason Johnston on 2025-11-04 16:11: Update needed / Zack Goertz on 2025-11-07T13:27:02.345Z: ZOne 2 is the first priority. No work is happening in zone 3 at this time / Zack Goertz on 2025-11-10T17:15:34.188Z: Finally able to get PCI to start framing zone 3. Exterior and corridor walls are first / Jason Johnston on 2025-11-11 16:11: need walls. / allucent_notes_20251209_203830: Jason Johnston on 2025-11-04 16:11: Update needed / Zack Goertz on 2025-11-07T13:27:02.345Z: ZOne 2 is the first priority. No work is happening in zone 3 at this time / Zack Goertz on 2025-11-10T17:15:34.188Z: Finally able to get PCI to start framing zone 3. Exterior and corridor walls are first / Jason Johnston on 2025-11-11 16:11: need walls. / allucent_notes_20251202_153722: Jason Johnston on 2025-11-04 16:11: Update needed / Zack Goertz on 2025-11-07T13:27:02.345Z: ZOne 2 is the first priority. No work is happening in zone 3 at this time / Zack Goertz on 2025-11-10T17:15:34.188Z: Finally able to get PCI to start framing zone 3. Exterior and corridor walls are first / Jason Johnston on 2025-11-11 16:11: need walls. / allucent_notes_20251118_192630: Jason Johnston on 2025-11-04 16:11: Update needed / Zack Goertz on 2025-11-07T13:27:02.345Z: ZOne 2 is the first priority. No work is happening in zone 3 at this time / Zack Goertz on 2025-11-10T17:15:34.188Z: Finally able to get PCI to start framing zone 3. Exterior and corridor walls are first / Jason Johnston on 2025-11-11 16:11: need walls. / allucent_notes_20251111_182405: Jason Johnston on 2025-11-04 16:11: Update needed / Zack Goertz on 2025-11-07T13:27:02.345Z: ZOne 2 is the first priority. No work is happening in zone 3 at this time / Zack Goertz on 2025-11-10T17:15:34.188Z: Finally able to get PCI to start framing zone 3. Exterior and corridor walls are first / Jason Johnston on 2025-11-11 16:11: need walls. / allucent_notes_20251104_160200: Jason Johnston on 2025-11-04 16:11: Update needed / allucent_notes_20251230_164549: Jason Johnston on 2025-11-04 16:11: Update needed / Zack Goertz on 2025-11-07T13:27:02.345Z: ZOne 2 is the first priority. No work is happening in zone 3 at this time / Zack Goertz on 2025-11-10T17:15:34.188Z: Finally able to get PCI to start framing zone 3. Exterior and corridor walls are first / Jason Johnston on 2025-11-11 16:11: need walls. / allucent_notes: 2025-11-04 16:11 - User: Jason Johnston - Date Added: 2025-11-04 16:11 - Note: Update needed / 2025-11-07T13:27:02.345Z - User: Zack Goertz - Date Added: 2025-11-07T13:27:02.345Z - Note: ZOne 2 is the first priority. No work is happening in zone 3 at thi
- QTS-1003760: allucent_notes_20251202_153722: Zack Goertz on 2025-12-01 10:37: Zone 3 is not a priority right now / allucent_notes: 2025-12-01 10:37 - User: Zack Goertz - Date Added: 2025-12-01 10:37 - Note: Zone 3 is not a priority right now
- QTS-1003770: allucent_notes_20251202_153722: Zack Goertz on 2025-12-01 10:37: Zone 3 is not a priority right now / allucent_notes: 2025-12-01 10:37 - User: Zack Goertz - Date Added: 2025-12-01 10:37 - Note: Zone 3 is not a priority right now

| ID | Activity | Duration | Start | Finish | Predecessors | Complete | Planned start | Planned finish | Calendar | Project Section | Layton Discipline | Baseline | Phase-1-1 | Project Section-1 | Location | DELETED | D | Level | Allucent CSI Group | Notes | TFO-CONST ONLY | Contract | NICK | Phase-1 | Fragnet | Fragnet Responsible Party |
| --- | --- | --- | --- | --- | --- | --- | --- | --- | --- | --- | --- | --- | --- | --- | --- | --- | --- | --- | --- | --- | --- | --- | --- | --- | --- | --- |
| QTS-5601 | Gallery 1202 / Lineup R1200 // Pull LV Cables from TIE SWD to Reserve Busway *Delete* | 2d | 2026-02-24 A | 2026-02-24 A | QTS-1371 SS | 100% | 2026-02-24 | 2026-02-25 | QTS-PHX3 DC1 - 6 day w/ Holidays | Construction | Electrical | IGMP | Phase 2 | Construction | DH1200 | DELETED | DH1100 |  |  |  |  |  |  |  |  |  |
| QTS-5641 | Gallery 1302 / Lineup R1300 // Pull LV Cables from TIE SWD to Reserve Busway *Delete* | 2d | 2026-02-24 A | 2026-02-24 A | QTS-1371 SS | 100% | 2026-02-24 | 2026-02-25 | QTS-PHX3 DC1 - 6 day w/ Holidays | Construction | Electrical | IGMP | Phase 3 | Construction | DH1300 | DELETED | DH1100 |  |  |  |  |  |  |  |  |  |
| QTS-6221 | Gallery 2302 / Lineup R2300 // Pull LV Cables from TIE SWD to Reserve Busway *Delete* | 4d | 2026-02-24 A | 2026-02-24 A | QTS-1371 SS | 100% | 2026-02-24 | 2026-02-27 | QTS-PHX3 DC1 - 6 day w/ Holidays | Construction | Electrical | IGMP | Phase 3 | Construction | DH2300 | DELETED | DH1100 |  |  |  |  |  |  |  |  |  |
| QTS-7021 | Gallery 2102 / Lineup R2100 // Pull LV Cables from TIE SWD to TIE SWD adjacent # *Delete* | 1d | 2026-02-24 A | 2026-02-24 A | QTS-1371 SS | 100% |  |  | QTS-PHX3 DC1 - 6 day w/ Holidays | Construction | Electrical | IGMP | Phase 1 | Construction | DH2100 | DELETED | DH1100 | Level 2 |  |  |  |  |  |  |  |  |
| QTS-7071 | Gallery 1102 / Lineup R1100 // Pull LV Cables from TIE SWD to TIE SWD adjacent # *Delete* | 5d | 2026-02-24 A | 2026-02-24 A | QTS-1371 SS | 100% | 2026-02-24 | 2026-02-28 | QTS-PHX3 DC1 - 6 day w/ Holidays | Construction | Electrical | IGMP | Phase 1 | Construction | DH1100 | DELETED | DH1100 | Level 1 |  |  |  |  |  |  |  |  |
| QTS-7121 | Gallery 2202 / Lineup R2200 // Pull LV Cables from TIE SWD to TIE SWD adjacent # *Delete* | 5d | 2026-02-24 A | 2026-02-24 A | QTS-1371 SS | 100% | 2026-02-24 | 2026-02-28 | QTS-PHX3 DC1 - 6 day w/ Holidays | Construction | Electrical | IGMP | Phase 2 | Construction | DH2200 | DELETED | DH1100 |  |  |  |  |  |  |  |  |  |
| QTS-7171 | Gallery 1202 / Lineup R1200 // Pull LV Cables from TIE SWD to TIE SWD adjacent # *Delete* | 5d | 2026-02-24 A | 2026-02-24 A | QTS-1371 SS | 100% | 2026-02-24 | 2026-02-28 | QTS-PHX3 DC1 - 6 day w/ Holidays | Construction | Electrical | IGMP | Phase 2 | Construction | DH1200 | DELETED | DH1100 |  |  |  |  |  |  |  |  |  |
| QTS-7221 | Gallery 2302 / Lineup R2300 // Pull LV Cables from TIE SWD to TIE SWD adjacent # *Delete* | 5d | 2026-02-24 A | 2026-02-24 A | QTS-1371 SS | 100% | 2026-02-24 | 2026-02-28 | QTS-PHX3 DC1 - 6 day w/ Holidays | Construction | Electrical | IGMP | Phase 3 | Construction | DH2300 | DELETED | DH1100 |  |  |  |  |  |  |  |  |  |
| QTS-7271 | Gallery 1302 / Lineup R1300 // Pull LV Cables from TIE SWD to TIE SWD adjacent # *Delete* | 5d | 2026-02-24 A | 2026-02-24 A | QTS-1371 SS | 100% | 2026-02-24 | 2026-02-28 | QTS-PHX3 DC1 - 6 day w/ Holidays | Construction | Electrical | IGMP | Phase 3 | Construction | DH1300 | DELETED | DH1100 |  |  |  |  |  |  |  |  |  |
| QTS-8731 | Gallery 2102 / Lineup R2100 // Terminate TIE SWD *Delete* | 1d | 2026-02-24 A | 2026-02-24 A | QTS-1371 SS | 100% |  |  | QTS-PHX3 DC1 - 6 day w/ Holidays | Construction | Electrical | IGMP | Phase 1 | Construction | DH2100 | DELETED | DH1100 | Level 2 |  |  |  |  |  |  |  |  |
| QTS-8891 | Gallery 1102 / Lineup R1100 // Terminate TIE SWD *Delete* | 2d | 2026-02-24 A | 2026-02-24 A | QTS-1371 SS | 100% | 2026-02-24 | 2026-02-25 | QTS-PHX3 DC1 - 6 day w/ Holidays | Construction | Electrical | IGMP | Phase 1 | Construction | DH1100 | DELETED | DH1100 | Level 1 |  |  |  |  |  |  |  |  |
| QTS-9051 | Gallery 2202 / Lineup R2200 // Terminate TIE SWD *Delete* | 2d | 2026-02-24 A | 2026-02-24 A | QTS-1371 SS | 100% | 2026-02-24 | 2026-02-25 | QTS-PHX3 DC1 - 6 day w/ Holidays | Construction | Electrical | IGMP | Phase 2 | Construction | DH2200 | DELETED | DH1100 |  |  |  |  |  |  |  |  |  |
| QTS-9211 | Gallery 1202 / Lineup R1200 // Terminate TIE SWD *Delete* | 2d | 2026-02-24 A | 2026-02-24 A | QTS-1371 SS | 100% | 2026-02-24 | 2026-02-25 | QTS-PHX3 DC1 - 6 day w/ Holidays | Construction | Electrical | IGMP | Phase 2 | Construction | DH1200 | DELETED | DH1100 |  |  |  |  |  |  |  |  |  |
| QTS-9371 | Gallery 2302 / Lineup R2300 // Terminate TIE SWD *Delete* | 2d | 2026-02-24 A | 2026-02-24 A | QTS-1371 SS | 100% | 2026-02-24 | 2026-02-25 | QTS-PHX3 DC1 - 6 day w/ Holidays | Construction | Electrical | IGMP | Phase 3 | Construction | DH2300 | DELETED | DH1100 |  |  |  |  |  |  |  |  |  |
| QTS-9531 | Gallery 1302 / Lineup R1300 // Terminate TIE SWD *Delete* | 2d | 2026-02-24 A | 2026-02-24 A | QTS-1371 SS | 100% | 2026-02-24 | 2026-02-25 | QTS-PHX3 DC1 - 6 day w/ Holidays | Construction | Electrical | IGMP | Phase 3 | Construction | DH1300 | DELETED | DH1100 |  |  |  |  |  |  |  |  |  |
| QTS-16811 | DH 1100 / Electrical Gallery 1102 // Set House Panels *Delete* | 2d | 2026-02-25 A | 2026-02-27 A | QTS-1371 SS | 100% | 2026-02-25 | 2026-02-26 | QTS-PHX3 DC1 - 6 day w/ Holidays | Construction | Electrical | IGMP | Phase 1 | Construction | DH1100 | DELETED | DH1100 | Level 1 | 01ADMIN |  |  |  |  |  |  |  |
| QTS-25651 | DH 2100 / Electrical Gallery 2102 // Terminate Panels *Delete* | 6d | 2026-02-26 A | 2026-03-02 A | QTS-1371 SS | 100% | 2026-02-26 | 2026-03-04 | QTS-PHX3 DC1 - 6 day w/ Holidays | Construction | Electrical | IGMP |  | Construction | DH2100 | DELETED | DH1100 | Level 2 | 01ADMIN |  |  |  |  |  |  |  |
| QTS-42851 | DH 1200 / Mechanical Yard // Terminate MV at Transformers *Delete* | 10d | 2026-02-27 A | 2026-03-16 A | QTS-1371 SS | 100% | 2026-02-27 | 2026-03-10 | QTS-PHX3 DC1 - 6 day w/ Holidays | Construction | Electrical | IGMP | Phase 1 | Construction | Gen Yard | DELETED | DH1100 | Level 2 |  | 3/17: Consolidating activities in different WBS |  |  |  |  |  |  |
| QTS-16051 | DH 1100 / Electrical Gallery 1102 // Install BMS & EPMS Cable and Terminations *Delete* | 10d | 2026-03-02 A | 2026-03-02 A | QTS-1371 SS | 100% | 2026-03-04 | 2026-03-14 | QTS-PHX3 DC1 - 6 day w/ Holidays | Construction | LV | IGMP | Phase 1 | Construction | DH1100 | DELETED | DH1100 | Level 1 |  |  |  |  |  |  |  |  |
| QTS-17941 | DH 1100 / Mechanical Gallery 1103 // Install BMS & EPMS Cable and Terminations *Delete* | 10d | 2026-03-02 A | 2026-03-02 A | QTS-1371 SS | 100% | 2026-03-05 | 2026-03-16 | QTS-PHX3 DC1 - 6 day w/ Holidays | Construction | LV | IGMP | Phase 1 | Construction | DH1100 | DELETED | DH1100 | Level 1 |  |  |  |  |  |  |  |  |
| QTS-18511 | DH 1100 / Electrical Gallery 1102 // Terminate Panels *Delete* | 3d | 2026-03-02 A | 2026-03-02 A | QTS-1371 SS | 100% | 2026-03-10 | 2026-03-12 | QTS-PHX3 DC1 - 6 day w/ Holidays | Construction | Electrical | IGMP | Phase 1 | Construction | DH1100 | DELETED | DH1100 | Level 1 |  |  |  |  |  |  |  |  |
| QTS-24181 | DH 2100 / Electrical Gallery 2102 // Install BMS & EPMS Cable and Terminations *Delete* | 10d | 2026-03-02 A | 2026-03-02 A | QTS-1371 SS | 100% | 2026-03-05 | 2026-03-16 | QTS-PHX3 DC1 - 6 day w/ Holidays | Construction | LV | IGMP |  | Construction | DH2100 | DELETED | DH1100 | Level 2 | 01ADMIN |  |  |  |  |  |  |  |
| QTS-25171 | DH 2100 / Mechanical Gallery 2103 // Install BMS & EPMS Cable and Terminations *Delete* | 10d | 2026-03-02 A | 2026-03-02 A | QTS-1371 SS | 100% | 2026-03-04 | 2026-03-14 | QTS-PHX3 DC1 - 6 day w/ Holidays | Construction | LV | IGMP |  | Construction | DH2100 | DELETED | DH1100 | Level 2 | 01ADMIN |  |  |  |  |  |  |  |
| QTS-44391 | DH 2100 / Mechanical Gallery 2101 // Install BMS & EPMS Cable and Terminations *Delete* | 10d | 2026-03-02 A | 2026-03-02 A | QTS-1371 SS | 100% | 2026-03-10 | 2026-03-20 | QTS-PHX3 DC1 - 6 day w/ Holidays | Construction | LV | IGMP |  | Construction | DH2100 | DELETED | DH1100 | Level 2 |  |  |  |  |  |  |  |  |
| QTS-44441 | DH 1100 / Mechanical Gallery 1101 // Install BMS & EPMS Cable and Terminations *Delete* | 6d | 2026-03-02 A | 2026-03-02 A | QTS-1371 SS | 100% | 2026-03-04 | 2026-03-10 | QTS-PHX3 DC1 - 6 day w/ Holidays | Construction | LV | IGMP |  | Construction | DH2100 | DELETED | DH1100 | Level 2 |  |  |  |  |  |  |  |  |
| QTS-17711 | DH 2200 / Electrical Gallery 2202 // Install Conduit from UPS Pod to Chillers Line Up A-D *Delete* | 6d | 2026-03-05 A | 2026-03-16 A | QTS-1371 SS | 100% | 2026-03-05 | 2026-03-11 | QTS-PHX3 DC1 - 6 day w/ Holidays | Construction | Electrical | IGMP | Phase 2 | Construction | DH2200 | DELETED | DH1100 |  | 01ADMIN | Consolidating with 2200 to one activity |  |  |  |  |  |  |
| QTS-18651 | DH 2200 / Electrical Gallery 2202 // Install Conduit from UPS Pod to Pumps Line Up A-D *Delete* | 6d | 2026-03-05 A | 2026-03-16 A | QTS-1371 SS | 100% | 2026-03-05 | 2026-03-11 | QTS-PHX3 DC1 - 6 day w/ Holidays | Construction | Electrical | IGMP | Phase 2 | Construction | DH2200 | DELETED | DH1100 |  |  | Consolidating with 2200 to one activity |  |  |  |  |  |  |
| QTS-2191 | DH 1300 / Mechanical Yard // Install FRP Platforms *Delete* | 10d | 2026-03-10 A | 2026-03-16 A | QTS-1371 SS | 100% | 2026-03-10 | 2026-03-20 | QTS-PHX3 DC1 - 6 day w/ Holidays | Construction | Core & Shell | IGMP | Phase 3 | Construction | Gen Yard | DELETED | DH1100 | Level 1 |  | Consolidating with 2300 to one activity | TFO CONST | TFO | NICK |  |  |  |
| QTS-44141 | TI Area A // Test & Balance *Delete* | 1d | 2026-03-10 A | 2026-03-10 A | QTS-1371 SS | 100% |  |  | QTS-PHX3 DC1 - 6 day w/ Holidays | Construction | Mechanical | IGMP | Phase 1 | Construction | FOH | DELETED | DH1100 | Level 1 | 01ADMIN | 3/12/26: Deleting redundant activity |  |  |  |  |  |  |
| QTS-18981 | DH 2300 / Electrical Gallery 2302 // Pull & Terminate from UPS Pod to Pumps Line Up A-D *Delete* | 3d | 2026-03-11 A | 2026-03-13 A | QTS-1371 SS | 100% |  |  | QTS-PHX3 DC1 - 6 day w/ Holidays | Construction | Electrical | IGMP | Phase 3 | Construction | DH2300 | DELETED | DH1100 |  |  |  |  |  |  |  |  |  |
| QTS-41401 | DH 2300 / Electrical Gallery 2302 // Pull & Terminate from UPS Pod to Chillers Lineup E-R *Delete* | 3d | 2026-03-11 A | 2026-03-13 A | QTS-1371 SS | 100% |  |  | QTS-PHX3 DC1 - 6 day w/ Holidays | Construction | Electrical | IGMP | Phase 3 | Construction | DH2300 | DELETED | DH1100 |  |  |  |  |  |  |  |  |  |
| QTS-41421 | DH 2300 / Electrical Gallery 2302 // Pull & Terminate from UPS Pod to Pumps Lineup E-R *Delete* | 3d | 2026-03-11 A | 2026-03-13 A | QTS-1371 SS | 100% |  |  | QTS-PHX3 DC1 - 6 day w/ Holidays | Construction | Electrical | IGMP | Phase 3 | Construction | DH2300 | DELETED | DH1100 |  |  |  |  |  |  |  |  |  |
| QTS-50291 | DH 1300 / Rooftop Mechanical // Rough In Plumbing from to DOAS *Delete* | 1d | 2026-03-11 A | 2026-03-11 A | QTS-1371 SS | 100% |  |  | QTS-PHX3 DC1 - 6 day w/ Holidays | Construction | Mechanical | DC | Phase 1 | Construction | DH1300 | DELETED | DH1100 | Roof | 01ADMIN |  |  |  |  |  |  |  |
| QTS-101170 | DH 1300 / Rooftop Mechanical // Rough In Condensate Drain from DOAS *Delete* | 2d | 2026-03-12 A | 2026-03-13 A | QTS-1371 SS | 100% |  |  | QTS-PHX3 DC1 - 6 day w/ Holidays | Construction | Mechanical | IGMP |  |  | DH1300 | DELETED | DH1100 | Level 2 | 01ADMIN |  |  |  |  | Phase 1 |  |  |
| QTS-50301 | DH 1300 / Rooftop Mechanical // Rough In Power from to DOAS *Delete* | 3d | 2026-03-12 A | 2026-03-14 A | QTS-1371 SS | 100% |  |  | QTS-PHX3 DC1 - 6 day w/ Holidays | Construction | Mechanical | DC | Phase 1 | Construction | DH1300 | DELETED | DH1100 | Roof |  |  |  |  |  |  |  |  |
| QTS-15971 | DH 1300 / Mechanical Yard // Terminate MV at Transformers *Delete* | 5d | 2026-03-13 A | 2026-03-16 A | QTS-1371 SS | 100% | 2026-03-13 | 2026-03-18 | QTS-PHX3 DC1 - 6 day w/ Holidays | Construction | Electrical | IGMP | Phase 3 | Construction | Gen Yard | DELETED | DH1100 | Level 1 |  | Consolidating with 2300 to one activity |  |  |  |  |  |  |
| QTS-50311 | DH 1300 / Rooftop Mechanical // Rough In Controls from to DOAS *Delete* | 1d | 2026-03-14 A | 2026-03-14 A | QTS-1371 SS | 100% |  |  | QTS-PHX3 DC1 - 6 day w/ Holidays | Construction | Mechanical | DC | Phase 1 | Construction | DH1300 | DELETED | DH1100 | Roof |  |  |  |  |  |  |  |  |
| QTS-1000300 | DH 1200 / Mechanical Yard // OFCI - L2 SET IN PLACE - Eq Type # - 2500KW Generator SCR - 7 units *Delete* | 3d | 2026-03-16 A | 2026-03-16 A | QTS-1371 SS | 100% | 2026-03-18 | 2026-03-20 | QTS-PHX3 DC1 - 6 day w/ Holidays | Construction | Electrical |  | Phase 1 | Construction | Gen Yard | DELETED | DH1100 | Level 2 | 01ADMIN | 3/17: Consolidating activities in different WBS |  |  |  |  |  |  |
| QTS-1000320 | DH 1300 / Mechanical Yard // OFCI - L2 SET IN PLACE - Eq Type # - 2500KW Generator SCR - 7 units *Delete* | 3d | 2026-03-16 A | 2026-03-16 A | QTS-1371 SS | 100% | 2026-03-16 | 2026-03-18 | QTS-PHX3 DC1 - 6 day w/ Holidays | Construction | Electrical |  | Phase 1 | Construction | Gen Yard | DELETED | DH1100 | Level 2 | 01ADMIN | Consolidating with 2300 to one activity |  |  |  |  |  |  |
| QTS-1001230 | DH 1300 / Mechanical Yard // Pressure Test Generator Tanks *Delete* | 2d | 2026-03-16 A | 2026-03-16 A | QTS-1371 SS | 100% | 2026-03-11 | 2026-03-12 | QTS-PHX3 DC1 - 6 day w/ Holidays | Construction | Mechanical | IGMP |  |  | Gen Yard | DELETED | DH1100 | Level 2 | 01ADMIN |  |  |  |  | Phase 1 |  |  |
| QTS-1001840 | Fragnet / DH 1200 / Rooftop Mechanical // Install Grating, Toe Kicks, Hand Rails to Complete Chiller Deck *Delete* | 10d | 2026-03-16 A | 2026-03-16 A | QTS-1371 SS | 100% | 2026-04-07 | 2026-04-17 | QTS-PHX3 DC1 - 6 day w/ Holidays | Construction | Core & Shell | IGMP |  |  | DH2100 | DELETED | DH1100 | Level 2 | 01ADMIN | 3/19: Consolidating to be captured in zone 2 |  |  |  | Phase 1 | Fragnet | Bel-Aire Mechanical. LLC |
| QTS-100810 | Zone 2 / Rooftop // Pressure Test (Air) Industrial Loop (TES Tank) *Delete* | 1d | 2026-03-16 A | 2026-03-16 A | QTS-1371 SS | 100% | 2026-05-02 | 2026-05-02 | QTS-PHX3 DC1 - 6 day w/ Holidays | Construction | Mechanical | IGMP |  |  | DH2100 | DELETED | DH1100 | Level 2 | 01ADMIN |  |  |  |  | Phase 1 |  |  |
| QTS-100830 | Zone 2 / Rooftop // Hydro-Test (Water) Industrial Loop (TES Tank) *Delete* | 1d | 2026-03-16 A | 2026-03-16 A | QTS-1371 SS | 100% | 2026-05-04 | 2026-05-04 | QTS-PHX3 DC1 - 6 day w/ Holidays | Construction | Mechanical | IGMP |  |  | DH2100 | DELETED | DH1100 | Level 2 | 01ADMIN |  |  |  |  | Phase 1 |  |  |
| QTS-100850 | Zone 2 / Rooftop // Fill and Flush Industrial Loop (TES Tank) *Delete* | 7d | 2026-03-16 A | 2026-03-16 A | QTS-1371 SS | 100% | 2026-05-05 | 2026-05-11 | QTS-PHX3 DC1 - 7 day No Holidays | Construction | Mechanical | IGMP |  |  | DH2100 | DELETED | DH1100 | Level 2 | 01ADMIN |  |  |  |  | Phase 1 |  |  |
| QTS-100930 | DH 1200 / Rooftop Mechanical // Rough In Condensate Drain from DOAS *Delete* | 2d | 2026-03-16 A | 2026-03-16 A | QTS-1371 SS | 100% | 2026-03-19 | 2026-03-20 | QTS-PHX3 DC1 - 6 day w/ Holidays | Construction | Mechanical | IGMP |  |  | DH2100 | DELETED | DH1100 | Level 2 | 01ADMIN | 3/19: Consolidating to be captured in zone 2 |  |  |  | Phase 1 |  |  |
| QTS-101020 | DH 1200 / Rooftop Mechanical // Install Temp Flush Pump, Power Source for Pump & Other Associated Components *Delete* | 5d | 2026-03-16 A | 2026-03-16 A | QTS-1371 SS | 100% | 2026-05-06 | 2026-05-11 | QTS-PHX3 DC1 - 6 day w/ Holidays | Construction | Mechanical | IGMP |  |  | DH2100 | DELETED | DH1100 | Level 2 | 01ADMIN | 3/19: Consolidating to be captured in zone 2 |  |  |  | Phase 1 |  |  |
| QTS-101040 | DH 1200 / Rooftop Mechanical // Hydro-Test (Water) Industrial Loop (TES Tank) *Delete* | 1d | 2026-03-16 A | 2026-03-16 A | QTS-1371 SS | 100% | 2026-03-18 | 2026-03-18 | QTS-PHX3 DC1 - 6 day w/ Holidays | Construction | Mechanical | IGMP |  |  | DH2100 | DELETED | DH1100 | Level 2 | 01ADMIN | 3/19: Consolidating to be captured in zone 2 |  |  |  | Phase 1 |  |  |
| QTS-101050 | DH 1200 / Rooftop Mechanical // Fill and Flush Industrial Loop (TES Tank) *Delete* | 7d | 2026-03-16 A | 2026-03-16 A | QTS-1371 SS | 100% | 2026-03-19 | 2026-03-25 | QTS-PHX3 DC1 - 7 day No Holidays | Construction | Mechanical | IGMP |  |  | DH2100 | DELETED | DH1100 | Level 2 | 01ADMIN | 3/19: Consolidating to be captured in zone 2 |  |  |  | Phase 1 |  |  |
| QTS-101060 | DH 1200 / Rooftop Mechanical // Hydro-Test (Water) Industrial Loop (L1) *Delete* | 1d | 2026-03-16 A | 2026-03-16 A | QTS-1371 SS | 100% | 2026-05-12 | 2026-05-12 | QTS-PHX3 DC1 - 6 day w/ Holidays | Construction | Mechanical | IGMP |  |  | DH2100 | DELETED | DH1100 | Level 2 | 01ADMIN | 3/19: Consolidating to be captured in zone 2 |  |  |  | Phase 1 |  |  |
| QTS-101070 | DH 1200 / Rooftop Mechanical // Hydro-Test (Water) Industrial Loop (L2) *Delete* | 1d | 2026-03-16 A | 2026-03-16 A | QTS-1371 SS | 100% | 2026-05-13 | 2026-05-13 | QTS-PHX3 DC1 - 6 day w/ Holidays | Construction | Mechanical | IGMP |  |  | DH2100 | DELETED | DH1100 | Level 2 | 01ADMIN | 3/19: Consolidating to be captured in zone 2 |  |  |  | Phase 1 |  |  |
| QTS-101080 | DH 1200 / Rooftop Mechanical // Hydro-Test (Water) Industrial Loop (Roof) *Delete* | 1d | 2026-03-16 A | 2026-03-16 A | QTS-1371 SS | 100% | 2026-05-14 | 2026-05-14 | QTS-PHX3 DC1 - 6 day w/ Holidays | Construction | Mechanical | IGMP |  |  | DH2100 | DELETED | DH1100 | Level 2 | 01ADMIN | 3/19: Consolidating to be captured in zone 2 |  |  |  | Phase 1 |  |  |
| QTS-101090 | DH 1200 / Rooftop Mechanical // Fill and Flush Industrial Loop (Zone 2 - All Levels) *Delete* | 21d | 2026-03-16 A | 2026-03-16 A | QTS-1371 SS | 100% | 2026-05-15 | 2026-06-04 | QTS-PHX3 DC1 - 7 day No Holidays | Construction | Mechanical | IGMP |  |  | DH2100 | DELETED | DH1100 | Level 2 | 01ADMIN | 3/19: Consolidating to be captured in zone 2 |  |  |  | Phase 1 |  |  |
| QTS-101130 | DH 1300 / Rooftop Mechanical // Install 12" CHWS/R Run-Outs to RPH Vaults *Delete* | 13d | 2026-03-16 A | 2026-03-16 A | QTS-1371 SS | 100% | 2026-03-11 | 2026-03-25 | QTS-PHX3 DC1 - 6 day w/ Holidays | Construction | Mechanical | IGMP |  |  | DH1300 | DELETED | DH1100 | Level 2 | 01ADMIN |  |  |  |  | Phase 1 |  |  |
| QTS-101140 | DH 1300 / Rooftop Mechanical // Assemble & Install CHWS/R Piping from Mainline Piping to ACC Deck *Delete* | 23d | 2026-03-16 A | 2026-03-16 A | QTS-1371 SS | 100% | 2026-03-11 | 2026-04-06 | QTS-PHX3 DC1 - 6 day w/ Holidays | Construction | Mechanical | IGMP |  |  | DH1300 | DELETED | DH1100 | Level 2 | 01ADMIN |  |  |  |  | Phase 1 |  |  |
| QTS-101150 | DH 1300 / Rooftop Mechanical // Assemble & Install CHW Pump Assemblies at ACC Deck to Chillers *Delete* | 28d | 2026-03-16 A | 2026-03-16 A | QTS-1371 SS | 100% | 2026-03-11 | 2026-04-11 | QTS-PHX3 DC1 - 6 day w/ Holidays | Construction | Mechanical | IGMP |  |  | DH1300 | DELETED | DH1100 | Level 2 | 01ADMIN |  |  |  |  | Phase 1 |  |  |
| QTS-101190 | DH 1300 / Rooftop Mechanical // Finalize Detailing for TES Tank CHW Piping/ Fabrication *Delete* | 7d | 2026-03-16 A | 2026-03-16 A | QTS-1371 SS | 100% | 2026-03-11 | 2026-03-18 | QTS-PHX3 DC1 - 6 day w/ Holidays | Construction | Mechanical | IGMP |  |  | DH1300 | DELETED | DH1100 | Level 2 | 01ADMIN |  |  |  |  | Phase 1 |  |  |
| QTS-101200 | DH 1300 / Rooftop Mechanical // Install Mainline Piping from RPH Vaults to Galleries (Risers) L2 / L1 *Delete* | 10d | 2026-03-16 A | 2026-03-16 A | QTS-1371 SS | 100% | 2026-03-20 | 2026-03-31 | QTS-PHX3 DC1 - 6 day w/ Holidays | Construction | Mechanical | IGMP |  |  | DH1300 | DELETED | DH1100 | Level 2 | 01ADMIN |  |  |  |  | Phase 1 |  |  |
| QTS-101210 | DH 1300 / Rooftop Mechanical // Install TES Tank CHW Piping - 7 Units *Delete* | 10d | 2026-03-16 A | 2026-03-16 A | QTS-1371 SS | 100% | 2026-03-19 | 2026-03-30 | QTS-PHX3 DC1 - 6 day w/ Holidays | Construction | Mechanical | IGMP |  |  | DH1300 | DELETED | DH1100 | Level 2 | 01ADMIN |  |  |  |  | Phase 1 |  |  |
| QTS-101220 | DH 1300 / Rooftop Mechanical // Set RPH Vault Housings *Delete* | 5d | 2026-03-16 A | 2026-03-16 A | QTS-1371 SS | 100% | 2026-03-28 | 2026-04-02 | QTS-PHX3 DC1 - 6 day w/ Holidays | Construction | Mechanical | IGMP |  |  | DH1300 | DELETED | DH1100 | Level 2 | 01ADMIN |  |  |  |  | Phase 1 |  |  |
| QTS-101230 | DH 1300 / Rooftop Mechanical // Pressure Test (Air) Industrial Loop (L1) *Delete* | 1d | 2026-03-16 A | 2026-03-16 A | QTS-1371 SS | 100% | 2026-04-03 | 2026-04-03 | QTS-PHX3 DC1 - 6 day w/ Holidays | Construction | Mechanical | IGMP |  |  | DH1300 | DELETED | DH1100 | Level 2 | 01ADMIN |  |  |  |  | Phase 1 |  |  |
| QTS-101240 | DH 1300 / Rooftop Mechanical // Pressure Test (Air) Industrial Loop (L2) *Delete* | 1d | 2026-03-16 A | 2026-03-16 A | QTS-1371 SS | 100% | 2026-04-04 | 2026-04-04 | QTS-PHX3 DC1 - 6 day w/ Holidays | Construction | Mechanical | IGMP |  |  | DH1300 | DELETED | DH1100 | Level 2 | 01ADMIN |  |  |  |  | Phase 1 |  |  |
| QTS-101250 | DH 1300 / Rooftop Mechanical // Pressure Test (Air) Industrial Loop (Roof) *Delete* | 1d | 2026-03-16 A | 2026-03-16 A | QTS-1371 SS | 100% | 2026-04-06 | 2026-04-06 | QTS-PHX3 DC1 - 6 day w/ Holidays | Construction | Mechanical | IGMP |  |  | DH1300 | DELETED | DH1100 | Level 2 | 01ADMIN |  |  |  |  | Phase 1 |  |  |
| QTS-101260 | DH 1300 / Rooftop Mechanical // Install Temp Flush Pump, Power Source for Pump & Other Associated Components *Delete* | 5d | 2026-03-16 A | 2026-03-16 A | QTS-1371 SS | 100% | 2026-05-02 | 2026-05-07 | QTS-PHX3 DC1 - 6 day w/ Holidays | Construction | Mechanical | IGMP |  |  | DH1300 | DELETED | DH1100 | Level 2 | 01ADMIN |  |  |  |  | Phase 1 |  |  |
| QTS-101270 | DH 1300 / Rooftop Mechanical // Pressure Test (Air) Industrial Loop (TES Tank) *Delete* | 1d | 2026-03-16 A | 2026-03-16 A | QTS-1371 SS | 100% | 2026-03-31 | 2026-03-31 | QTS-PHX3 DC1 - 6 day w/ Holidays | Construction | Mechanical | IGMP |  |  | DH1300 | DELETED | DH1100 | Level 2 | 01ADMIN |  |  |  |  | Phase 1 |  |  |
| QTS-101280 | DH 1300 / Rooftop Mechanical // Hydro-Test (Water) Industrial Loop (TES Tank) *Delete* | 1d | 2026-03-16 A | 2026-03-16 A | QTS-1371 SS | 100% | 2026-04-01 | 2026-04-01 | QTS-PHX3 DC1 - 6 day w/ Holidays | Construction | Mechanical | IGMP |  |  | DH1300 | DELETED | DH1100 | Level 2 | 01ADMIN |  |  |  |  | Phase 1 |  |  |
| QTS-101290 | DH 1300 / Rooftop Mechanical // Fill and Flush Industrial Loop (TES Tank) *Delete* | 7d | 2026-03-16 A | 2026-03-16 A | QTS-1371 SS | 100% | 2026-04-02 | 2026-04-08 | QTS-PHX3 DC1 - 7 day No Holidays | Construction | Mechanical | IGMP |  |  | DH1300 | DELETED | DH1100 | Level 2 | 01ADMIN |  |  |  |  | Phase 1 |  |  |
| QTS-101300 | DH 1300 / Rooftop Mechanical // Hydro-Test (Water) Industrial Loop (L1) *Delete* | 1d | 2026-03-16 A | 2026-03-16 A | QTS-1371 SS | 100% | 2026-05-08 | 2026-05-08 | QTS-PHX3 DC1 - 6 day w/ Holidays | Construction | Mechanical | IGMP |  |  | DH1300 | DELETED | DH1100 | Level 2 | 01ADMIN |  |  |  |  | Phase 1 |  |  |
| QTS-101310 | DH 1300 / Rooftop Mechanical // Hydro-Test (Water) Industrial Loop (L2) *Delete* | 1d | 2026-03-16 A | 2026-03-16 A | QTS-1371 SS | 100% | 2026-05-09 | 2026-05-09 | QTS-PHX3 DC1 - 6 day w/ Holidays | Construction | Mechanical | IGMP |  |  | DH1300 | DELETED | DH1100 | Level 2 | 01ADMIN |  |  |  |  | Phase 1 |  |  |
| QTS-101320 | DH 1300 / Rooftop Mechanical // Hydro-Test (Water) Industrial Loop (Roof) *Delete* | 1d | 2026-03-16 A | 2026-03-16 A | QTS-1371 SS | 100% | 2026-05-11 | 2026-05-11 | QTS-PHX3 DC1 - 6 day w/ Holidays | Construction | Mechanical | IGMP |  |  | DH1300 | DELETED | DH1100 | Level 2 | 01ADMIN |  |  |  |  | Phase 1 |  |  |
| QTS-101330 | DH 1300 / Rooftop Mechanical // Fill and Flush Industrial Loop (Zone 3 - All Levels) *Delete* | 20d | 2026-03-16 A | 2026-03-16 A | QTS-1371 SS | 100% | 2026-05-12 | 2026-05-31 | QTS-PHX3 DC1 - 7 day No Holidays | Construction | Mechanical | IGMP |  |  | DH1300 | DELETED | DH1100 | Level 2 | 01ADMIN |  |  |  |  | Phase 1 |  |  |

Notes:
- QTS-24181: allucent_notes_20251230_164549: David Wiltberger on 2025-12-30 15:07: Corridor impacted by fire stop work / allucent_notes: 2025-12-30 15:07 - User: David Wiltberger - Date Added: 2025-12-30 15:07 - Note: Corridor impacted by fire stop work
- QTS-44141: allucent_notes_20251202_153722: David Wiltberger on 2025-12-01 09:49: No power or controls to run unit for TAB / allucent_notes: 2025-12-01 09:49 - User: David Wiltberger - Date Added: 2025-12-01 09:49 - Note: No power or controls to run unit for TAB
- QTS-101170: allucent_notes_20251014_152335: David Wiltberger on 2025-08-19 09:08: changed pick order / David Wiltberger on 2025-09-02 10:09: Moving to accommodate roofing in Zone 1 / David Wiltberger on 2025-09-24 04:09: BAM not completed Potential Delay / David Wiltberger on 2025-09-30 12:09: BAM did not complete / David Wiltberger on 2025-10-14 10:10: set on recovery schedule / allucent_notes: David Wiltberger on 2025-08-19 09:08: changed pick order / allucent_notes: 2025-08-19 09:08 - User: David Wiltberger - Date Added: 2025-08-19 09:08 - Note: changed pick order / 2025-09-02 10:09 - User: David Wiltberger - Date Added: 2025-09-02 10:09 - Note: Moving to accommodate roofing in Zone 1 / 2025-09-24 04:09 - User: Dav
- QTS-1001840: allucent_notes_20251216_165335: David Wiltberger on 2025-12-02 06:45: Grating install not complete for installation / allucent_notes_20251209_203830: David Wiltberger on 2025-12-02 06:45: Grating install not complete for installation / allucent_notes_20251202_153722: David Wiltberger on 2025-12-02 06:45: Grating install not complete for installation / allucent_notes_20251014_152335: David Wiltberger on 2025-08-19 09:08: changed pick order / David Wiltberger on 2025-09-02 10:09: Moving to accommodate roofing in Zone 1 / David Wiltberger on 2025-09-24 04:09: BAM not completed Potential Delay / David Wiltberger on 2025-09-30 12:09: BAM did not complete / David Wiltberger on 2025-10-14 10:10: set on recovery schedule / allucent_notes: David Wiltberger on 2025-08-19 09:08: changed pick order / allucent_notes: 2025-12-02 06:45 - User: David Wiltberger - Date Added: 2025-12-02 06:45 - Note: Grating install not complete for installation
- QTS-100810: allucent_notes_20251014_152335: David Wiltberger on 2025-08-19 09:08: changed pick order / David Wiltberger on 2025-09-02 10:09: Moving to accommodate roofing in Zone 1 / David Wiltberger on 2025-09-24 04:09: BAM not completed Potential Delay / David Wiltberger on 2025-09-30 12:09: BAM did not complete / David Wiltberger on 2025-10-14 10:10: set on recovery schedule / allucent_notes: David Wiltberger on 2025-08-19 09:08: changed pick order / allucent_notes: 2025-08-19 09:08 - User: David Wiltberger - Date Added: 2025-08-19 09:08 - Note: changed pick order / 2025-09-02 10:09 - User: David Wiltberger - Date Added: 2025-09-02 10:09 - Note: Moving to accommodate roofing in Zone 1 / 2025-09-24 04:09 - User: Dav
- QTS-100830: allucent_notes_20251014_152335: David Wiltberger on 2025-08-19 09:08: changed pick order / David Wiltberger on 2025-09-02 10:09: Moving to accommodate roofing in Zone 1 / David Wiltberger on 2025-09-24 04:09: BAM not completed Potential Delay / David Wiltberger on 2025-09-30 12:09: BAM did not complete / David Wiltberger on 2025-10-14 10:10: set on recovery schedule / allucent_notes: David Wiltberger on 2025-08-19 09:08: changed pick order / allucent_notes: 2025-08-19 09:08 - User: David Wiltberger - Date Added: 2025-08-19 09:08 - Note: changed pick order / 2025-09-02 10:09 - User: David Wiltberger - Date Added: 2025-09-02 10:09 - Note: Moving to accommodate roofing in Zone 1 / 2025-09-24 04:09 - User: Dav
- QTS-100850: allucent_notes_20251014_152335: David Wiltberger on 2025-08-19 09:08: changed pick order / David Wiltberger on 2025-09-02 10:09: Moving to accommodate roofing in Zone 1 / David Wiltberger on 2025-09-24 04:09: BAM not completed Potential Delay / David Wiltberger on 2025-09-30 12:09: BAM did not complete / David Wiltberger on 2025-10-14 10:10: set on recovery schedule / allucent_notes: David Wiltberger on 2025-08-19 09:08: changed pick order / allucent_notes: 2025-08-19 09:08 - User: David Wiltberger - Date Added: 2025-08-19 09:08 - Note: changed pick order / 2025-09-02 10:09 - User: David Wiltberger - Date Added: 2025-09-02 10:09 - Note: Moving to accommodate roofing in Zone 1 / 2025-09-24 04:09 - User: Dav
- QTS-100930: allucent_notes_20251014_152335: David Wiltberger on 2025-08-19 09:08: changed pick order / David Wiltberger on 2025-09-02 10:09: Moving to accommodate roofing in Zone 1 / David Wiltberger on 2025-09-24 04:09: BAM not completed Potential Delay / David Wiltberger on 2025-09-30 12:09: BAM did not complete / David Wiltberger on 2025-10-14 10:10: set on recovery schedule / allucent_notes: David Wiltberger on 2025-08-19 09:08: changed pick order
- QTS-101020: allucent_notes_20251014_152335: David Wiltberger on 2025-08-19 09:08: changed pick order / David Wiltberger on 2025-09-02 10:09: Moving to accommodate roofing in Zone 1 / David Wiltberger on 2025-09-24 04:09: BAM not completed Potential Delay / David Wiltberger on 2025-09-30 12:09: BAM did not complete / David Wiltberger on 2025-10-14 10:10: set on recovery schedule / allucent_notes: David Wiltberger on 2025-08-19 09:08: changed pick order
- QTS-101040: allucent_notes_20251014_152335: David Wiltberger on 2025-08-19 09:08: changed pick order / David Wiltberger on 2025-09-02 10:09: Moving to accommodate roofing in Zone 1 / David Wiltberger on 2025-09-24 04:09: BAM not completed Potential Delay / David Wiltberger on 2025-09-30 12:09: BAM did not complete / David Wiltberger on 2025-10-14 10:10: set on recovery schedule / allucent_notes: David Wiltberger on 2025-08-19 09:08: changed pick order
- QTS-101050: allucent_notes_20251014_152335: David Wiltberger on 2025-08-19 09:08: changed pick order / David Wiltberger on 2025-09-02 10:09: Moving to accommodate roofing in Zone 1 / David Wiltberger on 2025-09-24 04:09: BAM not completed Potential Delay / David Wiltberger on 2025-09-30 12:09: BAM did not complete / David Wiltberger on 2025-10-14 10:10: set on recovery schedule / allucent_notes: David Wiltberger on 2025-08-19 09:08: changed pick order
- QTS-101060: allucent_notes_20251014_152335: David Wiltberger on 2025-08-19 09:08: changed pick order / David Wiltberger on 2025-09-02 10:09: Moving to accommodate roofing in Zone 1 / David Wiltberger on 2025-09-24 04:09: BAM not completed Potential Delay / David Wiltberger on 2025-09-30 12:09: BAM did not complete / David Wiltberger on 2025-10-14 10:10: set on recovery schedule / allucent_notes: David Wiltberger on 2025-08-19 09:08: changed pick order
- QTS-101070: allucent_notes_20251014_152335: David Wiltberger on 2025-08-19 09:08: changed pick order / David Wiltberger on 2025-09-02 10:09: Moving to accommodate roofing in Zone 1 / David Wiltberger on 2025-09-24 04:09: BAM not completed Potential Delay / David Wiltberger on 2025-09-30 12:09: BAM did not complete / David Wiltberger on 2025-10-14 10:10: set on recovery schedule / allucent_notes: David Wiltberger on 2025-08-19 09:08: changed pick order
- QTS-101080: allucent_notes_20251014_152335: David Wiltberger on 2025-08-19 09:08: changed pick order / David Wiltberger on 2025-09-02 10:09: Moving to accommodate roofing in Zone 1 / David Wiltberger on 2025-09-24 04:09: BAM not completed Potential Delay / David Wiltberger on 2025-09-30 12:09: BAM did not complete / David Wiltberger on 2025-10-14 10:10: set on recovery schedule / allucent_notes: David Wiltberger on 2025-08-19 09:08: changed pick order
- QTS-101090: allucent_notes_20251014_152335: David Wiltberger on 2025-08-19 09:08: changed pick order / David Wiltberger on 2025-09-02 10:09: Moving to accommodate roofing in Zone 1 / David Wiltberger on 2025-09-24 04:09: BAM not completed Potential Delay / David Wiltberger on 2025-09-30 12:09: BAM did not complete / David Wiltberger on 2025-10-14 10:10: set on recovery schedule / allucent_notes: David Wiltberger on 2025-08-19 09:08: changed pick order
- QTS-101130: allucent_notes_20251202_153722: David Wiltberger on 2025-11-17 16:11: out of sequence / allucent_notes_20251118_192630: David Wiltberger on 2025-11-17 16:11: out of sequence / allucent_notes_20251014_152335: David Wiltberger on 2025-08-19 09:08: changed pick order / David Wiltberger on 2025-09-02 10:09: Moving to accommodate roofing in Zone 1 / David Wiltberger on 2025-09-24 04:09: BAM not completed Potential Delay / David Wiltberger on 2025-09-30 12:09: BAM did not complete / David Wiltberger on 2025-10-14 10:10: set on recovery schedule / allucent_notes: David Wiltberger on 2025-08-19 09:08: changed pick order / allucent_notes: 2025-11-17 16:11 - User: David Wiltberger - Date Added: 2025-11-17 16:11 - Note: out of sequence
- QTS-101140: allucent_notes_20251014_152335: David Wiltberger on 2025-08-19 09:08: changed pick order / David Wiltberger on 2025-09-02 10:09: Moving to accommodate roofing in Zone 1 / David Wiltberger on 2025-09-24 04:09: BAM not completed Potential Delay / David Wiltberger on 2025-09-30 12:09: BAM did not complete / David Wiltberger on 2025-10-14 10:10: set on recovery schedule / allucent_notes: David Wiltberger on 2025-08-19 09:08: changed pick order / allucent_notes: 2025-08-19 09:08 - User: David Wiltberger - Date Added: 2025-08-19 09:08 - Note: changed pick order / 2025-09-02 10:09 - User: David Wiltberger - Date Added: 2025-09-02 10:09 - Note: Moving to accommodate roofing in Zone 1 / 2025-09-24 04:09 - User: Dav
- QTS-101150: allucent_notes_20251014_152335: David Wiltberger on 2025-08-19 09:08: changed pick order / David Wiltberger on 2025-09-02 10:09: Moving to accommodate roofing in Zone 1 / David Wiltberger on 2025-09-24 04:09: BAM not completed Potential Delay / David Wiltberger on 2025-09-30 12:09: BAM did not complete / David Wiltberger on 2025-10-14 10:10: set on recovery schedule / allucent_notes: David Wiltberger on 2025-08-19 09:08: changed pick order / allucent_notes: 2025-08-19 09:08 - User: David Wiltberger - Date Added: 2025-08-19 09:08 - Note: changed pick order / 2025-09-02 10:09 - User: David Wiltberger - Date Added: 2025-09-02 10:09 - Note: Moving to accommodate roofing in Zone 1 / 2025-09-24 04:09 - User: Dav
- QTS-101190: allucent_notes_20251014_152335: David Wiltberger on 2025-08-19 09:08: changed pick order / David Wiltberger on 2025-09-02 10:09: Moving to accommodate roofing in Zone 1 / David Wiltberger on 2025-09-24 04:09: BAM not completed Potential Delay / David Wiltberger on 2025-09-30 12:09: BAM did not complete / David Wiltberger on 2025-10-14 10:10: set on recovery schedule / allucent_notes: David Wiltberger on 2025-08-19 09:08: changed pick order / allucent_notes: 2025-08-19 09:08 - User: David Wiltberger - Date Added: 2025-08-19 09:08 - Note: changed pick order / 2025-09-02 10:09 - User: David Wiltberger - Date Added: 2025-09-02 10:09 - Note: Moving to accommodate roofing in Zone 1 / 2025-09-24 04:09 - User: Dav
- QTS-101200: allucent_notes_20251014_152335: David Wiltberger on 2025-08-19 09:08: changed pick order / David Wiltberger on 2025-09-02 10:09: Moving to accommodate roofing in Zone 1 / David Wiltberger on 2025-09-24 04:09: BAM not completed Potential Delay / David Wiltberger on 2025-09-30 12:09: BAM did not complete / David Wiltberger on 2025-10-14 10:10: set on recovery schedule / allucent_notes: David Wiltberger on 2025-08-19 09:08: changed pick order / allucent_notes: 2025-08-19 09:08 - User: David Wiltberger - Date Added: 2025-08-19 09:08 - Note: changed pick order / 2025-09-02 10:09 - User: David Wiltberger - Date Added: 2025-09-02 10:09 - Note: Moving to accommodate roofing in Zone 1 / 2025-09-24 04:09 - User: Dav
- QTS-101210: allucent_notes_20251014_152335: David Wiltberger on 2025-08-19 09:08: changed pick order / David Wiltberger on 2025-09-02 10:09: Moving to accommodate roofing in Zone 1 / David Wiltberger on 2025-09-24 04:09: BAM not completed Potential Delay / David Wiltberger on 2025-09-30 12:09: BAM did not complete / David Wiltberger on 2025-10-14 10:10: set on recovery schedule / allucent_notes: David Wiltberger on 2025-08-19 09:08: changed pick order / allucent_notes: 2025-08-19 09:08 - User: David Wiltberger - Date Added: 2025-08-19 09:08 - Note: changed pick order / 2025-09-02 10:09 - User: David Wiltberger - Date Added: 2025-09-02 10:09 - Note: Moving to accommodate roofing in Zone 1 / 2025-09-24 04:09 - User: Dav
- QTS-101220: allucent_notes_20251014_152335: David Wiltberger on 2025-08-19 09:08: changed pick order / David Wiltberger on 2025-09-02 10:09: Moving to accommodate roofing in Zone 1 / David Wiltberger on 2025-09-24 04:09: BAM not completed Potential Delay / David Wiltberger on 2025-09-30 12:09: BAM did not complete / David Wiltberger on 2025-10-14 10:10: set on recovery schedule / allucent_notes: David Wiltberger on 2025-08-19 09:08: changed pick order / allucent_notes: 2025-08-19 09:08 - User: David Wiltberger - Date Added: 2025-08-19 09:08 - Note: changed pick order / 2025-09-02 10:09 - User: David Wiltberger - Date Added: 2025-09-02 10:09 - Note: Moving to accommodate roofing in Zone 1 / 2025-09-24 04:09 - User: Dav
- QTS-101230: allucent_notes_20251014_152335: David Wiltberger on 2025-08-19 09:08: changed pick order / David Wiltberger on 2025-09-02 10:09: Moving to accommodate roofing in Zone 1 / David Wiltberger on 2025-09-24 04:09: BAM not completed Potential Delay / David Wiltberger on 2025-09-30 12:09: BAM did not complete / David Wiltberger on 2025-10-14 10:10: set on recovery schedule / allucent_notes: David Wiltberger on 2025-08-19 09:08: changed pick order / allucent_notes: 2025-08-19 09:08 - User: David Wiltberger - Date Added: 2025-08-19 09:08 - Note: changed pick order / 2025-09-02 10:09 - User: David Wiltberger - Date Added: 2025-09-02 10:09 - Note: Moving to accommodate roofing in Zone 1 / 2025-09-24 04:09 - User: Dav
- QTS-101240: allucent_notes_20251014_152335: David Wiltberger on 2025-08-19 09:08: changed pick order / David Wiltberger on 2025-09-02 10:09: Moving to accommodate roofing in Zone 1 / David Wiltberger on 2025-09-24 04:09: BAM not completed Potential Delay / David Wiltberger on 2025-09-30 12:09: BAM did not complete / David Wiltberger on 2025-10-14 10:10: set on recovery schedule / allucent_notes: David Wiltberger on 2025-08-19 09:08: changed pick order / allucent_notes: 2025-08-19 09:08 - User: David Wiltberger - Date Added: 2025-08-19 09:08 - Note: changed pick order / 2025-09-02 10:09 - User: David Wiltberger - Date Added: 2025-09-02 10:09 - Note: Moving to accommodate roofing in Zone 1 / 2025-09-24 04:09 - User: Dav
- QTS-101250: allucent_notes_20251014_152335: David Wiltberger on 2025-08-19 09:08: changed pick order / David Wiltberger on 2025-09-02 10:09: Moving to accommodate roofing in Zone 1 / David Wiltberger on 2025-09-24 04:09: BAM not completed Potential Delay / David Wiltberger on 2025-09-30 12:09: BAM did not complete / David Wiltberger on 2025-10-14 10:10: set on recovery schedule / allucent_notes: David Wiltberger on 2025-08-19 09:08: changed pick order / allucent_notes: 2025-08-19 09:08 - User: David Wiltberger - Date Added: 2025-08-19 09:08 - Note: changed pick order / 2025-09-02 10:09 - User: David Wiltberger - Date Added: 2025-09-02 10:09 - Note: Moving to accommodate roofing in Zone 1 / 2025-09-24 04:09 - User: Dav
- QTS-101260: allucent_notes_20251014_152335: David Wiltberger on 2025-08-19 09:08: changed pick order / David Wiltberger on 2025-09-02 10:09: Moving to accommodate roofing in Zone 1 / David Wiltberger on 2025-09-24 04:09: BAM not completed Potential Delay / David Wiltberger on 2025-09-30 12:09: BAM did not complete / David Wiltberger on 2025-10-14 10:10: set on recovery schedule / allucent_notes: David Wiltberger on 2025-08-19 09:08: changed pick order / allucent_notes: 2025-08-19 09:08 - User: David Wiltberger - Date Added: 2025-08-19 09:08 - Note: changed pick order / 2025-09-02 10:09 - User: David Wiltberger - Date Added: 2025-09-02 10:09 - Note: Moving to accommodate roofing in Zone 1 / 2025-09-24 04:09 - User: Dav
- QTS-101270: allucent_notes_20251014_152335: David Wiltberger on 2025-08-19 09:08: changed pick order / David Wiltberger on 2025-09-02 10:09: Moving to accommodate roofing in Zone 1 / David Wiltberger on 2025-09-24 04:09: BAM not completed Potential Delay / David Wiltberger on 2025-09-30 12:09: BAM did not complete / David Wiltberger on 2025-10-14 10:10: set on recovery schedule / allucent_notes: David Wiltberger on 2025-08-19 09:08: changed pick order / allucent_notes: 2025-08-19 09:08 - User: David Wiltberger - Date Added: 2025-08-19 09:08 - Note: changed pick order / 2025-09-02 10:09 - User: David Wiltberger - Date Added: 2025-09-02 10:09 - Note: Moving to accommodate roofing in Zone 1 / 2025-09-24 04:09 - User: Dav
- QTS-101280: allucent_notes_20251014_152335: David Wiltberger on 2025-08-19 09:08: changed pick order / David Wiltberger on 2025-09-02 10:09: Moving to accommodate roofing in Zone 1 / David Wiltberger on 2025-09-24 04:09: BAM not completed Potential Delay / David Wiltberger on 2025-09-30 12:09: BAM did not complete / David Wiltberger on 2025-10-14 10:10: set on recovery schedule / allucent_notes: David Wiltberger on 2025-08-19 09:08: changed pick order / allucent_notes: 2025-08-19 09:08 - User: David Wiltberger - Date Added: 2025-08-19 09:08 - Note: changed pick order / 2025-09-02 10:09 - User: David Wiltberger - Date Added: 2025-09-02 10:09 - Note: Moving to accommodate roofing in Zone 1 / 2025-09-24 04:09 - User: Dav
- QTS-101290: allucent_notes_20251014_152335: David Wiltberger on 2025-08-19 09:08: changed pick order / David Wiltberger on 2025-09-02 10:09: Moving to accommodate roofing in Zone 1 / David Wiltberger on 2025-09-24 04:09: BAM not completed Potential Delay / David Wiltberger on 2025-09-30 12:09: BAM did not complete / David Wiltberger on 2025-10-14 10:10: set on recovery schedule / allucent_notes: David Wiltberger on 2025-08-19 09:08: changed pick order / allucent_notes: 2025-08-19 09:08 - User: David Wiltberger - Date Added: 2025-08-19 09:08 - Note: changed pick order / 2025-09-02 10:09 - User: David Wiltberger - Date Added: 2025-09-02 10:09 - Note: Moving to accommodate roofing in Zone 1 / 2025-09-24 04:09 - User: Dav
- QTS-101300: allucent_notes_20251014_152335: David Wiltberger on 2025-08-19 09:08: changed pick order / David Wiltberger on 2025-09-02 10:09: Moving to accommodate roofing in Zone 1 / David Wiltberger on 2025-09-24 04:09: BAM not completed Potential Delay / David Wiltberger on 2025-09-30 12:09: BAM did not complete / David Wiltberger on 2025-10-14 10:10: set on recovery schedule / allucent_notes: David Wiltberger on 2025-08-19 09:08: changed pick order / allucent_notes: 2025-08-19 09:08 - User: David Wiltberger - Date Added: 2025-08-19 09:08 - Note: changed pick order / 2025-09-02 10:09 - User: David Wiltberger - Date Added: 2025-09-02 10:09 - Note: Moving to accommodate roofing in Zone 1 / 2025-09-24 04:09 - User: Dav
- QTS-101310: allucent_notes_20251014_152335: David Wiltberger on 2025-08-19 09:08: changed pick order / David Wiltberger on 2025-09-02 10:09: Moving to accommodate roofing in Zone 1 / David Wiltberger on 2025-09-24 04:09: BAM not completed Potential Delay / David Wiltberger on 2025-09-30 12:09: BAM did not complete / David Wiltberger on 2025-10-14 10:10: set on recovery schedule / allucent_notes: David Wiltberger on 2025-08-19 09:08: changed pick order / allucent_notes: 2025-08-19 09:08 - User: David Wiltberger - Date Added: 2025-08-19 09:08 - Note: changed pick order / 2025-09-02 10:09 - User: David Wiltberger - Date Added: 2025-09-02 10:09 - Note: Moving to accommodate roofing in Zone 1 / 2025-09-24 04:09 - User: Dav
- QTS-101320: allucent_notes_20251014_152335: David Wiltberger on 2025-08-19 09:08: changed pick order / David Wiltberger on 2025-09-02 10:09: Moving to accommodate roofing in Zone 1 / David Wiltberger on 2025-09-24 04:09: BAM not completed Potential Delay / David Wiltberger on 2025-09-30 12:09: BAM did not complete / David Wiltberger on 2025-10-14 10:10: set on recovery schedule / allucent_notes: David Wiltberger on 2025-08-19 09:08: changed pick order / allucent_notes: 2025-08-19 09:08 - User: David Wiltberger - Date Added: 2025-08-19 09:08 - Note: changed pick order / 2025-09-02 10:09 - User: David Wiltberger - Date Added: 2025-09-02 10:09 - Note: Moving to accommodate roofing in Zone 1 / 2025-09-24 04:09 - User: Dav
- QTS-101330: allucent_notes_20251014_152335: David Wiltberger on 2025-08-19 09:08: changed pick order / David Wiltberger on 2025-09-02 10:09: Moving to accommodate roofing in Zone 1 / David Wiltberger on 2025-09-24 04:09: BAM not completed Potential Delay / David Wiltberger on 2025-09-30 12:09: BAM did not complete / David Wiltberger on 2025-10-14 10:10: set on recovery schedule / allucent_notes: David Wiltberger on 2025-08-19 09:08: changed pick order / allucent_notes: 2025-08-19 09:08 - User: David Wiltberger - Date Added: 2025-08-19 09:08 - Note: changed pick order / 2025-09-02 10:09 - User: David Wiltberger - Date Added: 2025-09-02 10:09 - Note: Moving to accommodate roofing in Zone 1 / 2025-09-24 04:09 - User: Dav

| ID | Activity | Duration | Start | Finish | Predecessors | Complete | Planned start | Planned finish | Calendar | Allucent CSI Group | Project Section | Phase-1 | Layton Discipline | Baseline | Location | Level | DELETED | D | Phase-1-1 | Project Section-1 | Last Period Finish | Last Period Start | Layton Super | TFO-CONST ONLY | Contract | NICK | Fragnet | Fragnet Responsible Party | Remaining Duration | Owner Impact Analysis | If Not Started or Finished Why? |
| --- | --- | --- | --- | --- | --- | --- | --- | --- | --- | --- | --- | --- | --- | --- | --- | --- | --- | --- | --- | --- | --- | --- | --- | --- | --- | --- | --- | --- | --- | --- | --- |
| QTS-101510 | Zone 3 / Rooftop // Pressure Test (Air) Industrial Loop (TES Tank) *Delete* | 1d | 2026-03-16 A | 2026-03-16 A | QTS-1371 SS | 100% | 2026-03-18 | 2026-03-18 | QTS-PHX3 DC1 - 6 day w/ Holidays | 01ADMIN | Construction | Phase 1 | Mechanical | IGMP | DH2100 | Level 2 | DELETED | DH1100 |  |  |  |  |  |  |  |  |  |  |  |  |  |
| QTS-101520 | Zone 3 / Rooftop // Hydro-Test (Water) Industrial Loop (TES Tank) *Delete* | 1d | 2026-03-16 A | 2026-03-16 A | QTS-1371 SS | 100% | 2026-03-18 | 2026-03-18 | QTS-PHX3 DC1 - 6 day w/ Holidays | 01ADMIN | Construction | Phase 1 | Mechanical | IGMP | DH2100 | Level 2 | DELETED | DH1100 |  |  |  |  |  |  |  |  |  |  |  |  |  |
| QTS-101530 | Zone 3 / Rooftop // Fill and Flush Industrial Loop (TES Tank) *Delete* | 7d | 2026-03-16 A | 2026-03-16 A | QTS-1371 SS | 100% | 2026-03-18 | 2026-03-24 | QTS-PHX3 DC1 - 7 day No Holidays | 01ADMIN | Construction | Phase 1 | Mechanical | IGMP | DH2100 | Level 2 | DELETED | DH1100 |  |  |  |  |  |  |  |  |  |  |  |  |  |
| QTS-15151 | DH 1200 / Mechanical Yard // Install Raceway from Transformers to UPS Pods *Delete* | 5d | 2026-03-16 A | 2026-03-16 A | QTS-1371 SS | 100% | 2026-03-18 | 2026-03-23 | QTS-PHX3 DC1 - 6 day w/ Holidays |  | Construction |  | Electrical | IGMP | Gen Yard | Level 1 | DELETED | DH1100 | Phase 2 | Construction |  |  |  |  |  |  |  |  |  |  |  |
| QTS-15191 | DH 1300 / Mechanical Yard // Terminate MV at Transformers *Delete* | 5d | 2026-03-16 A | 2026-03-16 A | QTS-1371 SS | 100% | 2026-03-16 | 2026-03-20 | QTS-PHX3 DC1 - 6 day w/ Holidays |  | Construction |  | Electrical | IGMP | Gen Yard | Level 1 | DELETED | DH1100 | Phase 3 | Construction |  |  |  |  |  |  |  |  |  |  |  |
| QTS-15901 | DH 1200 / Mechanical Yard // Pull & Terminate from Transformers to UPS Pods *Delete* | 10d | 2026-03-16 A | 2026-03-16 A | QTS-1371 SS | 100% | 2026-03-18 | 2026-03-28 | QTS-PHX3 DC1 - 6 day w/ Holidays |  | Construction |  | Electrical | IGMP | Gen Yard | Level 1 | DELETED | DH1100 | Phase 2 | Construction |  |  |  |  |  |  |  |  |  |  |  |
| QTS-15911 | DH 1200 / Mechanical Yard // Install Raceway from Generators to UPS Pods *Delete* | 5d | 2026-03-16 A | 2026-03-16 A | QTS-1371 SS | 100% | 2026-03-18 | 2026-03-23 | QTS-PHX3 DC1 - 6 day w/ Holidays |  | Construction |  | Electrical | IGMP | Gen Yard | Level 1 | DELETED | DH1100 | Phase 2 | Construction |  |  |  |  |  |  |  |  |  |  |  |
| QTS-15931 | DH 2300 / Mechanical Yard // Pull & Terminate from Transformers to UPS Pods *Delete* | 10d | 2026-03-16 A | 2026-03-16 A | QTS-1371 SS | 100% | 2026-03-16 | 2026-03-26 | QTS-PHX3 DC1 - 6 day w/ Holidays |  | Construction |  | Electrical | IGMP | Gen Yard | Level 1 | DELETED | DH1100 | Phase 3 | Construction |  |  |  |  |  |  |  |  |  |  |  |
| QTS-15961 | DH 1300 / Mechanical Yard // Terminate MV at Transformers *Delete* | 10d | 2026-03-16 A | 2026-03-16 A | QTS-1371 SS | 100% | 2026-03-16 | 2026-03-26 | QTS-PHX3 DC1 - 6 day w/ Holidays |  | Construction |  | Electrical | IGMP | Gen Yard | Level 1 | DELETED | DH1100 | Phase 3 | Construction |  |  |  |  |  |  |  |  |  |  |  |
| QTS-17411 | DH 1200 / Mechanical Yard // Pull & Terminate from Generators to UPS Pods *Delete* | 10d | 2026-03-16 A | 2026-03-16 A | QTS-1371 SS | 100% | 2026-03-18 | 2026-03-28 | QTS-PHX3 DC1 - 6 day w/ Holidays |  | Construction |  | Electrical | IGMP | Gen Yard | Level 1 | DELETED | DH1100 | Phase 2 | Construction |  |  |  |  |  |  |  |  |  |  |  |
| QTS-17441 | DH 2300 / Mechanical Yard // Pull & Terminate from Generators to UPS Pods *Delete* | 10d | 2026-03-16 A | 2026-03-16 A | QTS-1371 SS | 100% | 2026-03-16 | 2026-03-26 | QTS-PHX3 DC1 - 6 day w/ Holidays |  | Construction |  | Electrical | IGMP | Gen Yard | Level 1 | DELETED | DH1100 | Phase 3 | Construction |  |  |  |  |  |  |  |  |  |  |  |
| QTS-17471 | DH 1300 / Mechanical Yard // Terminate MV at Transformers *Delete* | 10d | 2026-03-16 A | 2026-03-16 A | QTS-1371 SS | 100% | 2026-03-16 | 2026-03-26 | QTS-PHX3 DC1 - 6 day w/ Holidays |  | Construction |  | Electrical | IGMP | Gen Yard | Level 1 | DELETED | DH1100 | Phase 3 | Construction |  |  |  |  |  |  |  |  |  |  |  |
| QTS-18641 | DH 2200 / Electrical Gallery 2202 // Pull & Terminate from UPS Pod to Chillers Line Up A-D *Delete* | 3d | 2026-03-16 A | 2026-03-16 A | QTS-1371 SS | 100% | 2026-03-16 | 2026-03-18 | QTS-PHX3 DC1 - 6 day w/ Holidays |  | Construction |  | Electrical | IGMP | DH2200 |  | DELETED | DH1100 | Phase 2 | Construction |  |  |  |  |  |  |  |  |  |  |  |
| QTS-18961 | DH 2200 / Electrical Gallery 2202 // Pull & Terminate from UPS Pod to Pumps Line Up A-D *Delete* | 3d | 2026-03-16 A | 2026-03-16 A | QTS-1371 SS | 100% | 2026-03-16 | 2026-03-18 | QTS-PHX3 DC1 - 6 day w/ Holidays |  | Construction |  | Electrical | IGMP | DH2200 |  | DELETED | DH1100 | Phase 2 | Construction |  |  |  |  |  |  |  |  |  |  |  |
| QTS-39782 | DH 2200 / Electrical Gallery 2202 // Install Conduit from UPS Pod to Chillers Lineup E-R *Delete* | 8d | 2026-03-16 A | 2026-03-16 A | QTS-1371 SS | 100% | 2026-03-16 | 2026-03-24 | QTS-PHX3 DC1 - 6 day w/ Holidays |  | Construction |  | Electrical | IGMP | DH2200 |  | DELETED | DH1100 | Phase 2 | Construction |  |  |  |  |  |  |  |  |  |  |  |
| QTS-39792 | DH 2200 / Electrical Gallery 2202 // Pull & Terminate from UPS Pod to Chillers Lineup E-R *Delete* | 3d | 2026-03-16 A | 2026-03-16 A | QTS-1371 SS | 100% | 2026-03-16 | 2026-03-18 | QTS-PHX3 DC1 - 6 day w/ Holidays |  | Construction |  | Electrical | IGMP | DH2200 |  | DELETED | DH1100 | Phase 2 | Construction |  |  |  |  |  |  |  |  |  |  |  |
| QTS-39802 | DH 2200 / Electrical Gallery 2202 // Install Conduit from UPS Pod to Pumps Lineup E-R *Delete* | 8d | 2026-03-16 A | 2026-03-16 A | QTS-1371 SS | 100% | 2026-03-16 | 2026-03-24 | QTS-PHX3 DC1 - 6 day w/ Holidays |  | Construction |  | Electrical | IGMP | DH2200 |  | DELETED | DH1100 | Phase 2 | Construction |  |  |  |  |  |  |  |  |  |  |  |
| QTS-39812 | DH 2200 / Electrical Gallery 2202 // Pull & Terminate from UPS Pod to Pumps Lineup E-R *Delete* | 3d | 2026-03-16 A | 2026-03-16 A | QTS-1371 SS | 100% | 2026-03-16 | 2026-03-18 | QTS-PHX3 DC1 - 6 day w/ Holidays |  | Construction |  | Electrical | IGMP | DH2200 |  | DELETED | DH1100 | Phase 2 | Construction |  |  |  |  |  |  |  |  |  |  |  |
| QTS-41391 | DH 2300 / Electrical Gallery 2302 // Install Conduit from UPS Pod to Chillers Lineup E-R *Delete* | 6d | 2026-03-16 A | 2026-03-16 A | QTS-1371 SS | 100% | 2026-03-11 | 2026-03-17 | QTS-PHX3 DC1 - 6 day w/ Holidays |  | Construction |  | Electrical | IGMP | DH2300 |  | DELETED | DH1100 | Phase 3 | Construction |  |  |  |  |  |  |  |  |  |  |  |
| QTS-41411 | DH 2300 / Electrical Gallery 2302 // Install Conduit from UPS Pod to Pumps Lineup E-R *Delete* | 6d | 2026-03-16 A | 2026-03-16 A | QTS-1371 SS | 100% | 2026-03-11 | 2026-03-17 | QTS-PHX3 DC1 - 6 day w/ Holidays |  | Construction |  | Electrical | IGMP | DH2300 |  | DELETED | DH1100 | Phase 3 | Construction |  |  |  |  |  |  |  |  |  |  |  |
| QTS-42891 | DH 1300 / Mechanical Yard // Terminate MV at Transformers *Delete* | 10d | 2026-03-16 A | 2026-03-16 A | QTS-42581, QTS-1371 SS | 100% | 2026-03-16 | 2026-03-26 | QTS-PHX3 DC1 - 6 day w/ Holidays |  | Construction |  | Electrical | IGMP | Gen Yard | Level 2 | DELETED | DH1100 | Phase 1 | Construction |  |  |  |  |  |  |  |  |  |  |  |
| QTS-44361 | DH 2300 / Mechanical Yard // Install Exterior Stairs *Delete* | 10d | 2026-03-16 A | 2026-03-16 A | QTS-1371 SS | 100% | 2026-03-16 | 2026-03-26 | QTS-PHX3 DC1 - 6 day w/ Holidays |  | Construction |  | Electrical | IGMP | Gen Yard | Level 2 | DELETED | DH1100 | Phase 1 | Construction |  |  |  |  |  |  |  |  |  |  |  |
| QTS-50211 | DH 1200 / Rooftop Mechanical // Rough In Plumbing from to DOAS *Delete* | 1d | 2026-03-16 A | 2026-03-16 A | QTS-1371 SS | 100% | 2026-03-18 | 2026-03-18 | QTS-PHX3 DC1 - 6 day w/ Holidays | 01ADMIN | Construction |  | Mechanical | DC | FOH | Roof | DELETED | DH1100 | Phase 1 | Construction |  |  |  |  |  |  |  |  |  |  |  |
| QTS-50221 | DH 1200 / Rooftop Mechanical // Rough In Power from to DOAS *Delete* | 3d | 2026-03-16 A | 2026-03-16 A | QTS-1371 SS | 100% | 2026-03-19 | 2026-03-21 | QTS-PHX3 DC1 - 6 day w/ Holidays | 01ADMIN | Construction |  | Mechanical | DC | FOH | Roof | DELETED | DH1100 | Phase 1 | Construction |  |  |  |  |  |  |  |  |  |  |  |
| QTS-50231 | DH 1200 / Rooftop Mechanical // Rough In Controls from to DOAS *Delete* | 1d | 2026-03-16 A | 2026-03-16 A | QTS-1371 SS | 100% | 2026-03-21 | 2026-03-21 | QTS-PHX3 DC1 - 6 day w/ Holidays | 01ADMIN | Construction |  | Mechanical | DC | FOH | Roof | DELETED | DH1100 | Phase 1 | Construction |  |  |  |  |  |  |  |  |  |  |  |
| QTS-50241 | DH 1200 / Rooftop Mechanical // Pre Energization Inspection DOAS *Delete* | 1d | 2026-03-16 A | 2026-03-16 A | QTS-1371 SS | 100% | 2026-03-23 | 2026-03-23 | QTS-PHX3 DC1 - 6 day w/ Holidays | 01ADMIN | Construction |  | Mechanical | DC | FOH | Roof | DELETED | DH1100 | Phase 1 | Construction |  |  |  |  |  |  |  |  |  |  |  |
| QTS-50321 | DH 1300 / Rooftop Mechanical // Pre Energization Inspection DOAS *Delete* | 1d | 2026-03-16 A | 2026-03-16 A | QTS-1371 SS | 100% |  |  | QTS-PHX3 DC1 - 6 day w/ Holidays |  | Construction |  | Mechanical | DC | DH1300 | Roof | DELETED | DH1100 | Phase 1 | Construction |  |  |  |  |  |  |  |  |  |  |  |
| QTS-27761 | DELETE Restrooms #1078/1077 // Rough Overhead Electrical/ Light Fixtures Install | 2d | 2026-03-20 A | 2026-05-12 A | QTS-26711, QTS-26951 | 100% | 2026-03-20 | 2026-03-21 | QTS-PHX3 DC1 - 6 day w/ Holidays |  | Construction | Phase 1 | Electrical | IGMP | BOH | Level 1 | DELETED | DH1100 |  |  | 2023-03-08 | 2023-03-07 | Bobby Martinez |  |  |  |  |  |  |  |  |
| QTS - 24561 | TFO Scope // DH 1100 / Lineup E - F / Install Telecom Trays Tier # 5 *Delete* | 4d | 2026-03-25 A | 2026-03-26 A | QTS-1371 | 100% | 2026-04-16 | 2026-04-20 | QTS-PHX3 DC1 - 6 day w/ Holidays |  |  |  | Electrical |  | DH1100 |  | DELETED | DH1100 |  |  |  |  |  | TFO CONST | TFO | NICK |  |  |  |  |  |
| QTS - 24391 | TFO Scope // Flex Space // Paint 2nd Coat Soffit & Walls *Delete* | 5d | 2026-04-01 A | 2026-04-01 A | QTS-1371 SS | 100% | 2026-04-01 | 2026-04-06 | QTS-PHX3 DC1 - 6 day w/ Holidays |  |  |  | Build Out |  | FOH |  | DELETED | DH1100 |  |  |  |  |  | TFO CONST | TFO | NICK |  |  |  |  |  |
| QTS - 24441 | TFO Scope // Flex Space // Office Storefront System *Delete* | 5d | 2026-04-01 A | 2026-04-01 A | QTS-1371 SS | 100% | 2026-04-01 | 2026-04-06 | QTS-PHX3 DC1 - 6 day w/ Holidays |  |  |  | Build Out |  | FOH |  | DELETED | DH1100 |  |  |  |  |  | TFO CONST | TFO | NICK |  |  |  |  |  |
| QTS - 26021 | TFO Scope // Flex Space // Framing Wall - Huddle #0230 *Delete* | 3d | 2026-04-01 A | 2026-04-01 A | QTS-1371 SS | 100% | 2026-04-01 | 2026-04-03 | QTS-PHX3 DC1 - 6 day w/ Holidays |  |  |  | Build Out |  | FOH |  | DELETED | DH1100 |  |  |  |  |  | TFO CONST | TFO | NICK |  |  |  |  |  |
| QTS-1002320 | TI Area A // Layout Ceiling Grid *Delete* | 2d | 2026-04-01 A | 2026-04-01 A | QTS-1371 SS | 100% | 2026-03-24 | 2026-03-25 | QTS-PHX3 DC1 - 6 day w/ Holidays | 01ADMIN | Construction | Phase 1 | Build Out | IGMP | FOH | Level 2 | DELETED | DH1100 |  |  |  |  |  |  |  |  |  |  |  |  |  |
| QTS-1002580 | TI Area A // Install Light Fixtures - Hard Lid *Delete* | 5d | 2026-04-01 A | 2026-04-01 A | QTS-1371 SS | 100% | 2026-04-18 | 2026-04-23 | QTS-PHX3 DC1 - 6 day w/ Holidays |  | Construction | Phase 1 | Electrical | IGMP | FOH | Level 1 | DELETED | DH1100 |  |  |  |  |  |  |  |  |  |  |  |  |  |
| QTS-1002590 | TI Area A // Install Countertops *Delete* | 5d | 2026-04-01 A | 2026-04-01 A | QTS-1371 SS | 100% | 2026-04-13 | 2026-04-17 | QTS-PHX3 DC1 - 6 day w/ Holidays |  | Construction | Phase 1 | Build Out | IGMP | FOH | Level 1 | DELETED | DH1100 |  |  |  |  |  |  |  |  |  |  |  |  |  |
| QTS-1002600 | TI Area A // Measure and Fabricate Countertops *Delete* | 2d | 2026-04-01 A | 2026-04-01 A | QTS-1371 SS | 100% | 2026-04-10 | 2026-04-11 | QTS-PHX3 DC1 - 6 day w/ Holidays |  | Construction | Phase 1 | Build Out | IGMP | FOH | Level 1 | DELETED | DH1100 |  |  |  |  |  |  |  |  |  |  |  |  |  |
| QTS-1004100 | TI Area J & K // BOH Test & Balance *Delete* | 2d | 2026-04-01 A | 2026-04-01 A | QTS-1371 SS | 100% | 2026-06-26 | 2026-06-27 | QTS-PHX3 DC1 - 6 day w/ Holidays |  | Construction | Phase 1 | Build Out | IGMP | BOH | Level 1 | DELETED | DH1100 |  | Construction |  |  |  |  |  |  |  |  |  |  |  |
| QTS-1005230 | TI Area B // Rough Overhead Electrical *Delete* | 10d | 2026-04-01 A | 2026-04-01 A | QTS-1371 SS | 100% | 2025-11-19 | 2025-12-02 | QTS-PHX3 DC1 - 6 day w/ Holidays | 01ADMIN | Construction | Phase 1 | Electrical | IGMP | FOH | Level 1 | DELETED | DH1100 |  |  |  |  |  |  |  |  |  |  |  |  |  |
| QTS-1009250 | TI Area B // Install Flooring & Base *Delete* | 10d | 2026-04-01 A | 2026-04-01 A | QTS-1371 SS | 100% | 2026-04-28 | 2026-05-08 | QTS-PHX3 DC1 - 6 day w/ Holidays | 01ADMIN | Construction | Phase 1 | Build Out | IGMP | FOH | Level 2 | DELETED | DH1100 |  |  |  |  |  |  |  |  |  |  |  |  |  |
| QTS-1009280 | TI Area A // Fragnet Delay to complete Rough Overhead Electrical (Remaining) *Delete* | 10d | 2026-04-01 A | 2026-04-01 A | QTS-1371 SS | 100% | 2026-02-19 | 2026-03-02 | QTS-PHX3 DC1 - 6 day w/ Holidays | 01ADMIN | Construction | Phase 1 | Electrical | IGMP | FOH | Level 1 | DELETED | DH1100 |  |  |  |  |  |  |  |  | Fragnet | Rosendin Electric Inc. |  |  |  |
| QTS-1009290 | TI Area J & K // Fragnet Delay to complete Rough Overhead Electrical *Delete* | 14d | 2026-04-01 A | 2026-04-01 A | QTS-1371 SS | 100% | 2025-12-16 | 2026-01-02 | QTS-PHX3 DC1 - 6 day w/ Holidays | 01ADMIN | Construction | Phase 1 | Electrical | IGMP | BOH | Level 1 | DELETED | DH1100 |  | Construction |  |  |  |  |  |  | Fragnet | Rosendin Electric Inc. |  |  |  |
| QTS-1009300 | TI Area J & K // Fragnet Delay to complete Rough In Wall Electrical for Exterior Lights *Delete* | 9d | 2026-04-01 A | 2026-04-01 A | QTS-1371 SS | 100% | 2026-03-18 | 2026-03-27 | QTS-PHX3 DC1 - 6 day w/ Holidays | 01ADMIN | Construction | Phase 1 | Electrical | IGMP | BOH | Level 1 | DELETED | DH1100 |  | Construction |  |  |  |  |  |  | Fragnet | Rosendin Electric Inc. |  |  |  |
| QTS-1009490 | Fragnet / FOH BOH Fire Suppression Branch Pipe Change *Delete* | 10d | 2026-04-01 A | 2026-05-05 A | QTS-1371 SS | 100% | 2026-04-01 | 2026-04-11 | QTS-PHX3 DC1 - 6 day w/ Holidays | 01ADMIN | Construction | Phase 1 | Mechanical | IGMP | FOH | Level 1 | DELETED | DH1100 |  |  |  |  | Sage Fundingsland |  |  |  | Fragnet | Olympic West Fire Protection | 1 | Y |  |
| QTS-10821 | Restrooms #0207/0208 // Fabricate & Delivery Countertops *Delete* | 10d | 2026-04-01 A | 2026-04-01 A | QTS-1371 SS | 100% | 2026-04-01 | 2026-04-11 | QTS-PHX3 DC1 - 6 day w/ Holidays |  | Construction |  | Build Out | IGMP | FOH | Level 2 | DELETED | DH1100 | Phase 1 | Construction |  |  |  |  |  |  |  |  |  |  |  |
| QTS-11421 | Restrooms #0107/0108/0112 // Fabricate & Delivery Countertops *Delete* | 10d | 2026-04-01 A | 2026-04-01 A | QTS-1371 SS | 100% | 2026-04-01 | 2026-04-11 | QTS-PHX3 DC1 - 6 day w/ Holidays |  | Construction |  | Build Out | IGMP | FOH | Level 1 | DELETED | DH1100 | Phase 1 | Construction |  |  |  |  |  |  |  |  |  |  |  |
| QTS-14581 | Restrooms #0157 // Final Coat of Paint *Delete* | 1d | 2026-04-01 A | 2026-04-01 A | QTS-1371 SS | 100% |  |  | QTS-PHX3 DC1 - 6 day w/ Holidays |  | Construction | Phase 1 | Build Out | IGMP | FOH | Level 1 | DELETED | DH1100 |  |  |  |  |  |  |  |  |  |  |  |  |  |
| QTS-26661 | TI Area J & K // Rough Overhead Electrical *Delete* | 10d | 2026-04-01 A | 2026-04-01 A | QTS-1371 SS | 100% | 2026-02-11 | 2026-02-21 | QTS-PHX3 DC1 - 6 day w/ Holidays | 01ADMIN | Construction |  | Electrical | IGMP | BOH | Level 2 | DELETED | DH1100 | Phase 1 | Construction |  |  |  |  |  |  |  |  |  |  |  |
| QTS-26861 | TI Area J & K // MEP In Wall Inspection *Delete* | 1d | 2026-04-01 A | 2026-04-01 A | QTS-1371 SS | 100% |  |  | QTS-PHX3 DC1 - 6 day w/ Holidays | 01ADMIN | Construction |  | Mechanical | IGMP | BOH | Level 1 | DELETED | DH1100 | Phase 1 | Construction |  |  |  |  |  |  |  |  |  |  |  |
| QTS-26921 | TI Area A // Insulate Walls *Delete* | 3d | 2026-04-01 A | 2026-04-01 A | QTS-1371 SS | 100% | 2026-04-01 | 2026-04-03 | QTS-PHX3 DC1 - 6 day w/ Holidays | 01ADMIN | Construction | Phase 1 | Build Out | IGMP | FOH | Level 1 | DELETED | DH1100 |  |  |  |  |  |  |  |  |  |  |  |  |  |
| QTS-26981 | TI Area J & K // Insulate Walls *Delete* | 5d | 2026-04-01 A | 2026-04-01 A | QTS-1371 SS | 100% | 2026-04-02 | 2026-04-07 | QTS-PHX3 DC1 - 6 day w/ Holidays | 01ADMIN | Construction | Phase 1 | Build Out | IGMP | BOH | Level 1 | DELETED | DH1100 |  | Construction |  |  |  |  |  |  |  |  |  |  |  |
| QTS-27681 | TI Area A // Hang Drywall for Walls *Delete* | 5d | 2026-04-01 A | 2026-04-01 A | QTS-1371 SS | 100% | 2026-04-04 | 2026-04-09 | QTS-PHX3 DC1 - 6 day w/ Holidays | 01ADMIN | Construction | Phase 1 | Build Out | IGMP | FOH | Level 1 | DELETED | DH1100 |  |  |  |  |  |  |  |  |  |  |  |  |  |
| QTS-27781 | TI Area J & K // Hang Drywall *Delete* | 10d | 2026-04-01 A | 2026-04-01 A | QTS-1371 SS | 100% | 2026-04-10 | 2026-04-21 | QTS-PHX3 DC1 - 6 day w/ Holidays | 01ADMIN | Construction | Phase 1 | Build Out | IGMP | BOH | Level 1 | DELETED | DH1100 |  | Construction |  |  |  |  |  |  |  |  |  |  |  |
| QTS-28201 | TI Area J & K // Insulate Piping & Refrigerant Lines *Delete* | 3d | 2026-04-01 A | 2026-04-01 A | QTS-1371 SS | 100% | 2026-04-01 | 2026-04-03 | QTS-PHX3 DC1 - 6 day w/ Holidays |  | Construction | Phase 1 | Mechanical | IGMP | BOH | Level 1 | DELETED | DH1100 |  | Construction |  |  |  |  |  |  |  |  |  |  |  |
| QTS-28291 | TI Area A // Tape & Finish Drywall for Walls *Delete* | 10d | 2026-04-01 A | 2026-04-01 A | QTS-1371 SS | 100% | 2026-04-10 | 2026-04-21 | QTS-PHX3 DC1 - 6 day w/ Holidays | 01ADMIN | Construction | Phase 1 | Build Out | IGMP | FOH | Level 1 | DELETED | DH1100 |  |  |  |  |  |  |  |  |  |  |  |  |  |
| QTS-28321 | TI Area J & K // Tape & Finish Drywall *Delete* | 10d | 2026-04-01 A | 2026-04-01 A | QTS-1371 SS | 100% | 2026-04-16 | 2026-04-27 | QTS-PHX3 DC1 - 6 day w/ Holidays |  | Construction | Phase 1 | Build Out | IGMP | BOH | Level 1 | DELETED | DH1100 |  | Construction |  |  |  |  |  |  |  |  |  |  |  |
| QTS-28401 | TI Area B // Hang Drywall (Including Ceilings) *Delete* | 6d | 2026-04-01 A | 2026-04-01 A | QTS-1371 SS | 100% | 2026-03-20 | 2026-03-26 | QTS-PHX3 DC1 - 6 day w/ Holidays | 01ADMIN | Construction | Phase 1 | Build Out | IGMP | FOH | Level 1 | DELETED | DH1100 |  |  |  |  |  |  |  |  |  |  |  |  |  |
| QTS-28451 | TI Area J & K // Hang Drywall *Delete* | 5d | 2026-04-01 A | 2026-04-01 A | QTS-1371 SS | 100% | 2026-04-16 | 2026-04-21 | QTS-PHX3 DC1 - 6 day w/ Holidays | 01ADMIN | Construction |  | Build Out | IGMP | BOH | Level 2 | DELETED | DH1100 | Phase 1 | Construction |  |  |  |  |  |  |  |  |  |  |  |
| QTS-28461 | TI Area J & K // Rough Overhead Ductwork Gridline A - E *Delete* | 8d | 2026-04-01 A | 2026-04-01 A | QTS-1371 SS | 100% | 2026-04-06 | 2026-04-14 | QTS-PHX3 DC1 - 6 day w/ Holidays | 01ADMIN | Construction |  | Mechanical | IGMP | BOH | Level 2 | DELETED | DH1100 | Phase 1 | Construction |  |  |  |  |  |  |  |  |  |  |  |
| QTS-28561 | TI Area J & K // Rough Overhead Ductwork Gridline A - J *Delete* | 8d | 2026-04-01 A | 2026-04-01 A | QTS-1371 SS | 100% | 2026-04-08 | 2026-04-16 | QTS-PHX3 DC1 - 6 day w/ Holidays |  | Construction | Phase 1 | Mechanical | IGMP | BOH | Level 1 | DELETED | DH1100 |  | Construction |  |  |  |  |  |  |  |  |  |  |  |
| QTS-28771 | TI Area A // Rough Overhead Ductwork *Delete* | 10d | 2026-04-01 A | 2026-04-01 A | QTS-1371 SS | 100% | 2025-12-15 | 2025-12-26 | QTS-PHX3 DC1 - 6 day w/ Holidays | 01ADMIN | Construction | Phase 1 | Mechanical | IGMP | FOH | Level 1 | DELETED | DH1100 |  |  |  |  |  |  |  |  |  |  | 1 |  |  |
| QTS-28791 | TI Area B // Tape & Finish Drywall *Delete* | 9d | 2026-04-01 A | 2026-04-01 A | QTS-1371 SS | 100% | 2026-03-21 | 2026-03-31 | QTS-PHX3 DC1 - 6 day w/ Holidays | 01ADMIN | Construction | Phase 1 | Build Out | IGMP | FOH | Level 1 | DELETED | DH1100 |  |  |  |  |  |  |  |  |  |  |  |  |  |
| QTS-28921 | TI Area J & K // Tape & Finish Drywall *Delete* | 6d | 2026-04-01 A | 2026-04-01 A | QTS-1371 SS | 100% | 2026-04-22 | 2026-04-28 | QTS-PHX3 DC1 - 6 day w/ Holidays |  | Construction |  | Build Out | IGMP | BOH | Level 2 | DELETED | DH1100 | Phase 1 | Construction |  |  |  |  |  |  |  |  |  |  |  |
| QTS-29071 | TI Area J & K // Rough Overhead Ductwork Gridline E - H *Delete* | 8d | 2026-04-01 A | 2026-04-01 A | QTS-1371 SS | 100% | 2026-04-06 | 2026-04-14 | QTS-PHX3 DC1 - 6 day w/ Holidays |  | Construction |  | Mechanical | IGMP | BOH | Level 2 | DELETED | DH1100 | Phase 1 | Construction |  |  |  |  |  |  |  |  |  |  |  |
| QTS-29091 | TI Area A // Prime & Paints Walls *Delete* | 2d | 2026-04-01 A | 2026-04-01 A | QTS-1371 SS | 100% | 2026-04-22 | 2026-04-23 | QTS-PHX3 DC1 - 6 day w/ Holidays |  | Construction | Phase 1 | Build Out | IGMP | FOH | Level 1 | DELETED | DH1100 |  |  |  |  |  |  |  |  |  |  |  |  |  |
| QTS-29101 | TI Area B // Prime & Paints Walls/ Ceilings *Delete* | 4d | 2026-04-01 A | 2026-04-01 A | QTS-1371 SS | 100% | 2026-04-11 | 2026-04-15 | QTS-PHX3 DC1 - 6 day w/ Holidays |  | Construction | Phase 1 | Build Out | IGMP | FOH | Level 1 | DELETED | DH1100 |  |  |  |  |  |  |  |  |  |  |  |  |  |
| QTS-29111 | TI Area A // Prime & Paints Walls *Delete* | 7d | 2026-04-01 A | 2026-04-01 A | QTS-1371 SS | 100% | 2026-04-01 | 2026-04-08 | QTS-PHX3 DC1 - 6 day w/ Holidays | 01ADMIN | Construction | Phase 1 | Build Out | IGMP | FOH | Level 2 | DELETED | DH1100 |  |  |  |  |  |  |  |  |  |  |  |  |  |
| QTS-29121 | TI Area J & K // Prime & Paints Walls *Delete* | 2d | 2026-04-01 A | 2026-04-01 A | QTS-1371 SS | 100% | 2026-04-28 | 2026-04-29 | QTS-PHX3 DC1 - 6 day w/ Holidays |  | Construction | Phase 1 | Build Out | IGMP | BOH | Level 1 | DELETED | DH1100 |  | Construction |  |  |  |  |  |  |  |  |  |  |  |
| QTS-29151 | TI Area A // Install Low Voltage Trim *Delete* | 5d | 2026-04-01 A | 2026-04-01 A | QTS-1371 SS | 100% | 2026-04-24 | 2026-04-29 | QTS-PHX3 DC1 - 6 day w/ Holidays |  | Construction | Phase 1 | Electrical | IGMP | FOH | Level 1 | DELETED | DH1100 |  |  |  |  |  |  |  |  |  |  |  |  |  |
| QTS-29161 | TI Area B // Rough Overhead Ductwork *Delete* | 8d | 2026-04-01 A | 2026-04-01 A | QTS-1371 SS | 100% | 2026-04-04 | 2026-04-13 | QTS-PHX3 DC1 - 6 day w/ Holidays |  | Construction | Phase 1 | Mechanical | IGMP | FOH | Level 1 | DELETED | DH1100 |  |  |  |  |  |  |  |  |  |  |  |  | Waiting on Drywall |
| QTS-29171 | TI Area B // Install Light Fixtures *Delete* | 8d | 2026-04-01 A | 2026-04-01 A | QTS-1371 SS | 100% | 2026-04-20 | 2026-04-28 | QTS-PHX3 DC1 - 6 day w/ Holidays |  | Construction | Phase 1 | Electrical | IGMP | FOH | Level 1 | DELETED | DH1100 |  |  |  |  |  |  |  |  |  |  |  |  |  |

Notes:
- QTS-101510: allucent_notes_20251014_152335: David Wiltberger on 2025-08-19 09:08: changed pick order / David Wiltberger on 2025-09-02 10:09: Moving to accommodate roofing in Zone 1 / David Wiltberger on 2025-09-24 04:09: BAM not completed Potential Delay / David Wiltberger on 2025-09-30 12:09: BAM did not complete / David Wiltberger on 2025-10-14 10:10: set on recovery schedule / allucent_notes: David Wiltberger on 2025-08-19 09:08: changed pick order / allucent_notes: 2025-08-19 09:08 - User: David Wiltberger - Date Added: 2025-08-19 09:08 - Note: changed pick order / 2025-09-02 10:09 - User: David Wiltberger - Date Added: 2025-09-02 10:09 - Note: Moving to accommodate roofing in Zone 1 / 2025-09-24 04:09 - User: Dav
- QTS-101520: allucent_notes_20251014_152335: David Wiltberger on 2025-08-19 09:08: changed pick order / David Wiltberger on 2025-09-02 10:09: Moving to accommodate roofing in Zone 1 / David Wiltberger on 2025-09-24 04:09: BAM not completed Potential Delay / David Wiltberger on 2025-09-30 12:09: BAM did not complete / David Wiltberger on 2025-10-14 10:10: set on recovery schedule / allucent_notes: David Wiltberger on 2025-08-19 09:08: changed pick order / allucent_notes: 2025-08-19 09:08 - User: David Wiltberger - Date Added: 2025-08-19 09:08 - Note: changed pick order / 2025-09-02 10:09 - User: David Wiltberger - Date Added: 2025-09-02 10:09 - Note: Moving to accommodate roofing in Zone 1 / 2025-09-24 04:09 - User: Dav
- QTS-101530: allucent_notes_20251014_152335: David Wiltberger on 2025-08-19 09:08: changed pick order / David Wiltberger on 2025-09-02 10:09: Moving to accommodate roofing in Zone 1 / David Wiltberger on 2025-09-24 04:09: BAM not completed Potential Delay / David Wiltberger on 2025-09-30 12:09: BAM did not complete / David Wiltberger on 2025-10-14 10:10: set on recovery schedule / allucent_notes: David Wiltberger on 2025-08-19 09:08: changed pick order / allucent_notes: 2025-08-19 09:08 - User: David Wiltberger - Date Added: 2025-08-19 09:08 - Note: changed pick order / 2025-09-02 10:09 - User: David Wiltberger - Date Added: 2025-09-02 10:09 - Note: Moving to accommodate roofing in Zone 1 / 2025-09-24 04:09 - User: Dav
- QTS-15151: Notes: 3/17: Consolidating activities in different WBS
- QTS-15191: Notes: Consolidating with 2300 to one activity
- QTS-15901: Notes: 3/17: Breaking out into single termination activities in different WBS
- QTS-15911: Notes: 3/17: Consolidating activities in different WBS
- QTS-15931: Notes: Breaking out into individual equipment.
- QTS-15961: Notes: Consolidating with 2300 to one activity
- QTS-17411: Notes: 3/17: Breaking out into single termination activities in different WBS
- QTS-17441: Notes: Breaking out into individual equipment.
- QTS-17471: Notes: Consolidating with 2300 to one activity
- QTS-18641: Notes: Consolidating with 2200 to one activity
- QTS-18961: Notes: Consolidating with 2200 to one activity
- QTS-39782: Notes: Consolidating with 2200 to one activity
- QTS-39792: Notes: Consolidating with 2200 to one activity
- QTS-39802: Notes: Consolidating with 2200 to one activity
- QTS-39812: Notes: Consolidating with 2200 to one activity
- QTS-42891: Notes: Consolidating with 2300 to one activity
- QTS-44361: Notes: Captured elsewhere deleting duplicate
- QTS-50211: Notes: 3/19: Consolidating to be captured in zone 2
- QTS-50221: Notes: 3/19: Consolidating to be captured in zone 2
- QTS-50231: Notes: 3/19: Consolidating to be captured in zone 2
- QTS-50241: Notes: 3/19: Consolidating to be captured in zone 2
- QTS-27761: Schedulers Notes: 5/12/26 - Activity was incorrectly actualized, and has been deleted and / duplicated to properly track progress. - TM / Notes: 4/7: Ceiling incomplete.
- QTS-1002320: allucent_notes_20251230_164549: JD Kitchens on 2025-12-30 14:31: update / allucent_notes: 2025-12-30 14:31 - User: JD Kitchens - Date Added: 2025-12-30 14:31 - Note: update
- QTS-1005230: allucent_notes_20251216_165335: Jason Johnston on 2025-11-03 11:11: focus on priority walls / Jason Johnston on 2025-11-19T02:22:41.829Z: undo / Jason Johnston on 2025-12-09 20:34: Need update from team / Scott Masterson on 2025-12-16 16:19: Jason is fixing the start... / allucent_notes_20251209_203830: Jason Johnston on 2025-11-03 11:11: focus on priority walls / Jason Johnston on 2025-11-19T02:22:41.829Z: undo / Jason Johnston on 2025-12-09 20:34: Need update from team / allucent_notes_20251202_153722: Jason Johnston on 2025-11-03 11:11: focus on priority walls / Jason Johnston on 2025-11-19T02:22:41.829Z: undo / allucent_notes_20251118_192630: Jason Johnston on 2025-11-03 11:11: focus on priority walls / Jason Johnston on 2025-11-19T02:22:41.829Z: undo / allucent_notes_20251111_182405: Jason Johnston on 2025-11-03 11:11: focus on priority walls / allucent_notes_20251104_160200: Jason Johnston on 2025-11-03 11:11: focus on priority walls / allucent_notes_20251230_164549: Jason Johnston on 2025-11-03 11:11: focus on priority walls / Jason Johnston on 2025-11-19T02:22:41.829Z: undo / Jason Johnston on 2025-12-09 20:34: Need update from team / Scott Masterson on 2025-12-16 16:19: Jason is fixing the start... / Sean Waisner on 2025-12-30 16:05: Man power issues / Notes: 3/24: 90% complete projecting 4/3 completion. / allucent_notes: 2025-11-03 11:11 - User: Jason Johnston - Date Added: 2025-11-03 11:11 - Note: focus on priority walls / 2025-11-19T02:22:41.829Z - User: Jason Johnston - Date Added: 2025-11-19T02:22:41.829Z - Note: undo / 2025-12-09 20:34 - User: Jason Johnston - Date
- QTS-1009250: Notes: Replacing QTS-30301
- QTS-1009280: allucent_notes_20251118_192630: Luis Vea on 2025-10-21T15:19:25.239Z: BZI is in the way with CAZ zones / Jason Johnston on 2025-10-28 16:10: Needs to be broken out into more detailed sections. / Jason Johnston on 2025-11-03 11:11: HVAC needs to go before electrical. Need tie / Jason Johnston on 2025-11-11T21:57:49.078Z: The overhead electrical needs to be restarted after early access and priority rooms are complete. / allucent_notes_20251111_182405: Luis Vea on 2025-10-21T15:19:25.239Z: BZI is in the way with CAZ zones / Jason Johnston on 2025-10-28 16:10: Needs to be broken out into more detailed sections. / Jason Johnston on 2025-11-03 11:11: HVAC needs to go before electrical. Need tie / Jason Johnston on 2025-11-11T21:57:49.078Z: The overhead electrical needs to be restarted after early access and priority rooms are complete. / allucent_notes_20251104_160200: Luis Vea on 2025-10-21T15:19:25.239Z: BZI is in the way with CAZ zones / Jason Johnston on 2025-10-28 16:10: Needs to be broken out into more detailed sections. / Jason Johnston on 2025-11-03 11:11: HVAC needs to go before electrical. Need tie / allucent_notes_20251028_163138: Luis Vea on 2025-10-21T15:19:25.239Z: BZI is in the way with CAZ zones / Jason Johnston on 2025-10-28 16:10: Needs to be broken out into more detailed sections. / allucent_notes_20251027_224008: Luis Vea on 2025-10-21T15:19:25.239Z: BZI is in the way with CAZ zones / allucent_notes_20251021_145627: Luis Vea on 2025-10-21T15:19:25.239Z: BZI is in the way with CAZ zones / allucent_notes: 2025-10-21T15:19:25.239Z - User: Luis Vea - Date Added: 2025-10-21T15:19:25.239Z - Note: BZI is in the way with CAZ zones / 2025-10-28 16:10 - User: Jason Johnston - Date Added: 2025-10-28 16:10 - Note: Needs to be broken out into more detailed sections
- QTS-1009290: allucent_notes_20251216_165335: Zack Goertz on 2025-12-01 10:30: Rough in is being done first. / Zack Goertz on 2025-12-09 10:49: Walls arent done being mudded and taped / allucent_notes_20251209_203830: Zack Goertz on 2025-12-01 10:30: Rough in is being done first. / Zack Goertz on 2025-12-09 10:49: Walls arent done being mudded and taped / allucent_notes_20251202_153722: Zack Goertz on 2025-12-01 10:30: Rough in is being done first. / allucent_notes_20251230_164549: Zack Goertz on 2025-12-01 10:30: Rough in is being done first. / Zack Goertz on 2025-12-09 10:49: Walls arent done being mudded and taped / allucent_notes: 2025-12-01 10:30 - User: Zack Goertz - Date Added: 2025-12-01 10:30 - Note: Rough in is being done first. / 2025-12-09 10:49 - User: Zack Goertz - Date Added: 2025-12-09 10:49 - Note: Walls arent done being mudded and taped
- QTS-1009300: allucent_notes_20251216_165335: Zack Goertz on 2025-12-01 10:30: Rough in is being done first. / Zack Goertz on 2025-12-09 10:49: Walls arent done being mudded and taped / allucent_notes_20251209_203830: Zack Goertz on 2025-12-01 10:30: Rough in is being done first. / Zack Goertz on 2025-12-09 10:49: Walls arent done being mudded and taped / allucent_notes_20251202_153722: Zack Goertz on 2025-12-01 10:30: Rough in is being done first. / allucent_notes_20251230_164549: Zack Goertz on 2025-12-01 10:30: Rough in is being done first. / Zack Goertz on 2025-12-09 10:49: Walls arent done being mudded and taped / allucent_notes: 2025-12-01 10:30 - User: Zack Goertz - Date Added: 2025-12-01 10:30 - Note: Rough in is being done first. / 2025-12-09 10:49 - User: Zack Goertz - Date Added: 2025-12-09 10:49 - Note: Walls arent done being mudded and taped
- QTS-1009490: Schedulers Notes: 5/8/26 - Deleting activity and replacing it with new one to properly track / fragent. -TM / Notes: 04/28: Will be finished 5/2/26
- QTS-26661: allucent_notes_20251216_165335: Zack Goertz on 2025-11-17 13:11: BOH is behind. All labor has been pulled to FOH level 1 and level 2. BAM has had between 2-4 people working in the BOH for the last few weeks. / Zack Goertz on 2025-12-01 10:31: Working on Rough in first / Zack Goertz on 2025-12-09 10:51: Walls arent done being mudded and taped / allucent_notes_20251209_203830: Zack Goertz on 2025-11-17 13:11: BOH is behind. All labor has been pulled to FOH level 1 and level 2. BAM has had between 2-4 people working in the BOH for the last few weeks. / Zack Goertz on 2025-12-01 10:31: Working on Rough in first / Zack Goertz on 2025-12-09 10:51: Walls arent done being mudded and taped / allucent_notes_20251202_153722: Zack Goertz on 2025-11-17 13:11: BOH is behind. All labor has been pulled to FOH level 1 and level 2. BAM has had between 2-4 people working in the BOH for the last few weeks. / Zack Goertz on 2025-12-01 10:31: Working on Rough in first / allucent_notes_20251118_192630: Zack Goertz on 2025-11-17 13:11: BOH is behind. All labor has been pulled to FOH level 1 and level 2. BAM has had between 2-4 people working in the BOH for the last few weeks. / allucent_notes_20251230_164549: Zack Goertz on 2025-11-17 13:11: BOH is behind. All labor has been pulled to FOH level 1 and level 2. BAM has had between 2-4 people working in the BOH for the last few weeks. / Zack Goertz on 2025-12-01 10:31: Working on Rough in first / Zack Goertz on 2025-12-09 10:51: Walls arent done being mudded and taped / Sean Waisner on 2025-12-30 15:40: Should not have been started / allucent_notes: 2025-11-17 13:11 - User: Zack Goertz - Date Added: 2025-11-17 13:11 - Note: BOH is behind. All labor has been pulled to FOH level 1 and level 2. BAM has had between 2-4 people working in the BOH for the last few weeks. / 2025-12-01 10:31 - User: Zack Go
- QTS-26921: allucent_notes_20251216_165335: Sean Waisner on 2025-12-09 15:28: Electrician not done / Sean Waisner on 2025-12-16 14:48: this is too vague need to update by smaller areas / allucent_notes_20251209_203830: Sean Waisner on 2025-12-09 15:28: Electrician not done / allucent_notes: 2025-12-09 15:28 - User: Sean Waisner - Date Added: 2025-12-09 15:28 - Note: Electrician not done / 2025-12-16 14:48 - User: Sean Waisner - Date Added: 2025-12-16 14:48 - Note: this is too vague need to update by smaller areas
- QTS-28401: Notes: 3/24: Ceilings waiting on MEP.
- QTS-28771: Notes: 1/20/26: Walls not completed enough to complete ductwork.
- QTS-29111: allucent_notes_20251230_164549: JD Kitchens on 2025-12-30 14:31: update / Notes: 3/24: Waitign on vestibule M&T / allucent_notes: 2025-12-30 14:31 - User: JD Kitchens - Date Added: 2025-12-30 14:31 - Note: update

| ID | Activity | Duration | Start | Finish | Predecessors | Complete | Planned start | Planned finish | Calendar | Project Section | Phase-1 | Layton Discipline | Baseline | Location | Level | DELETED | D | Allucent CSI Group | Notes | Project Section-1 | Phase-1-1 |
| --- | --- | --- | --- | --- | --- | --- | --- | --- | --- | --- | --- | --- | --- | --- | --- | --- | --- | --- | --- | --- | --- |
| QTS-29181 | TI Area B // Install Low Voltage Trim *Delete* | 5d | 2026-04-01 A | 2026-04-01 A | QTS-1371 SS | 100% | 2026-04-16 | 2026-04-21 | QTS-PHX3 DC1 - 6 day w/ Holidays | Construction | Phase 1 | Electrical | IGMP | FOH | Level 1 | DELETED | DH1100 |  |  |  |  |
| QTS-29201 | TI Area B // Install Operable Glass with Privacy Film *Delete* | 5d | 2026-04-01 A | 2026-04-01 A | QTS-1371 SS | 100% | 2026-04-16 | 2026-04-21 | QTS-PHX3 DC1 - 6 day w/ Holidays | Construction | Phase 1 | Build Out | IGMP | FOH | Level 1 | DELETED | DH1100 |  |  |  |  |
| QTS-29211 | TI Area A // Install Low Voltage Trim *Delete* | 5d | 2026-04-01 A | 2026-04-01 A | QTS-1371 SS | 100% | 2026-04-09 | 2026-04-14 | QTS-PHX3 DC1 - 6 day w/ Holidays | Construction | Phase 1 | Electrical | IGMP | FOH | Level 2 | DELETED | DH1100 | 01ADMIN |  |  |  |
| QTS-29231 | TI Area B // Prime & Paints Walls/ Ceilings *Delete* | 4d | 2026-04-01 A | 2026-04-01 A | QTS-1371 SS | 100% | 2026-01-17 | 2026-01-22 | QTS-PHX3 DC1 - 6 day w/ Holidays | Construction | Phase 1 | Build Out | IGMP | FOH | Level 2 | DELETED | DH1100 | 01ADMIN | 3/24: 85% complete need mud and tape on thatches to go back |  |  |
| QTS-29241 | TI Area J & K // Install Low Voltage Trim *Delete* | 5d | 2026-04-01 A | 2026-04-01 A | QTS-1371 SS | 100% | 2026-04-30 | 2026-05-05 | QTS-PHX3 DC1 - 6 day w/ Holidays | Construction | Phase 1 | Electrical | IGMP | BOH | Level 1 | DELETED | DH1100 |  |  | Construction |  |
| QTS-29251 | TI Area J & K // Prime & Paints Walls *Delete* | 4d | 2026-04-01 A | 2026-04-01 A | QTS-1371 SS | 100% | 2026-04-29 | 2026-05-02 | QTS-PHX3 DC1 - 6 day w/ Holidays | Construction |  | Build Out | IGMP | BOH | Level 2 | DELETED | DH1100 |  |  | Construction | Phase 1 |
| QTS-29261 | TI Area J & K // Rough Overhead Ductwork Gridline J - U *Delete* | 8d | 2026-04-01 A | 2026-04-01 A | QTS-1371 SS | 100% | 2026-04-30 | 2026-05-08 | QTS-PHX3 DC1 - 6 day w/ Holidays | Construction |  | Mechanical | IGMP | BOH | Level 1 | DELETED | DH1100 |  |  | Construction | Phase 1 |
| QTS-29361 | TI Area J & K // Insulate HVAC Ductwork *Delete* | 10d | 2026-04-01 A | 2026-04-01 A | QTS-1371 SS | 100% | 2026-04-11 | 2026-04-22 | QTS-PHX3 DC1 - 6 day w/ Holidays | Construction |  | Mechanical | IGMP | BOH | Level 2 | DELETED | DH1100 |  |  | Construction | Phase 1 |
| QTS-29371 | TI Area A // Install Armstrong Ceiling Grid *Delete* | 4d | 2026-04-01 A | 2026-04-01 A | QTS-1371 SS | 100% | 2026-04-24 | 2026-04-28 | QTS-PHX3 DC1 - 6 day w/ Holidays | Construction | Phase 1 | Build Out | IGMP | FOH | Level 1 | DELETED | DH1100 |  |  |  |  |
| QTS-29411 | TI Area A // Install Mechanical Trim *Delete* | 8d | 2026-04-01 A | 2026-04-01 A | QTS-1371 SS | 100% | 2026-04-25 | 2026-05-04 | QTS-PHX3 DC1 - 6 day w/ Holidays | Construction | Phase 1 | Mechanical | IGMP | FOH | Level 1 | DELETED | DH1100 |  |  |  |  |
| QTS-29421 | TI Area J & K // Install Light Fixtures *Delete* | 4d | 2026-04-01 A | 2026-04-01 A | QTS-1371 SS | 100% | 2026-05-04 | 2026-05-07 | QTS-PHX3 DC1 - 6 day w/ Holidays | Construction |  | Electrical | IGMP | BOH | Level 2 | DELETED | DH1100 |  |  | Construction | Phase 1 |
| QTS-29471 | TI Area B // Insulate HVAC Ductwork *Delete* | 8d | 2026-04-01 A | 2026-04-01 A | QTS-1371 SS | 100% | 2026-04-08 | 2026-04-16 | QTS-PHX3 DC1 - 6 day w/ Holidays | Construction | Phase 1 | Mechanical | IGMP | FOH | Level 1 | DELETED | DH1100 |  |  |  |  |
| QTS-29521 | TI Area J & K // Insulate HVAC Ductwork *Delete* | 10d | 2026-04-01 A | 2026-04-01 A | QTS-1371 SS | 100% | 2026-05-06 | 2026-05-16 | QTS-PHX3 DC1 - 6 day w/ Holidays | Construction | Phase 1 | Mechanical | IGMP | BOH | Level 1 | DELETED | DH1100 |  |  | Construction |  |
| QTS-29581 | TI Area A // Install Light Fixtures - Ceiling Grid *Delete* | 5d | 2026-04-01 A | 2026-04-01 A | QTS-1371 SS | 100% | 2026-04-29 | 2026-05-04 | QTS-PHX3 DC1 - 6 day w/ Holidays | Construction | Phase 1 | Electrical | IGMP | FOH | Level 1 | DELETED | DH1100 |  |  |  |  |
| QTS-29591 | TI Area A // Install Fire Sprinkler Trim *Delete* | 3d | 2026-04-01 A | 2026-04-01 A | QTS-1371 SS | 100% | 2026-04-29 | 2026-05-01 | QTS-PHX3 DC1 - 6 day w/ Holidays | Construction | Phase 1 | Mechanical | IGMP | FOH | Level 1 | DELETED | DH1100 |  |  |  |  |
| QTS-29611 | TI Area B // Install Electrical Trim *Delete* | 5d | 2026-04-01 A | 2026-04-01 A | QTS-1371 SS | 100% | 2026-04-29 | 2026-05-04 | QTS-PHX3 DC1 - 6 day w/ Holidays | Construction | Phase 1 | Electrical | IGMP | FOH | Level 1 | DELETED | DH1100 |  |  |  |  |
| QTS-29621 | TI Area B // Install Manual Partition Wall *Delete* | 5d | 2026-04-01 A | 2026-04-01 A | QTS-1371 SS | 100% | 2026-04-29 | 2026-05-04 | QTS-PHX3 DC1 - 6 day w/ Holidays | Construction | Phase 1 | Build Out | IGMP | FOH | Level 1 | DELETED | DH1100 |  |  |  |  |
| QTS-29631 | TI Area J & K // Install Wall Electrical Trim *Delete* | 5d | 2026-04-01 A | 2026-04-01 A | QTS-1371 SS | 100% | 2026-05-08 | 2026-05-13 | QTS-PHX3 DC1 - 6 day w/ Holidays | Construction |  | Electrical | IGMP | BOH | Level 2 | DELETED | DH1100 |  |  | Construction | Phase 1 |
| QTS-29651 | TI Area A // Install Armstrong Ceiling Grid *Delete* | 5d | 2026-04-01 A | 2026-04-01 A | QTS-1371 SS | 100% | 2026-04-09 | 2026-04-14 | QTS-PHX3 DC1 - 6 day w/ Holidays | Construction | Phase 1 | Build Out | IGMP | FOH | Level 2 | DELETED | DH1100 |  |  |  |  |
| QTS-29691 | TI Area B // Install Armstrong Ceiling Grid *Delete* | 4d | 2026-04-01 A | 2026-04-01 A | QTS-1371 SS | 100% | 2026-05-05 | 2026-05-08 | QTS-PHX3 DC1 - 6 day w/ Holidays | Construction | Phase 1 | Build Out | IGMP | FOH | Level 1 | DELETED | DH1100 |  |  |  |  |
| QTS-29701 | TI Area J & K // Install Armstrong Ceiling Grid *Delete* | 4d | 2026-04-01 A | 2026-04-01 A | QTS-1371 SS | 100% | 2026-05-13 | 2026-05-16 | QTS-PHX3 DC1 - 6 day w/ Holidays | Construction | Phase 1 | Build Out | IGMP | BOH | Level 1 | DELETED | DH1100 |  |  | Construction |  |
| QTS-29721 | TI Area B // Install Mechanical Trim *Delete* | 8d | 2026-04-01 A | 2026-04-01 A | QTS-1371 SS | 100% | 2026-05-07 | 2026-05-15 | QTS-PHX3 DC1 - 6 day w/ Holidays | Construction | Phase 1 | Mechanical | IGMP | FOH | Level 1 | DELETED | DH1100 |  |  |  |  |
| QTS-29731 | TI Area B // Install Armstrong Ceiling Grid *Delete* | 4d | 2026-04-01 A | 2026-04-01 A | QTS-1371 SS | 100% | 2026-04-06 | 2026-04-09 | QTS-PHX3 DC1 - 6 day w/ Holidays | Construction | Phase 1 | Build Out | IGMP | FOH | Level 2 | DELETED | DH1100 | 01ADMIN | 3/31/26: Waiting on direction from Layton. |  |  |
| QTS-29741 | TI Area A // MEP Overhead Inspection *Delete* | 1d | 2026-04-01 A | 2026-04-01 A | QTS-1371 SS | 100% | 2026-05-05 | 2026-05-05 | QTS-PHX3 DC1 - 6 day w/ Holidays | Construction | Phase 1 | Mechanical | IGMP | FOH | Level 1 | DELETED | DH1100 |  |  |  |  |
| QTS-29761 | TI Area J & K // Install Mechanical Trim *Delete* | 5d | 2026-04-01 A | 2026-04-01 A | QTS-1371 SS | 100% | 2026-05-04 | 2026-05-08 | QTS-PHX3 DC1 - 6 day w/ Holidays | Construction |  | Mechanical | IGMP | BOH | Level 2 | DELETED | DH1100 |  |  | Construction | Phase 1 |
| QTS-29771 | TI Area J & K // Install Fire Sprinkler Trim *Delete* | 3d | 2026-04-01 A | 2026-04-01 A | QTS-1371 SS | 100% | 2026-05-04 | 2026-05-06 | QTS-PHX3 DC1 - 6 day w/ Holidays | Construction |  | Mechanical | IGMP | BOH | Level 2 | DELETED | DH1100 |  |  | Construction | Phase 1 |
| QTS-29781 | TI Area A // Drop Ceiling Tiles *Delete* | 5d | 2026-04-01 A | 2026-04-01 A | QTS-1371 SS | 100% | 2026-05-06 | 2026-05-11 | QTS-PHX3 DC1 - 6 day w/ Holidays | Construction | Phase 1 | Build Out | IGMP | FOH | Level 1 | DELETED | DH1100 |  |  |  |  |
| QTS-29821 | TI Area A // Install Electrical Wall Trim *Delete* | 5d | 2026-04-01 A | 2026-04-01 A | QTS-1371 SS | 100% | 2026-05-05 | 2026-05-09 | QTS-PHX3 DC1 - 6 day w/ Holidays | Construction | Phase 1 | Electrical | IGMP | FOH | Level 1 | DELETED | DH1100 |  |  |  |  |
| QTS-29841 | TI Area B // Install Fire Sprinkler Trim *Delete* | 3d | 2026-04-01 A | 2026-04-01 A | QTS-1371 SS | 100% | 2026-05-07 | 2026-05-09 | QTS-PHX3 DC1 - 6 day w/ Holidays | Construction | Phase 1 | Mechanical | IGMP | FOH | Level 1 | DELETED | DH1100 |  |  |  |  |
| QTS-29851 | TI Area A // Install Light Fixtures *Delete* | 3d | 2026-04-01 A | 2026-04-01 A | QTS-1371 SS | 100% | 2026-04-15 | 2026-04-17 | QTS-PHX3 DC1 - 6 day w/ Holidays | Construction | Phase 1 | Electrical | IGMP | FOH | Level 2 | DELETED | DH1100 |  |  |  |  |
| QTS-29861 | TI Area A // Install Mechanical Trim *Delete* | 4d | 2026-04-01 A | 2026-04-01 A | QTS-1371 SS | 100% | 2026-04-15 | 2026-04-18 | QTS-PHX3 DC1 - 6 day w/ Holidays | Construction | Phase 1 | Mechanical | IGMP | FOH | Level 2 | DELETED | DH1100 |  |  |  |  |
| QTS-29871 | TI Area A // Install Fire Sprinkler Trim *Delete* | 3d | 2026-04-01 A | 2026-04-01 A | QTS-1371 SS | 100% | 2026-04-15 | 2026-04-17 | QTS-PHX3 DC1 - 6 day w/ Holidays | Construction | Phase 1 | Mechanical | IGMP | FOH | Level 2 | DELETED | DH1100 |  |  |  |  |
| QTS-29881 | TI Area J & K // Install Light Fixtures *Delete* | 8d | 2026-04-01 A | 2026-04-01 A | QTS-1371 SS | 100% | 2026-05-18 | 2026-05-27 | QTS-PHX3 DC1 - 6 day w/ Holidays | Construction | Phase 1 | Electrical | IGMP | BOH | Level 1 | DELETED | DH1100 |  |  | Construction |  |
| QTS-29891 | TI Area J & K // Install Mechanical Trim *Delete* | 8d | 2026-04-01 A | 2026-04-01 A | QTS-1371 SS | 100% | 2026-05-18 | 2026-05-27 | QTS-PHX3 DC1 - 6 day w/ Holidays | Construction | Phase 1 | Mechanical | IGMP | BOH | Level 1 | DELETED | DH1100 |  |  | Construction |  |
| QTS-29901 | TI Area J & K // Install Fire Sprinkler Trim *Delete* | 3d | 2026-04-01 A | 2026-04-01 A | QTS-1371 SS | 100% | 2026-05-18 | 2026-05-20 | QTS-PHX3 DC1 - 6 day w/ Holidays | Construction | Phase 1 | Mechanical | IGMP | BOH | Level 1 | DELETED | DH1100 |  |  | Construction |  |
| QTS-29921 | TI Area B // Install Light Fixtures *Delete* | 4d | 2026-04-01 A | 2026-04-01 A | QTS-1371 SS | 100% | 2026-04-10 | 2026-04-14 | QTS-PHX3 DC1 - 6 day w/ Holidays | Construction | Phase 1 | Electrical | IGMP | FOH | Level 2 | DELETED | DH1100 | 01ADMIN |  |  |  |
| QTS-29931 | TI Area B // Install Mechanical Trim *Delete* | 7d | 2026-04-01 A | 2026-04-01 A | QTS-1371 SS | 100% | 2026-04-10 | 2026-04-17 | QTS-PHX3 DC1 - 6 day w/ Holidays | Construction | Phase 1 | Mechanical | IGMP | FOH | Level 2 | DELETED | DH1100 | 01ADMIN |  |  |  |
| QTS-29941 | TI Area B // Install Fire Sprinkler Trim *Delete* | 3d | 2026-04-01 A | 2026-04-01 A | QTS-1371 SS | 100% | 2026-04-10 | 2026-04-13 | QTS-PHX3 DC1 - 6 day w/ Holidays | Construction | Phase 1 | Mechanical | IGMP | FOH | Level 2 | DELETED | DH1100 | 01ADMIN |  |  |  |
| QTS-29971 | TI Area J & K // MEP Overhead Inspection *Delete* | 1d | 2026-04-01 A | 2026-04-01 A | QTS-1371 SS | 100% | 2026-05-14 | 2026-05-14 | QTS-PHX3 DC1 - 6 day w/ Holidays | Construction |  | Mechanical | IGMP | BOH | Level 2 | DELETED | DH1100 |  |  | Construction | Phase 1 |
| QTS-29981 | TI Area A // Install Casework *Delete* | 5d | 2026-04-01 A | 2026-04-01 A | QTS-1371 SS | 100% | 2026-05-12 | 2026-05-16 | QTS-PHX3 DC1 - 6 day w/ Holidays | Construction | Phase 1 | Build Out | IGMP | FOH | Level 1 | DELETED | DH1100 |  |  |  |  |
| QTS-30011 | TI Area J & K // Install FEC's *Delete* | 2d | 2026-04-01 A | 2026-04-01 A | QTS-1371 SS | 100% | 2026-05-15 | 2026-05-16 | QTS-PHX3 DC1 - 6 day w/ Holidays | Construction |  | Build Out | IGMP | BOH | Level 2 | DELETED | DH1100 |  |  | Construction | Phase 1 |
| QTS-30051 | TI Area A // Install Flooring & Base *Delete* | 10d | 2026-04-01 A | 2026-04-01 A | QTS-1371 SS | 100% | 2026-05-14 | 2026-05-26 | QTS-PHX3 DC1 - 6 day w/ Holidays | Construction | Phase 1 | Build Out | IGMP | FOH | Level 1 | DELETED | DH1100 |  |  |  |  |
| QTS-30061 | TI Area B // Install Electrical Wall Trim *Delete* | 5d | 2026-04-01 A | 2026-04-01 A | QTS-1371 SS | 100% | 2026-04-15 | 2026-04-20 | QTS-PHX3 DC1 - 6 day w/ Holidays | Construction | Phase 1 | Electrical | IGMP | FOH | Level 2 | DELETED | DH1100 |  |  |  |  |
| QTS-30071 | TI Area B // MEP Overhead Inspection *Delete* | 1d | 2026-04-01 A | 2026-04-01 A | QTS-1371 SS | 100% | 2026-05-16 | 2026-05-16 | QTS-PHX3 DC1 - 6 day w/ Holidays | Construction | Phase 1 | Mechanical | IGMP | FOH | Level 1 | DELETED | DH1100 |  |  |  |  |
| QTS-30081 | TI Area A // MEP Overhead Inspection *Delete* | 1d | 2026-04-01 A | 2026-04-01 A | QTS-1371 SS | 100% | 2026-04-20 | 2026-04-20 | QTS-PHX3 DC1 - 6 day w/ Holidays | Construction | Phase 1 | Mechanical | IGMP | FOH | Level 2 | DELETED | DH1100 |  |  |  |  |
| QTS-30091 | TI Area J & K // Install Flooring & Base *Delete* | 10d | 2026-04-01 A | 2026-04-01 A | QTS-1371 SS | 100% | 2026-05-04 | 2026-05-14 | QTS-PHX3 DC1 - 6 day w/ Holidays | Construction |  | Build Out | IGMP | BOH | Level 2 | DELETED | DH1100 |  |  | Construction | Phase 1 |
| QTS-30111 | TI Area B // Drop Ceiling Tiles *Delete* | 5d | 2026-04-01 A | 2026-04-01 A | QTS-1371 SS | 100% | 2026-05-18 | 2026-05-22 | QTS-PHX3 DC1 - 6 day w/ Holidays | Construction | Phase 1 | Build Out | IGMP | FOH | Level 1 | DELETED | DH1100 |  |  |  |  |
| QTS-30121 | TI Area A // Drop Ceiling Tiles *Delete* | 5d | 2026-04-01 A | 2026-04-01 A | QTS-1371 SS | 100% | 2026-04-21 | 2026-04-25 | QTS-PHX3 DC1 - 6 day w/ Holidays | Construction | Phase 1 | Build Out | IGMP | FOH | Level 2 | DELETED | DH1100 |  |  |  |  |
| QTS-30131 | TI Area B // MEP Overhead Inspection *Delete* | 1d | 2026-04-01 A | 2026-04-01 A | QTS-1371 SS | 100% | 2026-04-18 | 2026-04-18 | QTS-PHX3 DC1 - 6 day w/ Holidays | Construction | Phase 1 | Mechanical | IGMP | FOH | Level 2 | DELETED | DH1100 |  |  |  |  |
| QTS-30151 | TI Area B // Drop Ceiling Tiles *Delete* | 2d | 2026-04-01 A | 2026-04-01 A | QTS-1371 SS | 100% | 2026-04-20 | 2026-04-21 | QTS-PHX3 DC1 - 6 day w/ Holidays | Construction | Phase 1 | Build Out | IGMP | FOH | Level 2 | DELETED | DH1100 |  |  |  |  |
| QTS-30171 | TI Area A // Install Plumbing Finishes *Delete* | 5d | 2026-04-01 A | 2026-04-01 A | QTS-1371 SS | 100% | 2026-05-18 | 2026-05-22 | QTS-PHX3 DC1 - 6 day w/ Holidays | Construction | Phase 1 | Mechanical | IGMP | FOH | Level 1 | DELETED | DH1100 |  |  |  |  |
| QTS-30191 | TI Area A // Install Electrical Wall Trim *Delete* | 5d | 2026-04-01 A | 2026-04-01 A | QTS-1371 SS | 100% | 2026-04-18 | 2026-04-23 | QTS-PHX3 DC1 - 6 day w/ Holidays | Construction | Phase 1 | Electrical | IGMP | FOH | Level 2 | DELETED | DH1100 |  |  |  |  |
| QTS-30201 | TI Area J & K // Install Electrical Wall Trim *Delete* | 5d | 2026-04-01 A | 2026-04-01 A | QTS-1371 SS | 100% | 2026-05-28 | 2026-06-02 | QTS-PHX3 DC1 - 6 day w/ Holidays | Construction | Phase 1 | Electrical | IGMP | BOH | Level 1 | DELETED | DH1100 |  |  | Construction |  |
| QTS-30211 | TI Area J & K // MEP Overhead Inspection *Delete* | 1d | 2026-04-01 A | 2026-04-01 A | QTS-1371 SS | 100% | 2026-05-28 | 2026-05-28 | QTS-PHX3 DC1 - 6 day w/ Holidays | Construction |  | Mechanical | IGMP | BOH | Level 1 | DELETED | DH1100 |  |  | Construction | Phase 1 |
| QTS-30221 | TI Area A // Install Casework *Delete* | 2d | 2026-04-01 A | 2026-04-01 A | QTS-1371 SS | 100% | 2026-04-27 | 2026-04-28 | QTS-PHX3 DC1 - 6 day w/ Holidays | Construction | Phase 1 | Build Out | IGMP | FOH | Level 2 | DELETED | DH1100 |  |  |  |  |
| QTS-30231 | TI Area B // Install Wood Ceiling *Delete* | 5d | 2026-04-01 A | 2026-04-01 A | QTS-1371 SS | 100% | 2026-04-22 | 2026-04-27 | QTS-PHX3 DC1 - 6 day w/ Holidays | Construction | Phase 1 | Build Out | IGMP | FOH | Level 2 | DELETED | DH1100 |  |  |  |  |
| QTS-30251 | TI Area J & K // Drop Ceiling Tiles *Delete* | 5d | 2026-04-01 A | 2026-04-01 A | QTS-1371 SS | 100% | 2026-05-29 | 2026-06-03 | QTS-PHX3 DC1 - 6 day w/ Holidays | Construction | Phase 1 | Build Out | IGMP | BOH | Level 1 | DELETED | DH1100 |  |  | Construction |  |
| QTS-30291 | TI Area B // Install Casework *Delete* | 5d | 2026-04-01 A | 2026-04-01 A | QTS-1371 SS | 100% | 2026-05-23 | 2026-05-29 | QTS-PHX3 DC1 - 6 day w/ Holidays | Construction | Phase 1 | Build Out | IGMP | FOH | Level 1 | DELETED | DH1100 |  |  |  |  |
| QTS-30311 | TI Area B // Install FEC's *Delete* | 2d | 2026-04-01 A | 2026-04-01 A | QTS-1371 SS | 100% | 2026-04-22 | 2026-04-23 | QTS-PHX3 DC1 - 6 day w/ Holidays | Construction | Phase 1 | Build Out | IGMP | FOH | Level 2 | DELETED | DH1100 |  |  |  |  |
| QTS-30351 | TI Area A // Install FEC's *Delete* | 2d | 2026-04-01 A | 2026-04-01 A | QTS-1371 SS | 100% | 2026-05-23 | 2026-05-26 | QTS-PHX3 DC1 - 6 day w/ Holidays | Construction | Phase 1 | Build Out | IGMP | FOH | Level 1 | DELETED | DH1100 |  |  |  |  |
| QTS-30361 | TI Area B // Install Flooring & Base *Delete* | 6d | 2026-04-01 A | 2026-04-01 A | QTS-1371 SS | 100% | 2026-05-30 | 2026-06-05 | QTS-PHX3 DC1 - 6 day w/ Holidays | Construction | Phase 1 | Build Out | IGMP | FOH | Level 1 | DELETED | DH1100 |  |  |  |  |
| QTS-30371 | TI Area A // Install Flooring & Base *Delete* | 10d | 2026-04-01 A | 2026-04-01 A | QTS-1371 SS | 100% | 2026-04-27 | 2026-05-07 | QTS-PHX3 DC1 - 6 day w/ Holidays | Construction | Phase 1 | Build Out | IGMP | FOH | Level 2 | DELETED | DH1100 |  |  |  |  |
| QTS-30391 | TI Area B // Install Light Fixtures at Wood Ceiling *Delete* | 5d | 2026-04-01 A | 2026-04-01 A | QTS-1371 SS | 100% | 2026-04-28 | 2026-05-02 | QTS-PHX3 DC1 - 6 day w/ Holidays | Construction | Phase 1 | Electrical | IGMP | FOH | Level 2 | DELETED | DH1100 |  |  |  |  |
| QTS-30401 | TI Area J & K // Install Casework *Delete* | 5d | 2026-04-01 A | 2026-04-01 A | QTS-1371 SS | 100% | 2026-06-04 | 2026-06-09 | QTS-PHX3 DC1 - 6 day w/ Holidays | Construction | Phase 1 | Build Out | IGMP | BOH | Level 1 | DELETED | DH1100 |  |  | Construction |  |
| QTS-30421 | TI Area A // Set Doors & Hardware *Delete* | 6d | 2026-04-01 A | 2026-04-01 A | QTS-1371 SS | 100% | 2026-05-21 | 2026-05-28 | QTS-PHX3 DC1 - 6 day w/ Holidays | Construction | Phase 1 | Build Out | IGMP | FOH | Level 1 | DELETED | DH1100 |  |  |  |  |
| QTS-30431 | TI Area J & K // Set Doors & Hardware *Delete* | 3d | 2026-04-01 A | 2026-04-01 A | QTS-1371 SS | 100% | 2026-05-15 | 2026-05-18 | QTS-PHX3 DC1 - 6 day w/ Holidays | Construction |  | Build Out | IGMP | BOH | Level 2 | DELETED | DH1100 |  |  | Construction | Phase 1 |
| QTS-30461 | TI Area B // Install Plumbing Finishes *Delete* | 2d | 2026-04-01 A | 2026-04-01 A | QTS-1371 SS | 100% | 2026-05-30 | 2026-06-01 | QTS-PHX3 DC1 - 6 day w/ Holidays | Construction | Phase 1 | Mechanical | IGMP | FOH | Level 1 | DELETED | DH1100 |  |  |  |  |
| QTS-30471 | TI Area J & K // Install Flooring & Base *Delete* | 8d | 2026-04-01 A | 2026-04-01 A | QTS-1371 SS | 100% | 2026-06-03 | 2026-06-11 | QTS-PHX3 DC1 - 6 day w/ Holidays | Construction | Phase 1 | Build Out | IGMP | BOH | Level 1 | DELETED | DH1100 |  |  | Construction |  |
| QTS-30511 | TI Area B // Install FEC's *Delete* | 2d | 2026-04-01 A | 2026-04-01 A | QTS-1371 SS | 100% | 2026-06-02 | 2026-06-03 | QTS-PHX3 DC1 - 6 day w/ Holidays | Construction | Phase 1 | Build Out | IGMP | FOH | Level 1 | DELETED | DH1100 |  |  |  |  |
| QTS-30521 | TI Area J & K // Install Window Treatments *Delete* | 2d | 2026-04-01 A | 2026-04-01 A | QTS-1371 SS | 100% | 2026-05-19 | 2026-05-20 | QTS-PHX3 DC1 - 6 day w/ Holidays | Construction |  | Build Out | IGMP | BOH | Level 2 | DELETED | DH1100 |  |  | Construction | Phase 1 |

Notes:
- QTS-29211: allucent_notes_20251202_153722: David Wiltberger on 2025-12-02 13:44: Not driven by early access / allucent_notes: 2025-12-02 13:44 - User: David Wiltberger - Date Added: 2025-12-02 13:44 - Note: Not driven by early access

| ID | Activity | Duration | Start | Finish | Predecessors | Complete | Planned start | Planned finish | Calendar | Project Section | Phase-1 | Layton Discipline | Baseline | Location | Level | DELETED | D | Project Section-1 | Phase-1-1 | Allucent CSI Group | Layton Super | Contract | Vendor Responsible Party | CX Level | Owner Impact Analysis | NICK | TFO-CONST ONLY |
| --- | --- | --- | --- | --- | --- | --- | --- | --- | --- | --- | --- | --- | --- | --- | --- | --- | --- | --- | --- | --- | --- | --- | --- | --- | --- | --- | --- |
| QTS-30541 | TI Area B // Set Doors & Hardware *Delete* | 5d | 2026-04-01 A | 2026-04-01 A | QTS-1371 SS | 100% | 2026-05-30 | 2026-06-04 | QTS-PHX3 DC1 - 6 day w/ Holidays | Construction | Phase 1 | Build Out | IGMP | FOH | Level 1 | DELETED | DH1100 |  |  |  |  |  |  |  |  |  |  |
| QTS-30551 | TI Area J & K // Install Plumbing Finishes *Delete* | 4d | 2026-04-01 A | 2026-04-01 A | QTS-1371 SS | 100% | 2026-06-10 | 2026-06-13 | QTS-PHX3 DC1 - 6 day w/ Holidays | Construction | Phase 1 | Mechanical | IGMP | BOH | Level 1 | DELETED | DH1100 | Construction |  |  |  |  |  |  |  |  |  |
| QTS-30581 | TI Area B // Set Doors & Hardware *Delete* | 3d | 2026-04-01 A | 2026-04-01 A | QTS-1371 SS | 100% | 2026-05-09 | 2026-05-12 | QTS-PHX3 DC1 - 6 day w/ Holidays | Construction | Phase 1 | Build Out | IGMP | FOH | Level 2 | DELETED | DH1100 |  |  |  |  |  |  |  |  |  |  |
| QTS-30611 | TI Area A // Install FEC's *Delete* | 2d | 2026-04-01 A | 2026-04-01 A | QTS-1371 | 100% | 2026-05-08 | 2026-05-09 | QTS-PHX3 DC1 - 6 day w/ Holidays | Construction | Phase 1 | Build Out | IGMP | FOH | Level 2 | DELETED | DH1100 |  |  |  |  |  |  |  |  |  |  |
| QTS-30621 | TI Area A // Set Doors & Hardware *Delete* | 6d | 2026-04-01 A | 2026-04-01 A | QTS-1371 | 100% | 2026-05-08 | 2026-05-14 | QTS-PHX3 DC1 - 6 day w/ Holidays | Construction | Phase 1 | Build Out | IGMP | FOH | Level 2 | DELETED | DH1100 |  |  |  |  |  |  |  |  |  |  |
| QTS-30631 | TI Area J & K // Install FEC's *Delete* | 2d | 2026-04-01 A | 2026-04-01 A | QTS-1371 SS | 100% | 2026-06-15 | 2026-06-16 | QTS-PHX3 DC1 - 6 day w/ Holidays | Construction | Phase 1 | Build Out | IGMP | BOH | Level 1 | DELETED | DH1100 | Construction |  |  |  |  |  |  |  |  |  |
| QTS-30641 | TI Area B // Install Window Treatments *Delete* | 2d | 2026-04-01 A | 2026-04-01 A | QTS-1371 SS | 100% | 2026-06-05 | 2026-06-06 | QTS-PHX3 DC1 - 6 day w/ Holidays | Construction | Phase 1 | Build Out | IGMP | FOH | Level 1 | DELETED | DH1100 |  |  |  |  |  |  |  |  |  |  |
| QTS-30651 | TI Area B // Install FF&E *Delete* | 5d | 2026-04-01 A | 2026-04-01 A | QTS-1371 SS | 100% | 2026-05-13 | 2026-05-18 | QTS-PHX3 DC1 - 6 day w/ Holidays | Construction | Phase 1 | Build Out | IGMP | FOH | Level 2 | DELETED | DH1100 |  |  |  |  |  |  |  |  |  |  |
| QTS-30661 | TI Area J & K // Set Doors & Hardware *Delete* | 6d | 2026-04-01 A | 2026-04-01 A | QTS-1371 SS | 100% | 2026-06-12 | 2026-06-18 | QTS-PHX3 DC1 - 6 day w/ Holidays | Construction | Phase 1 | Build Out | IGMP | BOH | Level 1 | DELETED | DH1100 | Construction |  |  |  |  |  |  |  |  |  |
| QTS-30671 | TI Area B // Install FF&E *Delete* | 2d | 2026-04-01 A | 2026-04-01 A | QTS-1371 SS | 100% | 2026-06-08 | 2026-06-09 | QTS-PHX3 DC1 - 6 day w/ Holidays | Construction | Phase 1 | Build Out | IGMP | FOH | Level 1 | DELETED | DH1100 |  |  |  |  |  |  |  |  |  |  |
| QTS-30701 | TI Area B // Install Window Treatments *Delete* | 2d | 2026-04-01 A | 2026-04-01 A | QTS-1371 SS | 100% | 2026-05-19 | 2026-05-20 | QTS-PHX3 DC1 - 6 day w/ Holidays | Construction | Phase 1 | Build Out | IGMP | FOH | Level 2 | DELETED | DH1100 |  |  |  |  |  |  |  |  |  |  |
| QTS-44121 | TI Area A // City Inspection HVAC *Delete* | 1d | 2026-04-01 A | 2026-04-01 A | QTS-1371 SS | 100% | 2026-05-04 | 2026-05-04 | QTS-PHX3 DC1 - 6 day w/ Holidays | Construction |  | Mechanical | IGMP | FOH | Level 1 | DELETED | DH1100 | Construction | Phase 1 |  |  |  |  |  |  |  |  |
| QTS-44881 | TI Area B // Install Ceiling Grid *Delete* | 2d | 2026-04-01 A | 2026-04-01 A | QTS-1371 SS | 100% | 2026-04-17 | 2026-04-18 | QTS-PHX3 DC1 - 6 day w/ Holidays | Construction |  | Build Out | IGMP | FOH | Level 1 | DELETED | DH1100 | Construction | Phase 1 |  |  |  |  |  |  |  |  |
| QTS-44911 | TI Area A // Frame Hard Lids & Soffits *Delete* | 6d | 2026-04-01 A | 2026-04-01 A | QTS-1371 SS | 100% | 2026-04-11 | 2026-04-17 | QTS-PHX3 DC1 - 6 day w/ Holidays | Construction |  | Build Out | IGMP | FOH | Level 1 | DELETED | DH1100 | Construction | Phase 1 | 01ADMIN |  |  |  |  |  |  |  |
| QTS-44941 | TI Area A // Hang Drywall for Hard Lids and Soffits *Delete* | 10d | 2026-04-01 A | 2026-04-01 A | QTS-1371 SS | 100% | 2026-04-24 | 2026-05-05 | QTS-PHX3 DC1 - 6 day w/ Holidays | Construction |  | Build Out | IGMP | FOH | Level 1 | DELETED | DH1100 | Construction | Phase 1 |  |  |  |  |  |  |  |  |
| QTS-44951 | TI Area A // Install Decorative Wood Ceilings (Corridor 0105) *Delete* | 5d | 2026-04-01 A | 2026-04-01 A | QTS-1371 SS | 100% | 2026-05-12 | 2026-05-16 | QTS-PHX3 DC1 - 6 day w/ Holidays | Construction |  | Build Out | IGMP | FOH | Level 1 | DELETED | DH1100 | Construction | Phase 1 |  |  |  |  |  |  |  |  |
| QTS-44961 | TI Area A // Tape & Finish Drywall for Hard Lids and Soffits *Delete* | 10d | 2026-04-01 A | 2026-04-01 A | QTS-1371 SS | 100% | 2026-04-30 | 2026-05-11 | QTS-PHX3 DC1 - 6 day w/ Holidays | Construction |  | Build Out | IGMP | FOH | Level 1 | DELETED | DH1100 | Construction | Phase 1 |  |  |  |  |  |  |  |  |
| QTS-44971 | TI Area A // Prime & Paints Hard Lids and Soffits *Delete* | 2d | 2026-04-01 A | 2026-04-01 A | QTS-1371 SS | 100% | 2026-05-12 | 2026-05-13 | QTS-PHX3 DC1 - 6 day w/ Holidays | Construction |  | Build Out | IGMP | FOH | Level 1 | DELETED | DH1100 | Construction | Phase 1 |  |  |  |  |  |  |  |  |
| QTS-15491 | **DELETED** DH 1200 / Mechanical Gallery 1201 // Install Angle Seal Around CRAH Units | 2d | 2026-04-13 A | 2026-07-14 A | QTS-1020 | 100% | 2026-04-13 | 2026-04-14 | QTS-PHX3 DC1 - 6 day w/ Holidays | Construction |  | Mechanical | IGMP | DH1200 |  | DELETED | DH1100 | Construction | Phase 2 |  | Mechanical | BAB |  |  |  |  |  |
| QTS-18381 | DH 1100 // Install Temporary Hot Aisle Containment (Air Cooled) *Delete* | 10d | 2026-04-14 A | 2026-04-14 A | QTS-1371 | 100% | 2026-04-14 | 2026-04-24 | QTS-PHX3 DC1 - 6 day w/ Holidays | Construction |  | Build Out | IGMP | DH1100 | Level 1 | DELETED | DH1100 | Construction | Phase 1 |  |  |  |  |  |  |  |  |
| QTS-45171 | Freedom Cafe #0103 // Measure and Fabricate for Solid Surface Counter Tops *Delete* | 2d | 2026-04-14 A | 2026-04-14 A | QTS-1371 | 100% | 2026-04-14 | 2026-04-15 | QTS-PHX3 DC1 - 6 day w/ Holidays | Construction |  | Build Out | IGMP | FOH | Level 1 | DELETED | DH1100 | Construction | Phase 1 |  |  |  |  |  |  |  |  |
| QTS-45411 | Lobby / Paint Hard Lid First Coat *Delete* | 1d | 2026-04-14 A | 2026-04-14 A | QTS-1371 | 100% |  |  | QTS-PHX3 DC1 - 6 day w/ Holidays | Construction |  | Build Out | IGMP | FOH | Level 1 | DELETED | DH1100 | Construction | Phase 1 |  |  |  |  |  |  |  |  |
| DC1-L4-Cx-1010 | **DELETED** DC1 Data Hall 2100 Mechanical L4 *Delete* | 10d | 2026-04-22 A | 2026-04-22 A | QTS-1371 | 100% | 2026-04-22 | 2026-05-05 |  |  |  | Commissioning |  | DH2100 |  | DELETED | DH1100 |  |  |  |  |  | LAY | L4 | Y | NICK |  |
| DC1-L4-Cx-1060 | **DELETED** DC1 Data Hall 2100 Mechanical L4 (TFO) *Delete* | 5d | 2026-04-22 A | 2026-04-22 A | QTS-1371 | 100% | 2026-07-02 | 2026-07-09 |  |  |  | Commissioning |  | DH2100 |  | DELETED | DH1100 |  |  |  |  | TFO | LAY | L4 |  | NICK | TFO CONST |
| DC1-MECH-L4-Cx-1010 | **DELETED** DC1 Data Hall 1100 Mechanical L4 *Delete* | 10d | 2026-04-22 A | 2026-04-22 A | QTS-1371 | 100% | 2026-05-18 | 2026-06-01 |  |  |  | Commissioning |  | DH1100 |  | DELETED | DH1100 |  |  |  |  |  | LAY | L4 | Y | NICK |  |
| DC1-MECH-L4-Cx-1020 | **DELETED** DC1 Data Hall 2200 Mechanical L4 *Delete* | 10d | 2026-04-22 A | 2026-04-22 A | QTS-1371 | 100% | 2026-07-17 | 2026-07-30 |  |  |  | Commissioning |  | DH2200 |  | DELETED | DH1100 |  |  |  |  |  | LAY | L4 |  | NICK |  |
| DC1-MECH-L4-Cx-1030 | **DELETED** DC1 Data Hall 1200 Mechanical L4 *Delete* | 10d | 2026-04-22 A | 2026-04-22 A | QTS-1371 | 100% | 2026-07-22 | 2026-08-04 |  |  |  | Commissioning |  | DH1200 |  | DELETED | DH1100 |  |  |  |  |  | LAY | L4 |  | NICK |  |
| DC1-MECH-L4-Cx-1040 | **DELETED** DC1 Data Hall 2300 Mechanical L4 *Delete* | 10d | 2026-04-22 A | 2026-04-22 A | QTS-1371 | 100% | 2026-08-31 | 2026-09-14 |  |  |  | Commissioning |  | DH2300 |  | DELETED | DH1100 |  |  |  |  |  | LAY | L4 |  | NICK |  |
| DC1-MECH-L4-Cx-1050 | **DELETED** DC1 Data Hall 1300 Mechanical L4 *Delete* | 10d | 2026-04-22 A | 2026-04-22 A | QTS-1371 | 100% | 2026-09-21 | 2026-10-02 |  |  |  | Commissioning |  | DH1300 |  | DELETED | DH1100 |  |  |  |  |  | LAY | L4 |  | NICK |  |
| DC1-MECH-L4-Cx-1060 | **DELETED** DC1 Data Hall 1300 Mechanical L4 (TFO) *Delete* | 5d | 2026-04-22 A | 2026-04-22 A | QTS-1371 | 100% | 2026-10-07 | 2026-10-13 |  |  |  | Commissioning |  | DH1300 |  | DELETED | DH1100 |  |  |  |  | TFO | LAY | L4 |  | NICK | TFO CONST |
| DC1-MECH-L4-Cx-1070 | **DELETED** DC1 Data Hall 2300 Mechanical L4 (TFO) *Delete* | 5d | 2026-04-22 A | 2026-04-22 A | QTS-1371 | 100% | 2026-09-17 | 2026-09-23 |  |  |  | Commissioning |  | DH2300 |  | DELETED | DH1100 |  |  |  |  | TFO | LAY | L4 |  | NICK | TFO CONST |
| DC1-MECH-L4-Cx-1080 | **DELETED** DC1 Data Hall 1200 Mechanical L4 (TFO) *Delete* | 5d | 2026-04-22 A | 2026-04-22 A | QTS-1371 | 100% | 2026-08-26 | 2026-09-01 |  |  |  | Commissioning |  | DH1200 |  | DELETED | DH1100 |  |  |  |  | TFO | LAY | L4 |  | NICK | TFO CONST |
| DC1-MECH-L4-Cx-1090 | **DELETED** DC1 Data Hall 2200 Mechanical L4 (TFO) *Delete* | 5d | 2026-04-22 A | 2026-04-22 A | QTS-1371 | 100% | 2026-09-03 | 2026-09-10 |  |  |  | Commissioning |  | DH2200 |  | DELETED | DH1100 |  |  |  |  | TFO | LAY | L4 |  | NICK | TFO CONST |
| DC1-MECH-L4-Cx-1100 | **DELETED** DC1 Data Hall 1100 Mechanical L4 (TFO) *Delete* | 5d | 2026-04-22 A | 2026-04-22 A | QTS-1371 | 100% | 2026-06-10 | 2026-06-16 |  |  |  | Commissioning |  | DH1100 |  | DELETED | DH1100 |  |  |  |  | TFO | LAY | L4 |  | NICK | TFO CONST |
| QTS - 10030 | TFO Scope // DH 1300 / Lineup C - D / Install Power Tray Tier # 2 *Delete* | 10d | 2026-04-22 A | 2026-04-22 A | QTS-1371 | 100% | 2026-06-26 | 2026-07-09 | QTS-PHX3 DC1 - 6 day w/ Holidays |  |  | Electrical |  | DH1300 |  | DELETED | DH1100 |  |  |  |  | TFO |  |  |  | NICK | TFO CONST |
| QTS - 10040 | TFO Scope // DH 1300 / Lineup C - D / Install Power Tray Tier # 1 *Delete* | 10d | 2026-04-22 A | 2026-04-22 A | QTS-1371 | 100% | 2026-07-02 | 2026-07-15 | QTS-PHX3 DC1 - 6 day w/ Holidays |  |  | Electrical |  | DH1300 |  | DELETED | DH1100 |  |  |  |  | TFO |  |  |  | NICK | TFO CONST |
| QTS - 15070 | TFO Scope // DH 1100 / Lineup C - D / Install Power Tray Tier # 2 *Delete* | 4d | 2026-04-22 A | 2026-04-22 A | QTS - 3690.1, QTS-1371 | 100% | 2026-04-22 | 2026-04-25 | QTS-PHX3 DC1 - 6 day w/ Holidays |  |  | Electrical |  | DH1100 |  | DELETED | DH1100 |  |  |  |  | TFO |  |  |  | NICK | TFO CONST |
| QTS - 15080 | TFO Scope // DH 1100 / Lineup C - D / Install Power Tray Tier # 1 *Delete* | 4d | 2026-04-22 A | 2026-04-22 A | QTS-1371 | 100% | 2026-04-22 | 2026-04-25 | QTS-PHX3 DC1 - 6 day w/ Holidays |  |  | Electrical |  | DH1100 |  | DELETED | DH1100 |  |  |  |  | TFO |  |  |  | NICK | TFO CONST |
| QTS - 15100 | TFO Scope // DH 1100 / Lineup C - D / Install Telecom Trays Tier # 5 *Delete* | 4d | 2026-04-22 A | 2026-04-22 A | QTS - 3690.1, QTS-1371 | 100% | 2026-04-23 | 2026-04-27 | QTS-PHX3 DC1 - 6 day w/ Holidays |  |  | Electrical |  | DH1100 |  | DELETED | DH1100 |  |  |  |  | TFO |  |  |  | NICK | TFO CONST |
| QTS - 15110 | TFO Scope // DH 1100 / Lineup C - D / Install Telecom Trays Tier # 4 *Delete* | 4d | 2026-04-22 A | 2026-04-22 A | QTS - 3690.1, QTS-1371 | 100% | 2026-04-22 | 2026-04-25 | QTS-PHX3 DC1 - 6 day w/ Holidays |  |  | Electrical |  | DH1100 |  | DELETED | DH1100 |  |  |  |  | TFO |  |  |  | NICK | TFO CONST |
| QTS - 15120 | TFO Scope // DH 1100 / Lineup C - D / Install Telecom Trays Tier # 3 *Delete* | 4d | 2026-04-22 A | 2026-04-22 A | QTS-1371 | 100% | 2026-04-22 | 2026-04-25 | QTS-PHX3 DC1 - 6 day w/ Holidays |  |  | Electrical |  | DH1100 |  | DELETED | DH1100 |  |  |  |  | TFO |  |  |  | NICK | TFO CONST |
| QTS - 24531 | TFO Scope // DH 1100 / Lineup E - F / Install Power Tray Tier # 2 *Delete* | 4d | 2026-04-22 A | 2026-04-22 A | QTS-1371 | 100% | 2026-04-22 | 2026-04-25 | QTS-PHX3 DC1 - 6 day w/ Holidays |  |  | Electrical |  | DH1100 |  | DELETED | DH1100 |  |  |  |  | TFO |  |  |  | NICK | TFO CONST |
| QTS - 24541 | TFO Scope // DH 1100 / Lineup E - F / Install Power Tray Tier # 1 *Delete* | 4d | 2026-04-22 A | 2026-04-22 A | QTS-1371 | 100% | 2026-04-22 | 2026-04-25 | QTS-PHX3 DC1 - 6 day w/ Holidays |  |  | Electrical |  | DH1100 |  | DELETED | DH1100 |  |  |  |  | TFO |  |  |  | NICK | TFO CONST |
| QTS - 24571 | TFO Scope // DH 1100 / Lineup E - F / Install Telecom Trays Tier # 4 *Delete* | 4d | 2026-04-22 A | 2026-04-22 A | QTS-1371 | 100% | 2026-04-22 | 2026-04-25 | QTS-PHX3 DC1 - 6 day w/ Holidays |  |  | Electrical |  | DH1100 |  | DELETED | DH1100 |  |  |  |  | TFO |  |  |  | NICK | TFO CONST |
| QTS - 24581 | TFO Scope // DH 1100 / Lineup E - F / Install Telecom Trays Tier # 3 *Delete* | 4d | 2026-04-22 A | 2026-04-22 A | QTS-1371 | 100% | 2026-04-22 | 2026-04-25 | QTS-PHX3 DC1 - 6 day w/ Holidays |  |  | Electrical |  | DH1100 |  | DELETED | DH1100 |  |  |  |  | TFO |  |  |  | NICK | TFO CONST |
| QTS - 24971 | TFO Scope // DH 2100 / Lineup A - B / Install LV Cable Tray - Grid *Delete* | 4d | 2026-04-22 A | 2026-04-22 A | QTS-1371 | 100% | 2026-05-20 | 2026-05-23 | QTS-PHX3 DC1 - 6 day w/ Holidays |  |  | Electrical |  | DH2100 |  | DELETED | DH1100 |  |  |  |  | TFO |  |  |  | NICK | TFO CONST |
| QTS - 24981 | TFO Scope // DH 2100 / Lineup A - B / Install Telecom Trays Tier # 3 - Grid *Delete* | 4d | 2026-04-22 A | 2026-04-22 A | QTS-1371 | 100% | 2026-05-26 | 2026-05-29 | QTS-PHX3 DC1 - 6 day w/ Holidays |  |  | Electrical |  | DH2100 |  | DELETED | DH1100 |  |  |  |  | TFO |  |  |  | NICK | TFO CONST |
| QTS - 24991 | TFO Scope // DH 2100 / Lineup C - D / Install Grid Hangers *Delete* | 5d | 2026-04-22 A | 2026-04-22 A | QTS-1371 | 100% | 2026-04-22 | 2026-04-27 | QTS-PHX3 DC1 - 6 day w/ Holidays |  |  | Electrical |  | DH2100 |  | DELETED | DH1100 |  |  |  |  | TFO |  |  |  | NICK | TFO CONST |
| QTS - 25001 | TFO Scope // DH 2100 / Lineup C - D / Install Telecom Trays Tier # 1 - Grid *Delete* | 4d | 2026-04-22 A | 2026-04-22 A | QTS-1371 | 100% | 2026-05-04 | 2026-05-07 | QTS-PHX3 DC1 - 6 day w/ Holidays |  |  | Electrical |  | DH2100 |  | DELETED | DH1100 |  |  |  |  | TFO |  |  |  | NICK | TFO CONST |
| QTS - 25011 | TFO Scope // DH 2100 / Lineup C - D / Install Telecom Trays Tier # 2 - Grid *Delete* | 4d | 2026-04-22 A | 2026-04-22 A | QTS-1371 | 100% | 2026-05-08 | 2026-05-12 | QTS-PHX3 DC1 - 6 day w/ Holidays |  |  | Electrical |  | DH2100 |  | DELETED | DH1100 |  |  |  |  | TFO |  |  |  | NICK | TFO CONST |
| QTS - 25021 | TFO Scope // DH 2100 / Lineup C - D / Install Telecom Trays Tier # 3 - Grid *Delete* | 4d | 2026-04-22 A | 2026-04-22 A | QTS-1371 | 100% | 2026-05-13 | 2026-05-16 | QTS-PHX3 DC1 - 6 day w/ Holidays |  |  | Electrical |  | DH2100 |  | DELETED | DH1100 |  |  |  |  | TFO |  |  |  | NICK | TFO CONST |
| QTS - 25031 | TFO Scope // DH 2100 / Lineup E - F / Install Grid Hangers *Delete* | 5d | 2026-04-22 A | 2026-04-22 A | QTS-1371 | 100% | 2026-04-22 | 2026-04-27 | QTS-PHX3 DC1 - 6 day w/ Holidays |  |  | Electrical |  | DH2100 |  | DELETED | DH1100 |  |  |  |  | TFO |  |  |  | NICK | TFO CONST |
| QTS - 25041 | TFO Scope // DH 2100 / Lineup E - F / Install Telecom Trays Tier # 1 - Grid *Delete* | 4d | 2026-04-22 A | 2026-04-22 A | QTS-1371 | 100% | 2026-05-09 | 2026-05-13 | QTS-PHX3 DC1 - 6 day w/ Holidays |  |  | Electrical |  | DH2100 |  | DELETED | DH1100 |  |  |  |  | TFO |  |  |  | NICK | TFO CONST |
| QTS - 25051 | TFO Scope // DH 2100 / Lineup E - F / Install Telecom Trays Tier # 2 - Grid *Delete* | 4d | 2026-04-22 A | 2026-04-22 A | QTS-1371 | 100% | 2026-05-14 | 2026-05-18 | QTS-PHX3 DC1 - 6 day w/ Holidays |  |  | Electrical |  | DH2100 |  | DELETED | DH1100 |  |  |  |  | TFO |  |  |  | NICK | TFO CONST |
| QTS - 25061 | TFO Scope // DH 2100 / Lineup E - F / Install Telecom Trays Tier # 3 - Grid *Delete* | 4d | 2026-04-22 A | 2026-04-22 A | QTS-1371 | 100% | 2026-05-19 | 2026-05-22 | QTS-PHX3 DC1 - 6 day w/ Holidays |  |  | Electrical |  | DH2100 |  | DELETED | DH1100 |  |  |  |  | TFO |  |  |  | NICK | TFO CONST |
| QTS - 25091 | TFO Scope // DH 1100 / Lineup A - B / Install Telecom Trays Tier # 2 - Grid *Delete* | 10d | 2026-04-22 A | 2026-04-22 A | QTS-1371 | 100% | 2026-04-22 | 2026-05-02 | QTS-PHX3 DC1 - 6 day w/ Holidays |  |  | Electrical |  | DH1100 |  | DELETED | DH1100 |  |  |  |  | TFO |  |  |  | NICK | TFO CONST |
| QTS - 25101 | TFO Scope // DH 1100 / Lineup A - B / Install Telecom Trays Tier # 3 - Grid *Delete* | 10d | 2026-04-22 A | 2026-04-22 A | QTS-1371 | 100% | 2026-04-22 | 2026-05-02 | QTS-PHX3 DC1 - 6 day w/ Holidays |  |  | Electrical |  | DH1100 |  | DELETED | DH1100 |  |  |  |  | TFO |  |  |  | NICK | TFO CONST |
| QTS - 25121 | TFO Scope // DH 1100 / Lineup C - D / Install Telecom Trays Tier # 1 - Grid *Delete* | 4d | 2026-04-22 A | 2026-04-22 A | QTS - 25111, QTS-1371 | 100% | 2026-04-22 | 2026-04-25 | QTS-PHX3 DC1 - 6 day w/ Holidays |  |  | Electrical |  | DH1100 |  | DELETED | DH1100 |  |  |  |  | TFO |  |  |  | NICK | TFO CONST |
| QTS - 25131 | TFO Scope // DH 1100 / Lineup C - D / Install Telecom Trays Tier # 2 - Grid *Delete* | 4d | 2026-04-22 A | 2026-04-22 A | QTS-1371 | 100% | 2026-04-22 | 2026-04-25 | QTS-PHX3 DC1 - 6 day w/ Holidays |  |  | Electrical |  | DH1100 |  | DELETED | DH1100 |  |  |  |  | TFO |  |  |  | NICK | TFO CONST |
| QTS - 25141 | TFO Scope // DH 1100 / Lineup C - D / Install Telecom Trays Tier # 3 - Grid *Delete* | 4d | 2026-04-22 A | 2026-04-22 A | QTS-1371 | 100% | 2026-04-22 | 2026-04-25 | QTS-PHX3 DC1 - 6 day w/ Holidays |  |  | Electrical |  | DH1100 |  | DELETED | DH1100 |  |  |  |  | TFO |  |  |  | NICK | TFO CONST |
| QTS - 25161 | TFO Scope // DH 1100 / Lineup E - F / Install Telecom Trays Tier # 1 - Grid *Delete* | 4d | 2026-04-22 A | 2026-04-22 A | QTS-1371 | 100% | 2026-04-22 | 2026-04-25 | QTS-PHX3 DC1 - 6 day w/ Holidays |  |  | Electrical |  | DH1100 |  | DELETED | DH1100 |  |  |  |  | TFO |  |  |  | NICK | TFO CONST |
| QTS - 25171 | TFO Scope // DH 1100 / Lineup E - F / Install Telecom Trays Tier # 2 - Grid *Delete* | 4d | 2026-04-22 A | 2026-04-22 A | QTS-1371 | 100% | 2026-04-22 | 2026-04-25 | QTS-PHX3 DC1 - 6 day w/ Holidays |  |  | Electrical |  | DH1100 |  | DELETED | DH1100 |  |  |  |  | TFO |  |  |  | NICK | TFO CONST |
| QTS - 25181 | TFO Scope // DH 1100 / Lineup E - F / Install Telecom Trays Tier # 3 - Grid *Delete* | 4d | 2026-04-22 A | 2026-04-22 A | QTS - 25171 FF+4d, QTS-1371 | 100% | 2026-04-27 | 2026-04-30 | QTS-PHX3 DC1 - 6 day w/ Holidays |  |  | Electrical |  | DH1100 |  | DELETED | DH1100 |  |  |  |  | TFO |  |  |  | NICK | TFO CONST |
| QTS - 25211 | TFO Scope // DH 2200 / Lineup A - B / Install LV Cable Tray - Grid *Delete* | 10d | 2026-04-22 A | 2026-04-22 A | QTS-1371 | 100% | 2026-04-22 | 2026-05-02 | QTS-PHX3 DC1 - 6 day w/ Holidays |  |  | Electrical |  | DH2200 |  | DELETED | DH1100 |  |  |  |  | TFO |  |  |  | NICK | TFO CONST |
| QTS - 25221 | TFO Scope // DH 2200 / Lineup A - B / Install Power Cable Tray - Grid *Delete* | 10d | 2026-04-22 A | 2026-04-22 A | QTS-1371 | 100% | 2026-04-22 | 2026-05-02 | QTS-PHX3 DC1 - 6 day w/ Holidays |  |  | Electrical |  | DH2200 |  | DELETED | DH1100 |  |  |  |  | TFO |  |  |  | NICK | TFO CONST |
| QTS - 25231 | TFO Scope // DH 2200 / Lineup C - D / Install Grid Hangers *Delete* | 5d | 2026-04-22 A | 2026-04-22 A | QTS-1371 | 100% | 2026-04-22 | 2026-04-27 | QTS-PHX3 DC1 - 6 day w/ Holidays |  |  | Electrical |  | DH2200 |  | DELETED | DH1100 |  |  |  |  | TFO |  |  |  | NICK | TFO CONST |
| QTS - 25241 | TFO Scope // DH 2200 / Lineup C - D / Install Telecom Trays Tier # 1 - Grid *Delete* | 10d | 2026-04-22 A | 2026-04-22 A | QTS-1371 | 100% | 2026-05-28 | 2026-06-08 | QTS-PHX3 DC1 - 6 day w/ Holidays |  |  | Electrical |  | DH2200 |  | DELETED | DH1100 |  |  |  |  | TFO |  |  |  | NICK | TFO CONST |
| QTS - 25251 | TFO Scope // DH 2200 / Lineup C - D / Install Telecom Trays Tier # 2 - Grid *Delete* | 10d | 2026-04-22 A | 2026-04-22 A | QTS-1371 | 100% | 2026-06-02 | 2026-06-12 | QTS-PHX3 DC1 - 6 day w/ Holidays |  |  | Electrical |  | DH2200 |  | DELETED | DH1100 |  |  |  |  | TFO |  |  |  | NICK | TFO CONST |
| QTS - 25261 | TFO Scope // DH 2200 / Lineup C - D / Install Telecom Trays Tier # 3 - Grid *Delete* | 10d | 2026-04-22 A | 2026-04-22 A | QTS-1371 | 100% | 2026-06-06 | 2026-06-17 | QTS-PHX3 DC1 - 6 day w/ Holidays |  |  | Electrical |  | DH2200 |  | DELETED | DH1100 |  |  |  |  | TFO |  |  |  | NICK | TFO CONST |
| QTS - 25271 | TFO Scope // DH 2200 / Lineup E - F / Install Grid Hangers *Delete* | 5d | 2026-04-22 A | 2026-04-22 A | QTS-1371 | 100% | 2026-04-22 | 2026-04-27 | QTS-PHX3 DC1 - 6 day w/ Holidays |  |  | Electrical |  | DH2200 |  | DELETED | DH1100 |  |  |  |  | TFO |  |  |  | NICK | TFO CONST |

Notes:
- QTS-44911: allucent_notes_20251216_165335: Luis Vea on 2025-10-21T15:18:12.162Z: BZI is in the way for soffits in some locations / Jason Johnston on 2025-10-27 08:10: Second floor has taken priority and they will move to first floor once it is complete. / Luis Vea on 2025-11-10 10:11: PCI has not started, this activity is out of sequence. first its walls and MEP OH and then detail framing and ceiling / Jason Johnston on 2025-11-11 14:11: After all overhead work is complete. / Jason Johnston on 2025-11-18T21:35:09.473Z: not in green mile needs priority / Sean Waisner on 2025-12-02 15:21: Re-sequencing for priority / Sean Waisner on 2025-12-16 14:37: This needs to be broken up by room the title is too broad / allucent_notes_20251209_203830: Luis Vea on 2025-10-21T15:18:12.162Z: BZI is in the way for soffits in some locations / Jason Johnston on 2025-10-27 08:10: Second floor has taken priority and they will move to first floor once it is complete. / Luis Vea on 2025-11-10 10:11: PCI has not started, this activity is out of sequence. first its walls and MEP OH and then detail framing and ceiling / Jason Johnston on 2025-11-11 14:11: After all overhead work is complete. / Jason Johnston on 2025-11-18T21:35:09.473Z: not in green mile needs priority / Sean Waisner on 2025-12-02 15:21: Re-sequencing for priority / allucent_notes_20251202_153722: Luis Vea on 2025-10-21T15:18:12.162Z: BZI is in the way for soffits in some locations / Jason Johnston on 2025-10-27 08:10: Second floor has taken priority and they will move to first floor once it is complete. / Luis Vea on 2025-11-10 10:11: PCI has not started, this activity is out of sequence. first its walls and MEP OH and then detail framing and ceiling / Jason Johnston on 2025-11-11 14:11: After all overhead work is complete. / Jason Johnston on 2025-11-18T21:35:09.473Z: not in green mile needs priority / Sean Waisner on 2025-12-02 15:21: Re-sequencing for priority / allucent_notes_20251118_192630: Luis Vea on 2025-10-21T15:18:12.162Z: BZI is in the way for soffits in some locations / Jason Johnston on 2025-10-27 08:10: Second floor has taken priority and they will move to first floor once it is complete. / Luis Vea on 2025-11-10 10:11: PCI has not started, this activity is out of sequence. first its walls and MEP OH and then detail framing and ceiling / Jason Johnston on 2025-11-11 14:11: After all overhead work is complete. / Jason Johnston on 2025-11-18T21:35:09.473Z: not in green mile needs priority / allucent_notes_20251111_182405: Luis Vea on 2025-10-21T15:18:12.162Z: BZI is in the way for soffits in some locations / Jason Johnston on 2025-10-27 08:10: Second floor has taken priority and they will move to first floor once it is complete. / Luis Vea on 2025-11-10 10:11: PCI has not started, this activity is out of sequence. first its walls and MEP OH and then detail framing and ceiling / Jason Johnston on 2025-11-11 14:11: After all overhead work is complete. / allucent_notes_20251104_160200: Luis Vea on 2025-10-21T15:18:12.162Z: BZI is in the way for soffits in some locations / Jason Johnston on 2025-10-27 08:10: Second floor has taken priority and they will move to first floor once it is complete. / allucent_notes_20251028_163138: Luis Vea on 2025-10-21T15:18:12.162Z: BZI is in the way for soffits in some locations / Jason Johnston on 2025-10-27 08:10: Second floor has taken priority and they will move to first floor once it is complete. / allucent_notes_20251027_224008: Luis Vea on 2025-10-21T15:18:12.162Z: BZI is in the way for soffits in some locations / Jason Johnston on 2025-10-27 08:10: Second floor has taken priority and they will move to first floor once it is complete. / allucent_notes_20251021_145627: Luis Vea on 2025-10-21T15:18:12.162Z: BZI is in the way for soffits in some locations / allucent_notes_20251230_164549: Luis Vea on 2025-10-21T15:18:12.162Z: BZI is in the way for soffits in some locations / Jason Johnston on 2025-10-27 08:10: Second floor has taken priority and they will move to first floor once it is complete. / Luis Vea on 2025-11-10 10:11: PCI has not started, this activity is out of sequence. first its walls and MEP OH and then detail framing and ceiling / Jason Johnston on 2025-11-11 14:11: After all overhead work is complete. / Jason Johnston on 2025-11-18T21:35:09.473Z: not in green mile needs priority / Sean Waisner on 2025-12-02 15:21: Re-sequencing for priority / Sean Waisner on 2025-12-16 14:37: This needs to be broken up by room the title is too broad / allucent_notes: 2025-10-21T15:18:12.162Z - User: Luis Vea - Date Added: 2025-10-21T15:18:12.162Z - Note: BZI is in the way for soffits in some locations / 2025-10-27 08:10 - User: Jason Johnston - Date Added: 2025-10-27 08:10 - Note: Second floor has taken priority and

| ID | Activity | Duration | Start | Finish | Predecessors | Complete | Planned start | Planned finish | Calendar | Layton Discipline | Location | DELETED | TFO-CONST ONLY | Contract | NICK | D |
| --- | --- | --- | --- | --- | --- | --- | --- | --- | --- | --- | --- | --- | --- | --- | --- | --- |
| QTS - 25281 | TFO Scope // DH 2200 / Lineup E - F / Install Telecom Trays Tier # 1 - Grid *Delete* | 10d | 2026-04-22 A | 2026-04-22 A | QTS-1371 | 100% | 2026-06-03 | 2026-06-13 | QTS-PHX3 DC1 - 6 day w/ Holidays | Electrical | DH2200 | DELETED | TFO CONST | TFO | NICK | DH1100 |
| QTS - 25291 | TFO Scope // DH 2200 / Lineup E - F / Install Telecom Trays Tier # 2 - Grid *Delete* | 10d | 2026-04-22 A | 2026-04-22 A | QTS-1371 | 100% | 2026-06-08 | 2026-06-18 | QTS-PHX3 DC1 - 6 day w/ Holidays | Electrical | DH2200 | DELETED | TFO CONST | TFO | NICK | DH1100 |
| QTS - 25301 | TFO Scope // DH 2200 / Lineup E - F / Install Telecom Trays Tier # 3 - Grid *Delete* | 10d | 2026-04-22 A | 2026-04-22 A | QTS-1371 | 100% | 2026-06-12 | 2026-06-23 | QTS-PHX3 DC1 - 6 day w/ Holidays | Electrical | DH2200 | DELETED | TFO CONST | TFO | NICK | DH1100 |
| QTS - 25331 | TFO Scope // DH 1200 / Lineup A - B / Install LV Cable Tray - Grid *Delete* | 10d | 2026-04-22 A | 2026-04-22 A | QTS-1371 | 100% | 2026-05-21 | 2026-06-02 | QTS-PHX3 DC1 - 6 day w/ Holidays | Electrical | DH1200 | DELETED | TFO CONST | TFO | NICK | DH1100 |
| QTS - 25341 | TFO Scope // DH 1200 / Lineup A - B / Install Power Cable Tray - Grid *Delete* | 10d | 2026-04-22 A | 2026-04-22 A | QTS-1371 | 100% | 2026-05-27 | 2026-06-06 | QTS-PHX3 DC1 - 6 day w/ Holidays | Electrical | DH1200 | DELETED | TFO CONST | TFO | NICK | DH1100 |
| QTS - 25351 | TFO Scope // DH 1200 / Lineup C - D / Install Grid Hangers *Delete* | 5d | 2026-04-22 A | 2026-04-22 A | QTS-1371 | 100% | 2026-04-22 | 2026-04-27 | QTS-PHX3 DC1 - 6 day w/ Holidays | Electrical | DH1200 | DELETED | TFO CONST | TFO | NICK | DH1100 |
| QTS - 25361 | TFO Scope // DH 1200 / Lineup C - D / Install Telecom Trays Tier # 1 - Grid *Delete* | 10d | 2026-04-22 A | 2026-04-22 A | QTS-1371 | 100% | 2026-05-22 | 2026-06-03 | QTS-PHX3 DC1 - 6 day w/ Holidays | Electrical | DH1200 | DELETED | TFO CONST | TFO | NICK | DH1100 |
| QTS - 25371 | TFO Scope // DH 1200 / Lineup C - D / Install Telecom Trays Tier # 2 - Grid *Delete* | 10d | 2026-04-22 A | 2026-04-22 A | QTS-1371 | 100% | 2026-05-28 | 2026-06-08 | QTS-PHX3 DC1 - 6 day w/ Holidays | Electrical | DH1200 | DELETED | TFO CONST | TFO | NICK | DH1100 |
| QTS - 25381 | TFO Scope // DH 1200 / Lineup C - D / Install Telecom Trays Tier # 3 - Grid *Delete* | 10d | 2026-04-22 A | 2026-04-22 A | QTS-1371 | 100% | 2026-06-02 | 2026-06-12 | QTS-PHX3 DC1 - 6 day w/ Holidays | Electrical | DH1200 | DELETED | TFO CONST | TFO | NICK | DH1100 |
| QTS - 25391 | TFO Scope // DH 1200 / Lineup E - F / Install Grid Hangers *Delete* | 5d | 2026-04-22 A | 2026-04-22 A | QTS-1371 | 100% | 2026-04-22 | 2026-04-27 | QTS-PHX3 DC1 - 6 day w/ Holidays | Electrical | DH1200 | DELETED | TFO CONST | TFO | NICK | DH1100 |
| QTS - 25401 | TFO Scope // DH 1200 / Lineup E - F / Install Telecom Trays Tier # 1 - Grid *Delete* | 10d | 2026-04-22 A | 2026-04-22 A | QTS-1371 | 100% | 2026-05-29 | 2026-06-09 | QTS-PHX3 DC1 - 6 day w/ Holidays | Electrical | DH1200 | DELETED | TFO CONST | TFO | NICK | DH1100 |
| QTS - 25411 | TFO Scope // DH 1200 / Lineup E - F / Install Telecom Trays Tier # 2 - Grid *Delete* | 10d | 2026-04-22 A | 2026-04-22 A | QTS-1371 | 100% | 2026-06-03 | 2026-06-13 | QTS-PHX3 DC1 - 6 day w/ Holidays | Electrical | DH1200 | DELETED | TFO CONST | TFO | NICK | DH1100 |
| QTS - 25421 | TFO Scope // DH 1200 / Lineup E - F / Install Telecom Trays Tier # 3 - Grid *Delete* | 10d | 2026-04-22 A | 2026-04-22 A | QTS-1371 | 100% | 2026-06-08 | 2026-06-18 | QTS-PHX3 DC1 - 6 day w/ Holidays | Electrical | DH1200 | DELETED | TFO CONST | TFO | NICK | DH1100 |
| QTS - 25451 | TFO Scope // DH 2300 / Lineup A - B / Install LV Cable Tray - Grid *Delete* | 10d | 2026-04-22 A | 2026-04-22 A | QTS-1371 | 100% | 2026-06-18 | 2026-06-29 | QTS-PHX3 DC1 - 6 day w/ Holidays | Electrical | DH2300 | DELETED | TFO CONST | TFO | NICK | DH1100 |
| QTS - 25461 | TFO Scope // DH 2300 / Lineup A - B / Install Power Cable Tray - Grid *Delete* | 10d | 2026-04-22 A | 2026-04-22 A | QTS-1371 | 100% | 2026-06-23 | 2026-07-06 | QTS-PHX3 DC1 - 6 day w/ Holidays | Electrical | DH2300 | DELETED | TFO CONST | TFO | NICK | DH1100 |
| QTS - 25471 | TFO Scope // DH 2300 / Lineup C - D / Install Grid Hangers *Delete* | 5d | 2026-04-22 A | 2026-04-22 A | QTS-1371 | 100% | 2026-04-22 | 2026-04-27 | QTS-PHX3 DC1 - 6 day w/ Holidays | Electrical | DH2300 | DELETED | TFO CONST | TFO | NICK | DH1100 |
| QTS - 25481 | TFO Scope // DH 2300 / Lineup C - D / Install Telecom Trays Tier # 1 - Grid *Delete* | 10d | 2026-04-22 A | 2026-04-22 A | QTS-1371 | 100% | 2026-06-19 | 2026-06-30 | QTS-PHX3 DC1 - 6 day w/ Holidays | Electrical | DH2300 | DELETED | TFO CONST | TFO | NICK | DH1100 |
| QTS - 25491 | TFO Scope // DH 2300 / Lineup C - D / Install Telecom Trays Tier # 2 - Grid *Delete* | 10d | 2026-04-22 A | 2026-04-22 A | QTS-1371 | 100% | 2026-06-24 | 2026-07-07 | QTS-PHX3 DC1 - 6 day w/ Holidays | Electrical | DH2300 | DELETED | TFO CONST | TFO | NICK | DH1100 |
| QTS - 25501 | TFO Scope // DH 2300 / Lineup C - D / Install Telecom Trays Tier # 3 - Grid *Delete* | 10d | 2026-04-22 A | 2026-04-22 A | QTS-1371 | 100% | 2026-06-29 | 2026-07-11 | QTS-PHX3 DC1 - 6 day w/ Holidays | Electrical | DH2300 | DELETED | TFO CONST | TFO | NICK | DH1100 |
| QTS - 25511 | TFO Scope // DH 2300 / Lineup E - F / Install Grid Hangers *Delete* | 5d | 2026-04-22 A | 2026-04-22 A | QTS-1371 | 100% | 2026-04-22 | 2026-04-27 | QTS-PHX3 DC1 - 6 day w/ Holidays | Electrical | DH2300 | DELETED | TFO CONST | TFO | NICK | DH1100 |
| QTS - 25521 | TFO Scope // DH 2300 / Lineup E - F / Install Telecom Trays Tier # 1 - Grid *Delete* | 10d | 2026-04-22 A | 2026-04-22 A | QTS-1371 | 100% | 2026-06-25 | 2026-07-08 | QTS-PHX3 DC1 - 6 day w/ Holidays | Electrical | DH2300 | DELETED | TFO CONST | TFO | NICK | DH1100 |
| QTS - 25531 | TFO Scope // DH 2300 / Lineup E - F / Install Telecom Trays Tier # 2 - Grid *Delete* | 10d | 2026-04-22 A | 2026-04-22 A | QTS-1371 | 100% | 2026-06-30 | 2026-07-13 | QTS-PHX3 DC1 - 6 day w/ Holidays | Electrical | DH2300 | DELETED | TFO CONST | TFO | NICK | DH1100 |
| QTS - 25541 | TFO Scope // DH 2300 / Lineup E - F / Install Telecom Trays Tier # 3 - Grid *Delete* | 10d | 2026-04-22 A | 2026-04-22 A | QTS-1371 | 100% | 2026-07-07 | 2026-07-17 | QTS-PHX3 DC1 - 6 day w/ Holidays | Electrical | DH2300 | DELETED | TFO CONST | TFO | NICK | DH1100 |
| QTS - 25571 | TFO Scope // DH 1300 / Lineup A - B / Install Telecom Trays Tier # 2 - Grid *Delete* | 10d | 2026-04-22 A | 2026-04-22 A | QTS-1371 | 100% | 2026-06-08 | 2026-06-18 | QTS-PHX3 DC1 - 6 day w/ Holidays | Electrical | DH1300 | DELETED | TFO CONST | TFO | NICK | DH1100 |
| QTS - 25581 | TFO Scope // DH 1300 / Lineup A - B / Install Power Cable Tray - Grid *Delete* | 10d | 2026-04-22 A | 2026-04-22 A | QTS-1371 | 100% | 2026-06-12 | 2026-06-23 | QTS-PHX3 DC1 - 6 day w/ Holidays | Electrical | DH1300 | DELETED | TFO CONST | TFO | NICK | DH1100 |
| QTS - 25591 | TFO Scope // DH 1300 / Lineup C - D / Install Grid Hangers *Delete* | 5d | 2026-04-22 A | 2026-04-22 A | QTS-1371 | 100% | 2026-04-22 | 2026-04-27 | QTS-PHX3 DC1 - 6 day w/ Holidays | Electrical | DH1300 | DELETED | TFO CONST | TFO | NICK | DH1100 |
| QTS - 25601 | TFO Scope // DH 1300 / Lineup C - D / Install Telecom Trays Tier # 1 - Grid *Delete* | 10d | 2026-04-22 A | 2026-04-22 A | QTS-1371 | 100% | 2026-06-09 | 2026-06-19 | QTS-PHX3 DC1 - 6 day w/ Holidays | Electrical | DH1300 | DELETED | TFO CONST | TFO | NICK | DH1100 |
| QTS - 25611 | TFO Scope // DH 1300 / Lineup C - D / Install Telecom Trays Tier # 2 - Grid *Delete* | 10d | 2026-04-22 A | 2026-04-22 A | QTS-1371 | 100% | 2026-06-13 | 2026-06-24 | QTS-PHX3 DC1 - 6 day w/ Holidays | Electrical | DH1300 | DELETED | TFO CONST | TFO | NICK | DH1100 |
| QTS - 25621 | TFO Scope // DH 1300 / Lineup C - D / Install Telecom Trays Tier # 3 - Grid *Delete* | 10d | 2026-04-22 A | 2026-04-22 A | QTS-1371 | 100% | 2026-06-18 | 2026-06-29 | QTS-PHX3 DC1 - 6 day w/ Holidays | Electrical | DH1300 | DELETED | TFO CONST | TFO | NICK | DH1100 |
| QTS - 25631 | TFO Scope // DH 1300 / Lineup E - F / Install Grid Hangers *Delete* | 5d | 2026-04-22 A | 2026-04-22 A | QTS-1371 | 100% | 2026-04-22 | 2026-04-27 | QTS-PHX3 DC1 - 6 day w/ Holidays | Electrical | DH1300 | DELETED | TFO CONST | TFO | NICK | DH1100 |
| QTS - 25641 | TFO Scope // DH 1300 / Lineup E - F / Install Telecom Trays Tier # 1 - Grid *Delete* | 10d | 2026-04-22 A | 2026-04-22 A | QTS-1371 | 100% | 2026-06-15 | 2026-06-25 | QTS-PHX3 DC1 - 6 day w/ Holidays | Electrical | DH1300 | DELETED | TFO CONST | TFO | NICK | DH1100 |
| QTS - 25651 | TFO Scope // DH 1300 / Lineup E - F / Install Telecom Trays Tier # 2 - Grid *Delete* | 10d | 2026-04-22 A | 2026-04-22 A | QTS-1371 | 100% | 2026-06-19 | 2026-06-30 | QTS-PHX3 DC1 - 6 day w/ Holidays | Electrical | DH1300 | DELETED | TFO CONST | TFO | NICK | DH1100 |
| QTS - 25661 | TFO Scope // DH 1300 / Lineup E - F / Install Telecom Trays Tier # 3 - Grid *Delete* | 10d | 2026-04-22 A | 2026-04-22 A | QTS-1371 | 100% | 2026-06-24 | 2026-07-07 | QTS-PHX3 DC1 - 6 day w/ Holidays | Electrical | DH1300 | DELETED | TFO CONST | TFO | NICK | DH1100 |
| QTS - 26271 | TFO Scope // DH 2100 / Lineup C - D / Install Grid Hangers *Delete* | 5d | 2026-04-22 A | 2026-04-22 A | QTS-1371 | 100% | 2026-04-22 | 2026-04-27 | QTS-PHX3 DC1 - 6 day w/ Holidays | Electrical | DH2100 | DELETED | TFO CONST | TFO | NICK | DH1100 |
| QTS - 26281 | TFO Scope // DH 2100 / Lineup E - F / Install Grid Hangers *Delete* | 5d | 2026-04-22 A | 2026-04-22 A | QTS-1371 | 100% | 2026-04-22 | 2026-04-27 | QTS-PHX3 DC1 - 6 day w/ Holidays | Electrical | DH2100 | DELETED | TFO CONST | TFO | NICK | DH1100 |
| QTS - 26291 | TFO Scope // DH 2200 / Lineup A - B / Install Power Tray Tier # 2 *Delete* | 10d | 2026-04-22 A | 2026-04-22 A | QTS-1371 | 100% | 2026-04-22 | 2026-05-02 | QTS-PHX3 DC1 - 6 day w/ Holidays | Electrical | DH2200 | DELETED | TFO CONST | TFO | NICK | DH1100 |
| QTS - 26301 | TFO Scope // DH 2200 / Lineup C - D / Install Grid Hangers *Delete* | 5d | 2026-04-22 A | 2026-04-22 A | QTS-1371 | 100% | 2026-04-22 | 2026-04-27 | QTS-PHX3 DC1 - 6 day w/ Holidays | Electrical | DH2200 | DELETED | TFO CONST | TFO | NICK | DH1100 |
| QTS - 26311 | TFO Scope // DH 2200 / Lineup E - F / Install Grid Hangers *Delete* | 5d | 2026-04-22 A | 2026-04-22 A | QTS-1371 | 100% | 2026-04-22 | 2026-04-27 | QTS-PHX3 DC1 - 6 day w/ Holidays | Electrical | DH2200 | DELETED | TFO CONST | TFO | NICK | DH1100 |
| QTS - 26321 | TFO Scope // DH 1200 / Lineup C - D / Install Grid Hangers *Delete* | 5d | 2026-04-22 A | 2026-04-22 A | QTS-1371 | 100% | 2026-04-22 | 2026-04-27 | QTS-PHX3 DC1 - 6 day w/ Holidays | Electrical | DH1200 | DELETED | TFO CONST | TFO | NICK | DH1100 |
| QTS - 26331 | TFO Scope // DH 1200 / Lineup E - F / Install Grid Hangers *Delete* | 5d | 2026-04-22 A | 2026-04-22 A | QTS-1371 | 100% | 2026-04-22 | 2026-04-27 | QTS-PHX3 DC1 - 6 day w/ Holidays | Electrical | DH1200 | DELETED | TFO CONST | TFO | NICK | DH1100 |
| QTS - 26341 | TFO Scope // DH 2300 / Lineup C - D / Install Grid Hangers *Delete* | 5d | 2026-04-22 A | 2026-04-22 A | QTS-1371 | 100% | 2026-04-22 | 2026-04-27 | QTS-PHX3 DC1 - 6 day w/ Holidays | Electrical | DH2300 | DELETED | TFO CONST | TFO | NICK | DH1100 |
| QTS - 26351 | TFO Scope // DH 2300 / Lineup E - F / Install Grid Hangers *Delete* | 5d | 2026-04-22 A | 2026-04-22 A | QTS-1371 | 100% | 2026-04-22 | 2026-04-27 | QTS-PHX3 DC1 - 6 day w/ Holidays | Electrical | DH2300 | DELETED | TFO CONST | TFO | NICK | DH1100 |
| QTS - 26361 | TFO Scope // DH 1300 / Lineup C - D / Install Grid Hangers *Delete* | 5d | 2026-04-22 A | 2026-04-22 A | QTS-1371 | 100% | 2026-04-22 | 2026-04-27 | QTS-PHX3 DC1 - 6 day w/ Holidays | Electrical | DH1300 | DELETED | TFO CONST | TFO | NICK | DH1100 |
| QTS - 26371 | TFO Scope // DH 1300 / Lineup E - F / Install Grid Hangers *Delete* | 5d | 2026-04-22 A | 2026-04-22 A | QTS-1371 | 100% | 2026-04-22 | 2026-04-27 | QTS-PHX3 DC1 - 6 day w/ Holidays | Electrical | DH1300 | DELETED | TFO CONST | TFO | NICK | DH1100 |
| QTS - 2900 | TFO Scope // DH 2100 / Lineup C - D / Install Telecom Trays Tier # 5 *Delete* | 4d | 2026-04-22 A | 2026-04-22 A | QTS-1371 | 100% | 2026-04-22 | 2026-04-25 | QTS-PHX3 DC1 - 6 day w/ Holidays | Electrical | DH2100 | DELETED | TFO CONST | TFO | NICK | DH1100 |
| QTS - 2910 | TFO Scope // DH 2100 / Lineup C - D / Install Telecom Trays Tier # 4 *Delete* | 4d | 2026-04-22 A | 2026-04-22 A | QTS-1371 | 100% | 2026-04-23 | 2026-04-27 | QTS-PHX3 DC1 - 6 day w/ Holidays | Electrical | DH2100 | DELETED | TFO CONST | TFO | NICK | DH1100 |
| QTS - 2930 | TFO Scope // DH 2100 / Lineup C - D / Install Telecom Trays Tier # 3 *Delete* | 4d | 2026-04-22 A | 2026-04-22 A | QTS-1371 | 100% | 2026-04-24 | 2026-04-28 | QTS-PHX3 DC1 - 6 day w/ Holidays | Electrical | DH2100 | DELETED | TFO CONST | TFO | NICK | DH1100 |
| QTS - 3130 | TFO Scope // DH 2100 / Lineup E - F / Install Telecom Trays Tier # 5 *Delete* | 4d | 2026-04-22 A | 2026-04-22 A | QTS-1371 | 100% | 2026-04-22 | 2026-04-25 | QTS-PHX3 DC1 - 6 day w/ Holidays | Electrical | DH2100 | DELETED | TFO CONST | TFO | NICK | DH1100 |
| QTS - 3140 | TFO Scope // DH 2100 / Lineup E - F / Install Telecom Trays Tier # 4 *Delete* | 4d | 2026-04-22 A | 2026-04-22 A | QTS-1371 | 100% | 2026-04-23 | 2026-04-27 | QTS-PHX3 DC1 - 6 day w/ Holidays | Electrical | DH2100 | DELETED | TFO CONST | TFO | NICK | DH1100 |
| QTS - 3160 | TFO Scope // DH 2100 / Lineup E - F / Install Telecom Trays Tier # 3 *Delete* | 4d | 2026-04-22 A | 2026-04-22 A | QTS-1371 | 100% | 2026-04-24 | 2026-04-28 | QTS-PHX3 DC1 - 6 day w/ Holidays | Electrical | DH2100 | DELETED | TFO CONST | TFO | NICK | DH1100 |
| QTS - 3470 | TFO Scope // DH 2100 / Lineup E - F / Install Power Tray Tier # 2 *Delete* | 4d | 2026-04-22 A | 2026-04-22 A | QTS-1371 | 100% | 2026-04-25 | 2026-04-29 | QTS-PHX3 DC1 - 6 day w/ Holidays | Electrical | DH2100 | DELETED | TFO CONST | TFO | NICK | DH1100 |
| QTS - 3480 | TFO Scope // DH 2100 / Lineup E - F / Install Power Tray Tier # 1 *Delete* | 4d | 2026-04-22 A | 2026-04-22 A | QTS-1371 | 100% | 2026-04-27 | 2026-04-30 | QTS-PHX3 DC1 - 6 day w/ Holidays | Electrical | DH2100 | DELETED | TFO CONST | TFO | NICK | DH1100 |
| QTS - 3560 | TFO Scope // DH 2100 / Lineup C - D / Install Power Tray Tier # 2 *Delete* | 4d | 2026-04-22 A | 2026-04-22 A | QTS-1371 | 100% | 2026-04-25 | 2026-04-29 | QTS-PHX3 DC1 - 6 day w/ Holidays | Electrical | DH2100 | DELETED | TFO CONST | TFO | NICK | DH1100 |
| QTS - 3570 | TFO Scope // DH 2100 / Lineup C - D / Install Power Tray Tier # 1 *Delete* | 4d | 2026-04-22 A | 2026-04-22 A | QTS-1371 | 100% | 2026-04-27 | 2026-04-30 | QTS-PHX3 DC1 - 6 day w/ Holidays | Electrical | DH2100 | DELETED | TFO CONST | TFO | NICK | DH1100 |
| QTS - 3590 | TFO Scope // DH 2100 / Lineup A - B / Install Power Tray Tier # 1 - QCool *Delete* | 4d | 2026-04-22 A | 2026-04-22 A | QTS-1371 | 100% | 2026-05-28 | 2026-06-01 | QTS-PHX3 DC1 - 6 day w/ Holidays | Electrical | DH2100 | DELETED | TFO CONST | TFO | NICK | DH1100 |
| QTS - 5430 | TFO Scope // DH 2200 / Lineup C - D / Install Telecom Trays Tier # 5 *Delete* | 10d | 2026-04-22 A | 2026-04-22 A | QTS-1371 | 100% | 2026-05-28 | 2026-06-08 | QTS-PHX3 DC1 - 6 day w/ Holidays | Electrical | DH2200 | DELETED | TFO CONST | TFO | NICK | DH1100 |
| QTS - 5590 | TFO Scope // DH 2200 / Lineup C - D / Install Telecom Trays Tier # 4 *Delete* | 10d | 2026-04-22 A | 2026-04-22 A | QTS-1371 | 100% | 2026-06-03 | 2026-06-13 | QTS-PHX3 DC1 - 6 day w/ Holidays | Electrical | DH2200 | DELETED | TFO CONST | TFO | NICK | DH1100 |
| QTS - 5600 | TFO Scope // DH 2200 / Lineup C - D / Install Telecom Trays Tier # 3 *Delete* | 10d | 2026-04-22 A | 2026-04-22 A | QTS-1371 | 100% | 2026-06-09 | 2026-06-19 | QTS-PHX3 DC1 - 6 day w/ Holidays | Electrical | DH2200 | DELETED | TFO CONST | TFO | NICK | DH1100 |
| QTS - 5660 | TFO Scope // DH 2200 / Lineup E - F / Install Telecom Trays Tier # 5 *Delete* | 10d | 2026-04-22 A | 2026-04-22 A | QTS-1371 | 100% | 2026-06-03 | 2026-06-13 | QTS-PHX3 DC1 - 6 day w/ Holidays | Electrical | DH2200 | DELETED | TFO CONST | TFO | NICK | DH1100 |
| QTS - 5820 | TFO Scope // DH 2200 / Lineup E - F / Install Telecom Trays Tier # 4 *Delete* | 10d | 2026-04-22 A | 2026-04-22 A | QTS-1371 | 100% | 2026-06-09 | 2026-06-19 | QTS-PHX3 DC1 - 6 day w/ Holidays | Electrical | DH2200 | DELETED | TFO CONST | TFO | NICK | DH1100 |
| QTS - 5830 | TFO Scope // DH 2200 / Lineup E - F / Install Telecom Trays Tier # 3 *Delete* | 10d | 2026-04-22 A | 2026-04-22 A | QTS-1371 | 100% | 2026-06-15 | 2026-06-25 | QTS-PHX3 DC1 - 6 day w/ Holidays | Electrical | DH2200 | DELETED | TFO CONST | TFO | NICK | DH1100 |
| QTS - 6020 | TFO Scope // DH 2200 / Lineup E - F / Install Power Tray Tier # 2 *Delete* | 10d | 2026-04-22 A | 2026-04-22 A | QTS-1371 | 100% | 2026-06-20 | 2026-07-01 | QTS-PHX3 DC1 - 6 day w/ Holidays | Electrical | DH2200 | DELETED | TFO CONST | TFO | NICK | DH1100 |
| QTS - 6030 | TFO Scope // DH 2200 / Lineup E - F / Install Power Tray Tier # 1 *Delete* | 10d | 2026-04-22 A | 2026-04-22 A | QTS-1371 | 100% | 2026-06-26 | 2026-07-09 | QTS-PHX3 DC1 - 6 day w/ Holidays | Electrical | DH2200 | DELETED | TFO CONST | TFO | NICK | DH1100 |
| QTS - 6110 | TFO Scope // DH 2200 / Lineup C - D / Install Power Tray Tier # 2 *Delete* | 10d | 2026-04-22 A | 2026-04-22 A | QTS-1371 | 100% | 2026-06-15 | 2026-06-25 | QTS-PHX3 DC1 - 6 day w/ Holidays | Electrical | DH2200 | DELETED | TFO CONST | TFO | NICK | DH1100 |
| QTS - 6120 | TFO Scope // DH 2200 / Lineup C - D / Install Power Tray Tier # 1 *Delete* | 10d | 2026-04-22 A | 2026-04-22 A | QTS-1371 | 100% | 2026-06-20 | 2026-07-01 | QTS-PHX3 DC1 - 6 day w/ Holidays | Electrical | DH2200 | DELETED | TFO CONST | TFO | NICK | DH1100 |
| QTS - 6130 | TFO Scope // DH 2200 / Lineup A - B / Install Power Tray Tier # 2 *Delete* | 10d | 2026-04-22 A | 2026-04-22 A | QTS-1371 | 100% | 2026-04-22 | 2026-05-02 | QTS-PHX3 DC1 - 6 day w/ Holidays | Electrical | DH2200 | DELETED | TFO CONST | TFO | NICK | DH1100 |
| QTS - 6730 | TFO Scope // DH 2300 / Lineup C - D / Install Telecom Trays Tier # 5 *Delete* | 10d | 2026-04-22 A | 2026-04-22 A | QTS-1371 | 100% | 2026-06-19 | 2026-06-30 | QTS-PHX3 DC1 - 6 day w/ Holidays | Electrical | DH2300 | DELETED | TFO CONST | TFO | NICK | DH1100 |
| QTS - 6890 | TFO Scope // DH 2300 / Lineup C - D / Install Telecom Trays Tier # 4 *Delete* | 10d | 2026-04-22 A | 2026-04-22 A | QTS-1371 | 100% | 2026-06-25 | 2026-07-08 | QTS-PHX3 DC1 - 6 day w/ Holidays | Electrical | DH2300 | DELETED | TFO CONST | TFO | NICK | DH1100 |
| QTS - 6900 | TFO Scope // DH 2300 / Lineup C - D / Install Telecom Trays Tier # 3 *Delete* | 10d | 2026-04-22 A | 2026-04-22 A | QTS-1371 | 100% | 2026-07-01 | 2026-07-14 | QTS-PHX3 DC1 - 6 day w/ Holidays | Electrical | DH2300 | DELETED | TFO CONST | TFO | NICK | DH1100 |
| QTS - 6960 | TFO Scope // DH 2300 / Lineup E - F / Install Telecom Trays Tier # 5 *Delete* | 10d | 2026-04-22 A | 2026-04-22 A | QTS-1371 | 100% | 2026-06-25 | 2026-07-08 | QTS-PHX3 DC1 - 6 day w/ Holidays | Electrical | DH2300 | DELETED | TFO CONST | TFO | NICK | DH1100 |

| ID | Activity | Type | Duration | Start | Finish | Predecessors | Complete | Planned start | Planned finish | Calendar | Layton Discipline | Location | DELETED | TFO-CONST ONLY | Contract | NICK | D | Update Notes | Project Section | Baseline | Phase-1-1 | Project Section-1 | Level | Equipment | Layton Super | Vendor Responsible Party | CX Level | Notes | Layton PM | Phase-1 | Owner Impact Analysis | Allucent CSI Group | Note/Comments |
| --- | --- | --- | --- | --- | --- | --- | --- | --- | --- | --- | --- | --- | --- | --- | --- | --- | --- | --- | --- | --- | --- | --- | --- | --- | --- | --- | --- | --- | --- | --- | --- | --- | --- |
| QTS - 7120 | TFO Scope // DH 2300 / Lineup E - F / Install Telecom Trays Tier # 4 *Delete* |  | 10d | 2026-04-22 A | 2026-04-22 A | QTS-1371 | 100% | 2026-07-09 | 2026-07-20 | QTS-PHX3 DC1 - 6 day w/ Holidays | Electrical | DH2300 | DELETED | TFO CONST | TFO | NICK | DH1100 |  |  |  |  |  |  |  |  |  |  |  |  |  |  |  |  |
| QTS - 7130 | TFO Scope // DH 2300 / Lineup E - F / Install Telecom Trays Tier # 3 *Delete* |  | 10d | 2026-04-22 A | 2026-04-22 A | QTS-1371 | 100% | 2026-07-21 | 2026-07-31 | QTS-PHX3 DC1 - 6 day w/ Holidays | Electrical | DH2300 | DELETED | TFO CONST | TFO | NICK | DH1100 |  |  |  |  |  |  |  |  |  |  |  |  |  |  |  |  |
| QTS - 7320 | TFO Scope // DH 2300 / Lineup E - F / Install Power Tray Tier # 2 *Delete* |  | 10d | 2026-04-22 A | 2026-04-22 A | QTS-1371 | 100% | 2026-08-01 | 2026-08-12 | QTS-PHX3 DC1 - 6 day w/ Holidays | Electrical | DH2300 | DELETED | TFO CONST | TFO | NICK | DH1100 |  |  |  |  |  |  |  |  |  |  |  |  |  |  |  |  |
| QTS - 7330 | TFO Scope // DH 2300 / Lineup E - F / Install Power Tray Tier # 1 *Delete* |  | 10d | 2026-04-22 A | 2026-04-22 A | QTS-1371 | 100% | 2026-08-13 | 2026-08-24 | QTS-PHX3 DC1 - 6 day w/ Holidays | Electrical | DH2300 | DELETED | TFO CONST | TFO | NICK | DH1100 |  |  |  |  |  |  |  |  |  |  |  |  |  |  |  |  |
| QTS - 7410 | TFO Scope // DH 2300 / Lineup C - D / Install Power Tray Tier # 2 *Delete* |  | 10d | 2026-04-22 A | 2026-04-22 A | QTS-1371 | 100% | 2026-07-09 | 2026-07-20 | QTS-PHX3 DC1 - 6 day w/ Holidays | Electrical | DH2300 | DELETED | TFO CONST | TFO | NICK | DH1100 |  |  |  |  |  |  |  |  |  |  |  |  |  |  |  |  |
| QTS - 7420 | TFO Scope // DH 2300 / Lineup C - D / Install Power Tray Tier # 1 *Delete* |  | 10d | 2026-04-22 A | 2026-04-22 A | QTS-1371 | 100% | 2026-07-15 | 2026-07-25 | QTS-PHX3 DC1 - 6 day w/ Holidays | Electrical | DH2300 | DELETED | TFO CONST | TFO | NICK | DH1100 |  |  |  |  |  |  |  |  |  |  |  |  |  |  |  |  |
| QTS - 8050 | TFO Scope // DH 1200 / Lineup C - D / Install Telecom Trays Tier # 5 *Delete* |  | 10d | 2026-04-22 A | 2026-04-22 A | QTS-1371 | 100% | 2026-05-22 | 2026-06-03 | QTS-PHX3 DC1 - 6 day w/ Holidays | Electrical | DH1200 | DELETED | TFO CONST | TFO | NICK | DH1100 |  |  |  |  |  |  |  |  |  |  |  |  |  |  |  |  |
| QTS - 8210 | TFO Scope // DH 1200 / Lineup C - D / Install Telecom Trays Tier # 4 *Delete* |  | 10d | 2026-04-22 A | 2026-04-22 A | QTS-1371 | 100% | 2026-05-29 | 2026-06-09 | QTS-PHX3 DC1 - 6 day w/ Holidays | Electrical | DH1200 | DELETED | TFO CONST | TFO | NICK | DH1100 |  |  |  |  |  |  |  |  |  |  |  |  |  |  |  |  |
| QTS - 8220 | TFO Scope // DH 1200 / Lineup C - D / Install Telecom Trays Tier # 3 *Delete* |  | 10d | 2026-04-22 A | 2026-04-22 A | QTS-1371 | 100% | 2026-06-04 | 2026-06-15 | QTS-PHX3 DC1 - 6 day w/ Holidays | Electrical | DH1200 | DELETED | TFO CONST | TFO | NICK | DH1100 |  |  |  |  |  |  |  |  |  |  |  |  |  |  |  |  |
| QTS - 8280 | TFO Scope // DH 1200 / Lineup E - F / Install Telecom Trays Tier # 5 *Delete* |  | 10d | 2026-04-22 A | 2026-04-22 A | QTS-1371 | 100% | 2026-05-29 | 2026-06-09 | QTS-PHX3 DC1 - 6 day w/ Holidays | Electrical | DH1200 | DELETED | TFO CONST | TFO | NICK | DH1100 |  |  |  |  |  |  |  |  |  |  |  |  |  |  |  |  |
| QTS - 8440 | TFO Scope // DH 1200 / Lineup E - F / Install Telecom Trays Tier # 4 *Delete* |  | 10d | 2026-04-22 A | 2026-04-22 A | QTS-1371 | 100% | 2026-06-04 | 2026-06-15 | QTS-PHX3 DC1 - 6 day w/ Holidays | Electrical | DH1200 | DELETED | TFO CONST | TFO | NICK | DH1100 |  |  |  |  |  |  |  |  |  |  |  |  |  |  |  |  |
| QTS - 8450 | TFO Scope // DH 1200 / Lineup E - F / Install Telecom Trays Tier # 3 *Delete* |  | 10d | 2026-04-22 A | 2026-04-22 A | QTS-1371 | 100% | 2026-06-10 | 2026-06-20 | QTS-PHX3 DC1 - 6 day w/ Holidays | Electrical | DH1200 | DELETED | TFO CONST | TFO | NICK | DH1100 |  |  |  |  |  |  |  |  |  |  |  |  |  |  |  |  |
| QTS - 8640 | TFO Scope // DH 1200 / Lineup E - F / Install Power Tray Tier # 2 *Delete* |  | 10d | 2026-04-22 A | 2026-04-22 A | QTS-1371 | 100% | 2026-06-16 | 2026-06-26 | QTS-PHX3 DC1 - 6 day w/ Holidays | Electrical | DH1200 | DELETED | TFO CONST | TFO | NICK | DH1100 |  |  |  |  |  |  |  |  |  |  |  |  |  |  |  |  |
| QTS - 8650 | TFO Scope // DH 1200 / Lineup E - F / Install Power Tray Tier # 1 *Delete* |  | 10d | 2026-04-22 A | 2026-04-22 A | QTS-1371 | 100% | 2026-06-22 | 2026-07-02 | QTS-PHX3 DC1 - 6 day w/ Holidays | Electrical | DH1200 | DELETED | TFO CONST | TFO | NICK | DH1100 |  |  |  |  |  |  |  |  |  |  |  |  |  |  |  |  |
| QTS - 8730 | TFO Scope // DH 1200 / Lineup C - D / Install Power Tray Tier # 2 *Delete* |  | 10d | 2026-04-22 A | 2026-04-22 A | QTS-1371 | 100% | 2026-06-10 | 2026-06-20 | QTS-PHX3 DC1 - 6 day w/ Holidays | Electrical | DH1200 | DELETED | TFO CONST | TFO | NICK | DH1100 |  |  |  |  |  |  |  |  |  |  |  |  |  |  |  |  |
| QTS - 8740 | TFO Scope // DH 1200 / Lineup C - D / Install Power Tray Tier # 1 *Delete* |  | 10d | 2026-04-22 A | 2026-04-22 A | QTS-1371 | 100% | 2026-06-16 | 2026-06-26 | QTS-PHX3 DC1 - 6 day w/ Holidays | Electrical | DH1200 | DELETED | TFO CONST | TFO | NICK | DH1100 |  |  |  |  |  |  |  |  |  |  |  |  |  |  |  |  |
| QTS - 9350 | TFO Scope // DH 1300 / Lineup C - D / Install Telecom Trays Tier # 5 *Delete* |  | 10d | 2026-04-22 A | 2026-04-22 A | QTS-1371 | 100% | 2026-06-09 | 2026-06-19 | QTS-PHX3 DC1 - 6 day w/ Holidays | Electrical | DH1300 | DELETED | TFO CONST | TFO | NICK | DH1100 |  |  |  |  |  |  |  |  |  |  |  |  |  |  |  |  |
| QTS - 9510 | TFO Scope // DH 1300 / Lineup C - D / Install Telecom Trays Tier # 4 *Delete* |  | 10d | 2026-04-22 A | 2026-04-22 A | QTS-1371 | 100% | 2026-06-15 | 2026-06-25 | QTS-PHX3 DC1 - 6 day w/ Holidays | Electrical | DH1300 | DELETED | TFO CONST | TFO | NICK | DH1100 |  |  |  |  |  |  |  |  |  |  |  |  |  |  |  |  |
| QTS - 9520 | TFO Scope // DH 1300 / Lineup C - D / Install Telecom Trays Tier # 3 *Delete* |  | 10d | 2026-04-22 A | 2026-04-22 A | QTS-1371 | 100% | 2026-06-20 | 2026-07-01 | QTS-PHX3 DC1 - 6 day w/ Holidays | Electrical | DH1300 | DELETED | TFO CONST | TFO | NICK | DH1100 |  |  |  |  |  |  |  |  |  |  |  |  |  |  |  |  |
| QTS - 9580 | TFO Scope // DH 1300 / Lineup E - F / Install Telecom Trays Tier # 5 *Delete* |  | 10d | 2026-04-22 A | 2026-04-22 A | QTS-1371 | 100% | 2026-06-15 | 2026-06-25 | QTS-PHX3 DC1 - 6 day w/ Holidays | Electrical | DH1300 | DELETED | TFO CONST | TFO | NICK | DH1100 |  |  |  |  |  |  |  |  |  |  |  |  |  |  |  |  |
| QTS - 9740 | TFO Scope // DH 1300 / Lineup E - F / Install Telecom Trays Tier # 4 *Delete* |  | 10d | 2026-04-22 A | 2026-04-22 A | QTS-1371 | 100% | 2026-06-20 | 2026-07-01 | QTS-PHX3 DC1 - 6 day w/ Holidays | Electrical | DH1300 | DELETED | TFO CONST | TFO | NICK | DH1100 |  |  |  |  |  |  |  |  |  |  |  |  |  |  |  |  |
| QTS - 9750 | TFO Scope // DH 1300 / Lineup E - F / Install Telecom Trays Tier # 3 *Delete* |  | 10d | 2026-04-22 A | 2026-04-22 A | QTS-1371 | 100% | 2026-06-26 | 2026-07-09 | QTS-PHX3 DC1 - 6 day w/ Holidays | Electrical | DH1300 | DELETED | TFO CONST | TFO | NICK | DH1100 |  |  |  |  |  |  |  |  |  |  |  |  |  |  |  |  |
| QTS - 9940 | TFO Scope // DH 1300 / Lineup E - F / Install Power Tray Tier # 2 *Delete* |  | 10d | 2026-04-22 A | 2026-04-22 A | QTS-1371 | 100% | 2026-07-10 | 2026-07-21 | QTS-PHX3 DC1 - 6 day w/ Holidays | Electrical | DH1300 | DELETED | TFO CONST | TFO | NICK | DH1100 |  |  |  |  |  |  |  |  |  |  |  |  |  |  |  |  |
| QTS - 9950 | TFO Scope // DH 1300 / Lineup E - F / Install Power Tray Tier # 1 *Delete* |  | 10d | 2026-04-22 A | 2026-04-22 A | QTS-1371 | 100% | 2026-07-16 | 2026-07-27 | QTS-PHX3 DC1 - 6 day w/ Holidays | Electrical | DH1300 | DELETED | TFO CONST | TFO | NICK | DH1100 |  |  |  |  |  |  |  |  |  |  |  |  |  |  |  |  |
| QTS-1009060 | Passenger Elevator E1 // Pull Communications & Security Cable *Delete* |  | 1d | 2026-04-27 A | 2026-05-12 A | QTS-1371 | 100% | 2026-04-23 | 2026-04-23 | QTS-PHX3 DC1 - 6 day w/ Holidays | Electrical | FOH | DELETED |  |  |  | DH1100 | 5/7 - Passenger Elev does not get security (BR) | Construction | IGMP | Phase 1 | Construction | Level 1 |  |  |  |  |  |  |  |  |  |  |
| QTS-1009070 | Passenger Elevator E1 // Install Security Devices *Delete* |  | 1d | 2026-04-27 A | 2026-05-12 A | QTS-1371 | 100% | 2026-04-24 | 2026-04-24 | QTS-PHX3 DC1 - 6 day w/ Holidays | Electrical | FOH | DELETED |  |  |  | DH1100 | 5/7 - Passenger Elev does not get security (BR) | Construction | IGMP | Phase 1 | Construction | Level 1 |  |  |  |  |  |  |  |  |  |  |
| QTS-1008440 | Zone 3 / Mechanical Yard // Terminate Electrical Wire at Transformer R23 *delete* |  | 2d | 2026-04-27 A | 2026-06-09 A | QTS-1020 | 100% | 2026-05-12 | 2026-05-13 | QTS-PHX3 DC1 - 6 day w/ Holidays | Electrical | Gen Yard | DELETED |  |  |  | DH1100 | 6/11 - No terminations, delete | Construction | IGMP | Phase 2 | Construction | Level 1 | XFMR | Electrical |  |  |  |  |  |  |  |  |
| QTS-1008810 | **DELETED** DH 2300 / Mechanical Gallery 2303 // Install OH FA Conduit & Grounding |  | 10d | 2026-04-27 A | 2026-07-14 A | QTS-1020 | 100% | 2026-04-27 | 2026-05-07 | QTS-PHX3 DC1 - 6 day w/ Holidays | Electrical | DH2300 | DELETED |  | BAB |  | DH1100 |  | Construction | IGMP | Phase 3 | Construction |  |  | Oscar Armenta |  |  |  |  |  |  |  |  |
| QTS-1011920 | Penthouse // Install Drywall *Delete* |  | 2d | 2026-05-04 A | 2026-05-19 A | QTS-1371 | 100% | 2026-05-04 | 2026-05-05 |  | Build Out | EXT | DELETED |  |  |  | DH1100 |  | Construction | IGMP |  |  | Roof |  | Ed Carter |  |  |  |  |  |  |  |  |
| QTS - 8620 | DELETE TFO Scope // DH 1200 - 1201 Mechanical Gallery / Clean Walk & PEI - Electrical Equipment |  | 2d | 2026-05-12 A | 2026-05-12 A | QTS-1371 | 100% | 2026-05-12 | 2026-05-13 | QTS-PHX3 DC1 - 6 day w/ Holidays | Electrical | DH1200 | DELETED |  |  |  | DH1100 |  |  |  |  |  |  |  | Oscar Armenta |  |  |  |  |  |  |  |  |
| DC1-DH2100-TAB-1020 | **DELETED** DC1-DH2100 Water Tab (Industrial Loop) |  | 5d | 2026-05-13 A | 2026-05-18 A | QTS-1020 | 100% | 2026-05-13 | 2026-05-19 |  | Commissioning | DH2100 | DELETED |  |  | NICK | DH1100 |  |  |  |  |  |  |  |  | LAY | L3 |  |  |  |  |  |  |
| QTS-1012420 | **DELETED** Fitness Center #0111 / Install Wallpaper |  | 5d | 2026-05-13 A | 2026-07-14 A | QTS-1020 | 100% | 2026-05-13 | 2026-05-18 | QTS-PHX3 DC1 - 6 day w/ Holidays | Electrical | FOH | DELETED |  | BAB |  | DH1100 |  | Construction | IGMP | Phase 1 | Construction | Level 1 |  | Ed Carter |  |  |  |  |  |  |  |  |
| QTS-1009770 | Freight Elevator E2 // Install Elevator Flooring *Delete* |  | 1d | 2026-05-19 A | 2026-05-19 A | QTS-1371 | 100% |  |  | QTS-PHX3 DC1 - 6 day w/ Holidays | Build Out | FOH | DELETED |  |  |  | DH1100 |  | Construction | IGMP | Phase 1 | Construction | Level 1 |  | Ben Ribble |  |  |  |  |  |  |  |  |
| QTS-24991 | **DELETED** DH 2100 // Install Ceiling Tile |  | 5d | 2026-06-01 A | 2026-07-14 A | QTS-1020 | 100% | 2026-06-02 | 2026-06-08 |  |  |  | DELETED |  |  |  | DH1100 |  |  |  |  |  |  |  |  |  |  | QTS-0900 |  |  |  |  |  |
| QTS-29401 | **DELETED** DH 1100 / Closeout // Turnover Float |  | 1d | 2026-06-01 A | 2026-06-01 A | QTS-1020 | 100% |  |  |  | Closeout |  | DELETED |  |  |  | DH1100 |  | Close Out | IGMP | Phase 1 | Close Out | Level 1 |  |  |  |  |  | TTodaro |  |  |  |  |
| QTS-13731 | **DELETED** DH 2200 // Install Telecom Sleeves |  | 3d | 2026-06-03 A | 2026-07-14 A | QTS-1020 | 100% | 2026-06-03 | 2026-06-05 | QTS-PHX3 DC1 - 6 day w/ Holidays | Electrical | DH2200 | DELETED |  | BAB |  | DH1100 |  | Construction | IGMP | Phase 2 | Construction |  |  | Oscar Armenta |  |  |  |  |  |  |  |  |
| QTS-13801 | **DELETED** DH 1200 // Install Telecom Sleeves |  | 3d | 2026-06-03 A | 2026-07-14 A | QTS-1020 | 100% | 2026-06-03 | 2026-06-05 | QTS-PHX3 DC1 - 6 day w/ Holidays | Electrical | DH1200 | DELETED |  | BAB |  | DH1100 |  | Construction | IGMP | Phase 2 | Construction |  |  | Oscar Armenta |  |  |  |  |  |  |  |  |
| QTS-14571 | East Elevation // Install Framing for Metal Panels *delete* |  | 3d | 2026-06-09 A | 2026-06-09 A | QTS-13591 | 100% | 2026-06-09 | 2026-06-11 |  | Build Out | EXT | DELETED |  |  |  | DH1100 | 6/11 - Activity does not exist, delete | Construction | IGMP |  |  |  |  | Freddy Arrizon |  |  |  |  | Phase 3 |  |  |  |
| QTS-1130.A40 | TCO Building Ready - 1st Floor FOH *delete* | milestone | 0d | 2026-06-09 A | 2026-06-09 A | QTS-1371 | 100% |  |  |  | Deleted |  | DELETED |  |  |  | DH1100 |  | Exec Summary | IGMP |  | Exec Summary |  |  |  | LAY |  |  |  |  | Y |  |  |
| QTS-1130.A50 | TCO Building Ready - 2nd Floor FOH *delete* | milestone | 0d | 2026-06-09 A | 2026-06-09 A | QTS-1371 | 100% | 2026-06-22 | 2026-06-22 |  | Milestone |  | DELETED |  |  |  | DH1100 |  | Exec Summary | IGMP |  | Exec Summary |  |  |  | LAY |  |  |  |  | Y |  |  |
| QTS - 8490 | **DELETED** TFO Scope // DH 1200 - 1203 Mechanical Gallery / Pull LV Main / IDF Cabinet to Basket Tray |  | 7d | 2026-06-15 A | 2026-07-14 A | QTS-1020 | 100% | 2026-07-14 | 2026-07-21 | QTS-PHX3 DC1 - 6 day w/ Holidays | LV | DH1200 | DELETED | TFO CONST | TFO | NICK | DH1100 |  |  |  |  |  |  |  | Low Voltage |  |  |  |  |  |  |  |  |
| QTS - 8610 | **DELETED** TFO Scope // DH 1200 - 1203 Mechanical Gallery / BMS & EPMS Terminations |  | 2d | 2026-06-15 A | 2026-07-14 A | QTS-1020 | 100% | 2026-07-21 | 2026-07-22 | QTS-PHX3 DC1 - 6 day w/ Holidays | LV | DH1200 | DELETED | TFO CONST | TFO | NICK | DH1100 |  |  |  |  |  |  |  | Low Voltage |  |  |  |  |  |  |  |  |
| QTS-1000610 | **DELETED** DH 1200 // Install Overhead Conduit - Controls |  | 5d | 2026-06-17 A | 2026-07-14 A | QTS-1020 | 100% | 2026-07-08 | 2026-07-13 | QTS-PHX3 DC1 - 6 day w/ Holidays | Electrical | DH2100 | DELETED |  | BAB |  | DH1100 |  | Construction | IGMP |  | Construction | Level 2 |  | Oscar Armenta |  |  |  |  |  |  | 01ADMIN |  |
| QTS-46801 | **DELETED** DH 2300 / Electrical Gallery 2302 // Install OH Electrical Conduit & Grounding |  | 10d | 2026-06-17 A | 2026-07-14 A | QTS-1020 | 100% | 2026-07-08 | 2026-07-18 | QTS-PHX3 DC1 - 6 day w/ Holidays | Electrical | DH2100 | DELETED |  | BAB |  | DH1100 |  | Construction | IGMP |  | Construction | Level 2 |  | Oscar Armenta |  |  |  |  |  |  | 01ADMIN | 7/7: Need Branch conduit |
| DC1-CHLR-L2-1070 | **DELETED** DH2200 CHLR-1RT40-A22 L2 Checklist |  | 2d | 2026-06-17 A | 2026-07-15 A | QTS-1020 | 100% | 2026-06-24 | 2026-06-25 |  | Commissioning | DH2200 | DELETED |  |  |  | DH1100 |  |  |  |  |  |  | CHILLER |  | TAS | L2 |  |  |  |  |  |  |
| DC1-CHLR-L2-1080 | **DELETED** DH2200 CHLR-1RT40-B22 L2 Checklist |  | 2d | 2026-06-17 A | 2026-07-15 A | QTS-1020 | 100% | 2026-06-24 | 2026-06-25 |  | Commissioning | DH2200 | DELETED |  |  |  | DH1100 |  |  |  |  |  |  | CHILLER |  | TAS | L2 |  |  |  |  |  |  |
| DC1-CHLR-L2-1090 | **DELETED** DH2200 CHLR-1RT40-C22 L2 Checklist |  | 2d | 2026-06-17 A | 2026-07-15 A | QTS-1020 | 100% | 2026-06-24 | 2026-06-25 |  | Commissioning | DH2200 | DELETED |  |  |  | DH1100 |  |  |  |  |  |  | CHILLER |  | TAS | L2 |  |  |  |  |  |  |
| DC1-CHLR-L2-1100 | **DELETED** DH2200 CHLR-1RT40-D22 L2 Checklist |  | 2d | 2026-06-17 A | 2026-07-15 A | QTS-1020 | 100% | 2026-06-24 | 2026-06-25 |  | Commissioning | DH2200 | DELETED |  |  |  | DH1100 |  |  |  |  |  |  | CHILLER |  | TAS | L2 |  |  |  |  |  |  |
| DC1-CHLR-L2-1110 | **DELETED** DH2200 CHLR-1RT40-E22 L2 Checklist |  | 2d | 2026-06-17 A | 2026-07-15 A | QTS-1020 | 100% | 2026-06-24 | 2026-06-25 |  | Commissioning | DH2200 | DELETED |  |  |  | DH1100 |  |  |  |  |  |  | CHILLER |  | TAS | L2 |  |  |  |  |  |  |
| DC1-CHLR-L2-1120 | **DELETED** DH2200 CHLR-1RT40-F22 L2 Checklist |  | 2d | 2026-06-17 A | 2026-07-15 A | QTS-1020 | 100% | 2026-06-24 | 2026-06-25 |  | Commissioning | DH2200 | DELETED |  |  |  | DH1100 |  |  |  |  |  |  | CHILLER |  | TAS | L2 |  |  |  |  |  |  |
| DC1-CHLR-L2-1130 | **DELETED** DH2200 CHLR-1RT40-R22 L2 Checklist |  | 2d | 2026-06-17 A | 2026-07-15 A | QTS-1020 | 100% | 2026-06-24 | 2026-06-25 |  | Commissioning | DH2200 | DELETED |  |  |  | DH1100 |  |  |  |  |  |  | CHILLER |  | TAS | L2 |  |  |  |  |  |  |
| DC1-CHWP-L2-Cx-2070 | **DELETED** DH2200 CHWP-1RT40-A22 L2 Checklist |  | 1d | 2026-06-17 A | 2026-07-15 A | QTS-1020 | 100% | 2026-06-24 | 2026-06-24 |  | Commissioning | DH2200 | DELETED |  |  |  | DH1100 |  |  |  |  |  |  | CHWP |  | LAY | L2 | CFCI |  |  |  |  |  |
| DC1-CHWP-L2-Cx-2080 | **DELETED** DH2200 CHWP-1RT40-B22 L2 Checklist |  | 1d | 2026-06-17 A | 2026-07-15 A | QTS-1020 | 100% | 2026-06-24 | 2026-06-24 |  | Commissioning | DH2200 | DELETED |  |  |  | DH1100 |  |  |  |  |  |  | CHWP |  | LAY | L2 | CFCI |  |  |  |  |  |
| DC1-CHWP-L2-Cx-2090 | **DELETED** DH2200 CHWP-1RT40-C22 L2 Checklist |  | 1d | 2026-06-17 A | 2026-07-15 A | QTS-1020 | 100% | 2026-06-24 | 2026-06-24 |  | Commissioning | DH2200 | DELETED |  |  |  | DH1100 |  |  |  |  |  |  | CHWP |  | LAY | L2 | CFCI |  |  |  |  |  |
| DC1-CHWP-L2-Cx-2100 | **DELETED** DH2200 CHWP-1RT40-D22 L2 Checklist |  | 1d | 2026-06-17 A | 2026-07-15 A | QTS-1020 | 100% | 2026-06-24 | 2026-06-24 |  | Commissioning | DH2200 | DELETED |  |  |  | DH1100 |  |  |  |  |  |  | CHWP |  | LAY | L2 | CFCI |  |  |  |  |  |
| DC1-CHWP-L2-Cx-2110 | **DELETED** DH2200 CHWP-1RT40-E22 L2 Checklist |  | 1d | 2026-06-17 A | 2026-07-15 A | QTS-1020 | 100% | 2026-06-24 | 2026-06-24 |  | Commissioning | DH2200 | DELETED |  |  |  | DH1100 |  |  |  |  |  |  | CHWP |  | LAY | L2 | CFCI |  |  |  |  |  |
| DC1-CHWP-L2-Cx-2120 | **DELETED** DH2200 CHWP-1RT40-F22 L2 Checklist |  | 1d | 2026-06-17 A | 2026-07-15 A | QTS-1020 | 100% | 2026-06-24 | 2026-06-24 |  | Commissioning | DH2200 | DELETED |  |  |  | DH1100 |  |  |  |  |  |  | CHWP |  | LAY | L2 | CFCI |  |  |  |  |  |
| DC1-CHWP-L2-Cx-2130 | **DELETED** DH2200 CHWP-1RT40-R22 L2 Checklist |  | 1d | 2026-06-17 A | 2026-07-15 A | QTS-1020 | 100% | 2026-06-24 | 2026-06-24 |  | Commissioning | DH2200 | DELETED |  |  |  | DH1100 |  |  |  |  |  |  | CHWP |  | LAY | L2 | CFCI |  |  |  |  |  |
| QTS-16081 | **DELETED** DH 1200 // Install Overhead Lighting |  | 10d | 2026-06-19 A | 2026-07-14 A | QTS-1020 | 100% | 2026-06-26 | 2026-07-09 | QTS-PHX3 DC1 - 6 day w/ Holidays | Electrical | DH1200 | DELETED |  | BAB |  | DH1100 |  | Construction | IGMP | Phase 2 | Construction |  |  | Oscar Armenta |  |  |  |  |  |  |  |  |
| QTS-46791 | **DELETED** DH 1300 / Electrical Gallery 1302 // Install OH Electrical, FA/ EPMS/BMS Conduit & Grounding |  | 10d | 2026-06-22 A | 2026-07-14 A | QTS-1020 | 100% | 2026-07-06 | 2026-07-16 | QTS-PHX3 DC1 - 6 day w/ Holidays | Electrical | DH1300 | DELETED |  | BAB |  | DH1100 |  | Construction | IGMP | Phase 1 | Construction | Level 1 |  | Oscar Armenta |  |  |  |  |  |  | 01ADMIN |  |
| QTS-1012250 | DH 1200 / Electrical Gallery 1202 // Pull Fiber from MDF to DCIM 1202 *Delete* |  | 3d | 2026-06-23 A | 2026-06-23 A | QTS-1371 | 100% | 2026-07-02 | 2026-07-07 | QTS-PHX3 DC1 - 6 day w/ Holidays | LV | DH1200 | DELETED |  |  |  | DH1100 |  | Construction | IGMP | Phase 2 | Construction |  |  | Low Voltage |  |  |  |  |  |  |  |  |
| QTS-16061 | **DELETED** DH 2200 // Install Overhead Lighting |  | 10d | 2026-06-23 A | 2026-07-14 A | QTS-1020 | 100% | 2026-07-10 | 2026-07-21 | QTS-PHX3 DC1 - 6 day w/ Holidays | Electrical | DH2200 | DELETED |  | BAB |  | DH1100 |  | Construction | IGMP | Phase 2 | Construction |  |  | Oscar Armenta |  |  |  |  |  |  |  |  |
| QTS-18521 | **DELETED** DH 2200 / Electrical Gallery 2202 // Terminate Panels |  | 6d | 2026-06-23 A | 2026-07-14 A | QTS-1020 | 100% | 2026-06-30 | 2026-07-08 | QTS-PHX3 DC1 - 6 day w/ Holidays | Electrical | DH2200 | DELETED |  | BAB |  | DH1100 |  | Construction | IGMP | Phase 2 | Construction |  |  | Oscar Armenta |  |  |  |  |  |  |  |  |
| QTS-18531 | **DELETED** DH 1200 / Electrical Gallery 1202 // Terminate Panels |  | 5d | 2026-06-23 A | 2026-07-14 A | QTS-1020 | 100% | 2026-06-27 | 2026-07-02 | QTS-PHX3 DC1 - 6 day w/ Holidays | Electrical | DH1200 | DELETED |  | BAB |  | DH1100 |  | Construction | IGMP | Phase 2 | Construction |  |  | Oscar Armenta |  |  |  |  |  |  |  |  |
| QTS-13941 | **DELETED** DH 1300 // Install Telecom Sleeves |  | 3d | 2026-06-24 A | 2026-07-14 A | QTS-1020 | 100% | 2026-06-24 | 2026-06-26 | QTS-PHX3 DC1 - 6 day w/ Holidays | Electrical | DH1300 | DELETED |  | BAB |  | DH1100 |  | Construction | IGMP | Phase 3 | Construction |  |  | Oscar Armenta |  |  |  |  |  |  |  |  |
| QTS-15011 | **DELETED** Gallery 1302 / Lineup A1300 // Install Raceways from LV POD to COD |  | 7d | 2026-06-24 A | 2026-07-14 A | QTS-1020 | 100% | 2026-07-01 | 2026-07-10 | QTS-PHX3 DC1 - 6 day w/ Holidays | LV | DH1300 | DELETED |  | BAB |  | DH1100 |  | Construction | IGMP | Phase 3 | Construction |  |  | Oscar Armenta |  |  |  |  |  |  |  |  |
| QTS-15351 | ** DELETE ** East Elevation // Hang Soffit Sheathing |  | 4d | 2026-06-24 A | 2026-06-30 A | QTS-1020 | 100% | 2026-07-02 | 2026-07-08 |  | Deleted |  | DELETED |  |  |  | DH1100 |  | Construction | IGMP |  |  |  |  | Freddy Arrizon |  |  |  |  | Phase 3 |  |  |  |
| QTS-16001 | ** DELETE ** East Elevation // Install ISO Board |  | 3d | 2026-06-24 A | 2026-06-30 A | QTS-1020 | 100% | 2026-07-09 | 2026-07-13 |  | Deleted |  | DELETED |  |  |  | DH1100 |  | Construction | IGMP |  |  |  |  | Freddy Arrizon |  |  |  |  | Phase 3 |  |  |  |
| QTS-16631 | ** DELETE ** East Elevation // Field Scan For Soffit Panels |  | 1d | 2026-06-24 A | 2026-06-30 A | QTS-1020 | 100% | 2026-07-14 | 2026-07-14 |  | Deleted |  | DELETED |  |  |  | DH1100 |  | Construction | IGMP |  |  |  |  | Freddy Arrizon |  |  |  |  | Phase 3 |  |  |  |
| QTS-18231 | ** DELETE ** East Elevation // Install Soffit Panels |  | 5d | 2026-06-24 A | 2026-06-30 A | QTS-1020 | 100% | 2026-07-09 | 2026-07-15 |  | Deleted |  | DELETED |  |  |  | DH1100 |  | Construction | IGMP |  |  |  |  | Freddy Arrizon |  |  |  |  | Phase 3 |  |  |  |

Notes:
- QTS-1011920: Schedule Note: 5/20 - Activity was actaulized when work has not started. Activity was deleted and a duplicate was created to properly track progress
- QTS-1130.A40: Schedule Note: 6/11 - Delete as new milestone was created to track progress
- QTS-1130.A50: Schedule Note: 6/11 - Delete as new milestone was created to track progress
- DC1-CHLR-L2-1070: Steps: EC Installation Checklist (done); GC Installation Checklist (done); CC Installation Checklist (done); Vendor Pre-Energization Checklist (done); CXA Pre-Energization Inspection; PEI/Clean-Walk
- DC1-CHLR-L2-1080: Steps: EC Installation Checklist (done); GC Installation Checklist; CC Installation Checklist (done); Vendor Pre-Energization Checklist; CXA Pre-Energization Inspection; PEI/Clean-Walk
- DC1-CHLR-L2-1090: Steps: EC Installation Checklist (done); MC Installation Checklist; CC Installation Checklist (done); GC Installation Checklist; Vendor Pre-Energization Checklist; CXA Pre-Energization Inspection; PEI/Clean-Walk
- DC1-CHLR-L2-1100: Steps: EC Installation Checklist (done); MC Installation Checklist; CC Installation Checklist (done); GC Installation Checklist; Vendor Pre-Energization Checklist; CXA Pre-Energization Inspection; PEI/Clean-Walk
- DC1-CHLR-L2-1110: Steps: EC Installation Checklist (done); MC Installation Checklist; CC Installation Checklist (done); Vendor Pre-Energization Checklist (done); GC Installation Checklist (done); CXA Pre-Energization Inspection; PEI/Clean-Walk
- DC1-CHLR-L2-1120: Steps: EC Installation Checklist (done); MC Installation Checklist; CC Installation Checklist (done); Vendor Pre-Energization Checklist (done); GC Installation Checklist (done); CXA Pre-Energization Inspection; PEI/Clean-Walk
- DC1-CHLR-L2-1130: Steps: EC Installation Checklist (done); MC Installation Checklist; CC Installation Checklist (done); Vendor Pre-Energization Checklist; GC Installation Checklist; CXA Pre-Energization Inspection; PEI/Clean-Walk
- DC1-CHWP-L2-Cx-2070: Steps: EC Installation Checklist; MC Installation Checklist (done); CC Installation Checklist (done); Vendor Pre-Energization Checklist (done); CXA Pre-Energization Inspection; PEI/Clean-Walk
- DC1-CHWP-L2-Cx-2080: Steps: EC Installation Checklist; MC Installation Checklist (done); CC Installation Checklist (done); Vendor Pre-Energization Checklist (done); CXA Pre-Energization Inspection; PEI/Clean-Walk
- DC1-CHWP-L2-Cx-2090: Steps: EC Installation Checklist; MC Installation Checklist (done); CC Installation Checklist (done); Vendor Pre-Energization Checklist (done); CXA Pre-Energization Inspection; PEI/Clean-Walk
- DC1-CHWP-L2-Cx-2100: Steps: EC Installation Checklist; MC Installation Checklist (done); CC Installation Checklist (done); Vendor Pre-Energization Checklist (done); CXA Pre-Energization Inspection; PEI/Clean-Walk
- DC1-CHWP-L2-Cx-2110: Steps: EC Installation Checklist; MC Installation Checklist (done); CC Installation Checklist (done); Vendor Pre-Energization Checklist (done); CXA Pre-Energization Inspection; PEI/Clean-Walk
- DC1-CHWP-L2-Cx-2120: Steps: EC Installation Checklist; MC Installation Checklist (done); CC Installation Checklist (done); Vendor Pre-Energization Checklist (done); CXA Pre-Energization Inspection; PEI/Clean-Walk
- DC1-CHWP-L2-Cx-2130: Steps: EC Installation Checklist; MC Installation Checklist (done); CC Installation Checklist (done); Vendor Pre-Energization Checklist (done); CXA Pre-Energization Inspection; PEI/Clean-Walk

| ID | Activity | Duration | Start | Finish | Predecessors | Complete | Planned start | Planned finish | Vendor Responsible Party | Layton Discipline | Location | CX Level | Equipment | DELETED | D | Notes |
| --- | --- | --- | --- | --- | --- | --- | --- | --- | --- | --- | --- | --- | --- | --- | --- | --- |
| DC1-CDU-L2-1000 | **DELETED** CDU-DH2100-01 L2 Checklist | 3d | 2026-06-25 A | 2026-07-14 A | QTS-1020 | 100% | 2026-06-30 | 2026-07-02 | VER | Commissioning | DH2100 | L2 | CDU | DELETED | DH1100 |  |
| DC1-CDU-L2-1010 | **DELETED** CDU-DH2100-02 L2 Checklist | 3d | 2026-06-25 A | 2026-07-14 A | QTS-1020 | 100% | 2026-06-30 | 2026-07-02 | VER | Commissioning | DH2100 | L2 | CDU | DELETED | DH1100 |  |
| DC1-CDU-L2-1020 | **DELETED** CDU-DH2100-03 L2 Checklist | 3d | 2026-06-25 A | 2026-07-14 A | QTS-1020 | 100% | 2026-06-30 | 2026-07-02 | VER | Commissioning | DH2100 | L2 | CDU | DELETED | DH1100 |  |
| DC1-CDU-L2-1030 | **DELETED** CDU-DH2100-04 L2 Checklist | 3d | 2026-06-25 A | 2026-07-14 A | QTS-1020 | 100% | 2026-07-08 | 2026-07-10 | VER | Commissioning | DH2100 | L2 | CDU | DELETED | DH1100 |  |
| DC1-CDU-L2-1040 | **DELETED** CDU-DH2100-05 L2 Checklist | 3d | 2026-06-25 A | 2026-07-14 A | QTS-1020 | 100% | 2026-07-08 | 2026-07-10 | VER | Commissioning | DH2100 | L2 | CDU | DELETED | DH1100 |  |
| DC1-CDU-L2-1050 | **DELETED** CDU-DH2100-06 L2 Checklist | 3d | 2026-06-25 A | 2026-07-14 A | QTS-1020 | 100% | 2026-07-08 | 2026-07-10 | VER | Commissioning | DH2100 | L2 | CDU | DELETED | DH1100 |  |
| DC1-CDU-L2-1070 | **DELETED** CDU-DH2100-07 L2 Checklist | 3d | 2026-06-25 A | 2026-07-14 A | QTS-1020 | 100% | 2026-06-30 | 2026-07-02 | VER | Commissioning | DH2100 | L2 | CDU | DELETED | DH1100 |  |
| DC1-CDU-L2-1080 | **DELETED** CDU-DH2100-08 L2 Checklist | 3d | 2026-06-25 A | 2026-07-14 A | QTS-1020 | 100% | 2026-06-30 | 2026-07-02 | VER | Commissioning | DH2100 | L2 | CDU | DELETED | DH1100 |  |
| DC1-CDU-L2-1090 | **DELETED** CDU-DH2100-09 L2 Checklist | 3d | 2026-06-25 A | 2026-07-14 A | QTS-1020 | 100% | 2026-06-30 | 2026-07-02 | VER | Commissioning | DH2100 | L2 | CDU | DELETED | DH1100 |  |
| DC1-CDU-L2-1100 | **DELETED** CDU-DH2100-10 L2 Checklist | 3d | 2026-06-25 A | 2026-07-14 A | QTS-1020 | 100% | 2026-07-08 | 2026-07-10 | VER | Commissioning | DH2100 | L2 | CDU | DELETED | DH1100 |  |
| DC1-CDU-L2-1110 | **DELETED** CDU-DH2100-11 L2 Checklist | 3d | 2026-06-25 A | 2026-07-14 A | QTS-1020 | 100% | 2026-07-08 | 2026-07-10 | VER | Commissioning | DH2100 | L2 | CDU | DELETED | DH1100 |  |
| DC1-CDU-L2-1120 | **DELETED** CDU-DH2100-12 L2 Checklist | 3d | 2026-06-25 A | 2026-07-14 A | QTS-1020 | 100% | 2026-07-08 | 2026-07-10 | VER | Commissioning | DH2100 | L2 | CDU | DELETED | DH1100 |  |
| DC1-CDU-L2-1140 | **DELETED** CDU-DH2100-13 L2 Checklist | 3d | 2026-06-25 A | 2026-07-14 A | QTS-1020 | 100% | 2026-06-30 | 2026-07-02 | VER | Commissioning | DH2100 | L2 | CDU | DELETED | DH1100 |  |
| DC1-CDU-L2-1150 | **DELETED** CDU-DH2100-14 L2 Checklist | 3d | 2026-06-25 A | 2026-07-14 A | QTS-1020 | 100% | 2026-06-30 | 2026-07-02 | VER | Commissioning | DH2100 | L2 | CDU | DELETED | DH1100 |  |
| DC1-CDU-L2-1160 | **DELETED** CDU-DH2100-15 L2 Checklist | 3d | 2026-06-25 A | 2026-07-14 A | QTS-1020 | 100% | 2026-06-30 | 2026-07-02 | VER | Commissioning | DH2100 | L2 | CDU | DELETED | DH1100 |  |
| DC1-CDU-L2-1170 | **DELETED** CDU-DH2100-16 L2 Checklist | 3d | 2026-06-25 A | 2026-07-14 A | QTS-1020 | 100% | 2026-07-08 | 2026-07-10 | VER | Commissioning | DH2100 | L2 | CDU | DELETED | DH1100 |  |
| DC1-CDU-L2-1180 | **DELETED** CDU-DH2100-17 L2 Checklist | 3d | 2026-06-25 A | 2026-07-14 A | QTS-1020 | 100% | 2026-07-08 | 2026-07-10 | VER | Commissioning | DH2100 | L2 | CDU | DELETED | DH1100 |  |
| DC1-CDU-L2-1190 | **DELETED** CDU-DH2100-18 L2 Checklist | 3d | 2026-06-25 A | 2026-07-14 A | QTS-1020 | 100% | 2026-07-08 | 2026-07-10 | VER | Commissioning | DH2100 | L2 | CDU | DELETED | DH1100 |  |
| DC1-ATS-L2-2360 | **DELETED** DH2200 ATS-A22-01 L2 Checklist | 1d | 2026-06-26 A | 2026-07-14 A | QTS-1020 | 100% | 2026-07-06 | 2026-07-06 | MAV | Commissioning | DH2200 | L2 | ATS | DELETED | DH1100 |  |
| DC1-ATS-L2-2370 | **DELETED** DH2200 ATS-A22-02 L2 Checklist | 1d | 2026-06-26 A | 2026-07-14 A | QTS-1020 | 100% | 2026-07-06 | 2026-07-06 | MAV | Commissioning | DH2200 | L2 | ATS | DELETED | DH1100 |  |
| DC1-ATS-L2-2380 | **DELETED** DH2200 ATS-A22-03 L2 Checklist | 1d | 2026-06-26 A | 2026-07-14 A | QTS-1020 | 100% | 2026-07-06 | 2026-07-06 | MAV | Commissioning | DH2200 | L2 | ATS | DELETED | DH1100 |  |
| DC1-ATS-L2-2390 | **DELETED** DH2200 ATS-A22-04 L2 Checklist | 1d | 2026-06-26 A | 2026-07-14 A | QTS-1020 | 100% | 2026-07-06 | 2026-07-06 | MAV | Commissioning | DH2200 | L2 | ATS | DELETED | DH1100 |  |
| DC1-ATS-L2-2400 | **DELETED** DH2200 ATS-A22-05 L2 Checklist | 1d | 2026-06-26 A | 2026-07-14 A | QTS-1020 | 100% | 2026-07-06 | 2026-07-06 | MAV | Commissioning | DH2200 | L2 | ATS | DELETED | DH1100 |  |
| DC1-ATS-L2-2410 | **DELETED** DH2200 ATS-A22-06 L2 Checklist | 1d | 2026-06-26 A | 2026-07-14 A | QTS-1020 | 100% | 2026-07-06 | 2026-07-06 | MAV | Commissioning | DH2200 | L2 | ATS | DELETED | DH1100 |  |
| DC1-ATS-L2-2420 | **DELETED** DH2200 ATS-B22-01 L2 Checklist | 1d | 2026-06-26 A | 2026-07-14 A | QTS-1020 | 100% | 2026-07-06 | 2026-07-06 | MAV | Commissioning | DH2200 | L2 | ATS | DELETED | DH1100 |  |
| DC1-ATS-L2-2430 | **DELETED** DH2200 ATS-B22-02 L2 Checklist | 1d | 2026-06-26 A | 2026-07-14 A | QTS-1020 | 100% | 2026-07-06 | 2026-07-06 | MAV | Commissioning | DH2200 | L2 | ATS | DELETED | DH1100 |  |
| DC1-ATS-L2-2440 | **DELETED** DH2200 ATS-B22-03 L2 Checklist | 1d | 2026-06-26 A | 2026-07-14 A | QTS-1020 | 100% | 2026-07-06 | 2026-07-06 | MAV | Commissioning | DH2200 | L2 | ATS | DELETED | DH1100 |  |
| DC1-ATS-L2-2450 | **DELETED** DH2200 ATS-B22-04 L2 Checklist | 1d | 2026-06-26 A | 2026-07-14 A | QTS-1020 | 100% | 2026-07-06 | 2026-07-06 | MAV | Commissioning | DH2200 | L2 | ATS | DELETED | DH1100 |  |
| DC1-ATS-L2-2460 | **DELETED** DH2200 ATS-B22-05 L2 Checklist | 1d | 2026-06-26 A | 2026-07-14 A | QTS-1020 | 100% | 2026-07-06 | 2026-07-06 | MAV | Commissioning | DH2200 | L2 | ATS | DELETED | DH1100 |  |
| DC1-ATS-L2-2470 | **DELETED** DH2200 ATS-B22-06 L2 Checklist | 1d | 2026-06-26 A | 2026-07-14 A | QTS-1020 | 100% | 2026-07-06 | 2026-07-06 | MAV | Commissioning | DH2200 | L2 | ATS | DELETED | DH1100 |  |
| DC1-ATS-L2-2480 | **DELETED** DH2200 ATS-C22-01 L2 Checklist | 1d | 2026-06-26 A | 2026-07-14 A | QTS-1020 | 100% | 2026-07-06 | 2026-07-06 | MAV | Commissioning | DH2200 | L2 | ATS | DELETED | DH1100 |  |
| DC1-ATS-L2-2490 | **DELETED** DH2200 ATS-C22-02 L2 Checklist | 1d | 2026-06-26 A | 2026-07-14 A | QTS-1020 | 100% | 2026-07-06 | 2026-07-06 | MAV | Commissioning | DH2200 | L2 | ATS | DELETED | DH1100 |  |
| DC1-ATS-L2-2500 | **DELETED** DH2200 ATS-C22-03 L2 Checklist | 1d | 2026-06-26 A | 2026-07-14 A | QTS-1020 | 100% | 2026-07-06 | 2026-07-06 | MAV | Commissioning | DH2200 | L2 | ATS | DELETED | DH1100 |  |
| DC1-ATS-L2-2510 | **DELETED** DH2200 ATS-C22-04 L2 Checklist | 1d | 2026-06-26 A | 2026-07-14 A | QTS-1020 | 100% | 2026-07-06 | 2026-07-06 | MAV | Commissioning | DH2200 | L2 | ATS | DELETED | DH1100 |  |
| DC1-ATS-L2-2520 | **DELETED** DH2200 ATS-C22-05 L2 Checklist | 1d | 2026-06-26 A | 2026-07-14 A | QTS-1020 | 100% | 2026-07-06 | 2026-07-06 | MAV | Commissioning | DH2200 | L2 | ATS | DELETED | DH1100 |  |
| DC1-ATS-L2-2530 | **DELETED** DH2200 ATS-C22-06 L2 Checklist | 1d | 2026-06-26 A | 2026-07-14 A | QTS-1020 | 100% | 2026-07-06 | 2026-07-06 | MAV | Commissioning | DH2200 | L2 | ATS | DELETED | DH1100 |  |
| DC1-ATS-L2-2540 | **DELETED** DH2200 ATS-D22-01 L2 Checklist | 1d | 2026-06-26 A | 2026-07-14 A | QTS-1020 | 100% | 2026-07-06 | 2026-07-06 | MAV | Commissioning | DH2200 | L2 | ATS | DELETED | DH1100 |  |
| DC1-ATS-L2-2550 | **DELETED** DH2200 ATS-D22-02 L2 Checklist | 1d | 2026-06-26 A | 2026-07-14 A | QTS-1020 | 100% | 2026-07-06 | 2026-07-06 | MAV | Commissioning | DH2200 | L2 | ATS | DELETED | DH1100 |  |
| DC1-ATS-L2-2560 | **DELETED** DH2200 ATS-D22-03 L2 Checklist | 1d | 2026-06-26 A | 2026-07-14 A | QTS-1020 | 100% | 2026-07-06 | 2026-07-06 | MAV | Commissioning | DH2200 | L2 | ATS | DELETED | DH1100 |  |
| DC1-ATS-L2-2570 | **DELETED** DH2200 ATS-D22-04 L2 Checklist | 1d | 2026-06-26 A | 2026-07-14 A | QTS-1020 | 100% | 2026-07-06 | 2026-07-06 | MAV | Commissioning | DH2200 | L2 | ATS | DELETED | DH1100 |  |
| DC1-ATS-L2-2580 | **DELETED** DH2200 ATS-D22-05 L2 Checklist | 1d | 2026-06-26 A | 2026-07-14 A | QTS-1020 | 100% | 2026-07-06 | 2026-07-06 | MAV | Commissioning | DH2200 | L2 | ATS | DELETED | DH1100 |  |
| DC1-ATS-L2-2590 | **DELETED** DH2200 ATS-D22-06 L2 Checklist | 1d | 2026-06-26 A | 2026-07-14 A | QTS-1020 | 100% | 2026-07-06 | 2026-07-06 | MAV | Commissioning | DH2200 | L2 | ATS | DELETED | DH1100 |  |
| DC1-ATS-L2-2600 | **DELETED** DH2200 ATS-E22-01 L2 Checklist | 1d | 2026-06-26 A | 2026-07-14 A | QTS-1020 | 100% | 2026-07-06 | 2026-07-06 | MAV | Commissioning | DH2200 | L2 | ATS | DELETED | DH1100 |  |
| DC1-ATS-L2-2610 | **DELETED** DH2200 ATS-E22-02 L2 Checklist | 1d | 2026-06-26 A | 2026-07-14 A | QTS-1020 | 100% | 2026-07-06 | 2026-07-06 | MAV | Commissioning | DH2200 | L2 | ATS | DELETED | DH1100 |  |
| DC1-ATS-L2-2620 | **DELETED** DH2200 ATS-E22-03 L2 Checklist | 1d | 2026-06-26 A | 2026-07-14 A | QTS-1020 | 100% | 2026-07-06 | 2026-07-06 | MAV | Commissioning | DH2200 | L2 | ATS | DELETED | DH1100 |  |
| DC1-ATS-L2-2630 | **DELETED** DH2200 ATS-E22-04 L2 Checklist | 1d | 2026-06-26 A | 2026-07-14 A | QTS-1020 | 100% | 2026-07-06 | 2026-07-06 | MAV | Commissioning | DH2200 | L2 | ATS | DELETED | DH1100 |  |
| DC1-ATS-L2-2640 | **DELETED** DH2200 ATS-E22-05 L2 Checklist | 1d | 2026-06-26 A | 2026-07-14 A | QTS-1020 | 100% | 2026-07-06 | 2026-07-06 | MAV | Commissioning | DH2200 | L2 | ATS | DELETED | DH1100 |  |
| DC1-ATS-L2-2650 | **DELETED** DH2200 ATS-E22-06 L2 Checklist | 1d | 2026-06-26 A | 2026-07-14 A | QTS-1020 | 100% | 2026-07-06 | 2026-07-06 | MAV | Commissioning | DH2200 | L2 | ATS | DELETED | DH1100 |  |
| DC1-ATS-L2-2660 | **DELETED** DH2200 ATS-F22-01 L2 Checklist | 1d | 2026-06-26 A | 2026-07-14 A | QTS-1020 | 100% | 2026-07-06 | 2026-07-06 | MAV | Commissioning | DH2200 | L2 | ATS | DELETED | DH1100 |  |
| DC1-ATS-L2-2670 | **DELETED** DH2200 ATS-F22-02 L2 Checklist | 1d | 2026-06-26 A | 2026-07-14 A | QTS-1020 | 100% | 2026-07-06 | 2026-07-06 | MAV | Commissioning | DH2200 | L2 | ATS | DELETED | DH1100 |  |
| DC1-ATS-L2-2680 | **DELETED** DH2200 ATS-F22-03 L2 Checklist | 1d | 2026-06-26 A | 2026-07-14 A | QTS-1020 | 100% | 2026-07-06 | 2026-07-06 | MAV | Commissioning | DH2200 | L2 | ATS | DELETED | DH1100 |  |
| DC1-ATS-L2-2690 | **DELETED** DH2200 ATS-F22-04 L2 Checklist | 1d | 2026-06-26 A | 2026-07-14 A | QTS-1020 | 100% | 2026-07-06 | 2026-07-06 | MAV | Commissioning | DH2200 | L2 | ATS | DELETED | DH1100 |  |
| DC1-ATS-L2-2700 | **DELETED** DH2200 ATS-F22-05 L2 Checklist | 1d | 2026-06-26 A | 2026-07-14 A | QTS-1020 | 100% | 2026-07-06 | 2026-07-06 | MAV | Commissioning | DH2200 | L2 | ATS | DELETED | DH1100 |  |
| DC1-ATS-L2-2710 | **DELETED** DH2200 ATS-F22-06 L2 Checklist | 1d | 2026-06-26 A | 2026-07-14 A | QTS-1020 | 100% | 2026-07-06 | 2026-07-06 | MAV | Commissioning | DH2200 | L2 | ATS | DELETED | DH1100 |  |
| DC1-BUS-L2-1020 | **DELETED** DH2200 BUS-R2 (R22) MAINTENANCE BUS Duct L2 Checklist | 3d | 2026-06-29 A | 2026-07-17 A | QTS-1020 | 100% | 2026-06-29 | 2026-07-01 | LAY | Commissioning | DH2200 | L2 | BUS DUCT | DELETED | DH1100 | CFCI - Bus duct complete (PRED) |
| DC1-BUS-L2-1040 | **DELETED** DH1200 BUS-R1 (R22) CATCHER BUS Duct L2 Checklist | 3d | 2026-06-29 A | 2026-07-17 A | QTS-1020 | 100% | 2026-06-29 | 2026-07-01 | LAY | Commissioning | DH1200 | L2 | BUS DUCT | DELETED | DH1100 | CFCI - Bus duct complete (PRED) |
| DC1-CRAH-L2-2320 | **DELETED** DH2200 CRAH-DH-01 L2 Checklist | 3d | 2026-06-29 A | 2026-07-16 A | QTS-1020 | 100% | 2026-06-29 | 2026-07-01 | UMAS | Commissioning | DH2200 | L2 | DH CRAH | DELETED | DH1100 |  |
| DC1-CRAH-L2-2330 | **DELETED** DH2200 CRAH-DH-02 L2 Checklist | 3d | 2026-06-29 A | 2026-07-16 A | QTS-1020 | 100% | 2026-06-29 | 2026-07-01 | UMAS | Commissioning | DH2200 | L2 | DH CRAH | DELETED | DH1100 |  |
| DC1-CRAH-L2-2340 | **DELETED** DH2200 CRAH-DH-03 L2 Checklist | 3d | 2026-06-29 A | 2026-07-16 A | QTS-1020 | 100% | 2026-06-29 | 2026-07-01 | UMAS | Commissioning | DH2200 | L2 | DH CRAH | DELETED | DH1100 |  |
| DC1-CRAH-L2-2350 | **DELETED** DH2200 CRAH-DH-04 L2 Checklist | 3d | 2026-06-29 A | 2026-07-16 A | QTS-1020 | 100% | 2026-06-29 | 2026-07-01 | UMAS | Commissioning | DH2200 | L2 | DH CRAH | DELETED | DH1100 |  |
| DC1-CRAH-L2-2360 | **DELETED** DH2200 CRAH-DH-05 L2 Checklist | 3d | 2026-06-29 A | 2026-07-16 A | QTS-1020 | 100% | 2026-06-29 | 2026-07-01 | UMAS | Commissioning | DH2200 | L2 | DH CRAH | DELETED | DH1100 |  |
| DC1-CRAH-L2-2370 | **DELETED** DH2200 CRAH-DH-06 L2 Checklist | 3d | 2026-06-29 A | 2026-07-16 A | QTS-1020 | 100% | 2026-06-29 | 2026-07-01 | UMAS | Commissioning | DH2200 | L2 | DH CRAH | DELETED | DH1100 |  |
| DC1-CRAH-L2-2380 | **DELETED** DH2200 CRAH-DH-07 L2 Checklist | 3d | 2026-06-29 A | 2026-07-16 A | QTS-1020 | 100% | 2026-06-29 | 2026-07-01 | UMAS | Commissioning | DH2200 | L2 | DH CRAH | DELETED | DH1100 |  |
| DC1-CRAH-L2-2390 | **DELETED** DH2200 CRAH-DH-08 L2 Checklist | 3d | 2026-06-29 A | 2026-07-16 A | QTS-1020 | 100% | 2026-06-29 | 2026-07-01 | UMAS | Commissioning | DH2200 | L2 | DH CRAH | DELETED | DH1100 |  |
| DC1-CRAH-L2-2400 | **DELETED** DH2200 CRAH-DH-09 L2 Checklist | 3d | 2026-06-29 A | 2026-07-16 A | QTS-1020 | 100% | 2026-06-29 | 2026-07-01 | UMAS | Commissioning | DH2200 | L2 | DH CRAH | DELETED | DH1100 |  |
| DC1-CRAH-L2-2410 | **DELETED** DH2200 CRAH-DH-10 L2 Checklist | 3d | 2026-06-29 A | 2026-07-16 A | QTS-1020 | 100% | 2026-06-29 | 2026-07-01 | UMAS | Commissioning | DH2200 | L2 | DH CRAH | DELETED | DH1100 |  |
| DC1-CRAH-L2-2420 | **DELETED** DH2200 CRAH-DH-11 L2 Checklist | 3d | 2026-06-29 A | 2026-07-16 A | QTS-1020 | 100% | 2026-06-29 | 2026-07-01 | UMAS | Commissioning | DH2200 | L2 | DH CRAH | DELETED | DH1100 |  |
| DC1-CRAH-L2-2430 | **DELETED** DH2200 CRAH-DH-12 L2 Checklist | 3d | 2026-06-29 A | 2026-07-16 A | QTS-1020 | 100% | 2026-06-29 | 2026-07-01 | UMAS | Commissioning | DH2200 | L2 | DH CRAH | DELETED | DH1100 |  |
| DC1-CRAH-L2-2440 | **DELETED** DH2200 CRAH-DH-13 L2 Checklist | 3d | 2026-06-29 A | 2026-07-16 A | QTS-1020 | 100% | 2026-06-29 | 2026-07-01 | UMAS | Commissioning | DH2200 | L2 | DH CRAH | DELETED | DH1100 |  |
| DC1-CRAH-L2-2450 | **DELETED** DH2200 CRAH-DH-14 L2 Checklist | 3d | 2026-06-29 A | 2026-07-16 A | QTS-1020 | 100% | 2026-06-29 | 2026-07-01 | UMAS | Commissioning | DH2200 | L2 | DH CRAH | DELETED | DH1100 |  |

Notes:
- DC1-CDU-L2-1000: Steps: EC Installation Checklist (done); MC Installation Checklist; CC Installation Checklist (done); GC Installation Checklist; Vendor Pre-Energization Checklist (done); CXA Pre-Energization Inspection; PEI/Clean-Walk
- DC1-CDU-L2-1010: Steps: EC Installation Checklist (done); MC Installation Checklist; CC Installation Checklist (done); GC Installation Checklist; Vendor Pre-Energization Checklist (done); CXA Pre-Energization Inspection; PEI/Clean-Walk
- DC1-CDU-L2-1020: Steps: EC Installation Checklist (done); CC Installation Checklist; MC Installation Checklist (done); GC Installation Checklist; Vendor Pre-Energization Checklist (done); CXA Pre-Energization Inspection; PEI/Clean-Walk
- DC1-CDU-L2-1030: Steps: EC Installation Checklist (done); MC Installation Checklist; CC Installation Checklist (done); Vendor Pre-Energization Checklist (done); GC Installation Checklist; CXA Pre-Energization Inspection; PEI/Clean-Walk
- DC1-CDU-L2-1040: Steps: EC Installation Checklist (done); MC Installation Checklist; CC Installation Checklist (done); Vendor Pre-Energization Checklist (done); GC Installation Checklist; CXA Pre-Energization Inspection; PEI/Clean-Walk
- DC1-CDU-L2-1050: Steps: EC Installation Checklist (done); MC Installation Checklist; CC Installation Checklist (done); Vendor Pre-Energization Checklist (done); GC Installation Checklist; CXA Pre-Energization Inspection; PEI/Clean-Walk
- DC1-CDU-L2-1070: Steps: EC Installation Checklist (done); MC Installation Checklist; CC Installation Checklist (done); Vendor Pre-Energization Checklist (done); GC Installation Checklist; CXA Pre-Energization Inspection; PEI/Clean-Walk
- DC1-CDU-L2-1080: Steps: EC Installation Checklist (done); MC Installation Checklist; CC Installation Checklist (done); Vendor Pre-Energization Checklist (done); GC Installation Checklist; CXA Pre-Energization Inspection; PEI/Clean-Walk
- DC1-CDU-L2-1090: Steps: EC Installation Checklist (done); MC Installation Checklist; CC Installation Checklist (done); Vendor Pre-Energization Checklist (done); GC Installation Checklist; CXA Pre-Energization Inspection; PEI/Clean-Walk
- DC1-CDU-L2-1100: Steps: EC Installation Checklist (done); MC Installation Checklist; CC Installation Checklist; Vendor Pre-Energization Checklist (done); GC Installation Checklist; CXA Pre-Energization Inspection; PEI/Clean-Walk
- DC1-CDU-L2-1110: Steps: EC Installation Checklist (done); MC Installation Checklist; CC Installation Checklist (done); Vendor Pre-Energization Checklist (done); GC Installation Checklist; CXA Pre-Energization Inspection; PEI/Clean-Walk
- DC1-CDU-L2-1120: Steps: EC Installation Checklist (done); MC Installation Checklist; CC Installation Checklist (done); Vendor Pre-Energization Checklist (done); GC Installation Checklist; CXA Pre-Energization Inspection; PEI/Clean-Walk
- DC1-CDU-L2-1140: Steps: EC Installation Checklist (done); MC Installation Checklist; CC Installation Checklist (done); Vendor Pre-Energization Checklist (done); GC Installation Checklist; CXA Pre-Energization Inspection; PEI/Clean-Walk
- DC1-CDU-L2-1150: Steps: EC Installation Checklist (done); MC Installation Checklist; CC Installation Checklist (done); Vendor Pre-Energization Checklist (done); GC Installation Checklist; CXA Pre-Energization Inspection; PEI/Clean-Walk
- DC1-CDU-L2-1160: Steps: EC Installation Checklist (done); MC Installation Checklist; CC Installation Checklist (done); Vendor Pre-Energization Checklist (done); GC Installation Checklist; CXA Pre-Energization Inspection; PEI/Clean-Walk
- DC1-CDU-L2-1170: Steps: EC Installation Checklist (done); MC Installation Checklist; CC Installation Checklist (done); Vendor Pre-Energization Checklist (done); GC Installation Checklist; CXA Pre-Energization Inspection; PEI/Clean-Walk
- DC1-CDU-L2-1180: Steps: EC Installation Checklist (done); MC Installation Checklist; CC Installation Checklist (done); Vendor Pre-Energization Checklist (done); GC Installation Checklist; CXA Pre-Energization Inspection; PEI/Clean-Walk
- DC1-CDU-L2-1190: Steps: EC Installation Checklist (done); MC Installation Checklist; CC Installation Checklist (done); Vendor Pre-Energization Checklist (done); GC Installation Checklist; CXA Pre-Energization Inspection; PEI/Clean-Walk
- DC1-ATS-L2-2360: Steps: EC Installation Checklist (done); CC Installation Checklist (done); Vendor Pre-Energization Checklist (done); CXA Pre-Energization Inspection; PEI/Clean-Walk
- DC1-ATS-L2-2370: Steps: EC Installation Checklist (done); CC Installation Checklist (done); Vendor Pre-Energization Checklist (done); CXA Pre-Energization Inspection; PEI/Clean-Walk
- DC1-ATS-L2-2380: Steps: EC Installation Checklist (done); CC Installation Checklist (done); Vendor Pre-Energization Checklist (done); CXA Pre-Energization Inspection; PEI/Clean-Walk
- DC1-ATS-L2-2390: Steps: EC Installation Checklist (done); CC Installation Checklist (done); Vendor Pre-Energization Checklist (done); CXA Pre-Energization Inspection; PEI/Clean-Walk
- DC1-ATS-L2-2400: Steps: EC Installation Checklist (done); CC Installation Checklist (done); Vendor Pre-Energization Checklist (done); CXA Pre-Energization Inspection; PEI/Clean-Walk
- DC1-ATS-L2-2410: Steps: EC Installation Checklist (done); CC Installation Checklist (done); Vendor Pre-Energization Checklist (done); CXA Pre-Energization Inspection; PEI/Clean-Walk
- DC1-ATS-L2-2420: Steps: EC Installation Checklist (done); CC Installation Checklist (done); Vendor Pre-Energization Checklist (done); CXA Pre-Energization Inspection; PEI/Clean-Walk
- DC1-ATS-L2-2430: Steps: EC Installation Checklist (done); CC Installation Checklist (done); Vendor Pre-Energization Checklist (done); CXA Pre-Energization Inspection; PEI/Clean-Walk
- DC1-ATS-L2-2440: Steps: EC Installation Checklist (done); CC Installation Checklist (done); Vendor Pre-Energization Checklist (done); CXA Pre-Energization Inspection; PEI/Clean-Walk
- DC1-ATS-L2-2450: Steps: EC Installation Checklist (done); CC Installation Checklist (done); Vendor Pre-Energization Checklist (done); CXA Pre-Energization Inspection; PEI/Clean-Walk
- DC1-ATS-L2-2460: Steps: EC Installation Checklist (done); CC Installation Checklist (done); Vendor Pre-Energization Checklist (done); CXA Pre-Energization Inspection; PEI/Clean-Walk
- DC1-ATS-L2-2470: Steps: EC Installation Checklist (done); CC Installation Checklist (done); Vendor Pre-Energization Checklist (done); CXA Pre-Energization Inspection; PEI/Clean-Walk
- DC1-ATS-L2-2480: Steps: EC Installation Checklist (done); CC Installation Checklist (done); Vendor Pre-Energization Checklist (done); CXA Pre-Energization Inspection; PEI/Clean-Walk
- DC1-ATS-L2-2490: Steps: EC Installation Checklist (done); CC Installation Checklist (done); Vendor Pre-Energization Checklist (done); CXA Pre-Energization Inspection; PEI/Clean-Walk
- DC1-ATS-L2-2500: Steps: EC Installation Checklist (done); CC Installation Checklist (done); Vendor Pre-Energization Checklist (done); CXA Pre-Energization Inspection; PEI/Clean-Walk
- DC1-ATS-L2-2510: Steps: EC Installation Checklist (done); CC Installation Checklist (done); Vendor Pre-Energization Checklist (done); CXA Pre-Energization Inspection; PEI/Clean-Walk
- DC1-ATS-L2-2520: Steps: EC Installation Checklist (done); CC Installation Checklist (done); Vendor Pre-Energization Checklist (done); CXA Pre-Energization Inspection; PEI/Clean-Walk
- DC1-ATS-L2-2530: Steps: EC Installation Checklist (done); CC Installation Checklist (done); Vendor Pre-Energization Checklist (done); CXA Pre-Energization Inspection; PEI/Clean-Walk
- DC1-ATS-L2-2540: Steps: EC Installation Checklist (done); CC Installation Checklist (done); Vendor Pre-Energization Checklist (done); CXA Pre-Energization Inspection; PEI/Clean-Walk
- DC1-ATS-L2-2550: Steps: EC Installation Checklist (done); CC Installation Checklist (done); Vendor Pre-Energization Checklist (done); CXA Pre-Energization Inspection; PEI/Clean-Walk
- DC1-ATS-L2-2560: Steps: EC Installation Checklist (done); CC Installation Checklist (done); Vendor Pre-Energization Checklist (done); CXA Pre-Energization Inspection; PEI/Clean-Walk
- DC1-ATS-L2-2570: Steps: EC Installation Checklist (done); CC Installation Checklist (done); Vendor Pre-Energization Checklist (done); CXA Pre-Energization Inspection; PEI/Clean-Walk
- DC1-ATS-L2-2580: Steps: EC Installation Checklist (done); CC Installation Checklist (done); Vendor Pre-Energization Checklist (done); CXA Pre-Energization Inspection; PEI/Clean-Walk
- DC1-ATS-L2-2590: Steps: EC Installation Checklist (done); CC Installation Checklist (done); Vendor Pre-Energization Checklist (done); CXA Pre-Energization Inspection; PEI/Clean-Walk
- DC1-ATS-L2-2600: Steps: EC Installation Checklist (done); CC Installation Checklist (done); Vendor Pre-Energization Checklist (done); CXA Pre-Energization Inspection; PEI/Clean-Walk
- DC1-ATS-L2-2610: Steps: EC Installation Checklist (done); CC Installation Checklist (done); Vendor Pre-Energization Checklist (done); CXA Pre-Energization Inspection; PEI/Clean-Walk
- DC1-ATS-L2-2620: Steps: EC Installation Checklist (done); CC Installation Checklist (done); Vendor Pre-Energization Checklist (done); CXA Pre-Energization Inspection; PEI/Clean-Walk
- DC1-ATS-L2-2630: Steps: EC Installation Checklist (done); CC Installation Checklist (done); Vendor Pre-Energization Checklist (done); CXA Pre-Energization Inspection; PEI/Clean-Walk
- DC1-ATS-L2-2640: Steps: EC Installation Checklist (done); CC Installation Checklist (done); Vendor Pre-Energization Checklist (done); CXA Pre-Energization Inspection; PEI/Clean-Walk
- DC1-ATS-L2-2650: Steps: EC Installation Checklist (done); CC Installation Checklist (done); Vendor Pre-Energization Checklist (done); CXA Pre-Energization Inspection; PEI/Clean-Walk
- DC1-ATS-L2-2660: Steps: EC Installation Checklist (done); CC Installation Checklist (done); Vendor Pre-Energization Checklist (done); CXA Pre-Energization Inspection; PEI/Clean-Walk
- DC1-ATS-L2-2670: Steps: EC Installation Checklist (done); CC Installation Checklist (done); Vendor Pre-Energization Checklist (done); CXA Pre-Energization Inspection; PEI/Clean-Walk
- DC1-ATS-L2-2680: Steps: EC Installation Checklist (done); CC Installation Checklist (done); Vendor Pre-Energization Checklist (done); CXA Pre-Energization Inspection; PEI/Clean-Walk
- DC1-ATS-L2-2690: Steps: EC Installation Checklist (done); CC Installation Checklist (done); Vendor Pre-Energization Checklist (done); CXA Pre-Energization Inspection; PEI/Clean-Walk
- DC1-ATS-L2-2700: Steps: EC Installation Checklist (done); CC Installation Checklist (done); Vendor Pre-Energization Checklist (done); CXA Pre-Energization Inspection; PEI/Clean-Walk
- DC1-ATS-L2-2710: Steps: EC Installation Checklist (done); CC Installation Checklist (done); Vendor Pre-Energization Checklist (done); CXA Pre-Energization Inspection; PEI/Clean-Walk
- DC1-BUS-L2-1020: Steps: EC Pre-Energization Checklist (done); GC Pre-Energization Checklist (done); Vendor Pre-Energization Checklist; CXA Pre-Energization Inspection; PEI/Clean-Walk
- DC1-BUS-L2-1040: Steps: EC Pre-Energization Checklist (done); Vendor Pre-Energization Checklist (done); CXA Pre-Energization Inspection; PEI/Clean-Walk
- DC1-CRAH-L2-2320: Steps: MC Installation Checklist; EC Installation Checklist (done); CC Installation Checklist (done); GC Installation Checklist (done); Vendor Pre-Energization Checklist (done); CXA Pre-Energization Inspection; PEI/Clean-Walk
- DC1-CRAH-L2-2330: Steps: EC Installation Checklist (done); MC Installation Checklist; CC Installation Checklist (done); Vendor Pre-Energization Checklist (done); GC Installation Checklist (done); CXA Pre-Energization Inspection; PEI/Clean-Walk
- DC1-CRAH-L2-2340: Steps: EC Installation Checklist (done); MC Installation Checklist; CC Installation Checklist (done); Vendor Pre-Energization Checklist (done); GC Installation Checklist (done); CXA Pre-Energization Inspection; PEI/Clean-Walk
- DC1-CRAH-L2-2350: Steps: EC Installation Checklist (done); MC Installation Checklist; CC Installation Checklist (done); Vendor Pre-Energization Checklist (done); GC Installation Checklist (done); CXA Pre-Energization Inspection; PEI/Clean-Walk
- DC1-CRAH-L2-2360: Steps: EC Installation Checklist (done); MC Installation Checklist; CC Installation Checklist (done); Vendor Pre-Energization Checklist (done); GC Installation Checklist (done); CXA Pre-Energization Inspection; PEI/Clean-Walk
- DC1-CRAH-L2-2370: Steps: EC Installation Checklist (done); MC Installation Checklist; CC Installation Checklist (done); Vendor Pre-Energization Checklist (done); GC Installation Checklist (done); CXA Pre-Energization Inspection; PEI/Clean-Walk
- DC1-CRAH-L2-2380: Steps: EC Installation Checklist (done); MC Installation Checklist; CC Installation Checklist (done); Vendor Pre-Energization Checklist (done); GC Installation Checklist (done); CXA Pre-Energization Inspection; PEI/Clean-Walk
- DC1-CRAH-L2-2390: Steps: EC Installation Checklist (done); MC Installation Checklist; CC Installation Checklist (done); Vendor Pre-Energization Checklist (done); GC Installation Checklist (done); CXA Pre-Energization Inspection; PEI/Clean-Walk
- DC1-CRAH-L2-2400: Steps: EC Installation Checklist (done); MC Installation Checklist; CC Installation Checklist (done); Vendor Pre-Energization Checklist (done); GC Installation Checklist (done); CXA Pre-Energization Inspection; PEI/Clean-Walk
- DC1-CRAH-L2-2410: Steps: EC Installation Checklist (done); MC Installation Checklist; CC Installation Checklist (done); Vendor Pre-Energization Checklist (done); GC Installation Checklist (done); CXA Pre-Energization Inspection; PEI/Clean-Walk
- DC1-CRAH-L2-2420: Steps: EC Installation Checklist (done); MC Installation Checklist; CC Installation Checklist (done); Vendor Pre-Energization Checklist (done); GC Installation Checklist (done); CXA Pre-Energization Inspection; PEI/Clean-Walk
- DC1-CRAH-L2-2430: Steps: EC Installation Checklist (done); MC Installation Checklist; CC Installation Checklist (done); Vendor Pre-Energization Checklist (done); GC Installation Checklist (done); CXA Pre-Energization Inspection; PEI/Clean-Walk
- DC1-CRAH-L2-2440: Steps: EC Installation Checklist (done); MC Installation Checklist; CC Installation Checklist (done); Vendor Pre-Energization Checklist (done); GC Installation Checklist (done); CXA Pre-Energization Inspection; PEI/Clean-Walk
- DC1-CRAH-L2-2450: Steps: EC Installation Checklist (done); MC Installation Checklist; CC Installation Checklist (done); Vendor Pre-Energization Checklist (done); GC Installation Checklist (done); CXA Pre-Energization Inspection; PEI/Clean-Walk

| ID | Activity | Duration | Start | Finish | Predecessors | Complete | Planned start | Planned finish | Calendar | Notes | Vendor Responsible Party | Layton Discipline | Location | CX Level | Equipment | DELETED | D | Project Section | Baseline | Phase-1-1 | Project Section-1 | Layton Super | Contract | Note/Comments | Allucent CSI Group | Level | Phase-1 | Owner Impact Analysis | NICK | Last Period Finish | Last Period Start |
| --- | --- | --- | --- | --- | --- | --- | --- | --- | --- | --- | --- | --- | --- | --- | --- | --- | --- | --- | --- | --- | --- | --- | --- | --- | --- | --- | --- | --- | --- | --- | --- |
| DC1-CRAH-L2-2460 | **DELETED** DH2200 CRAH-DH-15 L2 Checklist | 3d | 2026-06-29 A | 2026-07-16 A | QTS-1020 | 100% | 2026-06-30 | 2026-07-02 |  | No Electrical Terms 2203 | UMAS | Commissioning | DH2200 | L2 | DH CRAH | DELETED | DH1100 |  |  |  |  |  |  |  |  |  |  |  |  |  |  |
| DC1-CRAH-L2-2470 | **DELETED** DH2200 CRAH-DH-16 L2 Checklist | 3d | 2026-06-29 A | 2026-07-16 A | QTS-1020 | 100% | 2026-06-30 | 2026-07-02 |  | No Electrical Terms 2203 | UMAS | Commissioning | DH2200 | L2 | DH CRAH | DELETED | DH1100 |  |  |  |  |  |  |  |  |  |  |  |  |  |  |
| DC1-CRAH-L2-2480 | **DELETED** DH2200 CRAH-DH-17 L2 Checklist | 3d | 2026-06-29 A | 2026-07-16 A | QTS-1020 | 100% | 2026-06-30 | 2026-07-02 |  | No Electrical Terms 2203 | UMAS | Commissioning | DH2200 | L2 | DH CRAH | DELETED | DH1100 |  |  |  |  |  |  |  |  |  |  |  |  |  |  |
| DC1-CRAH-L2-2490 | **DELETED** DH2200 CRAH-DH-18 L2 Checklist | 3d | 2026-06-29 A | 2026-07-16 A | QTS-1020 | 100% | 2026-06-30 | 2026-07-02 |  | No Electrical Terms 2203 | UMAS | Commissioning | DH2200 | L2 | DH CRAH | DELETED | DH1100 |  |  |  |  |  |  |  |  |  |  |  |  |  |  |
| DC1-CRAH-L2-2500 | **DELETED** DH2200 CRAH-DH-19 L2 Checklist | 3d | 2026-06-29 A | 2026-07-16 A | QTS-1020 | 100% | 2026-06-30 | 2026-07-02 |  | No Electrical Terms 2203 | UMAS | Commissioning | DH2200 | L2 | DH CRAH | DELETED | DH1100 |  |  |  |  |  |  |  |  |  |  |  |  |  |  |
| DC1-CRAH-L2-2510 | **DELETED** DH2200 CRAH-DH-20 L2 Checklist | 3d | 2026-06-29 A | 2026-07-16 A | QTS-1020 | 100% | 2026-06-30 | 2026-07-02 |  | No Electrical Terms 2203 | UMAS | Commissioning | DH2200 | L2 | DH CRAH | DELETED | DH1100 |  |  |  |  |  |  |  |  |  |  |  |  |  |  |
| DC1-CRAH-L2-2520 | **DELETED** DH2200 CRAH-DH-21 L2 Checklist | 3d | 2026-06-29 A | 2026-07-16 A | QTS-1020 | 100% | 2026-06-30 | 2026-07-02 |  | No Electrical Terms 2203 | UMAS | Commissioning | DH2200 | L2 | DH CRAH | DELETED | DH1100 |  |  |  |  |  |  |  |  |  |  |  |  |  |  |
| DC1-CRAH-L2-2530 | **DELETED** DH2200 CRAH-DH-22 L2 Checklist | 3d | 2026-06-29 A | 2026-07-16 A | QTS-1020 | 100% | 2026-06-30 | 2026-07-02 |  | No Electrical Terms 2203 | UMAS | Commissioning | DH2200 | L2 | DH CRAH | DELETED | DH1100 |  |  |  |  |  |  |  |  |  |  |  |  |  |  |
| DC1-CRAH-L2-2540 | **DELETED** DH2200 CRAH-DH-23 L2 Checklist | 3d | 2026-06-29 A | 2026-07-16 A | QTS-1020 | 100% | 2026-06-30 | 2026-07-02 |  | No Electrical Terms 2203 | UMAS | Commissioning | DH2200 | L2 | DH CRAH | DELETED | DH1100 |  |  |  |  |  |  |  |  |  |  |  |  |  |  |
| DC1-CRAH-L2-2550 | **DELETED** DH2200 CRAH-DH-24 L2 Checklist | 3d | 2026-06-29 A | 2026-07-16 A | QTS-1020 | 100% | 2026-06-30 | 2026-07-02 |  | No Electrical Terms 2203 | UMAS | Commissioning | DH2200 | L2 | DH CRAH | DELETED | DH1100 |  |  |  |  |  |  |  |  |  |  |  |  |  |  |
| DC1-CRAH-L2-2560 | **DELETED** DH2200 CRAH-DH-25 L2 Checklist | 3d | 2026-06-29 A | 2026-07-16 A | QTS-1020 | 100% | 2026-06-30 | 2026-07-02 |  | No Electrical Terms 2203 | UMAS | Commissioning | DH2200 | L2 | DH CRAH | DELETED | DH1100 |  |  |  |  |  |  |  |  |  |  |  |  |  |  |
| DC1-CRAH-L2-2570 | **DELETED** DH2200 CRAH-DH-26 L2 Checklist | 3d | 2026-06-29 A | 2026-07-16 A | QTS-1020 | 100% | 2026-06-30 | 2026-07-02 |  | No Electrical Terms 2203 | UMAS | Commissioning | DH2200 | L2 | DH CRAH | DELETED | DH1100 |  |  |  |  |  |  |  |  |  |  |  |  |  |  |
| DC1-CRAH-L2-2580 | **DELETED** DH2200 CRAH-DH-27 L2 Checklist | 3d | 2026-06-29 A | 2026-07-16 A | QTS-1020 | 100% | 2026-06-30 | 2026-07-02 |  | No Electrical Terms 2203 | UMAS | Commissioning | DH2200 | L2 | DH CRAH | DELETED | DH1100 |  |  |  |  |  |  |  |  |  |  |  |  |  |  |
| DC1-CRAH-L2-2590 | **DELETED** DH2200 CRAH-DH-28 L2 Checklist | 3d | 2026-06-29 A | 2026-07-16 A | QTS-1020 | 100% | 2026-06-30 | 2026-07-02 |  | No Electrical Terms 2203 | UMAS | Commissioning | DH2200 | L2 | DH CRAH | DELETED | DH1100 |  |  |  |  |  |  |  |  |  |  |  |  |  |  |
| DC1-CRAH-L2-2600 | **DELETED** DH2200 CRAH-EG2102-01 L2 Checklist | 3d | 2026-06-29 A | 2026-07-16 A | QTS-1020 | 100% | 2026-06-30 | 2026-07-02 |  |  | VER | Commissioning | DH2200 | L2 | EG CRAH | DELETED | DH1100 |  |  |  |  |  |  |  |  |  |  |  |  |  |  |
| DC1-CRAH-L2-2610 | **DELETED** DH2200 CRAH-EG2102-02 L2 Checklist | 3d | 2026-06-29 A | 2026-07-16 A | QTS-1020 | 100% | 2026-06-30 | 2026-07-02 |  |  | VER | Commissioning | DH2200 | L2 | EG CRAH | DELETED | DH1100 |  |  |  |  |  |  |  |  |  |  |  |  |  |  |
| DC1-CRAH-L2-2620 | **DELETED** DH2200 CRAH-EG2102-03 L2 Checklist | 3d | 2026-06-29 A | 2026-07-16 A | QTS-1020 | 100% | 2026-06-30 | 2026-07-02 |  |  | VER | Commissioning | DH2200 | L2 | EG CRAH | DELETED | DH1100 |  |  |  |  |  |  |  |  |  |  |  |  |  |  |
| DC1-CRAH-L2-2630 | **DELETED** DH2200 CRAH-EG2102-04 L2 Checklist | 3d | 2026-06-29 A | 2026-07-16 A | QTS-1020 | 100% | 2026-06-30 | 2026-07-02 |  |  | VER | Commissioning | DH2200 | L2 | EG CRAH | DELETED | DH1100 |  |  |  |  |  |  |  |  |  |  |  |  |  |  |
| QTS-1008820 | **DELETED** DH 2300 / Mechanical Gallery 2303 // Install OH EPMS/BMS Conduit & Grounding | 10d | 2026-07-01 A | 2026-07-14 A | QTS-1020 | 100% | 2026-07-08 | 2026-07-18 | QTS-PHX3 DC1 - 6 day w/ Holidays |  |  | Electrical | DH2300 |  |  | DELETED | DH1100 | Construction | IGMP | Phase 3 | Construction | Oscar Armenta | BAB |  |  |  |  |  |  |  |  |
| QTS-16621 | **DELETED** DH 1300 / Mechanical Gallery 1301 // Install Basket Tray for LV | 5d | 2026-07-01 A | 2026-07-14 A | QTS-1020 | 100% | 2026-07-08 | 2026-07-13 | QTS-PHX3 DC1 - 6 day w/ Holidays |  |  | Electrical | DH1300 |  |  | DELETED | DH1100 | Construction | IGMP | Phase 3 | Construction | Oscar Armenta | BAB |  |  |  |  |  |  |  |  |
| QTS-18181 | **DELETED** Gallery 2302 / Lineup A2300 // Terminate & Torque ATS | 7d | 2026-07-01 A | 2026-07-14 A | QTS-1020 | 100% | 2026-07-08 | 2026-07-15 | QTS-PHX3 DC1 - 6 day w/ Holidays |  |  | Electrical | DH2300 |  |  | DELETED | DH1100 | Construction | IGMP | Phase 3 | Construction | Oscar Armenta | BAB | 7/8: No Cable |  |  |  |  |  |  |  |
| QTS-9461 | **DELETED** Gallery 2302 / Lineup D2300 // Terminate & Torque COD | 7d | 2026-07-01 A | 2026-07-14 A | QTS-1020 | 100% | 2026-07-08 | 2026-07-15 | QTS-PHX3 DC1 - 6 day w/ Holidays |  |  | Electrical | DH2300 |  |  | DELETED | DH1100 | Construction | IGMP | Phase 3 | Construction | Oscar Armenta | BAB |  |  |  |  |  |  |  |  |
| QTS-9481 | **DELETED** Gallery 2302 / Lineup E2300 // Terminate & Torque ATS | 7d | 2026-07-01 A | 2026-07-14 A | QTS-1020 | 100% | 2026-07-10 | 2026-07-17 | QTS-PHX3 DC1 - 6 day w/ Holidays |  |  | Electrical | DH2300 |  |  | DELETED | DH1100 | Construction | IGMP | Phase 3 | Construction | Oscar Armenta | BAB |  |  |  |  |  |  |  |  |
| QTS-9511 | **DELETED** Gallery 2302 / Lineup F2300 // Terminate & Torque ATS | 7d | 2026-07-01 A | 2026-07-14 A | QTS-1020 | 100% | 2026-07-10 | 2026-07-17 | QTS-PHX3 DC1 - 6 day w/ Holidays |  |  | Electrical | DH2300 |  |  | DELETED | DH1100 | Construction | IGMP | Phase 3 | Construction | Oscar Armenta | BAB |  |  |  |  |  |  |  |  |
| DC1-MOD03-L2-2070 | **DELETED** DH2200 MOD-A22-03 L2 Checklist | 1d | 2026-07-01 A | 2026-07-15 A | QTS-1020 | 100% | 2026-07-14 | 2026-07-14 |  |  | PHE | Commissioning | DH2200 | L2 | MOD-03 | DELETED | DH1100 |  |  |  |  |  |  |  |  |  |  |  |  |  |  |
| DC1-MOD03-L2-2080 | **DELETED** DH2200 MOD-B22-03 L2 Checklist | 1d | 2026-07-01 A | 2026-07-15 A | QTS-1020 | 100% | 2026-07-14 | 2026-07-14 |  |  | PHE | Commissioning | DH2200 | L2 | MOD-03 | DELETED | DH1100 |  |  |  |  |  |  |  |  |  |  |  |  |  |  |
| DC1-MOD03-L2-2090 | **DELETED** DH2200 MOD-C22-03 L2 Checklist | 1d | 2026-07-01 A | 2026-07-15 A | QTS-1020 | 100% | 2026-07-14 | 2026-07-14 |  |  | PHE | Commissioning | DH2200 | L2 | MOD-03 | DELETED | DH1100 |  |  |  |  |  |  |  |  |  |  |  |  |  |  |
| DC1-MOD03-L2-2100 | **DELETED** DH2200 MOD-D22-03 L2 Checklist | 1d | 2026-07-01 A | 2026-07-15 A | QTS-1020 | 100% | 2026-07-14 | 2026-07-14 |  |  | PHE | Commissioning | DH2200 | L2 | MOD-03 | DELETED | DH1100 |  |  |  |  |  |  |  |  |  |  |  |  |  |  |
| DC1-MOD03-L2-2110 | **DELETED** DH2200 MOD-E22-03 L2 Checklist | 1d | 2026-07-01 A | 2026-07-15 A | QTS-1020 | 100% | 2026-07-14 | 2026-07-14 |  |  | PHE | Commissioning | DH2200 | L2 | MOD-03 | DELETED | DH1100 |  |  |  |  |  |  |  |  |  |  |  |  |  |  |
| DC1-MOD03-L2-2120 | **DELETED** DH2200 MOD-F22-03 L2 Checklist | 1d | 2026-07-01 A | 2026-07-15 A | QTS-1020 | 100% | 2026-07-14 | 2026-07-14 |  |  | PHE | Commissioning | DH2200 | L2 | MOD-03 | DELETED | DH1100 |  |  |  |  |  |  |  |  |  |  |  |  |  |  |
| DC1-MOD03-L2-2130 | **DELETED** DH2200 MOD-R22-03 L2 Checklist | 1d | 2026-07-01 A | 2026-07-15 A | QTS-1020 | 100% | 2026-07-14 | 2026-07-14 |  |  | PHE | Commissioning | DH2200 | L2 | MOD-03 | DELETED | DH1100 |  |  |  |  |  |  |  |  |  |  |  |  |  |  |
| QTS-1000650 | **DELETED** DH 2300 // Install Overhead Conduit - Controls | 5d | 2026-07-02 A | 2026-07-14 A | QTS-1020 | 100% | 2026-07-08 | 2026-07-13 | QTS-PHX3 DC1 - 6 day w/ Holidays |  |  | Electrical | DH2100 |  |  | DELETED | DH1100 | Construction | IGMP |  | Construction | Oscar Armenta | BAB |  | 01ADMIN | Level 2 |  |  |  |  |  |
| QTS-9391 | **DELETED** Gallery 2302 / Lineup B2300 // Terminate & Torque ATS | 7d | 2026-07-02 A | 2026-07-14 A | QTS-1020 | 100% | 2026-07-08 | 2026-07-15 | QTS-PHX3 DC1 - 6 day w/ Holidays |  |  | Electrical | DH2300 |  |  | DELETED | DH1100 | Construction | IGMP | Phase 3 | Construction | Oscar Armenta | BAB |  |  |  |  |  |  |  |  |
| QTS-9421 | **DELETED** Gallery 2302 / Lineup C2300 // Terminate & Torque ATS | 7d | 2026-07-02 A | 2026-07-14 A | QTS-1020 | 100% | 2026-07-10 | 2026-07-17 | QTS-PHX3 DC1 - 6 day w/ Holidays |  |  | Electrical | DH2300 |  |  | DELETED | DH1100 | Construction | IGMP | Phase 3 | Construction | Oscar Armenta | BAB |  |  |  |  |  |  |  |  |
| QTS-9451 | **DELETED** Gallery 2302 / Lineup D2300 // Terminate & Torque ATS | 7d | 2026-07-06 A | 2026-07-14 A | QTS-1020 | 100% | 2026-07-10 | 2026-07-17 | QTS-PHX3 DC1 - 6 day w/ Holidays |  |  | Electrical | DH2300 |  |  | DELETED | DH1100 | Construction | IGMP | Phase 3 | Construction | Oscar Armenta | BAB |  |  |  |  |  |  |  |  |
| QTS-1012320 | Elevator Machine Room #1062 // Frame Hard Lid - *DELETED* | 3d | 2026-07-07 A | 2026-07-07 A | QTS-1371 | 100% | 2026-08-01 | 2026-08-04 | QTS-PHX3 DC1 - 6 day w/ Holidays |  |  | Build Out | BOH |  |  | DELETED | DH1100 | Construction | IGMP | Phase 1 | Construction | Ben Ribble |  |  | 01ADMIN | Level 1 |  |  |  |  |  |
| QTS-30761 | Passenger Elevator E1 // City Inspection - *DELETED* | 1d | 2026-07-07 A | 2026-07-07 A | QTS-1371 | 100% | 2026-08-03 | 2026-08-03 |  |  |  | Build Out | FOH |  |  | DELETED | DH1100 | Construction | IGMP |  |  | Ben Ribble |  |  |  | Level 1 | Phase 1 |  |  |  |  |
| DC1-ELEC-L4-Cx-1010 | **DELETED** DC1 Data Hall 1100 Air Cooled L4 | 15d | 2026-07-07 A | 2026-07-14 A | QTS-1020 | 100% | 2026-07-20 | 2026-08-07 |  |  | ERS | Commissioning | DH1100 | L4 |  | DELETED | DH1100 |  |  |  |  |  |  |  |  |  |  | Y | NICK |  |  |
| QTS-1012060 | **DELETED** Freedom Cafe #0103 // Install Countertops | 7d | 2026-07-08 A | 2026-07-14 A | QTS-1020 | 100% | 2026-07-15 | 2026-07-22 | QTS-PHX3 DC1 - 6 day w/ Holidays |  |  | Build Out | FOH |  |  | DELETED | DH1100 | Construction | IGMP | Phase 1 | Construction | Ed Carter | BAB |  |  | Level 1 |  |  |  |  |  |
| QTS-1012120 | **DELETED** Security Room #0150 // Countertops (Delivery + Install) | 5d | 2026-07-08 A | 2026-07-14 A | QTS-1020 | 100% | 2026-07-15 | 2026-07-20 | QTS-PHX3 DC1 - 6 day w/ Holidays |  |  | Build Out | FOH |  |  | DELETED | DH1100 | Construction | IGMP |  |  | Ed Carter | BAB | 7/15: Waiting on new top |  | Level 1 | Phase 1 |  |  | 2023-04-21 | 2023-04-20 |
| QTS-45161 | **DELETED** Freedom Cafe #0103 // Install Decorative Ceiling System Wood | 10d | 2026-07-08 A | 2026-07-14 A | QTS-1020 | 100% | 2026-07-15 | 2026-07-25 | QTS-PHX3 DC1 - 6 day w/ Holidays |  |  | Build Out | FOH |  |  | DELETED | DH1100 | Construction | IGMP | Phase 1 | Construction | Ed Carter | BAB | 7/15: Need to procvure black ceiling |  | Level 1 |  |  |  |  |  |
| DC1-ATS-L2-2720 | **DELETED** DH1200 ATS-A12-01 L2 Checklist | 3d | 2026-07-09 A | 2026-07-16 A | QTS-1020 | 100% | 2026-07-21 | 2026-07-23 |  |  | MAV | Commissioning | DH1200 | L2 | ATS | DELETED | DH1100 |  |  |  |  |  |  |  |  |  |  |  |  |  |  |
| DC1-ATS-L2-2730 | **DELETED** DH1200 ATS-A12-02 L2 Checklist | 3d | 2026-07-09 A | 2026-07-16 A | QTS-1020 | 100% | 2026-07-21 | 2026-07-23 |  |  | MAV | Commissioning | DH1200 | L2 | ATS | DELETED | DH1100 |  |  |  |  |  |  |  |  |  |  |  |  |  |  |
| DC1-ATS-L2-2740 | **DELETED** DH1200 ATS-A12-03 L2 Checklist | 3d | 2026-07-09 A | 2026-07-16 A | QTS-1020 | 100% | 2026-07-21 | 2026-07-23 |  |  | MAV | Commissioning | DH1200 | L2 | ATS | DELETED | DH1100 |  |  |  |  |  |  |  |  |  |  |  |  |  |  |
| DC1-ATS-L2-2750 | **DELETED** DH1200 ATS-A12-04 L2 Checklist | 3d | 2026-07-09 A | 2026-07-16 A | QTS-1020 | 100% | 2026-07-21 | 2026-07-23 |  |  | MAV | Commissioning | DH1200 | L2 | ATS | DELETED | DH1100 |  |  |  |  |  |  |  |  |  |  |  |  |  |  |
| DC1-ATS-L2-2760 | **DELETED** DH1200 ATS-A12-05 L2 Checklist | 3d | 2026-07-09 A | 2026-07-16 A | QTS-1020 | 100% | 2026-07-21 | 2026-07-23 |  |  | MAV | Commissioning | DH1200 | L2 | ATS | DELETED | DH1100 |  |  |  |  |  |  |  |  |  |  |  |  |  |  |
| DC1-ATS-L2-2770 | **DELETED** DH1200 ATS-A12-06 L2 Checklist | 3d | 2026-07-09 A | 2026-07-16 A | QTS-1020 | 100% | 2026-07-21 | 2026-07-23 |  |  | MAV | Commissioning | DH1200 | L2 | ATS | DELETED | DH1100 |  |  |  |  |  |  |  |  |  |  |  |  |  |  |
| DC1-COD-L2-2360 | **DELETED** DH2200 COD-A22-01 L2 Checklist | 1d | 2026-07-09 A | 2026-07-14 A | QTS-1020 | 100% | 2026-07-13 | 2026-07-13 |  |  | SIE | Commissioning | DH2200 | L2 | COD | DELETED | DH1100 |  |  |  |  |  |  |  |  |  |  |  |  |  |  |
| DC1-COD-L2-2370 | **DELETED** DH2200 COD-A22-02 L2 Checklist | 1d | 2026-07-09 A | 2026-07-14 A | QTS-1020 | 100% | 2026-07-13 | 2026-07-13 |  |  | SIE | Commissioning | DH2200 | L2 | COD | DELETED | DH1100 |  |  |  |  |  |  |  |  |  |  |  |  |  |  |
| DC1-COD-L2-2380 | **DELETED** DH2200 COD-A22-03 L2 Checklist | 1d | 2026-07-09 A | 2026-07-14 A | QTS-1020 | 100% | 2026-07-13 | 2026-07-13 |  |  | SIE | Commissioning | DH2200 | L2 | COD | DELETED | DH1100 |  |  |  |  |  |  |  |  |  |  |  |  |  |  |
| DC1-COD-L2-2390 | **DELETED** DH2200 COD-A22-04 L2 Checklist | 1d | 2026-07-09 A | 2026-07-14 A | QTS-1020 | 100% | 2026-07-13 | 2026-07-13 |  |  | SIE | Commissioning | DH2200 | L2 | COD | DELETED | DH1100 |  |  |  |  |  |  |  |  |  |  |  |  |  |  |
| DC1-COD-L2-2400 | **DELETED** DH2200 COD-A22-05 L2 Checklist | 1d | 2026-07-09 A | 2026-07-14 A | QTS-1020 | 100% | 2026-07-13 | 2026-07-13 |  |  | SIE | Commissioning | DH2200 | L2 | COD | DELETED | DH1100 |  |  |  |  |  |  |  |  |  |  |  |  |  |  |
| DC1-COD-L2-2410 | **DELETED** DH2200 COD-A22-06 L2 Checklist | 1d | 2026-07-09 A | 2026-07-14 A | QTS-1020 | 100% | 2026-07-13 | 2026-07-13 |  |  | SIE | Commissioning | DH2200 | L2 | COD | DELETED | DH1100 |  |  |  |  |  |  |  |  |  |  |  |  |  |  |
| DC1-COD-L2-2420 | **DELETED** DH2200 COD-B22-01 L2 Checklist | 1d | 2026-07-09 A | 2026-07-14 A | QTS-1020 | 100% | 2026-07-13 | 2026-07-13 |  |  | SIE | Commissioning | DH2200 | L2 | COD | DELETED | DH1100 |  |  |  |  |  |  |  |  |  |  |  |  |  |  |
| DC1-COD-L2-2430 | **DELETED** DH2200 COD-B22-02 L2 Checklist | 1d | 2026-07-09 A | 2026-07-14 A | QTS-1020 | 100% | 2026-07-13 | 2026-07-13 |  |  | SIE | Commissioning | DH2200 | L2 | COD | DELETED | DH1100 |  |  |  |  |  |  |  |  |  |  |  |  |  |  |
| DC1-COD-L2-2440 | **DELETED** DH2200 COD-B22-03 L2 Checklist | 1d | 2026-07-09 A | 2026-07-14 A | QTS-1020 | 100% | 2026-07-13 | 2026-07-13 |  |  | SIE | Commissioning | DH2200 | L2 | COD | DELETED | DH1100 |  |  |  |  |  |  |  |  |  |  |  |  |  |  |
| DC1-COD-L2-2450 | **DELETED** DH2200 COD-B22-04 L2 Checklist | 1d | 2026-07-09 A | 2026-07-14 A | QTS-1020 | 100% | 2026-07-13 | 2026-07-13 |  |  | SIE | Commissioning | DH2200 | L2 | COD | DELETED | DH1100 |  |  |  |  |  |  |  |  |  |  |  |  |  |  |
| DC1-COD-L2-2460 | **DELETED** DH2200 COD-B22-05 L2 Checklist | 1d | 2026-07-09 A | 2026-07-14 A | QTS-1020 | 100% | 2026-07-13 | 2026-07-13 |  |  | SIE | Commissioning | DH2200 | L2 | COD | DELETED | DH1100 |  |  |  |  |  |  |  |  |  |  |  |  |  |  |
| DC1-COD-L2-2470 | **DELETED** DH2200 COD-B22-06 L2 Checklist | 1d | 2026-07-09 A | 2026-07-14 A | QTS-1020 | 100% | 2026-07-13 | 2026-07-13 |  |  | SIE | Commissioning | DH2200 | L2 | COD | DELETED | DH1100 |  |  |  |  |  |  |  |  |  |  |  |  |  |  |
| DC1-COD-L2-2480 | **DELETED** DH2200 COD-C22-01 L2 Checklist | 1d | 2026-07-09 A | 2026-07-14 A | QTS-1020 | 100% | 2026-07-13 | 2026-07-13 |  |  | SIE | Commissioning | DH2200 | L2 | COD | DELETED | DH1100 |  |  |  |  |  |  |  |  |  |  |  |  |  |  |
| DC1-COD-L2-2490 | **DELETED** DH2200 COD-C22-02 L2 Checklist | 1d | 2026-07-09 A | 2026-07-14 A | QTS-1020 | 100% | 2026-07-13 | 2026-07-13 |  |  | SIE | Commissioning | DH2200 | L2 | COD | DELETED | DH1100 |  |  |  |  |  |  |  |  |  |  |  |  |  |  |
| DC1-COD-L2-2500 | **DELETED** DH2200 COD-C22-03 L2 Checklist | 1d | 2026-07-09 A | 2026-07-14 A | QTS-1020 | 100% | 2026-07-13 | 2026-07-13 |  |  | SIE | Commissioning | DH2200 | L2 | COD | DELETED | DH1100 |  |  |  |  |  |  |  |  |  |  |  |  |  |  |
| DC1-COD-L2-2510 | **DELETED** DH2200 COD-C22-04 L2 Checklist | 1d | 2026-07-09 A | 2026-07-14 A | QTS-1020 | 100% | 2026-07-13 | 2026-07-13 |  |  | SIE | Commissioning | DH2200 | L2 | COD | DELETED | DH1100 |  |  |  |  |  |  |  |  |  |  |  |  |  |  |
| DC1-COD-L2-2520 | **DELETED** DH2200 COD-C22-05 L2 Checklist | 1d | 2026-07-09 A | 2026-07-14 A | QTS-1020 | 100% | 2026-07-13 | 2026-07-13 |  |  | SIE | Commissioning | DH2200 | L2 | COD | DELETED | DH1100 |  |  |  |  |  |  |  |  |  |  |  |  |  |  |
| DC1-COD-L2-2530 | **DELETED** DH2200 COD-C22-06 L2 Checklist | 1d | 2026-07-09 A | 2026-07-14 A | QTS-1020 | 100% | 2026-07-13 | 2026-07-13 |  |  | SIE | Commissioning | DH2200 | L2 | COD | DELETED | DH1100 |  |  |  |  |  |  |  |  |  |  |  |  |  |  |
| DC1-COD-L2-2540 | **DELETED** DH2200 COD-D22-01 L2 Checklist | 1d | 2026-07-09 A | 2026-07-14 A | QTS-1020 | 100% | 2026-07-13 | 2026-07-13 |  |  | SIE | Commissioning | DH2200 | L2 | COD | DELETED | DH1100 |  |  |  |  |  |  |  |  |  |  |  |  |  |  |
| DC1-COD-L2-2550 | **DELETED** DH2200 COD-D22-02 L2 Checklist | 1d | 2026-07-09 A | 2026-07-14 A | QTS-1020 | 100% | 2026-07-13 | 2026-07-13 |  |  | SIE | Commissioning | DH2200 | L2 | COD | DELETED | DH1100 |  |  |  |  |  |  |  |  |  |  |  |  |  |  |
| DC1-COD-L2-2560 | **DELETED** DH2200 COD-D22-03 L2 Checklist | 1d | 2026-07-09 A | 2026-07-14 A | QTS-1020 | 100% | 2026-07-13 | 2026-07-13 |  |  | SIE | Commissioning | DH2200 | L2 | COD | DELETED | DH1100 |  |  |  |  |  |  |  |  |  |  |  |  |  |  |
| DC1-COD-L2-2570 | **DELETED** DH2200 COD-D22-04 L2 Checklist | 1d | 2026-07-09 A | 2026-07-14 A | QTS-1020 | 100% | 2026-07-13 | 2026-07-13 |  |  | SIE | Commissioning | DH2200 | L2 | COD | DELETED | DH1100 |  |  |  |  |  |  |  |  |  |  |  |  |  |  |
| DC1-COD-L2-2580 | **DELETED** DH2200 COD-D22-05 L2 Checklist | 1d | 2026-07-09 A | 2026-07-14 A | QTS-1020 | 100% | 2026-07-13 | 2026-07-13 |  |  | SIE | Commissioning | DH2200 | L2 | COD | DELETED | DH1100 |  |  |  |  |  |  |  |  |  |  |  |  |  |  |

Notes:
- DC1-CRAH-L2-2460: Steps: EC Installation Checklist (done); MC Installation Checklist; CC Installation Checklist (done); Vendor Pre-Energization Checklist (done); GC Installation Checklist (done); CXA Pre-Energization Inspection; PEI/Clean-Walk
- DC1-CRAH-L2-2470: Steps: EC Installation Checklist (done); MC Installation Checklist; CC Installation Checklist (done); Vendor Pre-Energization Checklist (done); GC Installation Checklist (done); CXA Pre-Energization Inspection; PEI/Clean-Walk
- DC1-CRAH-L2-2480: Steps: EC Installation Checklist (done); MC Installation Checklist; CC Installation Checklist (done); Vendor Pre-Energization Checklist (done); GC Installation Checklist (done); CXA Pre-Energization Inspection; PEI/Clean-Walk
- DC1-CRAH-L2-2490: Steps: EC Installation Checklist (done); MC Installation Checklist; CC Installation Checklist (done); Vendor Pre-Energization Checklist (done); GC Installation Checklist (done); CXA Pre-Energization Inspection; PEI/Clean-Walk
- DC1-CRAH-L2-2500: Steps: EC Installation Checklist (done); MC Installation Checklist; CC Installation Checklist (done); Vendor Pre-Energization Checklist (done); GC Installation Checklist (done); CXA Pre-Energization Inspection; PEI/Clean-Walk
- DC1-CRAH-L2-2510: Steps: EC Installation Checklist (done); MC Installation Checklist; CC Installation Checklist (done); Vendor Pre-Energization Checklist (done); GC Installation Checklist (done); CXA Pre-Energization Inspection; PEI/Clean-Walk
- DC1-CRAH-L2-2520: Steps: EC Installation Checklist (done); MC Installation Checklist; CC Installation Checklist (done); Vendor Pre-Energization Checklist (done); GC Installation Checklist (done); CXA Pre-Energization Inspection; PEI/Clean-Walk
- DC1-CRAH-L2-2530: Steps: EC Installation Checklist (done); MC Installation Checklist; CC Installation Checklist (done); Vendor Pre-Energization Checklist (done); GC Installation Checklist (done); CXA Pre-Energization Inspection; PEI/Clean-Walk
- DC1-CRAH-L2-2540: Steps: EC Installation Checklist (done); MC Installation Checklist; CC Installation Checklist (done); Vendor Pre-Energization Checklist (done); GC Installation Checklist (done); CXA Pre-Energization Inspection; PEI/Clean-Walk
- DC1-CRAH-L2-2550: Steps: EC Installation Checklist (done); MC Installation Checklist; CC Installation Checklist (done); Vendor Pre-Energization Checklist (done); GC Installation Checklist (done); CXA Pre-Energization Inspection; PEI/Clean-Walk
- DC1-CRAH-L2-2560: Steps: EC Installation Checklist (done); MC Installation Checklist; CC Installation Checklist (done); Vendor Pre-Energization Checklist (done); GC Installation Checklist (done); CXA Pre-Energization Inspection; PEI/Clean-Walk
- DC1-CRAH-L2-2570: Steps: EC Installation Checklist (done); MC Installation Checklist; CC Installation Checklist (done); Vendor Pre-Energization Checklist (done); GC Installation Checklist (done); CXA Pre-Energization Inspection; PEI/Clean-Walk
- DC1-CRAH-L2-2580: Steps: EC Installation Checklist (done); MC Installation Checklist; CC Installation Checklist (done); Vendor Pre-Energization Checklist (done); GC Installation Checklist (done); CXA Pre-Energization Inspection; PEI/Clean-Walk
- DC1-CRAH-L2-2590: Steps: EC Installation Checklist (done); MC Installation Checklist; CC Installation Checklist (done); Vendor Pre-Energization Checklist (done); GC Installation Checklist (done); CXA Pre-Energization Inspection; PEI/Clean-Walk
- DC1-CRAH-L2-2600: Steps: EC Installation Checklist (done); MC Installation Checklist; CC Installation Checklist; Vendor Pre-Energization Checklist; CXA Pre-Energization Inspection; PEI/Clean-Walk
- DC1-CRAH-L2-2610: Steps: EC Installation Checklist (done); MC Installation Checklist; CC Installation Checklist; Vendor Pre-Energization Checklist; CXA Pre-Energization Inspection; PEI/Clean-Walk
- DC1-CRAH-L2-2620: Steps: EC Installation Checklist (done); MC Installation Checklist; CC Installation Checklist; Vendor Pre-Energization Checklist; CXA Pre-Energization Inspection; PEI/Clean-Walk
- DC1-CRAH-L2-2630: Steps: EC Installation Checklist (done); MC Installation Checklist; CC Installation Checklist; Vendor Pre-Energization Checklist; CXA Pre-Energization Inspection; PEI/Clean-Walk
- DC1-MOD03-L2-2070: Steps: EC Installation Checklist (done); CC Installation Checklist (done); Vendor Pre-Energization Checklist; CXA Pre-Energization Inspection; PEI/Clean-Walk
- DC1-MOD03-L2-2080: Steps: EC Installation Checklist (done); CC Installation Checklist (done); Vendor Pre-Energization Checklist; CXA Pre-Energization Inspection; PEI/Clean-Walk
- DC1-MOD03-L2-2090: Steps: EC Installation Checklist (done); CC Installation Checklist (done); Vendor Pre-Energization Checklist; CXA Pre-Energization Inspection; PEI/Clean-Walk
- DC1-MOD03-L2-2100: Steps: EC Installation Checklist (done); CC Installation Checklist (done); Vendor Pre-Energization Checklist; CXA Pre-Energization Inspection; PEI/Clean-Walk
- DC1-MOD03-L2-2110: Steps: EC Installation Checklist (done); CC Installation Checklist (done); Vendor Pre-Energization Checklist; CXA Pre-Energization Inspection; PEI/Clean-Walk
- DC1-MOD03-L2-2120: Steps: EC Installation Checklist (done); CC Installation Checklist (done); Vendor Pre-Energization Checklist; CXA Pre-Energization Inspection; PEI/Clean-Walk
- DC1-MOD03-L2-2130: Steps: EC Installation Checklist (done); CC Installation Checklist (done); Vendor Pre-Energization Checklist; CXA Pre-Energization Inspection; PEI/Clean-Walk
- QTS-45161: Scheduler Notes: 7/15/26-Black ceiling needs to be procured
- DC1-ATS-L2-2720: Steps: EC Installation Checklist (done); CC Installation Checklist; Vendor Pre-Energization Checklist (done); CXA Pre-Energization Inspection; PEI/Clean-Walk
- DC1-ATS-L2-2730: Steps: EC Installation Checklist (done); CC Installation Checklist; Vendor Pre-Energization Checklist (done); CXA Pre-Energization Inspection; PEI/Clean-Walk
- DC1-ATS-L2-2740: Steps: EC Installation Checklist (done); CC Installation Checklist; Vendor Pre-Energization Checklist (done); CXA Pre-Energization Inspection; PEI/Clean-Walk
- DC1-ATS-L2-2750: Steps: EC Installation Checklist (done); CC Installation Checklist; Vendor Pre-Energization Checklist (done); CXA Pre-Energization Inspection; PEI/Clean-Walk
- DC1-ATS-L2-2760: Steps: EC Installation Checklist (done); CC Installation Checklist; Vendor Pre-Energization Checklist (done); CXA Pre-Energization Inspection; PEI/Clean-Walk
- DC1-ATS-L2-2770: Steps: EC Installation Checklist (done); CC Installation Checklist; Vendor Pre-Energization Checklist (done); CXA Pre-Energization Inspection; PEI/Clean-Walk
- DC1-COD-L2-2360: Steps: EC Installation Checklist; CC Installation Checklist (done); Vendor Pre-Energization Checklist (done); CXA Pre-Energization Inspection; PEI/Clean-Walk
- DC1-COD-L2-2370: Steps: EC Installation Checklist (done); CC Installation Checklist (done); Vendor Pre-Energization Checklist (done); CXA Pre-Energization Inspection; PEI/Clean-Walk
- DC1-COD-L2-2380: Steps: EC Installation Checklist (done); CC Installation Checklist (done); Vendor Pre-Energization Checklist (done); CXA Pre-Energization Inspection; PEI/Clean-Walk
- DC1-COD-L2-2390: Steps: EC Installation Checklist (done); CC Installation Checklist (done); Vendor Pre-Energization Checklist (done); CXA Pre-Energization Inspection; PEI/Clean-Walk
- DC1-COD-L2-2400: Steps: EC Installation Checklist (done); CC Installation Checklist (done); Vendor Pre-Energization Checklist (done); CXA Pre-Energization Inspection; PEI/Clean-Walk
- DC1-COD-L2-2410: Steps: EC Installation Checklist (done); CC Installation Checklist (done); Vendor Pre-Energization Checklist (done); CXA Pre-Energization Inspection; PEI/Clean-Walk
- DC1-COD-L2-2420: Steps: EC Installation Checklist (done); CC Installation Checklist (done); Vendor Pre-Energization Checklist (done); CXA Pre-Energization Inspection; PEI/Clean-Walk
- DC1-COD-L2-2430: Steps: EC Installation Checklist (done); CC Installation Checklist (done); Vendor Pre-Energization Checklist (done); CXA Pre-Energization Inspection; PEI/Clean-Walk
- DC1-COD-L2-2440: Steps: EC Installation Checklist (done); CC Installation Checklist (done); Vendor Pre-Energization Checklist (done); CXA Pre-Energization Inspection; PEI/Clean-Walk
- DC1-COD-L2-2450: Steps: EC Installation Checklist (done); CC Installation Checklist (done); Vendor Pre-Energization Checklist (done); CXA Pre-Energization Inspection; PEI/Clean-Walk
- DC1-COD-L2-2460: Steps: EC Installation Checklist (done); CC Installation Checklist (done); Vendor Pre-Energization Checklist (done); CXA Pre-Energization Inspection; PEI/Clean-Walk
- DC1-COD-L2-2470: Steps: EC Installation Checklist (done); CC Installation Checklist (done); Vendor Pre-Energization Checklist (done); CXA Pre-Energization Inspection; PEI/Clean-Walk
- DC1-COD-L2-2480: Steps: EC Installation Checklist (done); CC Installation Checklist (done); Vendor Pre-Energization Checklist (done); CXA Pre-Energization Inspection; PEI/Clean-Walk
- DC1-COD-L2-2490: Steps: EC Installation Checklist (done); CC Installation Checklist (done); Vendor Pre-Energization Checklist (done); CXA Pre-Energization Inspection; PEI/Clean-Walk
- DC1-COD-L2-2500: Steps: EC Installation Checklist (done); CC Installation Checklist (done); Vendor Pre-Energization Checklist (done); CXA Pre-Energization Inspection; PEI/Clean-Walk
- DC1-COD-L2-2510: Steps: EC Installation Checklist (done); CC Installation Checklist (done); Vendor Pre-Energization Checklist (done); CXA Pre-Energization Inspection; PEI/Clean-Walk
- DC1-COD-L2-2520: Steps: EC Installation Checklist (done); CC Installation Checklist (done); Vendor Pre-Energization Checklist (done); CXA Pre-Energization Inspection; PEI/Clean-Walk
- DC1-COD-L2-2530: Steps: EC Installation Checklist (done); CC Installation Checklist (done); Vendor Pre-Energization Checklist (done); CXA Pre-Energization Inspection; PEI/Clean-Walk
- DC1-COD-L2-2540: Steps: EC Installation Checklist (done); CC Installation Checklist (done); Vendor Pre-Energization Checklist (done); CXA Pre-Energization Inspection; PEI/Clean-Walk
- DC1-COD-L2-2550: Steps: EC Installation Checklist (done); CC Installation Checklist (done); Vendor Pre-Energization Checklist (done); CXA Pre-Energization Inspection; PEI/Clean-Walk
- DC1-COD-L2-2560: Steps: EC Installation Checklist (done); CC Installation Checklist (done); Vendor Pre-Energization Checklist (done); CXA Pre-Energization Inspection; PEI/Clean-Walk
- DC1-COD-L2-2570: Steps: EC Installation Checklist (done); CC Installation Checklist (done); Vendor Pre-Energization Checklist (done); CXA Pre-Energization Inspection; PEI/Clean-Walk
- DC1-COD-L2-2580: Steps: EC Installation Checklist; CC Installation Checklist (done); Vendor Pre-Energization Checklist (done); CXA Pre-Energization Inspection; PEI/Clean-Walk

| ID | Activity | Duration | Start | Finish | Predecessors | Complete | Planned start | Planned finish | Calendar | Vendor Responsible Party | Layton Discipline | Location | CX Level | Equipment | DELETED | D | Layton Super | TFO-CONST ONLY | Contract | NICK | Last Period Finish | Last Period Start | Project Section | Baseline | Phase-1-1 | Project Section-1 | Level | Notes |
| --- | --- | --- | --- | --- | --- | --- | --- | --- | --- | --- | --- | --- | --- | --- | --- | --- | --- | --- | --- | --- | --- | --- | --- | --- | --- | --- | --- | --- |
| DC1-COD-L2-2590 | **DELETED** DH2200 COD-D22-06 L2 Checklist | 1d | 2026-07-09 A | 2026-07-14 A | QTS-1020 | 100% | 2026-07-13 | 2026-07-13 |  | SIE | Commissioning | DH2200 | L2 | COD | DELETED | DH1100 |  |  |  |  |  |  |  |  |  |  |  |  |
| DC1-COD-L2-2600 | **DELETED** DH2200 COD-E22-01 L2 Checklist | 1d | 2026-07-09 A | 2026-07-14 A | QTS-1020 | 100% | 2026-07-13 | 2026-07-13 |  | SIE | Commissioning | DH2200 | L2 | COD | DELETED | DH1100 |  |  |  |  |  |  |  |  |  |  |  |  |
| DC1-COD-L2-2610 | **DELETED** DH2200 COD-E22-02 L2 Checklist | 1d | 2026-07-09 A | 2026-07-14 A | QTS-1020 | 100% | 2026-07-13 | 2026-07-13 |  | SIE | Commissioning | DH2200 | L2 | COD | DELETED | DH1100 |  |  |  |  |  |  |  |  |  |  |  |  |
| DC1-COD-L2-2620 | **DELETED** DH2200 COD-E22-03 L2 Checklist | 1d | 2026-07-09 A | 2026-07-14 A | QTS-1020 | 100% | 2026-07-13 | 2026-07-13 |  | SIE | Commissioning | DH2200 | L2 | COD | DELETED | DH1100 |  |  |  |  |  |  |  |  |  |  |  |  |
| DC1-COD-L2-2630 | **DELETED** DH2200 COD-E22-04 L2 Checklist | 1d | 2026-07-09 A | 2026-07-14 A | QTS-1020 | 100% | 2026-07-13 | 2026-07-13 |  | SIE | Commissioning | DH2200 | L2 | COD | DELETED | DH1100 |  |  |  |  |  |  |  |  |  |  |  |  |
| DC1-COD-L2-2640 | **DELETED** DH2200 COD-E22-05 L2 Checklist | 1d | 2026-07-09 A | 2026-07-14 A | QTS-1020 | 100% | 2026-07-13 | 2026-07-13 |  | SIE | Commissioning | DH2200 | L2 | COD | DELETED | DH1100 |  |  |  |  |  |  |  |  |  |  |  |  |
| DC1-COD-L2-2650 | **DELETED** DH2200 COD-E22-06 L2 Checklist | 1d | 2026-07-09 A | 2026-07-14 A | QTS-1020 | 100% | 2026-07-13 | 2026-07-13 |  | SIE | Commissioning | DH2200 | L2 | COD | DELETED | DH1100 |  |  |  |  |  |  |  |  |  |  |  |  |
| DC1-COD-L2-2660 | **DELETED** DH2200 COD-F22-01 L2 Checklist | 1d | 2026-07-09 A | 2026-07-14 A | QTS-1020 | 100% | 2026-07-13 | 2026-07-13 |  | SIE | Commissioning | DH2200 | L2 | COD | DELETED | DH1100 |  |  |  |  |  |  |  |  |  |  |  |  |
| DC1-COD-L2-2670 | **DELETED** DH2200 COD-F22-02 L2 Checklist | 1d | 2026-07-09 A | 2026-07-14 A | QTS-1020 | 100% | 2026-07-13 | 2026-07-13 |  | SIE | Commissioning | DH2200 | L2 | COD | DELETED | DH1100 |  |  |  |  |  |  |  |  |  |  |  |  |
| DC1-COD-L2-2680 | **DELETED** DH2200 COD-F22-03 L2 Checklist | 1d | 2026-07-09 A | 2026-07-14 A | QTS-1020 | 100% | 2026-07-13 | 2026-07-13 |  | SIE | Commissioning | DH2200 | L2 | COD | DELETED | DH1100 |  |  |  |  |  |  |  |  |  |  |  |  |
| DC1-COD-L2-2690 | **DELETED** DH2200 COD-F22-04 L2 Checklist | 1d | 2026-07-09 A | 2026-07-14 A | QTS-1020 | 100% | 2026-07-13 | 2026-07-13 |  | SIE | Commissioning | DH2200 | L2 | COD | DELETED | DH1100 |  |  |  |  |  |  |  |  |  |  |  |  |
| DC1-COD-L2-2700 | **DELETED** DH2200 COD-F22-05 L2 Checklist | 1d | 2026-07-09 A | 2026-07-14 A | QTS-1020 | 100% | 2026-07-13 | 2026-07-13 |  | SIE | Commissioning | DH2200 | L2 | COD | DELETED | DH1100 |  |  |  |  |  |  |  |  |  |  |  |  |
| DC1-COD-L2-2710 | **DELETED** DH2200 COD-F22-06 L2 Checklist | 1d | 2026-07-09 A | 2026-07-14 A | QTS-1020 | 100% | 2026-07-13 | 2026-07-13 |  | SIE | Commissioning | DH2200 | L2 | COD | DELETED | DH1100 |  |  |  |  |  |  |  |  |  |  |  |  |
| QTS - 24401 | **DELETED** TFO Scope // Flex Space // MEP Wall Finishes | 5d | 2026-07-10 A | 2026-07-14 A | QTS-1020 | 100% | 2026-07-15 | 2026-07-20 | QTS-PHX3 DC1 - 6 day w/ Holidays |  | Mechanical | FOH |  |  | DELETED | DH1100 | Mechanical | TFO CONST | TFO | NICK |  |  |  |  |  |  |  |  |
| DC1-ATS-L2-2780 | **DELETED** DH1200 ATS-B12-01 L2 Checklist | 3d | 2026-07-10 A | 2026-07-16 A | QTS-1020 | 100% | 2026-07-28 | 2026-07-30 |  | MAV | Commissioning | DH1200 | L2 | ATS | DELETED | DH1100 |  |  |  |  |  |  |  |  |  |  |  |  |
| QTS-7351 | **DELETED** Restrooms #2071 // Prime & Paint | 1d | 2026-07-11 A | 2026-07-14 A | QTS-1020 | 100% | 2026-07-15 | 2026-07-15 | QTS-PHX3 DC1 - 6 day w/ Holidays |  | Build Out | BOH |  |  | DELETED | DH1100 | Jake Shimmin |  | BAB |  | 2023-04-12 | 2023-04-11 | Construction | IGMP | Phase 1 | Construction | Level 2 |  |
| DC1-ATS-L3-CX-2545 | **DELETED** DC1-ATS-A22-01 FTE | 1d | 2026-07-14 A | 2026-07-14 A | QTS-1020 | 100% | 2026-07-20 | 2026-07-20 |  | ROS | Commissioning | DH2200 | L3 | ATS | DELETED | DH1100 |  |  |  |  |  |  |  |  |  |  |  | SWD - FS |
| DC1-ATS-L3-CX-2555 | **DELETED** DC1-ATS-A22-01 L3 Startup | 2d | 2026-07-14 A | 2026-07-14 A | QTS-1020 | 100% | 2026-07-21 | 2026-07-22 |  | MAV | Commissioning | DH2200 | L3 | ATS | DELETED | DH1100 |  |  |  |  |  |  |  |  |  |  |  |  |
| DC1-ATS-L3-CX-2565 | **DELETED** DC1-ATS-A22-01 BMS/EPMS Programming | 1d | 2026-07-14 A | 2026-07-14 A | QTS-1020 | 100% | 2026-07-23 | 2026-07-23 |  | PRM | Commissioning | DH2200 | L3 | ATS | DELETED | DH1100 |  |  |  |  |  |  |  |  |  |  |  |  |
| DC1-ATS-L3-CX-2575 | **DELETED** DC1-ATS-A22-02 FTE | 1d | 2026-07-14 A | 2026-07-14 A | QTS-1020 | 100% | 2026-07-20 | 2026-07-20 |  | ROS | Commissioning | DH2200 | L3 | ATS | DELETED | DH1100 |  |  |  |  |  |  |  |  |  |  |  | SWD - FS |
| DC1-ATS-L3-CX-2585 | **DELETED** DC1-ATS-A22-02 L3 Startup | 2d | 2026-07-14 A | 2026-07-14 A | QTS-1020 | 100% | 2026-07-21 | 2026-07-22 |  | MAV | Commissioning | DH2200 | L3 | ATS | DELETED | DH1100 |  |  |  |  |  |  |  |  |  |  |  |  |
| DC1-ATS-L3-CX-2595 | **DELETED** DC1-ATS-A22-02 BMS/EPMS Programming | 1d | 2026-07-14 A | 2026-07-14 A | QTS-1020 | 100% | 2026-07-23 | 2026-07-23 |  | PRM | Commissioning | DH2200 | L3 | ATS | DELETED | DH1100 |  |  |  |  |  |  |  |  |  |  |  |  |
| DC1-ATS-L3-CX-2605 | **DELETED** DC1-ATS-A22-03 FTE | 1d | 2026-07-14 A | 2026-07-14 A | QTS-1020 | 100% | 2026-07-20 | 2026-07-20 |  | ROS | Commissioning | DH2200 | L3 | ATS | DELETED | DH1100 |  |  |  |  |  |  |  |  |  |  |  | SWD - FS |
| DC1-ATS-L3-CX-2615 | **DELETED** DC1-ATS-A22-03 L3 Startup | 2d | 2026-07-14 A | 2026-07-14 A | QTS-1020 | 100% | 2026-07-21 | 2026-07-22 |  | MAV | Commissioning | DH2200 | L3 | ATS | DELETED | DH1100 |  |  |  |  |  |  |  |  |  |  |  |  |
| DC1-ATS-L3-CX-2625 | **DELETED** DC1-ATS-A22-03 BMS/EPMS Programming | 1d | 2026-07-14 A | 2026-07-14 A | QTS-1020 | 100% | 2026-07-23 | 2026-07-23 |  | PRM | Commissioning | DH2200 | L3 | ATS | DELETED | DH1100 |  |  |  |  |  |  |  |  |  |  |  |  |
| DC1-ATS-L3-CX-2635 | **DELETED** DC1-ATS-A22-04 FTE | 1d | 2026-07-14 A | 2026-07-14 A | QTS-1020 | 100% | 2026-07-20 | 2026-07-20 |  | ROS | Commissioning | DH2200 | L3 | ATS | DELETED | DH1100 |  |  |  |  |  |  |  |  |  |  |  | SWD - FS |
| DC1-ATS-L3-CX-2645 | **DELETED** DC1-ATS-A22-04 L3 Startup | 2d | 2026-07-14 A | 2026-07-14 A | QTS-1020 | 100% | 2026-07-21 | 2026-07-22 |  | MAV | Commissioning | DH2200 | L3 | ATS | DELETED | DH1100 |  |  |  |  |  |  |  |  |  |  |  |  |
| DC1-ATS-L3-CX-2655 | **DELETED** DC1-ATS-A22-04 BMS/EPMS Programming | 1d | 2026-07-14 A | 2026-07-14 A | QTS-1020 | 100% | 2026-07-23 | 2026-07-23 |  | PRM | Commissioning | DH2200 | L3 | ATS | DELETED | DH1100 |  |  |  |  |  |  |  |  |  |  |  |  |
| DC1-ATS-L3-CX-2665 | **DELETED** DC1-ATS-A22-05 FTE | 1d | 2026-07-14 A | 2026-07-14 A | QTS-1020 | 100% | 2026-07-20 | 2026-07-20 |  | ROS | Commissioning | DH2200 | L3 | ATS | DELETED | DH1100 |  |  |  |  |  |  |  |  |  |  |  | SWD - FS |
| DC1-ATS-L3-CX-2675 | **DELETED** DC1-ATS-A22-05 L3 Startup | 2d | 2026-07-14 A | 2026-07-14 A | QTS-1020 | 100% | 2026-07-21 | 2026-07-22 |  | MAV | Commissioning | DH2200 | L3 | ATS | DELETED | DH1100 |  |  |  |  |  |  |  |  |  |  |  |  |
| DC1-ATS-L3-CX-2685 | **DELETED** DC1-ATS-A22-05 BMS/EPMS Programming | 1d | 2026-07-14 A | 2026-07-14 A | QTS-1020 | 100% | 2026-07-23 | 2026-07-23 |  | PRM | Commissioning | DH2200 | L3 | ATS | DELETED | DH1100 |  |  |  |  |  |  |  |  |  |  |  |  |
| DC1-ATS-L3-CX-2695 | **DELETED** DC1-ATS-A22-06 FTE | 1d | 2026-07-14 A | 2026-07-14 A | QTS-1020 | 100% | 2026-07-20 | 2026-07-20 |  | ROS | Commissioning | DH2200 | L3 | ATS | DELETED | DH1100 |  |  |  |  |  |  |  |  |  |  |  | SWD - FS |
| DC1-ATS-L3-CX-2705 | **DELETED** DC1-ATS-A22-06 L3 Startup | 2d | 2026-07-14 A | 2026-07-14 A | QTS-1020 | 100% | 2026-07-21 | 2026-07-22 |  | MAV | Commissioning | DH2200 | L3 | ATS | DELETED | DH1100 |  |  |  |  |  |  |  |  |  |  |  |  |
| DC1-ATS-L3-CX-2715 | **DELETED** DC1-ATS-A22-06 BMS/EPMS Programming | 1d | 2026-07-14 A | 2026-07-14 A | QTS-1020 | 100% | 2026-07-23 | 2026-07-23 |  | PRM | Commissioning | DH2200 | L3 | ATS | DELETED | DH1100 |  |  |  |  |  |  |  |  |  |  |  |  |
| DC1-ATS-L3-CX-2725 | **DELETED** DC1-ATS-B22-01 FTE | 1d | 2026-07-14 A | 2026-07-14 A | QTS-1020 | 100% | 2026-07-20 | 2026-07-20 |  | ROS | Commissioning | DH2200 | L3 | ATS | DELETED | DH1100 |  |  |  |  |  |  |  |  |  |  |  |  |
| DC1-ATS-L3-CX-2735 | **DELETED** DC1-ATS-B22-01 L3 Startup | 2d | 2026-07-14 A | 2026-07-14 A | QTS-1020 | 100% | 2026-07-21 | 2026-07-22 |  | MAV | Commissioning | DH2200 | L3 | ATS | DELETED | DH1100 |  |  |  |  |  |  |  |  |  |  |  |  |
| DC1-ATS-L3-CX-2745 | **DELETED** DC1-ATS-B22-01 BMS/EPMS Programming | 1d | 2026-07-14 A | 2026-07-14 A | QTS-1020 | 100% | 2026-07-23 | 2026-07-23 |  | PRM | Commissioning | DH2200 | L3 | ATS | DELETED | DH1100 |  |  |  |  |  |  |  |  |  |  |  |  |
| DC1-ATS-L3-CX-2755 | **DELETED** DC1-ATS-B22-02 FTE | 1d | 2026-07-14 A | 2026-07-14 A | QTS-1020 | 100% | 2026-07-21 | 2026-07-21 |  | ROS | Commissioning | DH2200 | L3 | ATS | DELETED | DH1100 |  |  |  |  |  |  |  |  |  |  |  |  |
| DC1-ATS-L3-CX-2765 | **DELETED** DC1-ATS-B22-02 L3 Startup | 2d | 2026-07-14 A | 2026-07-14 A | QTS-1020 | 100% | 2026-07-22 | 2026-07-23 |  | MAV | Commissioning | DH2200 | L3 | ATS | DELETED | DH1100 |  |  |  |  |  |  |  |  |  |  |  |  |
| DC1-ATS-L3-CX-2775 | **DELETED** DC1-ATS-B22-02 BMS/EPMS Programming | 1d | 2026-07-14 A | 2026-07-14 A | QTS-1020 | 100% | 2026-07-24 | 2026-07-24 |  | PRM | Commissioning | DH2200 | L3 | ATS | DELETED | DH1100 |  |  |  |  |  |  |  |  |  |  |  |  |
| DC1-ATS-L3-CX-2785 | **DELETED** DC1-ATS-B22-03 FTE | 1d | 2026-07-14 A | 2026-07-14 A | QTS-1020 | 100% | 2026-07-20 | 2026-07-20 |  | ROS | Commissioning | DH2200 | L3 | ATS | DELETED | DH1100 |  |  |  |  |  |  |  |  |  |  |  |  |
| DC1-ATS-L3-CX-2795 | **DELETED** DC1-ATS-B22-03 L3 Startup | 2d | 2026-07-14 A | 2026-07-14 A | QTS-1020 | 100% | 2026-07-21 | 2026-07-22 |  | MAV | Commissioning | DH2200 | L3 | ATS | DELETED | DH1100 |  |  |  |  |  |  |  |  |  |  |  |  |
| DC1-ATS-L3-CX-2805 | **DELETED** DC1-ATS-B22-03 BMS/EPMS Programming | 1d | 2026-07-14 A | 2026-07-14 A | QTS-1020 | 100% | 2026-07-23 | 2026-07-23 |  | PRM | Commissioning | DH2200 | L3 | ATS | DELETED | DH1100 |  |  |  |  |  |  |  |  |  |  |  |  |
| DC1-ATS-L3-CX-2815 | **DELETED** DC1-ATS-B22-04 FTE | 1d | 2026-07-14 A | 2026-07-14 A | QTS-1020 | 100% | 2026-07-21 | 2026-07-21 |  | ROS | Commissioning | DH2200 | L3 | ATS | DELETED | DH1100 |  |  |  |  |  |  |  |  |  |  |  |  |
| DC1-ATS-L3-CX-2825 | **DELETED** DC1-ATS-B22-04 L3 Startup | 2d | 2026-07-14 A | 2026-07-14 A | QTS-1020 | 100% | 2026-07-22 | 2026-07-23 |  | MAV | Commissioning | DH2200 | L3 | ATS | DELETED | DH1100 |  |  |  |  |  |  |  |  |  |  |  |  |
| DC1-ATS-L3-CX-2835 | **DELETED** DC1-ATS-B22-04 BMS/EPMS Programming | 1d | 2026-07-14 A | 2026-07-14 A | QTS-1020 | 100% | 2026-07-24 | 2026-07-24 |  | PRM | Commissioning | DH2200 | L3 | ATS | DELETED | DH1100 |  |  |  |  |  |  |  |  |  |  |  |  |
| DC1-ATS-L3-CX-2845 | **DELETED** DC1-ATS-B22-05 FTE | 1d | 2026-07-14 A | 2026-07-14 A | QTS-1020 | 100% | 2026-07-20 | 2026-07-20 |  | ROS | Commissioning | DH2200 | L3 | ATS | DELETED | DH1100 |  |  |  |  |  |  |  |  |  |  |  |  |
| DC1-ATS-L3-CX-2855 | **DELETED** DC1-ATS-B22-05 L3 Startup | 2d | 2026-07-14 A | 2026-07-14 A | QTS-1020 | 100% | 2026-07-21 | 2026-07-22 |  | MAV | Commissioning | DH2200 | L3 | ATS | DELETED | DH1100 |  |  |  |  |  |  |  |  |  |  |  |  |
| DC1-ATS-L3-CX-2865 | **DELETED** DC1-ATS-B22-05 BMS/EPMS Programming | 1d | 2026-07-14 A | 2026-07-14 A | QTS-1020 | 100% | 2026-07-23 | 2026-07-23 |  | PRM | Commissioning | DH2200 | L3 | ATS | DELETED | DH1100 |  |  |  |  |  |  |  |  |  |  |  |  |
| DC1-ATS-L3-CX-2875 | **DELETED** DC1-ATS-B22-06 FTE | 1d | 2026-07-14 A | 2026-07-14 A | QTS-1020 | 100% | 2026-07-21 | 2026-07-21 |  | ROS | Commissioning | DH2200 | L3 | ATS | DELETED | DH1100 |  |  |  |  |  |  |  |  |  |  |  |  |
| DC1-ATS-L3-CX-2885 | **DELETED** DC1-ATS-B22-06 L3 Startup | 2d | 2026-07-14 A | 2026-07-14 A | QTS-1020 | 100% | 2026-07-22 | 2026-07-23 |  | MAV | Commissioning | DH2200 | L3 | ATS | DELETED | DH1100 |  |  |  |  |  |  |  |  |  |  |  |  |
| DC1-ATS-L3-CX-2895 | **DELETED** DC1-ATS-B22-06 BMS/EPMS Programming | 1d | 2026-07-14 A | 2026-07-14 A | QTS-1020 | 100% | 2026-07-24 | 2026-07-24 |  | PRM | Commissioning | DH2200 | L3 | ATS | DELETED | DH1100 |  |  |  |  |  |  |  |  |  |  |  |  |
| DC1-ATS-L3-CX-2905 | **DELETED** DC1-ATS-C22-01 FTE | 1d | 2026-07-14 A | 2026-07-14 A | QTS-1020 | 100% | 2026-07-20 | 2026-07-20 |  | ROS | Commissioning | DH2200 | L3 | ATS | DELETED | DH1100 |  |  |  |  |  |  |  |  |  |  |  |  |
| DC1-ATS-L3-CX-2915 | **DELETED** DC1-ATS-C22-01 L3 Startup | 2d | 2026-07-14 A | 2026-07-14 A | QTS-1020 | 100% | 2026-07-21 | 2026-07-22 |  | MAV | Commissioning | DH2200 | L3 | ATS | DELETED | DH1100 |  |  |  |  |  |  |  |  |  |  |  |  |
| DC1-ATS-L3-CX-2925 | **DELETED** DC1-ATS-C22-01 BMS/EPMS Programming | 1d | 2026-07-14 A | 2026-07-14 A | QTS-1020 | 100% | 2026-07-23 | 2026-07-23 |  | PRM | Commissioning | DH2200 | L3 | ATS | DELETED | DH1100 |  |  |  |  |  |  |  |  |  |  |  |  |
| DC1-ATS-L3-CX-2935 | **DELETED** DC1-ATS-C22-02 FTE | 1d | 2026-07-14 A | 2026-07-14 A | QTS-1020 | 100% | 2026-07-21 | 2026-07-21 |  | ROS | Commissioning | DH2200 | L3 | ATS | DELETED | DH1100 |  |  |  |  |  |  |  |  |  |  |  |  |
| DC1-ATS-L3-CX-2945 | **DELETED** DC1-ATS-C22-02 L3 Startup | 2d | 2026-07-14 A | 2026-07-14 A | QTS-1020 | 100% | 2026-07-22 | 2026-07-23 |  | MAV | Commissioning | DH2200 | L3 | ATS | DELETED | DH1100 |  |  |  |  |  |  |  |  |  |  |  |  |
| DC1-ATS-L3-CX-2955 | **DELETED** DC1-ATS-C22-02 BMS/EPMS Programming | 1d | 2026-07-14 A | 2026-07-14 A | QTS-1020 | 100% | 2026-07-24 | 2026-07-24 |  | PRM | Commissioning | DH2200 | L3 | ATS | DELETED | DH1100 |  |  |  |  |  |  |  |  |  |  |  |  |
| DC1-ATS-L3-CX-2965 | **DELETED** DC1-ATS-C22-03 FTE | 1d | 2026-07-14 A | 2026-07-14 A | QTS-1020 | 100% | 2026-07-20 | 2026-07-20 |  | ROS | Commissioning | DH2200 | L3 | ATS | DELETED | DH1100 |  |  |  |  |  |  |  |  |  |  |  |  |
| DC1-ATS-L3-CX-2975 | **DELETED** DC1-ATS-C22-03 L3 Startup | 2d | 2026-07-14 A | 2026-07-14 A | QTS-1020 | 100% | 2026-07-21 | 2026-07-22 |  | MAV | Commissioning | DH2200 | L3 | ATS | DELETED | DH1100 |  |  |  |  |  |  |  |  |  |  |  |  |
| DC1-ATS-L3-CX-2985 | **DELETED** DC1-ATS-C22-03 BMS/EPMS Programming | 1d | 2026-07-14 A | 2026-07-14 A | QTS-1020 | 100% | 2026-07-23 | 2026-07-23 |  | PRM | Commissioning | DH2200 | L3 | ATS | DELETED | DH1100 |  |  |  |  |  |  |  |  |  |  |  |  |
| DC1-ATS-L3-CX-2995 | **DELETED** DC1-ATS-C22-04 FTE | 1d | 2026-07-14 A | 2026-07-14 A | QTS-1020 | 100% | 2026-07-21 | 2026-07-21 |  | ROS | Commissioning | DH2200 | L3 | ATS | DELETED | DH1100 |  |  |  |  |  |  |  |  |  |  |  |  |
| DC1-ATS-L3-CX-3005 | **DELETED** DC1-ATS-C22-04 L3 Startup | 2d | 2026-07-14 A | 2026-07-14 A | QTS-1020 | 100% | 2026-07-22 | 2026-07-23 |  | MAV | Commissioning | DH2200 | L3 | ATS | DELETED | DH1100 |  |  |  |  |  |  |  |  |  |  |  |  |
| DC1-ATS-L3-CX-3015 | **DELETED** DC1-ATS-C22-04 BMS/EPMS Programming | 1d | 2026-07-14 A | 2026-07-14 A | QTS-1020 | 100% | 2026-07-24 | 2026-07-24 |  | PRM | Commissioning | DH2200 | L3 | ATS | DELETED | DH1100 |  |  |  |  |  |  |  |  |  |  |  |  |
| DC1-ATS-L3-CX-3025 | **DELETED** DC1-ATS-C22-05 FTE | 1d | 2026-07-14 A | 2026-07-14 A | QTS-1020 | 100% | 2026-07-20 | 2026-07-20 |  | ROS | Commissioning | DH2200 | L3 | ATS | DELETED | DH1100 |  |  |  |  |  |  |  |  |  |  |  |  |
| DC1-ATS-L3-CX-3035 | **DELETED** DC1-ATS-C22-05 L3 Startup | 2d | 2026-07-14 A | 2026-07-14 A | QTS-1020 | 100% | 2026-07-21 | 2026-07-22 |  | MAV | Commissioning | DH2200 | L3 | ATS | DELETED | DH1100 |  |  |  |  |  |  |  |  |  |  |  |  |
| DC1-ATS-L3-CX-3045 | **DELETED** DC1-ATS-C22-05 BMS/EPMS Programming | 1d | 2026-07-14 A | 2026-07-14 A | QTS-1020 | 100% | 2026-07-23 | 2026-07-23 |  | PRM | Commissioning | DH2200 | L3 | ATS | DELETED | DH1100 |  |  |  |  |  |  |  |  |  |  |  |  |
| DC1-ATS-L3-CX-3055 | **DELETED** DC1-ATS-C22-06 FTE | 1d | 2026-07-14 A | 2026-07-14 A | QTS-1020 | 100% | 2026-07-21 | 2026-07-21 |  | ROS | Commissioning | DH2200 | L3 | ATS | DELETED | DH1100 |  |  |  |  |  |  |  |  |  |  |  |  |
| DC1-ATS-L3-CX-3065 | **DELETED** DC1-ATS-C22-06 L3 Startup | 2d | 2026-07-14 A | 2026-07-14 A | QTS-1020 | 100% | 2026-07-22 | 2026-07-23 |  | MAV | Commissioning | DH2200 | L3 | ATS | DELETED | DH1100 |  |  |  |  |  |  |  |  |  |  |  |  |
| DC1-ATS-L3-CX-3075 | **DELETED** DC1-ATS-C22-06 BMS/EPMS Programming | 1d | 2026-07-14 A | 2026-07-14 A | QTS-1020 | 100% | 2026-07-24 | 2026-07-24 |  | PRM | Commissioning | DH2200 | L3 | ATS | DELETED | DH1100 |  |  |  |  |  |  |  |  |  |  |  |  |

Notes:
- DC1-COD-L2-2590: Steps: EC Installation Checklist; CC Installation Checklist (done); Vendor Pre-Energization Checklist (done); CXA Pre-Energization Inspection; PEI/Clean-Walk
- DC1-COD-L2-2600: Steps: EC Installation Checklist (done); CC Installation Checklist (done); Vendor Pre-Energization Checklist (done); CXA Pre-Energization Inspection; PEI/Clean-Walk
- DC1-COD-L2-2610: Steps: EC Installation Checklist (done); CC Installation Checklist (done); Vendor Pre-Energization Checklist (done); CXA Pre-Energization Inspection; PEI/Clean-Walk
- DC1-COD-L2-2620: Steps: EC Installation Checklist (done); CC Installation Checklist (done); Vendor Pre-Energization Checklist (done); CXA Pre-Energization Inspection; PEI/Clean-Walk
- DC1-COD-L2-2630: Steps: EC Installation Checklist (done); CC Installation Checklist (done); Vendor Pre-Energization Checklist (done); CXA Pre-Energization Inspection; PEI/Clean-Walk
- DC1-COD-L2-2640: Steps: EC Installation Checklist (done); CC Installation Checklist (done); Vendor Pre-Energization Checklist (done); CXA Pre-Energization Inspection; PEI/Clean-Walk
- DC1-COD-L2-2650: Steps: EC Installation Checklist (done); CC Installation Checklist (done); Vendor Pre-Energization Checklist (done); CXA Pre-Energization Inspection; PEI/Clean-Walk
- DC1-COD-L2-2660: Steps: EC Installation Checklist (done); CC Installation Checklist (done); Vendor Pre-Energization Checklist (done); CXA Pre-Energization Inspection; PEI/Clean-Walk
- DC1-COD-L2-2670: Steps: EC Installation Checklist (done); CC Installation Checklist (done); Vendor Pre-Energization Checklist (done); CXA Pre-Energization Inspection; PEI/Clean-Walk
- DC1-COD-L2-2680: Steps: EC Installation Checklist (done); CC Installation Checklist (done); Vendor Pre-Energization Checklist (done); CXA Pre-Energization Inspection; PEI/Clean-Walk
- DC1-COD-L2-2690: Steps: EC Installation Checklist (done); CC Installation Checklist (done); Vendor Pre-Energization Checklist (done); CXA Pre-Energization Inspection; PEI/Clean-Walk
- DC1-COD-L2-2700: Steps: EC Installation Checklist (done); CC Installation Checklist (done); Vendor Pre-Energization Checklist (done); CXA Pre-Energization Inspection; PEI/Clean-Walk
- DC1-COD-L2-2710: Steps: EC Installation Checklist (done); CC Installation Checklist (done); Vendor Pre-Energization Checklist (done); CXA Pre-Energization Inspection; PEI/Clean-Walk
- DC1-ATS-L2-2780: Steps: EC Installation Checklist (done); CC Installation Checklist; Vendor Pre-Energization Checklist (done); CXA Pre-Energization Inspection; PEI/Clean-Walk
- DC1-ATS-L3-CX-2555: Steps: EC Startup Report; Vendor Startup
- DC1-ATS-L3-CX-2585: Steps: EC Startup Report; Vendor Startup
- DC1-ATS-L3-CX-2615: Steps: EC Startup Report; Vendor Startup
- DC1-ATS-L3-CX-2645: Steps: EC Startup Report; Vendor Startup
- DC1-ATS-L3-CX-2675: Steps: EC Startup Report; Vendor Startup
- DC1-ATS-L3-CX-2705: Steps: EC Startup Report; Vendor Startup
- DC1-ATS-L3-CX-2735: Steps: EC Startup Report; Vendor Startup
- DC1-ATS-L3-CX-2765: Steps: EC Startup Report; Vendor Startup
- DC1-ATS-L3-CX-2795: Steps: EC Startup Report; Vendor Startup
- DC1-ATS-L3-CX-2825: Steps: EC Startup Report; Vendor Startup
- DC1-ATS-L3-CX-2855: Steps: EC Startup Report; Vendor Startup
- DC1-ATS-L3-CX-2885: Steps: EC Startup Report; Vendor Startup
- DC1-ATS-L3-CX-2915: Steps: EC Startup Report; Vendor Startup
- DC1-ATS-L3-CX-2945: Steps: EC Startup Report; Vendor Startup
- DC1-ATS-L3-CX-2975: Steps: EC Startup Report; Vendor Startup
- DC1-ATS-L3-CX-3005: Steps: EC Startup Report; Vendor Startup
- DC1-ATS-L3-CX-3035: Steps: EC Startup Report; Vendor Startup
- DC1-ATS-L3-CX-3065: Steps: EC Startup Report; Vendor Startup

| ID | Activity | Duration | Start | Finish | Predecessors | Complete | Planned start | Planned finish | Vendor Responsible Party | Layton Discipline | Location | CX Level | Equipment | DELETED | D | Notes |
| --- | --- | --- | --- | --- | --- | --- | --- | --- | --- | --- | --- | --- | --- | --- | --- | --- |
| DC1-ATS-L3-CX-3085 | **DELETED** DC1-ATS-D22-01 FTE | 1d | 2026-07-14 A | 2026-07-14 A | QTS-1020 | 100% | 2026-07-20 | 2026-07-20 | ROS | Commissioning | DH2200 | L3 | ATS | DELETED | DH1100 |  |
| DC1-ATS-L3-CX-3095 | **DELETED** DC1-ATS-D22-01 L3 Startup | 2d | 2026-07-14 A | 2026-07-14 A | QTS-1020 | 100% | 2026-07-21 | 2026-07-22 | MAV | Commissioning | DH2200 | L3 | ATS | DELETED | DH1100 |  |
| DC1-ATS-L3-CX-3105 | **DELETED** DC1-ATS-D22-01 BMS/EPMS Programming | 1d | 2026-07-14 A | 2026-07-14 A | QTS-1020 | 100% | 2026-07-23 | 2026-07-23 | PRM | Commissioning | DH2200 | L3 | ATS | DELETED | DH1100 |  |
| DC1-ATS-L3-CX-3115 | **DELETED** DC1-ATS-D22-02 FTE | 1d | 2026-07-14 A | 2026-07-14 A | QTS-1020 | 100% | 2026-07-21 | 2026-07-21 | ROS | Commissioning | DH2200 | L3 | ATS | DELETED | DH1100 |  |
| DC1-ATS-L3-CX-3125 | **DELETED** DC1-ATS-D22-02 L3 Startup | 2d | 2026-07-14 A | 2026-07-14 A | QTS-1020 | 100% | 2026-07-22 | 2026-07-23 | MAV | Commissioning | DH2200 | L3 | ATS | DELETED | DH1100 |  |
| DC1-ATS-L3-CX-3135 | **DELETED** DC1-ATS-D22-02 BMS/EPMS Programming | 1d | 2026-07-14 A | 2026-07-14 A | QTS-1020 | 100% | 2026-07-24 | 2026-07-24 | PRM | Commissioning | DH2200 | L3 | ATS | DELETED | DH1100 |  |
| DC1-ATS-L3-CX-3145 | **DELETED** DC1-ATS-D22-03 FTE | 1d | 2026-07-14 A | 2026-07-14 A | QTS-1020 | 100% | 2026-07-20 | 2026-07-20 | ROS | Commissioning | DH2200 | L3 | ATS | DELETED | DH1100 |  |
| DC1-ATS-L3-CX-3155 | **DELETED** DC1-ATS-D22-03 L3 Startup | 2d | 2026-07-14 A | 2026-07-14 A | QTS-1020 | 100% | 2026-07-21 | 2026-07-22 | MAV | Commissioning | DH2200 | L3 | ATS | DELETED | DH1100 |  |
| DC1-ATS-L3-CX-3165 | **DELETED** DC1-ATS-D22-03 BMS/EPMS Programming | 1d | 2026-07-14 A | 2026-07-14 A | QTS-1020 | 100% | 2026-07-23 | 2026-07-23 | PRM | Commissioning | DH2200 | L3 | ATS | DELETED | DH1100 |  |
| DC1-ATS-L3-CX-3175 | **DELETED** C1-ATS-D22-04 FTE | 1d | 2026-07-14 A | 2026-07-14 A | QTS-1020 | 100% | 2026-07-21 | 2026-07-21 | ROS | Commissioning | DH2200 | L3 | ATS | DELETED | DH1100 |  |
| DC1-ATS-L3-CX-3185 | **DELETED** DC1-ATS-D22-04 L3 Startup | 2d | 2026-07-14 A | 2026-07-14 A | QTS-1020 | 100% | 2026-07-22 | 2026-07-23 | MAV | Commissioning | DH2200 | L3 | ATS | DELETED | DH1100 |  |
| DC1-ATS-L3-CX-3195 | **DELETED** DC1-ATS-D22-04 BMS/EPMS Programming | 1d | 2026-07-14 A | 2026-07-14 A | QTS-1020 | 100% | 2026-07-24 | 2026-07-24 | PRM | Commissioning | DH2200 | L3 | ATS | DELETED | DH1100 |  |
| DC1-ATS-L3-CX-3205 | **DELETED** DC1-ATS-D22-05 FTE | 1d | 2026-07-14 A | 2026-07-14 A | QTS-1020 | 100% | 2026-07-20 | 2026-07-20 | ROS | Commissioning | DH2200 | L3 | ATS | DELETED | DH1100 |  |
| DC1-ATS-L3-CX-3215 | **DELETED** DC1-ATS-D22-05 L3 Startup | 2d | 2026-07-14 A | 2026-07-14 A | QTS-1020 | 100% | 2026-07-21 | 2026-07-22 | MAV | Commissioning | DH2200 | L3 | ATS | DELETED | DH1100 |  |
| DC1-ATS-L3-CX-3225 | **DELETED** DC1-ATS-D22-05 BMS/EPMS Programming | 1d | 2026-07-14 A | 2026-07-14 A | QTS-1020 | 100% | 2026-07-23 | 2026-07-23 | PRM | Commissioning | DH2200 | L3 | ATS | DELETED | DH1100 |  |
| DC1-ATS-L3-CX-3235 | **DELETED** DC1-ATS-D22-06 FTE | 1d | 2026-07-14 A | 2026-07-14 A | QTS-1020 | 100% | 2026-07-21 | 2026-07-21 | ROS | Commissioning | DH2200 | L3 | ATS | DELETED | DH1100 |  |
| DC1-ATS-L3-CX-3245 | **DELETED** DC1-ATS-D22-06 L3 Startup | 2d | 2026-07-14 A | 2026-07-14 A | QTS-1020 | 100% | 2026-07-22 | 2026-07-23 | MAV | Commissioning | DH2200 | L3 | ATS | DELETED | DH1100 |  |
| DC1-ATS-L3-CX-3255 | **DELETED** DC1-ATS-D22-06 BMS/EPMS Programming | 1d | 2026-07-14 A | 2026-07-14 A | QTS-1020 | 100% | 2026-07-24 | 2026-07-24 | PRM | Commissioning | DH2200 | L3 | ATS | DELETED | DH1100 |  |
| DC1-ATS-L3-CX-3265 | **DELETED** DC1-ATS-E22-01 FTE | 1d | 2026-07-14 A | 2026-07-14 A | QTS-1020 | 100% | 2026-07-20 | 2026-07-20 | ROS | Commissioning | DH2200 | L3 | ATS | DELETED | DH1100 |  |
| DC1-ATS-L3-CX-3275 | **DELETED** DC1-ATS-E22-01 L3 Startup | 2d | 2026-07-14 A | 2026-07-14 A | QTS-1020 | 100% | 2026-07-21 | 2026-07-22 | MAV | Commissioning | DH2200 | L3 | ATS | DELETED | DH1100 |  |
| DC1-ATS-L3-CX-3285 | **DELETED** DC1-ATS-E22-01 BMS/EPMS Programming | 1d | 2026-07-14 A | 2026-07-14 A | QTS-1020 | 100% | 2026-07-23 | 2026-07-23 | PRM | Commissioning | DH2200 | L3 | ATS | DELETED | DH1100 |  |
| DC1-ATS-L3-CX-3295 | **DELETED** DC1-ATS-E22-02 FTE | 1d | 2026-07-14 A | 2026-07-14 A | QTS-1020 | 100% | 2026-07-21 | 2026-07-21 | ROS | Commissioning | DH2200 | L3 | ATS | DELETED | DH1100 |  |
| DC1-ATS-L3-CX-3305 | **DELETED** DC1-ATS-E22-02 L3 Startup | 2d | 2026-07-14 A | 2026-07-14 A | QTS-1020 | 100% | 2026-07-22 | 2026-07-23 | MAV | Commissioning | DH2200 | L3 | ATS | DELETED | DH1100 |  |
| DC1-ATS-L3-CX-3315 | **DELETED** DC1-ATS-E22-02 BMS/EPMS Programming | 1d | 2026-07-14 A | 2026-07-14 A | QTS-1020 | 100% | 2026-07-24 | 2026-07-24 | PRM | Commissioning | DH2200 | L3 | ATS | DELETED | DH1100 |  |
| DC1-ATS-L3-CX-3325 | **DELETED** DC1-ATS-E22-03 FTE | 1d | 2026-07-14 A | 2026-07-14 A | QTS-1020 | 100% | 2026-07-20 | 2026-07-20 | ROS | Commissioning | DH2200 | L3 | ATS | DELETED | DH1100 |  |
| DC1-ATS-L3-CX-3335 | **DELETED** DC1-ATS-E22-03 L3 Startup | 2d | 2026-07-14 A | 2026-07-14 A | QTS-1020 | 100% | 2026-07-21 | 2026-07-22 | MAV | Commissioning | DH2200 | L3 | ATS | DELETED | DH1100 |  |
| DC1-ATS-L3-CX-3345 | **DELETED** DC1-ATS-E22-03 BMS/EPMS Programming | 1d | 2026-07-14 A | 2026-07-14 A | QTS-1020 | 100% | 2026-07-23 | 2026-07-23 | PRM | Commissioning | DH2200 | L3 | ATS | DELETED | DH1100 |  |
| DC1-ATS-L3-CX-3355 | **DELETED** DC1-ATS-E22-04 FTE | 1d | 2026-07-14 A | 2026-07-14 A | QTS-1020 | 100% | 2026-07-21 | 2026-07-21 | ROS | Commissioning | DH2200 | L3 | ATS | DELETED | DH1100 |  |
| DC1-ATS-L3-CX-3365 | **DELETED** DC1-ATS-E22-04 L3 Startup | 2d | 2026-07-14 A | 2026-07-14 A | QTS-1020 | 100% | 2026-07-22 | 2026-07-23 | MAV | Commissioning | DH2200 | L3 | ATS | DELETED | DH1100 |  |
| DC1-ATS-L3-CX-3375 | **DELETED** DC1-ATS-E22-04 BMS/EPMS Programming | 1d | 2026-07-14 A | 2026-07-14 A | QTS-1020 | 100% | 2026-07-24 | 2026-07-24 | PRM | Commissioning | DH2200 | L3 | ATS | DELETED | DH1100 |  |
| DC1-ATS-L3-CX-3385 | **DELETED** DC1-ATS-E22-05 FTE | 1d | 2026-07-14 A | 2026-07-14 A | QTS-1020 | 100% | 2026-07-20 | 2026-07-20 | ROS | Commissioning | DH2200 | L3 | ATS | DELETED | DH1100 |  |
| DC1-ATS-L3-CX-3395 | **DELETED** DC1-ATS-E22-05 L3 Startup | 2d | 2026-07-14 A | 2026-07-14 A | QTS-1020 | 100% | 2026-07-21 | 2026-07-22 | MAV | Commissioning | DH2200 | L3 | ATS | DELETED | DH1100 |  |
| DC1-ATS-L3-CX-3405 | D**DELETED** C1-ATS-E22-05 BMS/EPMS Programming | 1d | 2026-07-14 A | 2026-07-14 A | QTS-1020 | 100% | 2026-07-23 | 2026-07-23 | PRM | Commissioning | DH2200 | L3 | ATS | DELETED | DH1100 |  |
| DC1-ATS-L3-CX-3415 | **DELETED** DC1-ATS-E22-06 FTE | 1d | 2026-07-14 A | 2026-07-14 A | QTS-1020 | 100% | 2026-07-21 | 2026-07-21 | ROS | Commissioning | DH2200 | L3 | ATS | DELETED | DH1100 |  |
| DC1-ATS-L3-CX-3425 | **DELETED** DC1-ATS-E22-06 L3 Startup | 2d | 2026-07-14 A | 2026-07-14 A | QTS-1020 | 100% | 2026-07-22 | 2026-07-23 | MAV | Commissioning | DH2200 | L3 | ATS | DELETED | DH1100 |  |
| DC1-ATS-L3-CX-3435 | **DELETED** DC1-ATS-E22-06 BMS/EPMS Programming | 1d | 2026-07-14 A | 2026-07-14 A | QTS-1020 | 100% | 2026-07-24 | 2026-07-24 | PRM | Commissioning | DH2200 | L3 | ATS | DELETED | DH1100 |  |
| DC1-ATS-L3-CX-3445 | **DELETED** DC1-ATS-F22-01 FTE | 1d | 2026-07-14 A | 2026-07-14 A | QTS-1020 | 100% | 2026-07-20 | 2026-07-20 | ROS | Commissioning | DH2200 | L3 | ATS | DELETED | DH1100 |  |
| DC1-ATS-L3-CX-3455 | **DELETED** DC1-ATS-F22-01 L3 Startup | 2d | 2026-07-14 A | 2026-07-14 A | QTS-1020 | 100% | 2026-07-21 | 2026-07-22 | MAV | Commissioning | DH2200 | L3 | ATS | DELETED | DH1100 |  |
| DC1-ATS-L3-CX-3465 | **DELETED** DC1-ATS-F22-01 BMS/EPMS Programming | 1d | 2026-07-14 A | 2026-07-14 A | QTS-1020 | 100% | 2026-07-23 | 2026-07-23 | PRM | Commissioning | DH2200 | L3 | ATS | DELETED | DH1100 |  |
| DC1-ATS-L3-CX-3475 | **DELETED** DC1-ATS-F22-02 FTE | 1d | 2026-07-14 A | 2026-07-14 A | QTS-1020 | 100% | 2026-07-21 | 2026-07-21 | ROS | Commissioning | DH2200 | L3 | ATS | DELETED | DH1100 |  |
| DC1-ATS-L3-CX-3485 | **DELETED** DC1-ATS-F22-02 L3 Startup | 2d | 2026-07-14 A | 2026-07-14 A | QTS-1020 | 100% | 2026-07-22 | 2026-07-23 | MAV | Commissioning | DH2200 | L3 | ATS | DELETED | DH1100 |  |
| DC1-ATS-L3-CX-3495 | **DELETED** DC1-ATS-F22-02 BMS/EPMS Programming | 1d | 2026-07-14 A | 2026-07-14 A | QTS-1020 | 100% | 2026-07-24 | 2026-07-24 | PRM | Commissioning | DH2200 | L3 | ATS | DELETED | DH1100 |  |
| DC1-ATS-L3-CX-3505 | **DELETED** DC1-ATS-F22-03 FTE | 1d | 2026-07-14 A | 2026-07-14 A | QTS-1020 | 100% | 2026-07-20 | 2026-07-20 | ROS | Commissioning | DH2200 | L3 | ATS | DELETED | DH1100 |  |
| DC1-ATS-L3-CX-3515 | **DELETED** DC1-ATS-F22-03 L3 Startup | 2d | 2026-07-14 A | 2026-07-14 A | QTS-1020 | 100% | 2026-07-21 | 2026-07-22 | MAV | Commissioning | DH2200 | L3 | ATS | DELETED | DH1100 |  |
| DC1-ATS-L3-CX-3525 | **DELETED** DC1-ATS-F22-03 BMS/EPMS Programming | 1d | 2026-07-14 A | 2026-07-14 A | QTS-1020 | 100% | 2026-07-23 | 2026-07-23 | PRM | Commissioning | DH2200 | L3 | ATS | DELETED | DH1100 |  |
| DC1-ATS-L3-CX-3535 | **DELETED** DC1-ATS-F22-04 FTE | 1d | 2026-07-14 A | 2026-07-14 A | QTS-1020 | 100% | 2026-07-21 | 2026-07-21 | ROS | Commissioning | DH2200 | L3 | ATS | DELETED | DH1100 |  |
| DC1-ATS-L3-CX-3545 | **DELETED** DC1-ATS-F22-04 L3 Startup | 2d | 2026-07-14 A | 2026-07-14 A | QTS-1020 | 100% | 2026-07-22 | 2026-07-23 | MAV | Commissioning | DH2200 | L3 | ATS | DELETED | DH1100 |  |
| DC1-ATS-L3-CX-3555 | **DELETED** DC1-ATS-F22-04 BMS/EPMS Programming | 1d | 2026-07-14 A | 2026-07-14 A | QTS-1020 | 100% | 2026-07-24 | 2026-07-24 | PRM | Commissioning | DH2200 | L3 | ATS | DELETED | DH1100 |  |
| DC1-ATS-L3-CX-3565 | **DELETED** DC1-ATS-F22-05 FTE | 1d | 2026-07-14 A | 2026-07-14 A | QTS-1020 | 100% | 2026-07-20 | 2026-07-20 | ROS | Commissioning | DH2200 | L3 | ATS | DELETED | DH1100 |  |
| DC1-ATS-L3-CX-3575 | **DELETED** DC1-ATS-F22-05 L3 Startup | 2d | 2026-07-14 A | 2026-07-14 A | QTS-1020 | 100% | 2026-07-21 | 2026-07-22 | MAV | Commissioning | DH2200 | L3 | ATS | DELETED | DH1100 |  |
| DC1-ATS-L3-CX-3585 | **DELETED** DC1-ATS-F22-05 BMS/EPMS Programming | 1d | 2026-07-14 A | 2026-07-14 A | QTS-1020 | 100% | 2026-07-23 | 2026-07-23 | PRM | Commissioning | DH2200 | L3 | ATS | DELETED | DH1100 |  |
| DC1-ATS-L3-CX-3595 | **DELETED** DC1-ATS-F22-06 FTE | 1d | 2026-07-14 A | 2026-07-14 A | QTS-1020 | 100% | 2026-07-21 | 2026-07-21 | ROS | Commissioning | DH2200 | L3 | ATS | DELETED | DH1100 |  |
| DC1-ATS-L3-CX-3605 | **DELETED** DC1-ATS-F22-06 L3 Startup | 2d | 2026-07-14 A | 2026-07-14 A | QTS-1020 | 100% | 2026-07-22 | 2026-07-23 | MAV | Commissioning | DH2200 | L3 | ATS | DELETED | DH1100 |  |
| DC1-ATS-L3-CX-3615 | **DELETED** DC1-ATS-F22-06 BMS/EPMS Programming | 1d | 2026-07-14 A | 2026-07-14 A | QTS-1020 | 100% | 2026-07-24 | 2026-07-24 | PRM | Commissioning | DH2200 | L3 | ATS | DELETED | DH1100 |  |
| DC1-BUS-L3-CX-2060 | **DELETED** DC1-DH2200-BUS-R2 (R22) MAINTENANCE BUS FTE | 1d | 2026-07-14 A | 2026-07-14 A | QTS-1020 | 100% | 2026-07-20 | 2026-07-20 | ROS | Commissioning | DH2200 | L3 | BUS DUCT | DELETED | DH1100 | CFCI |
| DC1-BUS-L3-CX-2070 | **DELETED** DC1-DH2200-BUS-R2 (R22) MAINTENANCE BUS L3 Startup | 2d | 2026-07-14 A | 2026-07-14 A | QTS-1020 | 100% | 2026-07-21 | 2026-07-22 | LAY | Commissioning | DH2200 | L3 | BUS DUCT | DELETED | DH1100 | CFCI |
| DC1-BUS-L3-CX-2080 | **DELETED** DC1-DH2200-BUS-R2 (R22) MAINTENANCE BUS BMS/EPMS Programming | 1d | 2026-07-14 A | 2026-07-14 A | QTS-1020 | 100% | 2026-07-23 | 2026-07-23 | PRM | Commissioning | DH2200 | L3 | BUS DUCT | DELETED | DH1100 | CFCI |
| DC1-BUS-L3-CX-2090 | **DELETED** DC1-DH2200-BUS-R1 (R12) CATCHER BUS FTE | 1d | 2026-07-14 A | 2026-07-14 A | QTS-1020 | 100% | 2026-07-20 | 2026-07-20 | ROS | Commissioning | DH2200 | L3 | BUS DUCT | DELETED | DH1100 | CFCI |
| DC1-BUS-L3-CX-2100 | **DELETED** DC1-DH2200-BUS-R1 (R12) CATCHER BUS L3 Startup | 2d | 2026-07-14 A | 2026-07-14 A | QTS-1020 | 100% | 2026-07-21 | 2026-07-22 | LAY | Commissioning | DH2200 | L3 | BUS DUCT | DELETED | DH1100 | CFCI |
| DC1-BUS-L3-CX-2110 | **DELETED** DC1-DH2200-BUS-R1 (R12) CATCHER BUS BMS/EPMS Programming | 1d | 2026-07-14 A | 2026-07-14 A | QTS-1020 | 100% | 2026-07-23 | 2026-07-23 | PRM | Commissioning | DH2200 | L3 | BUS DUCT | DELETED | DH1100 | CFCI |
| DC1-CDU-L2-2550 | **DELETED** DH2200 CDU-A22-01 L2 Checklist | 3d | 2026-07-14 A | 2026-07-16 A | QTS-1020 | 100% | 2026-09-01 | 2026-09-03 | VER | Commissioning | DH2200 | L2 | CDU | DELETED | DH1100 |  |
| DC1-CDU-L2-2560 | **DELETED** DH2200 CDU-A22-02 L2 Checklist | 3d | 2026-07-14 A | 2026-07-16 A | QTS-1020 | 100% | 2026-09-01 | 2026-09-03 | VER | Commissioning | DH2200 | L2 | CDU | DELETED | DH1100 |  |
| DC1-CDU-L2-2570 | **DELETED** DH2200 CDU-A22-03 L2 Checklist | 3d | 2026-07-14 A | 2026-07-16 A | QTS-1020 | 100% | 2026-09-01 | 2026-09-03 | VER | Commissioning | DH2200 | L2 | CDU | DELETED | DH1100 |  |
| DC1-CDU-L2-2580 | **DELETED** DH2200 CDU-A22-04 L2 Checklist | 3d | 2026-07-14 A | 2026-07-16 A | QTS-1020 | 100% | 2026-09-01 | 2026-09-03 | VER | Commissioning | DH2200 | L2 | CDU | DELETED | DH1100 |  |
| DC1-CDU-L2-2590 | **DELETED** DH2200 CDU-A22-05 L2 Checklist | 3d | 2026-07-14 A | 2026-07-16 A | QTS-1020 | 100% | 2026-09-01 | 2026-09-03 | VER | Commissioning | DH2200 | L2 | CDU | DELETED | DH1100 |  |
| DC1-CDU-L2-2600 | **DELETED** DH2200 CDU-A22-06 L2 Checklist | 3d | 2026-07-14 A | 2026-07-16 A | QTS-1020 | 100% | 2026-09-01 | 2026-09-03 | VER | Commissioning | DH2200 | L2 | CDU | DELETED | DH1100 |  |
| DC1-CDU-L2-2610 | **DELETED** DH2200 CDU-B22-07 L2 Checklist | 3d | 2026-07-14 A | 2026-07-16 A | QTS-1020 | 100% | 2026-09-01 | 2026-09-03 | VER | Commissioning | DH2200 | L2 | CDU | DELETED | DH1100 |  |
| DC1-CDU-L2-2620 | **DELETED** DH2200 CDU-B22-08 L2 Checklist | 3d | 2026-07-14 A | 2026-07-16 A | QTS-1020 | 100% | 2026-09-01 | 2026-09-03 | VER | Commissioning | DH2200 | L2 | CDU | DELETED | DH1100 |  |
| DC1-CDU-L2-2630 | **DELETED** DH2200 CDU-B22-09 L2 Checklist | 3d | 2026-07-14 A | 2026-07-16 A | QTS-1020 | 100% | 2026-09-01 | 2026-09-03 | VER | Commissioning | DH2200 | L2 | CDU | DELETED | DH1100 |  |
| DC1-CDU-L2-2640 | **DELETED** DH2200 CDU-B22-10 L2 Checklist | 3d | 2026-07-14 A | 2026-07-16 A | QTS-1020 | 100% | 2026-09-01 | 2026-09-03 | VER | Commissioning | DH2200 | L2 | CDU | DELETED | DH1100 |  |

Notes:
- DC1-ATS-L3-CX-3095: Steps: EC Startup Report; Vendor Startup
- DC1-ATS-L3-CX-3125: Steps: EC Startup Report; Vendor Startup
- DC1-ATS-L3-CX-3155: Steps: EC Startup Report; Vendor Startup
- DC1-ATS-L3-CX-3185: Steps: EC Startup Report; Vendor Startup
- DC1-ATS-L3-CX-3215: Steps: EC Startup Report; Vendor Startup
- DC1-ATS-L3-CX-3245: Steps: EC Startup Report; Vendor Startup
- DC1-ATS-L3-CX-3275: Steps: EC Startup Report; Vendor Startup
- DC1-ATS-L3-CX-3305: Steps: EC Startup Report; Vendor Startup
- DC1-ATS-L3-CX-3335: Steps: EC Startup Report; Vendor Startup
- DC1-ATS-L3-CX-3365: Steps: EC Startup Report; Vendor Startup
- DC1-ATS-L3-CX-3395: Steps: EC Startup Report; Vendor Startup
- DC1-ATS-L3-CX-3425: Steps: EC Startup Report; Vendor Startup
- DC1-ATS-L3-CX-3455: Steps: EC Startup Report; Vendor Startup
- DC1-ATS-L3-CX-3485: Steps: EC Startup Report; Vendor Startup
- DC1-ATS-L3-CX-3515: Steps: EC Startup Report; Vendor Startup
- DC1-ATS-L3-CX-3545: Steps: EC Startup Report; Vendor Startup
- DC1-ATS-L3-CX-3575: Steps: EC Startup Report; Vendor Startup
- DC1-ATS-L3-CX-3605: Steps: EC Startup Report; Vendor Startup
- DC1-BUS-L3-CX-2070: Steps: EC Startup Report; Vendor Startup
- DC1-BUS-L3-CX-2100: Steps: EC Startup Report; Vendor Startup
- DC1-CDU-L2-2550: Steps: EC Installation Checklist (done); MC Installation Checklist; CC Installation Checklist; Vendor Pre-Energization Checklist; CXA Pre-Energization Inspection; PEI/Clean-Walk
- DC1-CDU-L2-2560: Steps: EC Installation Checklist (done); MC Installation Checklist; CC Installation Checklist; Vendor Pre-Energization Checklist; CXA Pre-Energization Inspection; PEI/Clean-Walk
- DC1-CDU-L2-2570: Steps: EC Installation Checklist (done); CC Installation Checklist; MC Installation Checklist; Vendor Pre-Energization Checklist; CXA Pre-Energization Inspection; PEI/Clean-Walk
- DC1-CDU-L2-2580: Steps: EC Installation Checklist (done); MC Installation Checklist; CC Installation Checklist; Vendor Pre-Energization Checklist; CXA Pre-Energization Inspection; PEI/Clean-Walk
- DC1-CDU-L2-2590: Steps: EC Installation Checklist (done); MC Installation Checklist; CC Installation Checklist; Vendor Pre-Energization Checklist; CXA Pre-Energization Inspection; PEI/Clean-Walk
- DC1-CDU-L2-2600: Steps: EC Installation Checklist (done); MC Installation Checklist; CC Installation Checklist; Vendor Pre-Energization Checklist; CXA Pre-Energization Inspection; PEI/Clean-Walk
- DC1-CDU-L2-2610: Steps: EC Installation Checklist (done); MC Installation Checklist; CC Installation Checklist; Vendor Pre-Energization Checklist; CXA Pre-Energization Inspection; PEI/Clean-Walk
- DC1-CDU-L2-2620: Steps: EC Installation Checklist (done); MC Installation Checklist; CC Installation Checklist; Vendor Pre-Energization Checklist; CXA Pre-Energization Inspection; PEI/Clean-Walk
- DC1-CDU-L2-2630: Steps: EC Installation Checklist (done); MC Installation Checklist; CC Installation Checklist; Vendor Pre-Energization Checklist; CXA Pre-Energization Inspection; PEI/Clean-Walk
- DC1-CDU-L2-2640: Steps: EC Installation Checklist (done); MC Installation Checklist; CC Installation Checklist; Vendor Pre-Energization Checklist; CXA Pre-Energization Inspection; PEI/Clean-Walk

| ID | Activity | Duration | Start | Finish | Predecessors | Complete | Planned start | Planned finish | Vendor Responsible Party | Layton Discipline | Location | CX Level | Equipment | DELETED | D |
| --- | --- | --- | --- | --- | --- | --- | --- | --- | --- | --- | --- | --- | --- | --- | --- |
| DC1-CDU-L2-2650 | **DELETED** DH2200 CDU-B22-11 L2 Checklist | 3d | 2026-07-14 A | 2026-07-16 A | QTS-1020 | 100% | 2026-09-01 | 2026-09-03 | VER | Commissioning | DH2200 | L2 | CDU | DELETED | DH1100 |
| DC1-CDU-L2-2660 | **DELETED** DH2200 CDU-B22-12 L2 Checklist | 3d | 2026-07-14 A | 2026-07-16 A | QTS-1020 | 100% | 2026-07-15 | 2026-07-17 | VER | Commissioning | DH2200 | L2 | CDU | DELETED | DH1100 |
| DC1-CDU-L2-2670 | **DELETED** DH2200 CDU-C22-13 L2 Checklist | 3d | 2026-07-14 A | 2026-07-16 A | QTS-1020 | 100% | 2026-07-15 | 2026-07-17 | VER | Commissioning | DH2200 | L2 | CDU | DELETED | DH1100 |
| DC1-CDU-L2-2680 | **DELETED** DH2200 CDU-C22-14 L2 Checklist | 3d | 2026-07-14 A | 2026-07-16 A | QTS-1020 | 100% | 2026-07-15 | 2026-07-17 | VER | Commissioning | DH2200 | L2 | CDU | DELETED | DH1100 |
| DC1-CDU-L2-2690 | **DELETED** DH2200 CDU-C22-15 L2 Checklist | 3d | 2026-07-14 A | 2026-07-16 A | QTS-1020 | 100% | 2026-07-15 | 2026-07-17 | VER | Commissioning | DH2200 | L2 | CDU | DELETED | DH1100 |
| DC1-CDU-L2-2700 | **DELETED** DH2200 CDU-C22-16 L2 Checklist | 3d | 2026-07-14 A | 2026-07-16 A | QTS-1020 | 100% | 2026-07-15 | 2026-07-17 | VER | Commissioning | DH2200 | L2 | CDU | DELETED | DH1100 |
| DC1-CDU-L2-2710 | **DELETED** DH2200 CDU-C22-17 L2 Checklist | 3d | 2026-07-14 A | 2026-07-16 A | QTS-1020 | 100% | 2026-07-15 | 2026-07-17 | VER | Commissioning | DH2200 | L2 | CDU | DELETED | DH1100 |
| DC1-CDU-L2-2720 | **DELETED** DH2200 CDU-C22-18 L2 Checklist | 3d | 2026-07-14 A | 2026-07-16 A | QTS-1020 | 100% | 2026-07-15 | 2026-07-17 | VER | Commissioning | DH2200 | L2 | CDU | DELETED | DH1100 |
| DC1-CDU-L3-CX-2000 | **DELETED** CDU-DH1100-01 FTE | 1d | 2026-07-14 A | 2026-07-14 A | QTS-1020 | 100% | 2026-07-17 | 2026-07-17 | ROS | Commissioning | DH1100 | L3 | CDU | DELETED | DH1100 |
| DC1-CDU-L3-CX-2005 | **DELETED** CDU-DH1100-01 L3 Startup | 2d | 2026-07-14 A | 2026-07-14 A | QTS-1020 | 100% | 2026-07-20 | 2026-07-21 | VER | Commissioning | DH1100 | L3 | CDU | DELETED | DH1100 |
| DC1-CDU-L3-CX-2010 | **DELETED** CDU-DH1100-01 BMS/EPMS Programming | 1d | 2026-07-14 A | 2026-07-14 A | QTS-1020 | 100% | 2026-07-22 | 2026-07-22 | PRM | Commissioning | DH1100 | L3 | CDU | DELETED | DH1100 |
| DC1-CDU-L3-CX-2015 | **DELETED** CDU-DH1100-02 FTE | 1d | 2026-07-14 A | 2026-07-14 A | QTS-1020 | 100% | 2026-07-17 | 2026-07-17 | ROS | Commissioning | DH1100 | L3 | CDU | DELETED | DH1100 |
| DC1-CDU-L3-CX-2020 | **DELETED** CDU-DH1100-02 L3 Startup | 2d | 2026-07-14 A | 2026-07-14 A | QTS-1020 | 100% | 2026-07-20 | 2026-07-21 | VER | Commissioning | DH1100 | L3 | CDU | DELETED | DH1100 |
| DC1-CDU-L3-CX-2025 | **DELETED** CDU-DH1100-02 BMS/EPMS Programming | 1d | 2026-07-14 A | 2026-07-14 A | QTS-1020 | 100% | 2026-07-22 | 2026-07-22 | PRM | Commissioning | DH1100 | L3 | CDU | DELETED | DH1100 |
| DC1-CDU-L3-CX-2030 | **DELETED** CDU-DH1100-03 FTE | 1d | 2026-07-14 A | 2026-07-14 A | QTS-1020 | 100% | 2026-07-17 | 2026-07-17 | ROS | Commissioning | DH1100 | L3 | CDU | DELETED | DH1100 |
| DC1-CDU-L3-CX-2035 | **DELETED** CDU-DH1100-03 L3 Startup | 2d | 2026-07-14 A | 2026-07-14 A | QTS-1020 | 100% | 2026-07-20 | 2026-07-21 | VER | Commissioning | DH1100 | L3 | CDU | DELETED | DH1100 |
| DC1-CDU-L3-CX-2040 | **DELETED** CDU-DH1100-03 BMS/EPMS Programming | 1d | 2026-07-14 A | 2026-07-14 A | QTS-1020 | 100% | 2026-07-22 | 2026-07-22 | PRM | Commissioning | DH1100 | L3 | CDU | DELETED | DH1100 |
| DC1-CDU-L3-CX-2045 | **DELETED** CDU-DH1100-04 FTE | 1d | 2026-07-14 A | 2026-07-14 A | QTS-1020 | 100% | 2026-07-17 | 2026-07-17 | ROS | Commissioning | DH1100 | L3 | CDU | DELETED | DH1100 |
| DC1-CDU-L3-CX-2050 | **DELETED** CDU-DH1100-04 L3 Startup | 2d | 2026-07-14 A | 2026-07-14 A | QTS-1020 | 100% | 2026-07-20 | 2026-07-21 | VER | Commissioning | DH1100 | L3 | CDU | DELETED | DH1100 |
| DC1-CDU-L3-CX-2055 | **DELETED** CDU-DH1100-04 BMS/EPMS Programming | 1d | 2026-07-14 A | 2026-07-14 A | QTS-1020 | 100% | 2026-07-22 | 2026-07-22 | PRM | Commissioning | DH1100 | L3 | CDU | DELETED | DH1100 |
| DC1-CDU-L3-CX-2060 | **DELETED** CDU-DH1100-05 FTE | 1d | 2026-07-14 A | 2026-07-14 A | QTS-1020 | 100% | 2026-07-17 | 2026-07-17 | ROS | Commissioning | DH1100 | L3 | CDU | DELETED | DH1100 |
| DC1-CDU-L3-CX-2065 | **DELETED** CDU-DH1100-05 L3 Startup | 2d | 2026-07-14 A | 2026-07-14 A | QTS-1020 | 100% | 2026-07-20 | 2026-07-21 | VER | Commissioning | DH1100 | L3 | CDU | DELETED | DH1100 |
| DC1-CDU-L3-CX-2070 | **DELETED** CDU-DH1100-05 BMS/EPMS Programming | 1d | 2026-07-14 A | 2026-07-14 A | QTS-1020 | 100% | 2026-07-22 | 2026-07-22 | PRM | Commissioning | DH1100 | L3 | CDU | DELETED | DH1100 |
| DC1-CDU-L3-CX-2075 | **DELETED** CDU-DH1100-06 FTE | 1d | 2026-07-14 A | 2026-07-14 A | QTS-1020 | 100% | 2026-07-17 | 2026-07-17 | ROS | Commissioning | DH1100 | L3 | CDU | DELETED | DH1100 |
| DC1-CDU-L3-CX-2080 | **DELETED** CDU-DH1100-06 L3 Startup | 2d | 2026-07-14 A | 2026-07-14 A | QTS-1020 | 100% | 2026-07-20 | 2026-07-21 | VER | Commissioning | DH1100 | L3 | CDU | DELETED | DH1100 |
| DC1-CDU-L3-CX-2085 | **DELETED** CDU-DH1100-06 BMS/EPMS Programming | 1d | 2026-07-14 A | 2026-07-14 A | QTS-1020 | 100% | 2026-07-22 | 2026-07-22 | PRM | Commissioning | DH1100 | L3 | CDU | DELETED | DH1100 |
| DC1-COD-L3-CX-2545 | **DELETED** DC1-COD-A22-01 FTE | 1d | 2026-07-14 A | 2026-07-14 A | QTS-1020 | 100% | 2026-07-15 | 2026-07-15 | ROS | Commissioning | DH2200 | L3 | COD | DELETED | DH1100 |
| DC1-COD-L3-CX-2555 | **DELETED** DC1-COD-A22-01 L3 Startup | 2d | 2026-07-14 A | 2026-07-14 A | QTS-1020 | 100% | 2026-07-16 | 2026-07-17 | SIE | Commissioning | DH2200 | L3 | COD | DELETED | DH1100 |
| DC1-COD-L3-CX-2565 | **DELETED** DC1-COD-A22-01 BMS/EPMS Programming | 1d | 2026-07-14 A | 2026-07-14 A | QTS-1020 | 100% | 2026-07-20 | 2026-07-20 | PRM | Commissioning | DH2200 | L3 | COD | DELETED | DH1100 |
| DC1-COD-L3-CX-2575 | **DELETED** DC1-COD-A22-02 FTE | 1d | 2026-07-14 A | 2026-07-14 A | QTS-1020 | 100% | 2026-07-15 | 2026-07-15 | ROS | Commissioning | DH2200 | L3 | COD | DELETED | DH1100 |
| DC1-COD-L3-CX-2585 | **DELETED** DC1-COD-A22-02 L3 Startup | 2d | 2026-07-14 A | 2026-07-14 A | QTS-1020 | 100% | 2026-07-16 | 2026-07-17 | SIE | Commissioning | DH2200 | L3 | COD | DELETED | DH1100 |
| DC1-COD-L3-CX-2595 | **DELETED** DC1-COD-A22-02 BMS/EPMS Programming | 1d | 2026-07-14 A | 2026-07-14 A | QTS-1020 | 100% | 2026-07-20 | 2026-07-20 | PRM | Commissioning | DH2200 | L3 | COD | DELETED | DH1100 |
| DC1-COD-L3-CX-2605 | **DELETED** DC1-COD-A22-03 FTE | 1d | 2026-07-14 A | 2026-07-14 A | QTS-1020 | 100% | 2026-07-15 | 2026-07-15 | ROS | Commissioning | DH2200 | L3 | COD | DELETED | DH1100 |
| DC1-COD-L3-CX-2615 | **DELETED** DC1-COD-A22-03 L3 Startup | 2d | 2026-07-14 A | 2026-07-14 A | QTS-1020 | 100% | 2026-07-16 | 2026-07-17 | SIE | Commissioning | DH2200 | L3 | COD | DELETED | DH1100 |
| DC1-COD-L3-CX-2625 | **DELETED** DC1-COD-A22-03 BMS/EPMS Programming | 1d | 2026-07-14 A | 2026-07-14 A | QTS-1020 | 100% | 2026-07-20 | 2026-07-20 | PRM | Commissioning | DH2200 | L3 | COD | DELETED | DH1100 |
| DC1-COD-L3-CX-2635 | **DELETED** DC1-COD-A22-04 FTE | 1d | 2026-07-14 A | 2026-07-14 A | QTS-1020 | 100% | 2026-07-15 | 2026-07-15 | ROS | Commissioning | DH2200 | L3 | COD | DELETED | DH1100 |
| DC1-COD-L3-CX-2645 | **DELETED** DC1-COD-A22-04 L3 Startup | 2d | 2026-07-14 A | 2026-07-14 A | QTS-1020 | 100% | 2026-07-16 | 2026-07-17 | SIE | Commissioning | DH2200 | L3 | COD | DELETED | DH1100 |
| DC1-COD-L3-CX-2655 | **DELETED** DC1-COD-A22-04 BMS/EPMS Programming | 1d | 2026-07-14 A | 2026-07-14 A | QTS-1020 | 100% | 2026-07-20 | 2026-07-20 | PRM | Commissioning | DH2200 | L3 | COD | DELETED | DH1100 |
| DC1-COD-L3-CX-2665 | **DELETED** DC1-COD-A22-05 FTE | 1d | 2026-07-14 A | 2026-07-14 A | QTS-1020 | 100% | 2026-07-15 | 2026-07-15 | ROS | Commissioning | DH2200 | L3 | COD | DELETED | DH1100 |
| DC1-COD-L3-CX-2675 | **DELETED** DC1-COD-A22-05 L3 Startup | 2d | 2026-07-14 A | 2026-07-14 A | QTS-1020 | 100% | 2026-07-16 | 2026-07-17 | SIE | Commissioning | DH2200 | L3 | COD | DELETED | DH1100 |
| DC1-COD-L3-CX-2685 | **DELETED** DC1-COD-A22-05 BMS/EPMS Programming | 1d | 2026-07-14 A | 2026-07-14 A | QTS-1020 | 100% | 2026-07-20 | 2026-07-20 | PRM | Commissioning | DH2200 | L3 | COD | DELETED | DH1100 |
| DC1-COD-L3-CX-2695 | **DELETED** DC1-COD-A22-06 FTE | 1d | 2026-07-14 A | 2026-07-14 A | QTS-1020 | 100% | 2026-07-15 | 2026-07-15 | ROS | Commissioning | DH2200 | L3 | COD | DELETED | DH1100 |
| DC1-COD-L3-CX-2705 | **DELETED** DC1-COD-A22-06 L3 Startup | 2d | 2026-07-14 A | 2026-07-14 A | QTS-1020 | 100% | 2026-07-16 | 2026-07-17 | SIE | Commissioning | DH2200 | L3 | COD | DELETED | DH1100 |
| DC1-COD-L3-CX-2715 | **DELETED** DC1-COD-A22-06 BMS/EPMS Programming | 1d | 2026-07-14 A | 2026-07-14 A | QTS-1020 | 100% | 2026-07-20 | 2026-07-20 | PRM | Commissioning | DH2200 | L3 | COD | DELETED | DH1100 |
| DC1-COD-L3-CX-2725 | **DELETED** DC1-COD-B22-01 FTE | 1d | 2026-07-14 A | 2026-07-14 A | QTS-1020 | 100% | 2026-07-15 | 2026-07-15 | ROS | Commissioning | DH2200 | L3 | COD | DELETED | DH1100 |
| DC1-COD-L3-CX-2735 | **DELETED** DC1-COD-B22-01 L3 Startup | 2d | 2026-07-14 A | 2026-07-14 A | QTS-1020 | 100% | 2026-07-16 | 2026-07-17 | SIE | Commissioning | DH2200 | L3 | COD | DELETED | DH1100 |
| DC1-COD-L3-CX-2745 | **DELETED** DC1-COD-B22-01 BMS/EPMS Programming | 1d | 2026-07-14 A | 2026-07-14 A | QTS-1020 | 100% | 2026-07-20 | 2026-07-20 | PRM | Commissioning | DH2200 | L3 | COD | DELETED | DH1100 |
| DC1-COD-L3-CX-2755 | **DELETED** DC1-COD-B22-02 FTE | 1d | 2026-07-14 A | 2026-07-14 A | QTS-1020 | 100% | 2026-07-15 | 2026-07-15 | ROS | Commissioning | DH2200 | L3 | COD | DELETED | DH1100 |
| DC1-COD-L3-CX-2765 | **DELETED** DC1-COD-B22-02 L3 Startup | 2d | 2026-07-14 A | 2026-07-14 A | QTS-1020 | 100% | 2026-07-16 | 2026-07-17 | SIE | Commissioning | DH2200 | L3 | COD | DELETED | DH1100 |
| DC1-COD-L3-CX-2775 | **DELETED** DC1-COD-B22-02 BMS/EPMS Programming | 1d | 2026-07-14 A | 2026-07-14 A | QTS-1020 | 100% | 2026-07-20 | 2026-07-20 | PRM | Commissioning | DH2200 | L3 | COD | DELETED | DH1100 |
| DC1-COD-L3-CX-2785 | **DELETED** DC1-COD-B22-03 FTE | 1d | 2026-07-14 A | 2026-07-14 A | QTS-1020 | 100% | 2026-07-15 | 2026-07-15 | ROS | Commissioning | DH2200 | L3 | COD | DELETED | DH1100 |
| DC1-COD-L3-CX-2795 | **DELETED** DC1-COD-B22-03 L3 Startup | 2d | 2026-07-14 A | 2026-07-14 A | QTS-1020 | 100% | 2026-07-16 | 2026-07-17 | SIE | Commissioning | DH2200 | L3 | COD | DELETED | DH1100 |
| DC1-COD-L3-CX-2805 | **DELETED** DC1-COD-B22-03 BMS/EPMS Programming | 1d | 2026-07-14 A | 2026-07-14 A | QTS-1020 | 100% | 2026-07-20 | 2026-07-20 | PRM | Commissioning | DH2200 | L3 | COD | DELETED | DH1100 |
| DC1-COD-L3-CX-2815 | **DELETED** DC1-COD-B22-04 FTE | 1d | 2026-07-14 A | 2026-07-14 A | QTS-1020 | 100% | 2026-07-15 | 2026-07-15 | ROS | Commissioning | DH2200 | L3 | COD | DELETED | DH1100 |
| DC1-COD-L3-CX-2825 | **DELETED** DC1-COD-B22-04 L3 Startup | 2d | 2026-07-14 A | 2026-07-14 A | QTS-1020 | 100% | 2026-07-16 | 2026-07-17 | SIE | Commissioning | DH2200 | L3 | COD | DELETED | DH1100 |
| DC1-COD-L3-CX-2835 | **DELETED** DC1-COD-B22-04 BMS/EPMS Programming | 1d | 2026-07-14 A | 2026-07-14 A | QTS-1020 | 100% | 2026-07-20 | 2026-07-20 | PRM | Commissioning | DH2200 | L3 | COD | DELETED | DH1100 |
| DC1-COD-L3-CX-2845 | **DELETED** DC1-COD-B22-05 FTE | 1d | 2026-07-14 A | 2026-07-14 A | QTS-1020 | 100% | 2026-07-15 | 2026-07-15 | ROS | Commissioning | DH2200 | L3 | COD | DELETED | DH1100 |
| DC1-COD-L3-CX-2855 | **DELETED** DC1-COD-B22-05 L3 Startup | 2d | 2026-07-14 A | 2026-07-14 A | QTS-1020 | 100% | 2026-07-16 | 2026-07-17 | SIE | Commissioning | DH2200 | L3 | COD | DELETED | DH1100 |
| DC1-COD-L3-CX-2865 | **DELETED** DC1-COD-B22-05 BMS/EPMS Programming | 1d | 2026-07-14 A | 2026-07-14 A | QTS-1020 | 100% | 2026-07-20 | 2026-07-20 | PRM | Commissioning | DH2200 | L3 | COD | DELETED | DH1100 |
| DC1-COD-L3-CX-2875 | **DELETED** DC1-COD-B22-06 FTE | 1d | 2026-07-14 A | 2026-07-14 A | QTS-1020 | 100% | 2026-07-15 | 2026-07-15 | ROS | Commissioning | DH2200 | L3 | COD | DELETED | DH1100 |
| DC1-COD-L3-CX-2885 | **DELETED** DC1-COD-B22-06 L3 Startup | 2d | 2026-07-14 A | 2026-07-14 A | QTS-1020 | 100% | 2026-07-16 | 2026-07-17 | SIE | Commissioning | DH2200 | L3 | COD | DELETED | DH1100 |
| DC1-COD-L3-CX-2895 | **DELETED** DC1-COD-B22-06 BMS/EPMS Programming | 1d | 2026-07-14 A | 2026-07-14 A | QTS-1020 | 100% | 2026-07-20 | 2026-07-20 | PRM | Commissioning | DH2200 | L3 | COD | DELETED | DH1100 |
| DC1-COD-L3-CX-2905 | **DELETED** DC1-COD-C22-01 FTE | 1d | 2026-07-14 A | 2026-07-14 A | QTS-1020 | 100% | 2026-07-15 | 2026-07-15 | ROS | Commissioning | DH2200 | L3 | COD | DELETED | DH1100 |
| DC1-COD-L3-CX-2915 | **DELETED** DC1-COD-C22-01 L3 Startup | 2d | 2026-07-14 A | 2026-07-14 A | QTS-1020 | 100% | 2026-07-16 | 2026-07-17 | SIE | Commissioning | DH2200 | L3 | COD | DELETED | DH1100 |
| DC1-COD-L3-CX-2925 | **DELETED** DC1-COD-C22-01 BMS/EPMS Programming | 1d | 2026-07-14 A | 2026-07-14 A | QTS-1020 | 100% | 2026-07-20 | 2026-07-20 | PRM | Commissioning | DH2200 | L3 | COD | DELETED | DH1100 |
| DC1-COD-L3-CX-2935 | **DELETED** DC1-COD-C22-02 FTE | 1d | 2026-07-14 A | 2026-07-14 A | QTS-1020 | 100% | 2026-07-15 | 2026-07-15 | ROS | Commissioning | DH2200 | L3 | COD | DELETED | DH1100 |
| DC1-COD-L3-CX-2945 | **DELETED** DC1-COD-C22-02 L3 Startup | 2d | 2026-07-14 A | 2026-07-14 A | QTS-1020 | 100% | 2026-07-16 | 2026-07-17 | SIE | Commissioning | DH2200 | L3 | COD | DELETED | DH1100 |
| DC1-COD-L3-CX-2955 | **DELETED** DC1-COD-C22-02 BMS/EPMS Programming | 1d | 2026-07-14 A | 2026-07-14 A | QTS-1020 | 100% | 2026-07-20 | 2026-07-20 | PRM | Commissioning | DH2200 | L3 | COD | DELETED | DH1100 |
| DC1-COD-L3-CX-2965 | **DELETED** DC1-COD-C22-03 FTE | 1d | 2026-07-14 A | 2026-07-14 A | QTS-1020 | 100% | 2026-07-15 | 2026-07-15 | ROS | Commissioning | DH2200 | L3 | COD | DELETED | DH1100 |
| DC1-COD-L3-CX-2975 | **DELETED** DC1-COD-C22-03 L3 Startup | 2d | 2026-07-14 A | 2026-07-14 A | QTS-1020 | 100% | 2026-07-16 | 2026-07-17 | SIE | Commissioning | DH2200 | L3 | COD | DELETED | DH1100 |

Notes:
- DC1-CDU-L2-2650: Steps: EC Installation Checklist; MC Installation Checklist; CC Installation Checklist; Vendor Pre-Energization Checklist; CXA Pre-Energization Inspection; PEI/Clean-Walk
- DC1-CDU-L2-2660: Steps: EC Installation Checklist (done); MC Installation Checklist; CC Installation Checklist; Vendor Pre-Energization Checklist; CXA Pre-Energization Inspection; PEI/Clean-Walk
- DC1-CDU-L2-2670: Steps: EC Installation Checklist (done); MC Installation Checklist; CC Installation Checklist; Vendor Pre-Energization Checklist; CXA Pre-Energization Inspection; PEI/Clean-Walk
- DC1-CDU-L2-2680: Steps: EC Installation Checklist (done); MC Installation Checklist; CC Installation Checklist; Vendor Pre-Energization Checklist; CXA Pre-Energization Inspection; PEI/Clean-Walk
- DC1-CDU-L2-2690: Steps: EC Installation Checklist (done); MC Installation Checklist; CC Installation Checklist; Vendor Pre-Energization Checklist; CXA Pre-Energization Inspection; PEI/Clean-Walk
- DC1-CDU-L2-2700: Steps: EC Installation Checklist (done); MC Installation Checklist; CC Installation Checklist; Vendor Pre-Energization Checklist; CXA Pre-Energization Inspection; PEI/Clean-Walk
- DC1-CDU-L2-2710: Steps: EC Installation Checklist (done); MC Installation Checklist; CC Installation Checklist; Vendor Pre-Energization Checklist; CXA Pre-Energization Inspection; PEI/Clean-Walk
- DC1-CDU-L2-2720: Steps: EC Installation Checklist (done); MC Installation Checklist; CC Installation Checklist; Vendor Pre-Energization Checklist; CXA Pre-Energization Inspection; PEI/Clean-Walk
- DC1-CDU-L3-CX-2005: Steps: EC Startup Report; MC Installation Checklist (done); Vendor Startup
- DC1-CDU-L3-CX-2020: Steps: EC Startup Report; MC Installation Checklist (done); Vendor Startup
- DC1-CDU-L3-CX-2035: Steps: EC Startup Report; MC Installation Checklist (done); Vendor Startup
- DC1-CDU-L3-CX-2050: Steps: EC Startup Report; MC Installation Checklist (done); Vendor Startup
- DC1-CDU-L3-CX-2065: Steps: EC Startup Report; MC Installation Checklist (done); Vendor Startup
- DC1-CDU-L3-CX-2080: Steps: EC Startup Report; MC Installation Checklist (done); Vendor Startup
- DC1-COD-L3-CX-2555: Steps: EC Startup Report; Vendor Startup
- DC1-COD-L3-CX-2585: Steps: EC Startup Report; Vendor Startup
- DC1-COD-L3-CX-2615: Steps: EC Startup Report; Vendor Startup
- DC1-COD-L3-CX-2645: Steps: EC Startup Report; Vendor Startup
- DC1-COD-L3-CX-2675: Steps: EC Startup Report; Vendor Startup
- DC1-COD-L3-CX-2705: Steps: EC Startup Report; Vendor Startup
- DC1-COD-L3-CX-2735: Steps: EC Startup Report; Vendor Startup
- DC1-COD-L3-CX-2765: Steps: EC Startup Report; Vendor Startup
- DC1-COD-L3-CX-2795: Steps: EC Startup Report; Vendor Startup
- DC1-COD-L3-CX-2825: Steps: EC Startup Report; Vendor Startup
- DC1-COD-L3-CX-2855: Steps: EC Startup Report; Vendor Startup
- DC1-COD-L3-CX-2885: Steps: EC Startup Report; Vendor Startup
- DC1-COD-L3-CX-2915: Steps: EC Startup Report; Vendor Startup
- DC1-COD-L3-CX-2945: Steps: EC Startup Report; Vendor Startup
- DC1-COD-L3-CX-2975: Steps: EC Startup Report; Vendor Startup

| ID | Activity | Duration | Start | Finish | Predecessors | Complete | Planned start | Planned finish | Calendar | Vendor Responsible Party | Layton Discipline | Location | CX Level | Equipment | DELETED | D | NICK | Fragnet | Fragnet Responsible Party |
| --- | --- | --- | --- | --- | --- | --- | --- | --- | --- | --- | --- | --- | --- | --- | --- | --- | --- | --- | --- |
| DC1-COD-L3-CX-2985 | **DELETED** DC1-COD-C22-03 BMS/EPMS Programming | 1d | 2026-07-14 A | 2026-07-14 A | QTS-1020 | 100% | 2026-07-20 | 2026-07-20 |  | PRM | Commissioning | DH2200 | L3 | COD | DELETED | DH1100 |  |  |  |
| DC1-COD-L3-CX-2995 | **DELETED** DC1-COD-C22-04 FTE | 1d | 2026-07-14 A | 2026-07-14 A | QTS-1020 | 100% | 2026-07-15 | 2026-07-15 |  | ROS | Commissioning | DH2200 | L3 | COD | DELETED | DH1100 |  |  |  |
| DC1-COD-L3-CX-3005 | **DELETED** DC1-COD-C22-04 L3 Startup | 2d | 2026-07-14 A | 2026-07-14 A | QTS-1020 | 100% | 2026-07-16 | 2026-07-17 |  | SIE | Commissioning | DH2200 | L3 | COD | DELETED | DH1100 |  |  |  |
| DC1-COD-L3-CX-3015 | **DELETED** DC1-COD-C22-04 BMS/EPMS Programming | 1d | 2026-07-14 A | 2026-07-14 A | QTS-1020 | 100% | 2026-07-20 | 2026-07-20 |  | PRM | Commissioning | DH2200 | L3 | COD | DELETED | DH1100 |  |  |  |
| DC1-COD-L3-CX-3025 | **DELETED** DC1-COD-C22-05 FTE | 1d | 2026-07-14 A | 2026-07-14 A | QTS-1020 | 100% | 2026-07-15 | 2026-07-15 |  | ROS | Commissioning | DH2200 | L3 | COD | DELETED | DH1100 |  |  |  |
| DC1-COD-L3-CX-3035 | **DELETED** DC1-COD-C22-05 L3 Startup | 2d | 2026-07-14 A | 2026-07-14 A | QTS-1020 | 100% | 2026-07-16 | 2026-07-17 |  | SIE | Commissioning | DH2200 | L3 | COD | DELETED | DH1100 |  |  |  |
| DC1-COD-L3-CX-3045 | **DELETED** DC1-COD-C22-05 BMS/EPMS Programming | 1d | 2026-07-14 A | 2026-07-14 A | QTS-1020 | 100% | 2026-07-20 | 2026-07-20 |  | PRM | Commissioning | DH2200 | L3 | COD | DELETED | DH1100 |  |  |  |
| DC1-COD-L3-CX-3055 | **DELETED** DC1-COD-C22-06 FTE | 1d | 2026-07-14 A | 2026-07-14 A | QTS-1020 | 100% | 2026-07-15 | 2026-07-15 |  | ROS | Commissioning | DH2200 | L3 | COD | DELETED | DH1100 |  |  |  |
| DC1-COD-L3-CX-3065 | **DELETED** DC1-COD-C22-06 L3 Startup | 2d | 2026-07-14 A | 2026-07-14 A | QTS-1020 | 100% | 2026-07-16 | 2026-07-17 |  | SIE | Commissioning | DH2200 | L3 | COD | DELETED | DH1100 |  |  |  |
| DC1-COD-L3-CX-3075 | **DELETED** DC1-COD-C22-06 BMS/EPMS Programming | 1d | 2026-07-14 A | 2026-07-14 A | QTS-1020 | 100% | 2026-07-20 | 2026-07-20 |  | PRM | Commissioning | DH2200 | L3 | COD | DELETED | DH1100 |  |  |  |
| DC1-COD-L3-CX-3085 | **DELETED** DC1-COD-D22-01 FTE | 1d | 2026-07-14 A | 2026-07-14 A | QTS-1020 | 100% | 2026-07-15 | 2026-07-15 |  | ROS | Commissioning | DH2200 | L3 | COD | DELETED | DH1100 |  |  |  |
| DC1-COD-L3-CX-3095 | **DELETED** DC1-COD-D22-01 L3 Startup | 2d | 2026-07-14 A | 2026-07-14 A | QTS-1020 | 100% | 2026-07-16 | 2026-07-17 |  | SIE | Commissioning | DH2200 | L3 | COD | DELETED | DH1100 |  |  |  |
| DC1-COD-L3-CX-3105 | **DELETED** DC1-COD-D22-01 BMS/EPMS Programming | 1d | 2026-07-14 A | 2026-07-14 A | QTS-1020 | 100% | 2026-07-20 | 2026-07-20 |  | PRM | Commissioning | DH2200 | L3 | COD | DELETED | DH1100 |  |  |  |
| DC1-COD-L3-CX-3115 | **DELETED** DC1-COD-D22-02 FTE | 1d | 2026-07-14 A | 2026-07-14 A | QTS-1020 | 100% | 2026-07-15 | 2026-07-15 |  | ROS | Commissioning | DH2200 | L3 | COD | DELETED | DH1100 |  |  |  |
| DC1-COD-L3-CX-3125 | **DELETED** DC1-COD-D22-02 L3 Startup | 2d | 2026-07-14 A | 2026-07-14 A | QTS-1020 | 100% | 2026-07-16 | 2026-07-17 |  | SIE | Commissioning | DH2200 | L3 | COD | DELETED | DH1100 |  |  |  |
| DC1-COD-L3-CX-3135 | **DELETED** DC1-COD-D22-02 BMS/EPMS Programming | 1d | 2026-07-14 A | 2026-07-14 A | QTS-1020 | 100% | 2026-07-20 | 2026-07-20 |  | PRM | Commissioning | DH2200 | L3 | COD | DELETED | DH1100 |  |  |  |
| DC1-COD-L3-CX-3145 | **DELETED** DC1-COD-D22-03 FTE | 1d | 2026-07-14 A | 2026-07-14 A | QTS-1020 | 100% | 2026-07-15 | 2026-07-15 |  | ROS | Commissioning | DH2200 | L3 | COD | DELETED | DH1100 |  |  |  |
| DC1-COD-L3-CX-3155 | **DELETED** DC1-COD-D22-03 L3 Startup | 2d | 2026-07-14 A | 2026-07-14 A | QTS-1020 | 100% | 2026-07-16 | 2026-07-17 |  | SIE | Commissioning | DH2200 | L3 | COD | DELETED | DH1100 |  |  |  |
| DC1-COD-L3-CX-3165 | **DELETED** DC1-COD-D22-03 BMS/EPMS Programming | 1d | 2026-07-14 A | 2026-07-14 A | QTS-1020 | 100% | 2026-07-20 | 2026-07-20 |  | PRM | Commissioning | DH2200 | L3 | COD | DELETED | DH1100 |  |  |  |
| DC1-COD-L3-CX-3175 | **DELETED** DC1-COD-D22-04 FTE | 1d | 2026-07-14 A | 2026-07-14 A | QTS-1020 | 100% | 2026-07-15 | 2026-07-15 |  | ROS | Commissioning | DH2200 | L3 | COD | DELETED | DH1100 |  |  |  |
| DC1-COD-L3-CX-3185 | **DELETED** DC1-COD-D22-04 L3 Startup | 2d | 2026-07-14 A | 2026-07-14 A | QTS-1020 | 100% | 2026-07-16 | 2026-07-17 |  | SIE | Commissioning | DH2200 | L3 | COD | DELETED | DH1100 |  |  |  |
| DC1-COD-L3-CX-3195 | **DELETED** DC1-COD-D22-04 BMS/EPMS Programming | 1d | 2026-07-14 A | 2026-07-14 A | QTS-1020 | 100% | 2026-07-20 | 2026-07-20 |  | PRM | Commissioning | DH2200 | L3 | COD | DELETED | DH1100 |  |  |  |
| DC1-COD-L3-CX-3205 | **DELETED** DC1-COD-D22-05 FTE | 1d | 2026-07-14 A | 2026-07-14 A | QTS-1020 | 100% | 2026-07-15 | 2026-07-15 |  | ROS | Commissioning | DH2200 | L3 | COD | DELETED | DH1100 |  |  |  |
| DC1-COD-L3-CX-3215 | **DELETED** DC1-COD-D22-05 L3 Startup | 2d | 2026-07-14 A | 2026-07-14 A | QTS-1020 | 100% | 2026-07-16 | 2026-07-17 |  | SIE | Commissioning | DH2200 | L3 | COD | DELETED | DH1100 |  |  |  |
| DC1-COD-L3-CX-3225 | **DELETED** DC1-COD-D22-05 BMS/EPMS Programming | 1d | 2026-07-14 A | 2026-07-14 A | QTS-1020 | 100% | 2026-07-20 | 2026-07-20 |  | PRM | Commissioning | DH2200 | L3 | COD | DELETED | DH1100 |  |  |  |
| DC1-COD-L3-CX-3235 | **DELETED** DC1-COD-D22-06 FTE | 1d | 2026-07-14 A | 2026-07-14 A | QTS-1020 | 100% | 2026-07-15 | 2026-07-15 |  | ROS | Commissioning | DH2200 | L3 | COD | DELETED | DH1100 |  |  |  |
| DC1-COD-L3-CX-3245 | **DELETED** DC1-COD-D22-06 L3 Startup | 2d | 2026-07-14 A | 2026-07-14 A | QTS-1020 | 100% | 2026-07-16 | 2026-07-17 |  | SIE | Commissioning | DH2200 | L3 | COD | DELETED | DH1100 |  |  |  |
| DC1-COD-L3-CX-3255 | **DELETED** DC1-COD-D22-06 BMS/EPMS Programming | 1d | 2026-07-14 A | 2026-07-14 A | QTS-1020 | 100% | 2026-07-20 | 2026-07-20 |  | PRM | Commissioning | DH2200 | L3 | COD | DELETED | DH1100 |  |  |  |
| DC1-COD-L3-CX-3265 | **DELETED** DC1-COD-E22-01 FTE | 1d | 2026-07-14 A | 2026-07-14 A | QTS-1020 | 100% | 2026-07-15 | 2026-07-15 |  | ROS | Commissioning | DH2200 | L3 | COD | DELETED | DH1100 |  |  |  |
| DC1-COD-L3-CX-3275 | **DELETED** DC1-COD-E22-01 L3 Startup | 2d | 2026-07-14 A | 2026-07-14 A | QTS-1020 | 100% | 2026-07-16 | 2026-07-17 |  | SIE | Commissioning | DH2200 | L3 | COD | DELETED | DH1100 |  |  |  |
| DC1-COD-L3-CX-3285 | **DELETED** DC1-COD-E22-01 BMS/EPMS Programming | 1d | 2026-07-14 A | 2026-07-14 A | QTS-1020 | 100% | 2026-07-20 | 2026-07-20 |  | PRM | Commissioning | DH2200 | L3 | COD | DELETED | DH1100 |  |  |  |
| DC1-COD-L3-CX-3295 | **DELETED** DC1-COD-E22-02 FTE | 1d | 2026-07-14 A | 2026-07-14 A | QTS-1020 | 100% | 2026-07-15 | 2026-07-15 |  | ROS | Commissioning | DH2200 | L3 | COD | DELETED | DH1100 |  |  |  |
| DC1-COD-L3-CX-3305 | **DELETED** DC1-COD-E22-02 L3 Startup | 2d | 2026-07-14 A | 2026-07-14 A | QTS-1020 | 100% | 2026-07-16 | 2026-07-17 |  | SIE | Commissioning | DH2200 | L3 | COD | DELETED | DH1100 |  |  |  |
| DC1-COD-L3-CX-3315 | **DELETED** DC1-COD-E22-02 BMS/EPMS Programming | 1d | 2026-07-14 A | 2026-07-14 A | QTS-1020 | 100% | 2026-07-20 | 2026-07-20 |  | PRM | Commissioning | DH2200 | L3 | COD | DELETED | DH1100 |  |  |  |
| DC1-COD-L3-CX-3325 | **DELETED** DC1-COD-E22-03 FTE | 1d | 2026-07-14 A | 2026-07-14 A | QTS-1020 | 100% | 2026-07-15 | 2026-07-15 |  | ROS | Commissioning | DH2200 | L3 | COD | DELETED | DH1100 |  |  |  |
| DC1-COD-L3-CX-3335 | **DELETED**DC1 -COD-E22-03 L3 Startup | 2d | 2026-07-14 A | 2026-07-14 A | QTS-1020 | 100% | 2026-07-16 | 2026-07-17 |  | SIE | Commissioning | DH2200 | L3 | COD | DELETED | DH1100 |  |  |  |
| DC1-COD-L3-CX-3345 | **DELETED** DC1-COD-E22-03 BMS/EPMS Programming | 1d | 2026-07-14 A | 2026-07-14 A | QTS-1020 | 100% | 2026-07-20 | 2026-07-20 |  | PRM | Commissioning | DH2200 | L3 | COD | DELETED | DH1100 |  |  |  |
| DC1-COD-L3-CX-3355 | **DELETED** DC1-COD-E22-04 FTE | 1d | 2026-07-14 A | 2026-07-14 A | QTS-1020 | 100% | 2026-07-15 | 2026-07-15 |  | ROS | Commissioning | DH2200 | L3 | COD | DELETED | DH1100 |  |  |  |
| DC1-COD-L3-CX-3365 | **DELETED** DC1-COD-E22-04 L3 Startup | 2d | 2026-07-14 A | 2026-07-14 A | QTS-1020 | 100% | 2026-07-16 | 2026-07-17 |  | SIE | Commissioning | DH2200 | L3 | COD | DELETED | DH1100 |  |  |  |
| DC1-COD-L3-CX-3375 | **DELETED** DC1-COD-E22-04 BMS/EPMS Programming | 1d | 2026-07-14 A | 2026-07-14 A | QTS-1020 | 100% | 2026-07-20 | 2026-07-20 |  | PRM | Commissioning | DH2200 | L3 | COD | DELETED | DH1100 |  |  |  |
| DC1-COD-L3-CX-3385 | **DELETED** DC1-COD-E22-05 FTE | 1d | 2026-07-14 A | 2026-07-14 A | QTS-1020 | 100% | 2026-07-15 | 2026-07-15 |  | ROS | Commissioning | DH2200 | L3 | COD | DELETED | DH1100 |  |  |  |
| DC1-COD-L3-CX-3395 | **DELETED** DC1-COD-E22-05 L3 Startup | 2d | 2026-07-14 A | 2026-07-14 A | QTS-1020 | 100% | 2026-07-16 | 2026-07-17 |  | SIE | Commissioning | DH2200 | L3 | COD | DELETED | DH1100 |  |  |  |
| DC1-COD-L3-CX-3405 | **DELETED** DC1-COD-E22-05 BMS/EPMS Programming | 1d | 2026-07-14 A | 2026-07-14 A | QTS-1020 | 100% | 2026-07-20 | 2026-07-20 |  | PRM | Commissioning | DH2200 | L3 | COD | DELETED | DH1100 |  |  |  |
| DC1-COD-L3-CX-3415 | **DELETED** DC1-COD-E22-06 FTE | 1d | 2026-07-14 A | 2026-07-14 A | QTS-1020 | 100% | 2026-07-15 | 2026-07-15 |  | ROS | Commissioning | DH2200 | L3 | COD | DELETED | DH1100 |  |  |  |
| DC1-COD-L3-CX-3425 | **DELETED** DC1-COD-E22-06 L3 Startup | 2d | 2026-07-14 A | 2026-07-14 A | QTS-1020 | 100% | 2026-07-16 | 2026-07-17 |  | SIE | Commissioning | DH2200 | L3 | COD | DELETED | DH1100 |  |  |  |
| DC1-COD-L3-CX-3435 | **DELETED** DC1-COD-E22-06 BMS/EPMS Programming | 1d | 2026-07-14 A | 2026-07-14 A | QTS-1020 | 100% | 2026-07-20 | 2026-07-20 |  | PRM | Commissioning | DH2200 | L3 | COD | DELETED | DH1100 |  |  |  |
| DC1-COD-L3-CX-3445 | **DELETED** DC1-COD-F22-01 FTE | 1d | 2026-07-14 A | 2026-07-14 A | QTS-1020 | 100% | 2026-07-15 | 2026-07-15 |  | ROS | Commissioning | DH2200 | L3 | COD | DELETED | DH1100 |  |  |  |
| DC1-COD-L3-CX-3455 | **DELETED** DC1-COD-F22-01 L3 Startup | 2d | 2026-07-14 A | 2026-07-14 A | QTS-1020 | 100% | 2026-07-16 | 2026-07-17 |  | SIE | Commissioning | DH2200 | L3 | COD | DELETED | DH1100 |  |  |  |
| DC1-COD-L3-CX-3465 | **DELETED** DC1-COD-F22-01 BMS/EPMS Programming | 1d | 2026-07-14 A | 2026-07-14 A | QTS-1020 | 100% | 2026-07-20 | 2026-07-20 |  | PRM | Commissioning | DH2200 | L3 | COD | DELETED | DH1100 |  |  |  |
| DC1-COD-L3-CX-3475 | **DELETED** DC1-COD-F22-02 FTE | 1d | 2026-07-14 A | 2026-07-14 A | QTS-1020 | 100% | 2026-07-15 | 2026-07-15 |  | ROS | Commissioning | DH2200 | L3 | COD | DELETED | DH1100 |  |  |  |
| DC1-COD-L3-CX-3485 | **DELETED** DC1-COD-F22-02 L3 Startup | 2d | 2026-07-14 A | 2026-07-14 A | QTS-1020 | 100% | 2026-07-16 | 2026-07-17 |  | SIE | Commissioning | DH2200 | L3 | COD | DELETED | DH1100 |  |  |  |
| DC1-COD-L3-CX-3495 | **DELETED** DC1-COD-F22-02 BMS/EPMS Programming | 1d | 2026-07-14 A | 2026-07-14 A | QTS-1020 | 100% | 2026-07-20 | 2026-07-20 |  | PRM | Commissioning | DH2200 | L3 | COD | DELETED | DH1100 |  |  |  |
| DC1-COD-L3-CX-3505 | **DELETED** DC1-COD-F22-03 FTE | 1d | 2026-07-14 A | 2026-07-14 A | QTS-1020 | 100% | 2026-07-15 | 2026-07-15 |  | ROS | Commissioning | DH2200 | L3 | COD | DELETED | DH1100 |  |  |  |
| DC1-COD-L3-CX-3515 | **DELETED** DC1-COD-F22-03 L3 Startup | 2d | 2026-07-14 A | 2026-07-14 A | QTS-1020 | 100% | 2026-07-16 | 2026-07-17 |  | SIE | Commissioning | DH2200 | L3 | COD | DELETED | DH1100 |  |  |  |
| DC1-COD-L3-CX-3525 | **DELETED** DC1-COD-F22-03 BMS/EPMS Programming | 1d | 2026-07-14 A | 2026-07-14 A | QTS-1020 | 100% | 2026-07-20 | 2026-07-20 |  | PRM | Commissioning | DH2200 | L3 | COD | DELETED | DH1100 |  |  |  |
| DC1-COD-L3-CX-3535 | **DELETED** DC1-COD-F22-04 FTE | 1d | 2026-07-14 A | 2026-07-14 A | QTS-1020 | 100% | 2026-07-15 | 2026-07-15 |  | ROS | Commissioning | DH2200 | L3 | COD | DELETED | DH1100 |  |  |  |
| DC1-COD-L3-CX-3545 | **DELETED** DC1-COD-F22-04 L3 Startup | 2d | 2026-07-14 A | 2026-07-14 A | QTS-1020 | 100% | 2026-07-16 | 2026-07-17 |  | SIE | Commissioning | DH2200 | L3 | COD | DELETED | DH1100 |  |  |  |
| DC1-COD-L3-CX-3555 | **DELETED** DC1-COD-F22-04 BMS/EPMS Programming | 1d | 2026-07-14 A | 2026-07-14 A | QTS-1020 | 100% | 2026-07-20 | 2026-07-20 |  | PRM | Commissioning | DH2200 | L3 | COD | DELETED | DH1100 |  |  |  |
| DC1-COD-L3-CX-3565 | **DELETED** DC1-COD-F22-05 FTE | 1d | 2026-07-14 A | 2026-07-14 A | QTS-1020 | 100% | 2026-07-15 | 2026-07-15 |  | ROS | Commissioning | DH2200 | L3 | COD | DELETED | DH1100 |  |  |  |
| DC1-COD-L3-CX-3575 | **DELETED** DC1-COD-F22-05 L3 Startup | 2d | 2026-07-14 A | 2026-07-14 A | QTS-1020 | 100% | 2026-07-16 | 2026-07-17 |  | SIE | Commissioning | DH2200 | L3 | COD | DELETED | DH1100 |  |  |  |
| DC1-COD-L3-CX-3585 | **DELETED** DC1-COD-F22-05 BMS/EPMS Programming | 1d | 2026-07-14 A | 2026-07-14 A | QTS-1020 | 100% | 2026-07-20 | 2026-07-20 |  | PRM | Commissioning | DH2200 | L3 | COD | DELETED | DH1100 |  |  |  |
| DC1-COD-L3-CX-3595 | **DELETED** DC1-COD-F22-06 FTE | 1d | 2026-07-14 A | 2026-07-14 A | QTS-1020 | 100% | 2026-07-15 | 2026-07-15 |  | ROS | Commissioning | DH2200 | L3 | COD | DELETED | DH1100 |  |  |  |
| DC1-COD-L3-CX-3605 | **DELETED** DC1-COD-F22-06 L3 Startup | 2d | 2026-07-14 A | 2026-07-14 A | QTS-1020 | 100% | 2026-07-16 | 2026-07-17 |  | SIE | Commissioning | DH2200 | L3 | COD | DELETED | DH1100 |  |  |  |
| DC1-COD-L3-CX-3615 | **DELETED** DC1-COD-F22-06 BMS/EPMS Programming | 1d | 2026-07-14 A | 2026-07-14 A | QTS-1020 | 100% | 2026-07-20 | 2026-07-20 |  | PRM | Commissioning | DH2200 | L3 | COD | DELETED | DH1100 |  |  |  |
| DC1-DH1100-LB-1030 | **DELETED** DC1-DH1100 10% Continuity Testing RPP Whips | 2d | 2026-07-14 A | 2026-07-14 A | QTS-1020 | 100% | 2026-07-15 | 2026-07-16 |  | PHE | Commissioning | DH1100 | L3 | RPP | DELETED | DH1100 |  |  |  |
| DC1-DH1100-LB-1040 | **DELETED** DC1-DH1100 Liquid Cooled Load Bank (Secondary Side) | 3d | 2026-07-14 A | 2026-07-14 A | QTS-1020 | 100% | 2026-07-23 | 2026-07-25 | QTS-PHX3 DC1 - 7 day No Holidays | LAY | Commissioning | DH1100 | L3 |  | DELETED | DH1100 | NICK |  |  |
| DC1-DH1100-LB-1050 | **DELETED** DC1-DH1100 Install DanFoss Connectors | 2d | 2026-07-14 A | 2026-07-14 A | QTS-1020 | 100% | 2026-07-26 | 2026-07-27 | QTS-PHX3 DC1 - 7 day No Holidays | LAY | Commissioning | DH1100 | L3 |  | DELETED | DH1100 |  |  |  |
| DC1-DH1100-LB-1060 | **DELETED** Fragnet / DC1-DH1100 40% Load Bank Testing RPP Whips | 10d | 2026-07-14 A | 2026-07-14 A | QTS-1020 | 100% | 2026-07-17 | 2026-07-30 |  | PHE | Commissioning | DH1100 | L3 | RPP | DELETED | DH1100 | NICK | Fragnet | Parrish-Hare Electrical Supply |
| DC1-DH2100-LB-1020 | **DELETED** DC1-DH2100 Liquid Cooled Load Bank (Secondary Side) | 12d | 2026-07-14 A | 2026-07-14 A | QTS-1020 | 100% | 2026-07-15 | 2026-07-26 | QTS-PHX3 DC1 - 7 day No Holidays | ERS | Commissioning | DH2100 | L3 |  | DELETED | DH1100 | NICK |  |  |
| DC1-DH2100-LB-1040 | **DELETED** DC1-DH2100 10% Continuity Testing RPP Whips | 2d | 2026-07-14 A | 2026-07-14 A | QTS-1020 | 100% | 2026-07-15 | 2026-07-16 |  | PHE | Commissioning | DH2100 | L3 | RPP | DELETED | DH1100 |  |  |  |

Notes:
- DC1-COD-L3-CX-3005: Steps: EC Startup Report; Vendor Startup
- DC1-COD-L3-CX-3035: Steps: EC Startup Report; Vendor Startup
- DC1-COD-L3-CX-3065: Steps: EC Startup Report; Vendor Startup
- DC1-COD-L3-CX-3095: Steps: EC Startup Report; Vendor Startup
- DC1-COD-L3-CX-3125: Steps: EC Startup Report; Vendor Startup
- DC1-COD-L3-CX-3155: Steps: EC Startup Report; Vendor Startup
- DC1-COD-L3-CX-3185: Steps: EC Startup Report; Vendor Startup
- DC1-COD-L3-CX-3215: Steps: EC Startup Report; Vendor Startup
- DC1-COD-L3-CX-3245: Steps: EC Startup Report; Vendor Startup
- DC1-COD-L3-CX-3275: Steps: EC Startup Report; Vendor Startup
- DC1-COD-L3-CX-3305: Steps: EC Startup Report; Vendor Startup
- DC1-COD-L3-CX-3335: Steps: EC Startup Report; Vendor Startup
- DC1-COD-L3-CX-3365: Steps: EC Startup Report; Vendor Startup
- DC1-COD-L3-CX-3395: Steps: EC Startup Report; Vendor Startup
- DC1-COD-L3-CX-3425: Steps: EC Startup Report; Vendor Startup
- DC1-COD-L3-CX-3455: Steps: EC Startup Report; Vendor Startup
- DC1-COD-L3-CX-3485: Steps: EC Startup Report; Vendor Startup
- DC1-COD-L3-CX-3515: Steps: EC Startup Report; Vendor Startup
- DC1-COD-L3-CX-3545: Steps: EC Startup Report; Vendor Startup
- DC1-COD-L3-CX-3575: Steps: EC Startup Report; Vendor Startup
- DC1-COD-L3-CX-3605: Steps: EC Startup Report; Vendor Startup

| ID | Activity | Duration | Start | Finish | Predecessors | Complete | Planned start | Planned finish | Calendar | Vendor Responsible Party | Layton Discipline | Location | CX Level | DELETED | D | Equipment | Fragnet | Fragnet Responsible Party | NICK | Sort | Owner Impact Analysis |
| --- | --- | --- | --- | --- | --- | --- | --- | --- | --- | --- | --- | --- | --- | --- | --- | --- | --- | --- | --- | --- | --- |
| DC1-DH2100-LB-1050 | **DELETED** DC1-DH2100 Install DanFoss Connectors | 2d | 2026-07-14 A | 2026-07-14 A | QTS-1020 | 100% | 2026-07-15 | 2026-07-16 |  | LAY | Commissioning | DH2100 | L3 | DELETED | DH1100 |  |  |  |  |  |  |
| DC1-DH2100-LB-1060 | **DELETED** Fragnet / DC1-DH2100 40% Load Bank Testing RPP Whips | 10d | 2026-07-14 A | 2026-07-14 A | QTS-1020 | 100% | 2026-07-15 | 2026-07-28 |  | PHE | Commissioning | DH2100 | L3 | DELETED | DH1100 | RPP | Fragnet | Parrish-Hare Electrical Supply | NICK |  |  |
| DC1-DH2100-TAB-1010 | **DELETED** DC1-DH2100 Air Tab | 5d | 2026-07-14 A | 2026-07-14 A | QTS-1020 | 100% | 2026-07-16 | 2026-07-22 |  | LAY | Commissioning | DH2100 | L3 | DELETED | DH1100 |  |  |  | NICK | x |  |
| DC1-DOAS-L3-Cx-2330 | **DELETED** DC1-DH1100-CDU SCP FTE | 1d | 2026-07-14 A | 2026-07-14 A | QTS-1020 | 100% | 2026-07-28 | 2026-07-28 | QTS-PHX3 DC1 - 6 day w/ Holidays | ROS | Commissioning | DH1100 | L3 | DELETED | DH1100 | CDU SCP |  |  |  |  |  |
| DC1-DOAS-L3-Cx-2340 | **DELETED** DC1-DH1100-CDU SCP L3 Startup | 2d | 2026-07-14 A | 2026-07-14 A | QTS-1020 | 100% | 2026-07-29 | 2026-07-30 | QTS-PHX3 DC1 - 6 day w/ Holidays | VER | Commissioning | DH1100 | L3 | DELETED | DH1100 | CDU SCP |  |  |  |  |  |
| DC1-DOAS-L3-Cx-2350 | **DELETED** DC1-DH1100-CDU SCP BMS/EPMS Programming | 5d | 2026-07-14 A | 2026-07-14 A | QTS-1020 | 100% | 2026-07-31 | 2026-08-05 | QTS-PHX3 DC1 - 6 day w/ Holidays | PRM | Commissioning | DH1100 | L3 | DELETED | DH1100 | CDU SCP |  |  |  |  |  |
| DC1-ELEC-L4-Cx-1100 | **DELETED** DC1 Data Hall 1100 Liquid Cooled L4 | 5d | 2026-07-14 A | 2026-07-14 A | QTS-1020 | 100% | 2026-08-06 | 2026-08-12 |  | LAY | Commissioning | DH1100 | L4 | DELETED | DH1100 |  |  |  | NICK |  |  |
| DC1-IST-1000 | **DELETED** DC1 Data Hall 2100 IST (5/1/26) | 1d | 2026-07-14 A | 2026-07-14 A | QTS-1020 | 100% | 2026-08-14 | 2026-08-14 |  | LAY | Commissioning | DH2100 | L5 | DELETED | DH1100 |  |  |  |  |  |  |
| DC1-IST-2000 | **DELETED** DC1 Data Hall 1100 IST (5/1/26) | 1d | 2026-07-14 A | 2026-07-14 A | QTS-1020 | 100% | 2026-07-17 | 2026-07-17 |  | LAY | Commissioning | DH1100 | L5 | DELETED | DH1100 |  |  |  |  |  | Y |
| DC1-L4-Cx-1000 | **DELETED** DC1 Data Hall 2100 Air Cooled L4 | 15d | 2026-07-14 A | 2026-07-14 A | QTS-1020 | 100% | 2026-07-27 | 2026-08-14 |  | ERS | Commissioning | DH2100 | L4 | DELETED | DH1100 |  |  |  | NICK |  | Y |
| DC1-L4-Cx-1070 | **DELETED** DC1 Data Hall 2100 Liquid Cooled L4 | 5d | 2026-07-14 A | 2026-07-14 A | QTS-1020 | 100% | 2026-07-15 | 2026-07-21 |  | LAY | Commissioning | DH2100 | L4 | DELETED | DH1100 |  |  |  | NICK |  |  |
| DC1-L4-Cx-1080 | **DELETED** DC1 Data Hall 2100 BMS/EPMS Integration | 5d | 2026-07-14 A | 2026-07-14 A | QTS-1020 | 100% | 2026-07-20 | 2026-07-24 |  | LAY | Commissioning | DH2100 | L4 | DELETED | DH1100 |  |  |  |  |  |  |
| DC1-MOD2-L3-Cx-2210 | **DELETED** DC1-MOD-A22-02 FTE | 1d | 2026-07-14 A | 2026-07-14 A | QTS-1020 | 100% | 2026-07-15 | 2026-07-15 |  | ROS | Commissioning | DH2200 | L3 | DELETED | DH1100 | MOD-02 |  |  |  |  |  |
| DC1-MOD2-L3-Cx-2220 | **DELETED** DC1-MOD-A22-02 L3 Startup | 2d | 2026-07-14 A | 2026-07-14 A | QTS-1020 | 100% | 2026-07-16 | 2026-07-17 |  | PHE | Commissioning | DH2200 | L3 | DELETED | DH1100 | MOD-02 |  |  |  |  |  |
| DC1-MOD2-L3-Cx-2230 | **DELETED** DC1-MOD-A22-02 BMS/EPMS Programming | 1d | 2026-07-14 A | 2026-07-14 A | QTS-1020 | 100% | 2026-07-20 | 2026-07-20 |  | PRM | Commissioning | DH2200 | L3 | DELETED | DH1100 | MOD-02 |  |  |  |  |  |
| DC1-MOD2-L3-Cx-2240 | **DELETED** DC1-MOD-B22-02 FTE | 1d | 2026-07-14 A | 2026-07-14 A | QTS-1020 | 100% | 2026-07-15 | 2026-07-15 |  | ROS | Commissioning | DH2200 | L3 | DELETED | DH1100 | MOD-02 |  |  |  |  |  |
| DC1-MOD2-L3-Cx-2250 | **DELETED** DC1-MOD-B22-02 L3 Startup | 2d | 2026-07-14 A | 2026-07-14 A | QTS-1020 | 100% | 2026-07-16 | 2026-07-17 |  | PHE | Commissioning | DH2200 | L3 | DELETED | DH1100 | MOD-02 |  |  |  |  |  |
| DC1-MOD2-L3-Cx-2260 | **DELETED** DC1-MOD-B22-02 BMS/EPMS Programming | 1d | 2026-07-14 A | 2026-07-14 A | QTS-1020 | 100% | 2026-07-20 | 2026-07-20 |  | PRM | Commissioning | DH2200 | L3 | DELETED | DH1100 | MOD-02 |  |  |  |  |  |
| DC1-MOD2-L3-Cx-2270 | **DELETED** DC1-MOD-C22-02 FTE | 1d | 2026-07-14 A | 2026-07-14 A | QTS-1020 | 100% | 2026-07-15 | 2026-07-15 |  | ROS | Commissioning | DH2200 | L3 | DELETED | DH1100 | MOD-02 |  |  |  |  |  |
| DC1-MOD2-L3-Cx-2280 | **DELETED** DC1-MOD-C22-02 L3 Startup | 2d | 2026-07-14 A | 2026-07-14 A | QTS-1020 | 100% | 2026-07-16 | 2026-07-17 |  | PHE | Commissioning | DH2200 | L3 | DELETED | DH1100 | MOD-02 |  |  |  |  |  |
| DC1-MOD2-L3-Cx-2290 | **DELETED** DC1-MOD-C22-02 BMS/EPMS Programming | 1d | 2026-07-14 A | 2026-07-14 A | QTS-1020 | 100% | 2026-07-20 | 2026-07-20 |  | PRM | Commissioning | DH2200 | L3 | DELETED | DH1100 | MOD-02 |  |  |  |  |  |
| DC1-MOD2-L3-Cx-2300 | **DELETED** DC1-MOD-D22-02 FTE | 1d | 2026-07-14 A | 2026-07-14 A | QTS-1020 | 100% | 2026-07-15 | 2026-07-15 |  | ROS | Commissioning | DH2200 | L3 | DELETED | DH1100 | MOD-02 |  |  |  |  |  |
| DC1-MOD2-L3-Cx-2310 | **DELETED** DC1-MOD-D22-02 L3 Startup | 2d | 2026-07-14 A | 2026-07-14 A | QTS-1020 | 100% | 2026-07-16 | 2026-07-17 |  | PHE | Commissioning | DH2200 | L3 | DELETED | DH1100 | MOD-02 |  |  |  |  |  |
| DC1-MOD2-L3-Cx-2320 | **DELETED** DC1-MOD-D22-02 BMS/EPMS Programming | 1d | 2026-07-14 A | 2026-07-14 A | QTS-1020 | 100% | 2026-07-20 | 2026-07-20 |  | PRM | Commissioning | DH2200 | L3 | DELETED | DH1100 | MOD-02 |  |  |  |  |  |
| DC1-MOD2-L3-Cx-2330 | **DELETED** DC1-MOD-E22-02 FTE | 1d | 2026-07-14 A | 2026-07-14 A | QTS-1020 | 100% | 2026-07-15 | 2026-07-15 |  | ROS | Commissioning | DH2200 | L3 | DELETED | DH1100 | MOD-02 |  |  |  |  |  |
| DC1-MOD2-L3-Cx-2340 | **DELETED** DC1-MOD-E22-02 L3 Startup | 2d | 2026-07-14 A | 2026-07-14 A | QTS-1020 | 100% | 2026-07-16 | 2026-07-17 |  | PHE | Commissioning | DH2200 | L3 | DELETED | DH1100 | MOD-02 |  |  |  |  |  |
| DC1-MOD2-L3-Cx-2350 | **DELETED** DC1-MOD-E22-02 BMS/EPMS Programming | 1d | 2026-07-14 A | 2026-07-14 A | QTS-1020 | 100% | 2026-07-20 | 2026-07-20 |  | PRM | Commissioning | DH2200 | L3 | DELETED | DH1100 | MOD-02 |  |  |  |  |  |
| DC1-MOD2-L3-Cx-2360 | **DELETED** DC1-MOD-F22-02 FTE | 1d | 2026-07-14 A | 2026-07-14 A | QTS-1020 | 100% | 2026-07-15 | 2026-07-15 |  | ROS | Commissioning | DH2200 | L3 | DELETED | DH1100 | MOD-02 |  |  |  |  |  |
| DC1-MOD2-L3-Cx-2370 | **DELETED** DC1-MOD-F22-02 L3 Startup | 2d | 2026-07-14 A | 2026-07-14 A | QTS-1020 | 100% | 2026-07-16 | 2026-07-17 |  | PHE | Commissioning | DH2200 | L3 | DELETED | DH1100 | MOD-02 |  |  |  |  |  |
| DC1-MOD2-L3-Cx-2380 | **DELETED** DC1-MOD-F22-02 BMS/EPMS Programming | 1d | 2026-07-14 A | 2026-07-14 A | QTS-1020 | 100% | 2026-07-20 | 2026-07-20 |  | PRM | Commissioning | DH2200 | L3 | DELETED | DH1100 | MOD-02 |  |  |  |  |  |
| DC1-MOD2-L3-Cx-2390 | **DELETED** DC1-MOD-R22-02 FTE | 1d | 2026-07-14 A | 2026-07-14 A | QTS-1020 | 100% | 2026-07-15 | 2026-07-15 |  | ROS | Commissioning | DH2200 | L3 | DELETED | DH1100 | MOD-02 |  |  |  |  |  |
| DC1-MOD2-L3-Cx-2400 | **DELETED** DC1-MOD-R22-02 L3 Startup | 2d | 2026-07-14 A | 2026-07-14 A | QTS-1020 | 100% | 2026-07-16 | 2026-07-17 |  | PHE | Commissioning | DH2200 | L3 | DELETED | DH1100 | MOD-02 |  |  |  |  |  |
| DC1-MOD2-L3-Cx-2410 | **DELETED** DC1-MOD-R22-02 BMS/EPMS Programming | 1d | 2026-07-14 A | 2026-07-14 A | QTS-1020 | 100% | 2026-07-20 | 2026-07-20 |  | PRM | Commissioning | DH2200 | L3 | DELETED | DH1100 | MOD-02 |  |  |  |  |  |
| DC1-MOD3-L3-Cx-2210 | **DELETED** DC1-MOD-A22-03 FTE | 1d | 2026-07-14 A | 2026-07-14 A | QTS-1020 | 100% | 2026-07-17 | 2026-07-17 |  | ROS | Commissioning | DH2200 | L3 | DELETED | DH1100 | MOD-03 |  |  |  |  |  |
| DC1-MOD3-L3-Cx-2220 | **DELETED** DC1-MOD-A22-03 L3 Startup | 2d | 2026-07-14 A | 2026-07-14 A | QTS-1020 | 100% | 2026-07-20 | 2026-07-21 |  | PHE | Commissioning | DH2200 | L3 | DELETED | DH1100 | MOD-03 |  |  |  |  |  |
| DC1-MOD3-L3-Cx-2230 | **DELETED** DC1-MOD-A22-03 BMS/EPMS Programming | 1d | 2026-07-14 A | 2026-07-14 A | QTS-1020 | 100% | 2026-07-22 | 2026-07-22 |  | PRM | Commissioning | DH2200 | L3 | DELETED | DH1100 | MOD-03 |  |  |  |  |  |
| DC1-MOD3-L3-Cx-2240 | **DELETED** DC1-MOD-B22-03 FTE | 1d | 2026-07-14 A | 2026-07-14 A | QTS-1020 | 100% | 2026-07-17 | 2026-07-17 |  | ROS | Commissioning | DH2200 | L3 | DELETED | DH1100 | MOD-03 |  |  |  |  |  |
| DC1-MOD3-L3-Cx-2250 | **DELETED** DC1-MOD-B22-03 L3 Startup | 2d | 2026-07-14 A | 2026-07-14 A | QTS-1020 | 100% | 2026-07-20 | 2026-07-21 |  | PHE | Commissioning | DH2200 | L3 | DELETED | DH1100 | MOD-03 |  |  |  |  |  |
| DC1-MOD3-L3-Cx-2260 | **DELETED** DC1-MOD-B22-03 BMS/EPMS Programming | 1d | 2026-07-14 A | 2026-07-14 A | QTS-1020 | 100% | 2026-07-22 | 2026-07-22 |  | PRM | Commissioning | DH2200 | L3 | DELETED | DH1100 | MOD-03 |  |  |  |  |  |
| DC1-MOD3-L3-Cx-2270 | **DELETED** DC1-MOD-C22-03 FTE | 1d | 2026-07-14 A | 2026-07-14 A | QTS-1020 | 100% | 2026-07-17 | 2026-07-17 |  | ROS | Commissioning | DH2200 | L3 | DELETED | DH1100 | MOD-03 |  |  |  |  |  |
| DC1-MOD3-L3-Cx-2280 | **DELETED** DC1-MOD-C22-03 L3 Startup | 2d | 2026-07-14 A | 2026-07-14 A | QTS-1020 | 100% | 2026-07-20 | 2026-07-21 |  | PHE | Commissioning | DH2200 | L3 | DELETED | DH1100 | MOD-03 |  |  |  |  |  |
| DC1-MOD3-L3-Cx-2290 | **DELETED** DC1-MOD-C22-03 BMS/EPMS Programming | 1d | 2026-07-14 A | 2026-07-14 A | QTS-1020 | 100% | 2026-07-22 | 2026-07-22 |  | PRM | Commissioning | DH2200 | L3 | DELETED | DH1100 | MOD-03 |  |  |  |  |  |
| DC1-MOD3-L3-Cx-2300 | **DELETED** DC1-MOD-D22-03 FTE | 1d | 2026-07-14 A | 2026-07-14 A | QTS-1020 | 100% | 2026-07-17 | 2026-07-17 |  | ROS | Commissioning | DH2200 | L3 | DELETED | DH1100 | MOD-03 |  |  |  |  |  |
| DC1-MOD3-L3-Cx-2310 | **DELETED** DC1-MOD-D22-03 L3 Startup | 2d | 2026-07-14 A | 2026-07-14 A | QTS-1020 | 100% | 2026-07-20 | 2026-07-21 |  | PHE | Commissioning | DH2200 | L3 | DELETED | DH1100 | MOD-03 |  |  |  |  |  |
| DC1-MOD3-L3-Cx-2320 | **DELETED** DC1-MOD-D22-03 BMS/EPMS Programming | 1d | 2026-07-14 A | 2026-07-14 A | QTS-1020 | 100% | 2026-07-22 | 2026-07-22 |  | PRM | Commissioning | DH2200 | L3 | DELETED | DH1100 | MOD-03 |  |  |  |  |  |
| DC1-MOD3-L3-Cx-2330 | **DELETED** DC1-MOD-E22-03 FTE | 1d | 2026-07-14 A | 2026-07-14 A | QTS-1020 | 100% | 2026-07-17 | 2026-07-17 |  | ROS | Commissioning | DH2200 | L3 | DELETED | DH1100 | MOD-03 |  |  |  |  |  |
| DC1-MOD3-L3-Cx-2340 | **DELETED** DC1-MOD-E22-03 L3 Startup | 2d | 2026-07-14 A | 2026-07-14 A | QTS-1020 | 100% | 2026-07-20 | 2026-07-21 |  | PHE | Commissioning | DH2200 | L3 | DELETED | DH1100 | MOD-03 |  |  |  |  |  |
| DC1-MOD3-L3-Cx-2350 | **DELETED** DC1-MOD-E22-03 BMS/EPMS Programming | 1d | 2026-07-14 A | 2026-07-14 A | QTS-1020 | 100% | 2026-07-22 | 2026-07-22 |  | PRM | Commissioning | DH2200 | L3 | DELETED | DH1100 | MOD-03 |  |  |  |  |  |
| DC1-MOD3-L3-Cx-2360 | **DELETED** DC1-MOD-F22-03 FTE | 1d | 2026-07-14 A | 2026-07-14 A | QTS-1020 | 100% | 2026-07-17 | 2026-07-17 |  | ROS | Commissioning | DH2200 | L3 | DELETED | DH1100 | MOD-03 |  |  |  |  |  |
| DC1-MOD3-L3-Cx-2370 | **DELETED** DC1-MOD-F22-03 L3 Startup | 2d | 2026-07-14 A | 2026-07-14 A | QTS-1020 | 100% | 2026-07-20 | 2026-07-21 |  | PHE | Commissioning | DH2200 | L3 | DELETED | DH1100 | MOD-03 |  |  |  |  |  |
| DC1-MOD3-L3-Cx-2380 | **DELETED** DC1-MOD-F22-03 BMS/EPMS Programming | 1d | 2026-07-14 A | 2026-07-14 A | QTS-1020 | 100% | 2026-07-22 | 2026-07-22 |  | PRM | Commissioning | DH2200 | L3 | DELETED | DH1100 | MOD-03 |  |  |  |  |  |
| DC1-MOD3-L3-Cx-2390 | **DELETED** DC1-MOD-R22-03 FTE | 1d | 2026-07-14 A | 2026-07-14 A | QTS-1020 | 100% | 2026-07-17 | 2026-07-17 |  | ROS | Commissioning | DH2200 | L3 | DELETED | DH1100 | MOD-03 |  |  |  |  |  |
| DC1-MOD3-L3-Cx-2400 | **DELETED** DC1-MOD-R22-03 L3 Startup | 2d | 2026-07-14 A | 2026-07-14 A | QTS-1020 | 100% | 2026-07-20 | 2026-07-21 |  | PHE | Commissioning | DH2200 | L3 | DELETED | DH1100 | MOD-03 |  |  |  |  |  |
| DC1-MOD3-L3-Cx-2410 | **DELETED** DC1-MOD-R22-03 BMS/EPMS Programming | 1d | 2026-07-14 A | 2026-07-14 A | QTS-1020 | 100% | 2026-07-22 | 2026-07-22 |  | PRM | Commissioning | DH2200 | L3 | DELETED | DH1100 | MOD-03 |  |  |  |  |  |
| DC1-RPP-L2-2360 | **DELETED** DH2200 RPP-A22-01 A/B L2 Checklist | 3d | 2026-07-14 A | 2026-07-14 A | QTS-1020 | 100% | 2026-07-15 | 2026-07-17 |  | SQD | Commissioning | DH2200 | L2 | DELETED | DH1100 | RPP |  |  |  |  |  |
| DC1-RPP-L2-2370 | **DELETED** DH2200 RPP-A22-02 A/B L2 Checklist | 3d | 2026-07-14 A | 2026-07-14 A | QTS-1020 | 100% | 2026-07-15 | 2026-07-17 |  | SQD | Commissioning | DH2200 | L2 | DELETED | DH1100 | RPP |  |  |  |  |  |
| DC1-RPP-L2-2380 | **DELETED** DH2200 RPP-A22-03 A/B L2 Checklist | 3d | 2026-07-14 A | 2026-07-14 A | QTS-1020 | 100% | 2026-07-15 | 2026-07-17 |  | SQD | Commissioning | DH2200 | L2 | DELETED | DH1100 | RPP |  |  |  |  |  |
| DC1-RPP-L2-2390 | **DELETED** DH2200 RPP-A22-04 A/B L2 Checklist | 3d | 2026-07-14 A | 2026-07-14 A | QTS-1020 | 100% | 2026-07-15 | 2026-07-17 |  | SQD | Commissioning | DH2200 | L2 | DELETED | DH1100 | RPP |  |  |  |  |  |
| DC1-RPP-L2-2400 | **DELETED** DH2200 RPP-A22-05 A/B L2 Checklist | 3d | 2026-07-14 A | 2026-07-14 A | QTS-1020 | 100% | 2026-07-15 | 2026-07-17 |  | SQD | Commissioning | DH2200 | L2 | DELETED | DH1100 | RPP |  |  |  |  |  |
| DC1-RPP-L2-2410 | **DELETED** DH2200 RPP-A22-06 A/B L2 Checklist | 3d | 2026-07-14 A | 2026-07-14 A | QTS-1020 | 100% | 2026-07-15 | 2026-07-17 |  | SQD | Commissioning | DH2200 | L2 | DELETED | DH1100 | RPP |  |  |  |  |  |
| DC1-RPP-L2-2420 | **DELETED** DH2200 RPP-B22-01 A/B L2 Checklist | 3d | 2026-07-14 A | 2026-07-14 A | QTS-1020 | 100% | 2026-07-15 | 2026-07-17 |  | SQD | Commissioning | DH2200 | L2 | DELETED | DH1100 | RPP |  |  |  |  |  |
| DC1-RPP-L2-2430 | **DELETED** DH2200 RPP-B22-02 A/B L2 Checklist | 3d | 2026-07-14 A | 2026-07-14 A | QTS-1020 | 100% | 2026-07-15 | 2026-07-17 |  | SQD | Commissioning | DH2200 | L2 | DELETED | DH1100 | RPP |  |  |  |  |  |
| DC1-RPP-L2-2440 | **DELETED** DH2200 RPP-B22-03 A/B L2 Checklist | 3d | 2026-07-14 A | 2026-07-14 A | QTS-1020 | 100% | 2026-07-15 | 2026-07-17 |  | SQD | Commissioning | DH2200 | L2 | DELETED | DH1100 | RPP |  |  |  |  |  |
| DC1-RPP-L2-2450 | **DELETED** DH2200 RPP-B22-04 A/B L2 Checklist | 3d | 2026-07-14 A | 2026-07-14 A | QTS-1020 | 100% | 2026-07-15 | 2026-07-17 |  | SQD | Commissioning | DH2200 | L2 | DELETED | DH1100 | RPP |  |  |  |  |  |
| DC1-RPP-L2-2460 | **DELETED** DH2200 RPP-B22-05 A/B L2 Checklist | 3d | 2026-07-14 A | 2026-07-14 A | QTS-1020 | 100% | 2026-07-15 | 2026-07-17 |  | SQD | Commissioning | DH2200 | L2 | DELETED | DH1100 | RPP |  |  |  |  |  |
| DC1-RPP-L2-2470 | **DELETED** DH2200 RPP-B22-06 A/B L2 Checklist | 3d | 2026-07-14 A | 2026-07-14 A | QTS-1020 | 100% | 2026-07-15 | 2026-07-17 |  | SQD | Commissioning | DH2200 | L2 | DELETED | DH1100 | RPP |  |  |  |  |  |
| DC1-RPP-L2-2480 | **DELETED** DH2200 RPP-C22-01 A/B L2 Checklist | 3d | 2026-07-14 A | 2026-07-14 A | QTS-1020 | 100% | 2026-07-15 | 2026-07-17 |  | SQD | Commissioning | DH2200 | L2 | DELETED | DH1100 | RPP |  |  |  |  |  |
| DC1-RPP-L2-2490 | **DELETED** DH2200 RPP-C22-02 A/B L2 Checklist | 3d | 2026-07-14 A | 2026-07-14 A | QTS-1020 | 100% | 2026-07-15 | 2026-07-17 |  | SQD | Commissioning | DH2200 | L2 | DELETED | DH1100 | RPP |  |  |  |  |  |
| DC1-RPP-L2-2500 | **DELETED** DH2200 RPP-C22-03 A/B L2 Checklist | 3d | 2026-07-14 A | 2026-07-14 A | QTS-1020 | 100% | 2026-07-15 | 2026-07-17 |  | SQD | Commissioning | DH2200 | L2 | DELETED | DH1100 | RPP |  |  |  |  |  |
| DC1-RPP-L2-2510 | **DELETED** DH2200 RPP-C22-04 A/B L2 Checklist | 3d | 2026-07-14 A | 2026-07-14 A | QTS-1020 | 100% | 2026-07-15 | 2026-07-17 |  | SQD | Commissioning | DH2200 | L2 | DELETED | DH1100 | RPP |  |  |  |  |  |

Notes:
- DC1-DH2100-LB-1050: Scheduler's Notes: Made aware of this item 1/16/26. Need procurement information to be / provided by QTS.
- DC1-DOAS-L3-Cx-2340: Steps: EC Startup Checklist; MC Startup Checklist; Vendor Startup
- DC1-MOD2-L3-Cx-2220: Steps: EC Startup Report; Vendor Startup
- DC1-MOD2-L3-Cx-2250: Steps: EC Startup Report; Vendor Startup
- DC1-MOD2-L3-Cx-2280: Steps: EC Startup Report; Vendor Startup
- DC1-MOD2-L3-Cx-2310: Steps: EC Startup Report; Vendor Startup
- DC1-MOD2-L3-Cx-2340: Steps: EC Startup Report; Vendor Startup
- DC1-MOD2-L3-Cx-2370: Steps: EC Startup Report; Vendor Startup
- DC1-MOD2-L3-Cx-2400: Steps: EC Startup Report; Vendor Startup
- DC1-MOD3-L3-Cx-2220: Steps: EC Startup Report; Vendor Startup
- DC1-MOD3-L3-Cx-2250: Steps: EC Startup Report; Vendor Startup
- DC1-MOD3-L3-Cx-2280: Steps: EC Startup Report; Vendor Startup
- DC1-MOD3-L3-Cx-2310: Steps: EC Startup Report; Vendor Startup
- DC1-MOD3-L3-Cx-2340: Steps: EC Startup Report; Vendor Startup
- DC1-MOD3-L3-Cx-2370: Steps: EC Startup Report; Vendor Startup
- DC1-MOD3-L3-Cx-2400: Steps: EC Startup Report; Vendor Startup
- DC1-RPP-L2-2360: Steps: EC Installation Checklist; CC Installation Checklist; Vendor Pre-Energization Checklist; CXA Pre-Energization Inspection; PEI/Clean-Walk
- DC1-RPP-L2-2370: Steps: EC Installation Checklist; CC Installation Checklist; Vendor Pre-Energization Checklist; CXA Pre-Energization Inspection; PEI/Clean-Walk
- DC1-RPP-L2-2380: Steps: EC Installation Checklist; CC Installation Checklist; Vendor Pre-Energization Checklist; CXA Pre-Energization Inspection; PEI/Clean-Walk
- DC1-RPP-L2-2390: Steps: EC Installation Checklist; CC Installation Checklist; Vendor Pre-Energization Checklist; CXA Pre-Energization Inspection; PEI/Clean-Walk
- DC1-RPP-L2-2400: Steps: EC Installation Checklist; CC Installation Checklist; Vendor Pre-Energization Checklist; CXA Pre-Energization Inspection; PEI/Clean-Walk
- DC1-RPP-L2-2410: Steps: EC Installation Checklist; CC Installation Checklist; Vendor Pre-Energization Checklist; CXA Pre-Energization Inspection; PEI/Clean-Walk
- DC1-RPP-L2-2420: Steps: EC Installation Checklist; CC Installation Checklist; Vendor Pre-Energization Checklist; CXA Pre-Energization Inspection; PEI/Clean-Walk
- DC1-RPP-L2-2430: Steps: EC Installation Checklist; CC Installation Checklist; Vendor Pre-Energization Checklist; CXA Pre-Energization Inspection; PEI/Clean-Walk
- DC1-RPP-L2-2440: Steps: EC Installation Checklist; CC Installation Checklist; Vendor Pre-Energization Checklist; CXA Pre-Energization Inspection; PEI/Clean-Walk
- DC1-RPP-L2-2450: Steps: EC Installation Checklist; CC Installation Checklist; Vendor Pre-Energization Checklist; CXA Pre-Energization Inspection; PEI/Clean-Walk
- DC1-RPP-L2-2460: Steps: EC Installation Checklist; CC Installation Checklist; Vendor Pre-Energization Checklist; CXA Pre-Energization Inspection; PEI/Clean-Walk
- DC1-RPP-L2-2470: Steps: EC Installation Checklist; CC Installation Checklist; Vendor Pre-Energization Checklist; CXA Pre-Energization Inspection; PEI/Clean-Walk
- DC1-RPP-L2-2480: Steps: EC Installation Checklist; CC Installation Checklist; Vendor Pre-Energization Checklist; CXA Pre-Energization Inspection; PEI/Clean-Walk
- DC1-RPP-L2-2490: Steps: EC Installation Checklist; CC Installation Checklist; Vendor Pre-Energization Checklist; CXA Pre-Energization Inspection; PEI/Clean-Walk
- DC1-RPP-L2-2500: Steps: EC Installation Checklist; CC Installation Checklist; Vendor Pre-Energization Checklist; CXA Pre-Energization Inspection; PEI/Clean-Walk
- DC1-RPP-L2-2510: Steps: EC Installation Checklist; CC Installation Checklist; Vendor Pre-Energization Checklist; CXA Pre-Energization Inspection; PEI/Clean-Walk

| ID | Activity | Duration | Start | Finish | Predecessors | Complete | Planned start | Planned finish | Vendor Responsible Party | Layton Discipline | Location | CX Level | Equipment | DELETED | D |
| --- | --- | --- | --- | --- | --- | --- | --- | --- | --- | --- | --- | --- | --- | --- | --- |
| DC1-RPP-L2-2520 | **DELETED** DH2200 RPP-C22-05 A/B L2 Checklist | 3d | 2026-07-14 A | 2026-07-14 A | QTS-1020 | 100% | 2026-07-15 | 2026-07-17 | SQD | Commissioning | DH2200 | L2 | RPP | DELETED | DH1100 |
| DC1-RPP-L2-2530 | **DELETED** DH2200 RPP-C22-06 A/B L2 Checklist | 3d | 2026-07-14 A | 2026-07-14 A | QTS-1020 | 100% | 2026-07-15 | 2026-07-17 | SQD | Commissioning | DH2200 | L2 | RPP | DELETED | DH1100 |
| DC1-RPP-L2-2540 | **DELETED** DH2200 RPP-D22-01 A/B L2 Checklist | 3d | 2026-07-14 A | 2026-07-14 A | QTS-1020 | 100% | 2026-07-15 | 2026-07-17 | SQD | Commissioning | DH2200 | L2 | RPP | DELETED | DH1100 |
| DC1-RPP-L2-2550 | **DELETED** DH2200 RPP-D22-02 A/B L2 Checklist | 3d | 2026-07-14 A | 2026-07-14 A | QTS-1020 | 100% | 2026-07-15 | 2026-07-17 | SQD | Commissioning | DH2200 | L2 | RPP | DELETED | DH1100 |
| DC1-RPP-L2-2560 | **DELETED** DH2200 RPP-D22-03 A/B L2 Checklist | 3d | 2026-07-14 A | 2026-07-14 A | QTS-1020 | 100% | 2026-07-15 | 2026-07-17 | SQD | Commissioning | DH2200 | L2 | RPP | DELETED | DH1100 |
| DC1-RPP-L2-2570 | **DELETED** DH2200 RPP-D22-04 A/B L2 Checklist | 3d | 2026-07-14 A | 2026-07-14 A | QTS-1020 | 100% | 2026-07-15 | 2026-07-17 | SQD | Commissioning | DH2200 | L2 | RPP | DELETED | DH1100 |
| DC1-RPP-L2-2580 | **DELETED** DH2200 RPP-D22-05 A/B L2 Checklist | 3d | 2026-07-14 A | 2026-07-14 A | QTS-1020 | 100% | 2026-07-15 | 2026-07-17 | SQD | Commissioning | DH2200 | L2 | RPP | DELETED | DH1100 |
| DC1-RPP-L2-2590 | **DELETED** DH2200 RPP-D22-06 A/B L2 Checklist | 3d | 2026-07-14 A | 2026-07-14 A | QTS-1020 | 100% | 2026-07-15 | 2026-07-17 | SQD | Commissioning | DH2200 | L2 | RPP | DELETED | DH1100 |
| DC1-RPP-L2-2600 | **DELETED** DH2200 RPP-E22-01 A/B L2 Checklist | 3d | 2026-07-14 A | 2026-07-14 A | QTS-1020 | 100% | 2026-07-15 | 2026-07-17 | SQD | Commissioning | DH2200 | L2 | RPP | DELETED | DH1100 |
| DC1-RPP-L2-2610 | **DELETED** DH2200 RPP-E22-02 A/B L2 Checklist | 3d | 2026-07-14 A | 2026-07-14 A | QTS-1020 | 100% | 2026-07-15 | 2026-07-17 | SQD | Commissioning | DH2200 | L2 | RPP | DELETED | DH1100 |
| DC1-RPP-L2-2620 | **DELETED** DH2200 RPP-E22-03 A/B L2 Checklist | 3d | 2026-07-14 A | 2026-07-14 A | QTS-1020 | 100% | 2026-07-15 | 2026-07-17 | SQD | Commissioning | DH2200 | L2 | RPP | DELETED | DH1100 |
| DC1-RPP-L2-2630 | **DELETED** DH2200 RPP-E22-04 A/B L2 Checklist | 3d | 2026-07-14 A | 2026-07-14 A | QTS-1020 | 100% | 2026-07-15 | 2026-07-17 | SQD | Commissioning | DH2200 | L2 | RPP | DELETED | DH1100 |
| DC1-RPP-L2-2640 | **DELETED** DH2200 RPP-E22-05 A/B L2 Checklist | 3d | 2026-07-14 A | 2026-07-14 A | QTS-1020 | 100% | 2026-07-15 | 2026-07-17 | SQD | Commissioning | DH2200 | L2 | RPP | DELETED | DH1100 |
| DC1-RPP-L2-2650 | **DELETED** DH2200 RPP-E22-06 A/B L2 Checklist | 3d | 2026-07-14 A | 2026-07-14 A | QTS-1020 | 100% | 2026-07-15 | 2026-07-17 | SQD | Commissioning | DH2200 | L2 | RPP | DELETED | DH1100 |
| DC1-RPP-L2-2660 | **DELETED** DH2200 RPP-F22-01 A/B L2 Checklist | 3d | 2026-07-14 A | 2026-07-14 A | QTS-1020 | 100% | 2026-07-15 | 2026-07-17 | SQD | Commissioning | DH2200 | L2 | RPP | DELETED | DH1100 |
| DC1-RPP-L2-2670 | **DELETED** DH2200 RPP-F22-02 A/B L2 Checklist | 3d | 2026-07-14 A | 2026-07-14 A | QTS-1020 | 100% | 2026-07-15 | 2026-07-17 | SQD | Commissioning | DH2200 | L2 | RPP | DELETED | DH1100 |
| DC1-RPP-L2-2680 | **DELETED** DH2200 RPP-F22-03 A/B L2 Checklist | 3d | 2026-07-14 A | 2026-07-14 A | QTS-1020 | 100% | 2026-07-15 | 2026-07-17 | SQD | Commissioning | DH2200 | L2 | RPP | DELETED | DH1100 |
| DC1-RPP-L2-2690 | **DELETED** DH2200 RPP-F22-04 A/B L2 Checklist | 3d | 2026-07-14 A | 2026-07-14 A | QTS-1020 | 100% | 2026-07-15 | 2026-07-17 | SQD | Commissioning | DH2200 | L2 | RPP | DELETED | DH1100 |
| DC1-RPP-L2-2700 | **DELETED** DH2200 RPP-F22-05 A/B L2 Checklist | 3d | 2026-07-14 A | 2026-07-14 A | QTS-1020 | 100% | 2026-07-15 | 2026-07-17 | SQD | Commissioning | DH2200 | L2 | RPP | DELETED | DH1100 |
| DC1-RPP-L2-2710 | **DELETED** DH2200 RPP-F22-06 A/B L2 Checklist | 3d | 2026-07-14 A | 2026-07-14 A | QTS-1020 | 100% | 2026-07-15 | 2026-07-17 | SQD | Commissioning | DH2200 | L2 | RPP | DELETED | DH1100 |
| DC1-RPP-L3-CX-2545 | **DELETED** DC1-RPP-A22-01 A/B FTE | 1d | 2026-07-14 A | 2026-07-14 A | QTS-1020 | 100% | 2026-07-16 | 2026-07-16 | ROS | Commissioning | DH2200 | L3 | RPP | DELETED | DH1100 |
| DC1-RPP-L3-CX-2555 | **DELETED** DC1-RPP-A22-01 A/B L3 Startup | 2d | 2026-07-14 A | 2026-07-14 A | QTS-1020 | 100% | 2026-07-17 | 2026-07-20 | SQD | Commissioning | DH2200 | L3 | RPP | DELETED | DH1100 |
| DC1-RPP-L3-CX-2565 | **DELETED** DC1-RPP-A22-01 A/B BMS/EPMS Programming | 1d | 2026-07-14 A | 2026-07-14 A | QTS-1020 | 100% | 2026-07-21 | 2026-07-21 | PRM | Commissioning | DH2200 | L3 | RPP | DELETED | DH1100 |
| DC1-RPP-L3-CX-2575 | **DELETED** DC1-RPP-A22-02 A/B FTE | 1d | 2026-07-14 A | 2026-07-14 A | QTS-1020 | 100% | 2026-07-16 | 2026-07-16 | ROS | Commissioning | DH2200 | L3 | RPP | DELETED | DH1100 |
| DC1-RPP-L3-CX-2585 | **DELETED** DC1-RPP-A22-02 A/B L3 Startup | 2d | 2026-07-14 A | 2026-07-14 A | QTS-1020 | 100% | 2026-07-17 | 2026-07-20 | SQD | Commissioning | DH2200 | L3 | RPP | DELETED | DH1100 |
| DC1-RPP-L3-CX-2595 | **DELETED** DC1-RPP-A22-02 A/B BMS/EPMS Programming | 1d | 2026-07-14 A | 2026-07-14 A | QTS-1020 | 100% | 2026-07-21 | 2026-07-21 | PRM | Commissioning | DH2200 | L3 | RPP | DELETED | DH1100 |
| DC1-RPP-L3-CX-2605 | **DELETED** DC1-RPP-A22-03 A/B FTE | 1d | 2026-07-14 A | 2026-07-14 A | QTS-1020 | 100% | 2026-07-16 | 2026-07-16 | ROS | Commissioning | DH2200 | L3 | RPP | DELETED | DH1100 |
| DC1-RPP-L3-CX-2615 | **DELETED** DC1-RPP-A22-03 A/B L3 Startup | 2d | 2026-07-14 A | 2026-07-14 A | QTS-1020 | 100% | 2026-07-17 | 2026-07-20 | SQD | Commissioning | DH2200 | L3 | RPP | DELETED | DH1100 |
| DC1-RPP-L3-CX-2625 | **DELETED** DC1-RPP-A22-03 A/B BMS/EPMS Programming | 1d | 2026-07-14 A | 2026-07-14 A | QTS-1020 | 100% | 2026-07-21 | 2026-07-21 | PRM | Commissioning | DH2200 | L3 | RPP | DELETED | DH1100 |
| DC1-RPP-L3-CX-2635 | **DELETED** DC1-RPP-A22-04 A/B FTE | 1d | 2026-07-14 A | 2026-07-14 A | QTS-1020 | 100% | 2026-07-16 | 2026-07-16 | ROS | Commissioning | DH2200 | L3 | RPP | DELETED | DH1100 |
| DC1-RPP-L3-CX-2645 | **DELETED** DC1-RPP-A22-04 A/B L3 Startup | 2d | 2026-07-14 A | 2026-07-14 A | QTS-1020 | 100% | 2026-07-17 | 2026-07-20 | SQD | Commissioning | DH2200 | L3 | RPP | DELETED | DH1100 |
| DC1-RPP-L3-CX-2655 | **DELETED** DC1-RPP-A22-04 A/B BMS/EPMS Programming | 1d | 2026-07-14 A | 2026-07-14 A | QTS-1020 | 100% | 2026-07-21 | 2026-07-21 | PRM | Commissioning | DH2200 | L3 | RPP | DELETED | DH1100 |
| DC1-RPP-L3-CX-2665 | **DELETED** DC1-RPP-A22-05 A/B FTE | 1d | 2026-07-14 A | 2026-07-14 A | QTS-1020 | 100% | 2026-07-16 | 2026-07-16 | ROS | Commissioning | DH2200 | L3 | RPP | DELETED | DH1100 |
| DC1-RPP-L3-CX-2675 | **DELETED** DC1-RPP-A22-05 A/B L3 Startup | 2d | 2026-07-14 A | 2026-07-14 A | QTS-1020 | 100% | 2026-07-17 | 2026-07-20 | SQD | Commissioning | DH2200 | L3 | RPP | DELETED | DH1100 |
| DC1-RPP-L3-CX-2685 | **DELETED** DC1-RPP-A22-05 A/B BMS/EPMS Programming | 1d | 2026-07-14 A | 2026-07-14 A | QTS-1020 | 100% | 2026-07-21 | 2026-07-21 | PRM | Commissioning | DH2200 | L3 | RPP | DELETED | DH1100 |
| DC1-RPP-L3-CX-2695 | **DELETED** DC1-RPP-A22-06 A/B FTE | 1d | 2026-07-14 A | 2026-07-14 A | QTS-1020 | 100% | 2026-07-16 | 2026-07-16 | ROS | Commissioning | DH2200 | L3 | RPP | DELETED | DH1100 |
| DC1-RPP-L3-CX-2705 | **DELETED** DC1-RPP-A22-06 A/B L3 Startup | 2d | 2026-07-14 A | 2026-07-14 A | QTS-1020 | 100% | 2026-07-17 | 2026-07-20 | SQD | Commissioning | DH2200 | L3 | RPP | DELETED | DH1100 |
| DC1-RPP-L3-CX-2715 | **DELETED** DC1-RPP-A22-06 A/B BMS/EPMS Programming | 1d | 2026-07-14 A | 2026-07-14 A | QTS-1020 | 100% | 2026-07-21 | 2026-07-21 | PRM | Commissioning | DH2200 | L3 | RPP | DELETED | DH1100 |
| DC1-RPP-L3-CX-2725 | **DELETED** DC1-RPP-B22-01 A/B FTE | 1d | 2026-07-14 A | 2026-07-14 A | QTS-1020 | 100% | 2026-07-16 | 2026-07-16 | ROS | Commissioning | DH2200 | L3 | RPP | DELETED | DH1100 |
| DC1-RPP-L3-CX-2735 | **DELETED** DC1-RPP-B22-01 A/B L3 Startup | 2d | 2026-07-14 A | 2026-07-14 A | QTS-1020 | 100% | 2026-07-17 | 2026-07-20 | SQD | Commissioning | DH2200 | L3 | RPP | DELETED | DH1100 |
| DC1-RPP-L3-CX-2745 | **DELETED** DC1-RPP-B22-01 A/B BMS/EPMS Programming | 1d | 2026-07-14 A | 2026-07-14 A | QTS-1020 | 100% | 2026-07-21 | 2026-07-21 | PRM | Commissioning | DH2200 | L3 | RPP | DELETED | DH1100 |
| DC1-RPP-L3-CX-2755 | **DELETED** DC1-RPP-B22-02 A/B FTE | 1d | 2026-07-14 A | 2026-07-14 A | QTS-1020 | 100% | 2026-07-16 | 2026-07-16 | ROS | Commissioning | DH2200 | L3 | RPP | DELETED | DH1100 |
| DC1-RPP-L3-CX-2765 | **DELETED** DC1-RPP-B22-02 A/B L3 Startup | 2d | 2026-07-14 A | 2026-07-14 A | QTS-1020 | 100% | 2026-07-17 | 2026-07-20 | SQD | Commissioning | DH2200 | L3 | RPP | DELETED | DH1100 |
| DC1-RPP-L3-CX-2775 | **DELETED** DC1-RPP-B22-02 A/B BMS/EPMS Programming | 1d | 2026-07-14 A | 2026-07-14 A | QTS-1020 | 100% | 2026-07-21 | 2026-07-21 | PRM | Commissioning | DH2200 | L3 | RPP | DELETED | DH1100 |
| DC1-RPP-L3-CX-2785 | **DELETED** DC1-RPP-B22-03 A/B FTE | 1d | 2026-07-14 A | 2026-07-14 A | QTS-1020 | 100% | 2026-07-16 | 2026-07-16 | ROS | Commissioning | DH2200 | L3 | RPP | DELETED | DH1100 |
| DC1-RPP-L3-CX-2795 | **DELETED** DC1-RPP-B22-03 A/B L3 Startup | 2d | 2026-07-14 A | 2026-07-14 A | QTS-1020 | 100% | 2026-07-17 | 2026-07-20 | SQD | Commissioning | DH2200 | L3 | RPP | DELETED | DH1100 |
| DC1-RPP-L3-CX-2805 | **DELETED** DC1-RPP-B22-03 A/B BMS/EPMS Programming | 1d | 2026-07-14 A | 2026-07-14 A | QTS-1020 | 100% | 2026-07-21 | 2026-07-21 | PRM | Commissioning | DH2200 | L3 | RPP | DELETED | DH1100 |
| DC1-RPP-L3-CX-2815 | **DELETED** DC1-RPP-B22-04 A/B FTE | 1d | 2026-07-14 A | 2026-07-14 A | QTS-1020 | 100% | 2026-07-16 | 2026-07-16 | ROS | Commissioning | DH2200 | L3 | RPP | DELETED | DH1100 |
| DC1-RPP-L3-CX-2825 | **DELETED** DC1-RPP-B22-04 A/B L3 Startup | 2d | 2026-07-14 A | 2026-07-14 A | QTS-1020 | 100% | 2026-07-17 | 2026-07-20 | SQD | Commissioning | DH2200 | L3 | RPP | DELETED | DH1100 |
| DC1-RPP-L3-CX-2835 | **DELETED** DC1-RPP-B22-04 A/B BMS/EPMS Programming | 1d | 2026-07-14 A | 2026-07-14 A | QTS-1020 | 100% | 2026-07-21 | 2026-07-21 | PRM | Commissioning | DH2200 | L3 | RPP | DELETED | DH1100 |
| DC1-RPP-L3-CX-2845 | **DELETED** DC1-RPP-B22-05 A/B FTE | 1d | 2026-07-14 A | 2026-07-14 A | QTS-1020 | 100% | 2026-07-16 | 2026-07-16 | ROS | Commissioning | DH2200 | L3 | RPP | DELETED | DH1100 |
| DC1-RPP-L3-CX-2855 | **DELETED** DC1-RPP-B22-05 A/B L3 Startup | 2d | 2026-07-14 A | 2026-07-14 A | QTS-1020 | 100% | 2026-07-17 | 2026-07-20 | SQD | Commissioning | DH2200 | L3 | RPP | DELETED | DH1100 |
| DC1-RPP-L3-CX-2865 | **DELETED** DC1-RPP-B22-05 A/B BMS/EPMS Programming | 1d | 2026-07-14 A | 2026-07-14 A | QTS-1020 | 100% | 2026-07-21 | 2026-07-21 | PRM | Commissioning | DH2200 | L3 | RPP | DELETED | DH1100 |
| DC1-RPP-L3-CX-2875 | **DELETED** DC1-RPP-B22-06 A/B FTE | 1d | 2026-07-14 A | 2026-07-14 A | QTS-1020 | 100% | 2026-07-16 | 2026-07-16 | ROS | Commissioning | DH2200 | L3 | RPP | DELETED | DH1100 |
| DC1-RPP-L3-CX-2885 | **DELETED** DC1-RPP-B22-06 A/B L3 Startup | 2d | 2026-07-14 A | 2026-07-14 A | QTS-1020 | 100% | 2026-07-17 | 2026-07-20 | SQD | Commissioning | DH2200 | L3 | RPP | DELETED | DH1100 |
| DC1-RPP-L3-CX-2895 | **DELETED** DC1-RPP-B22-06 A/B BMS/EPMS Programming | 1d | 2026-07-14 A | 2026-07-14 A | QTS-1020 | 100% | 2026-07-21 | 2026-07-21 | PRM | Commissioning | DH2200 | L3 | RPP | DELETED | DH1100 |
| DC1-RPP-L3-CX-2905 | **DELETED** DC1-RPP-C22-01 A/B FTE | 1d | 2026-07-14 A | 2026-07-14 A | QTS-1020 | 100% | 2026-07-16 | 2026-07-16 | ROS | Commissioning | DH2200 | L3 | RPP | DELETED | DH1100 |
| DC1-RPP-L3-CX-2915 | **DELETED** DC1-RPP-C22-01 A/B L3 Startup | 2d | 2026-07-14 A | 2026-07-14 A | QTS-1020 | 100% | 2026-07-17 | 2026-07-20 | SQD | Commissioning | DH2200 | L3 | RPP | DELETED | DH1100 |
| DC1-RPP-L3-CX-2925 | **DELETED** DC1-RPP-C22-01 A/B BMS/EPMS Programming | 1d | 2026-07-14 A | 2026-07-14 A | QTS-1020 | 100% | 2026-07-21 | 2026-07-21 | PRM | Commissioning | DH2200 | L3 | RPP | DELETED | DH1100 |
| DC1-RPP-L3-CX-2935 | **DELETED** DC1-RPP-C22-02 A/B FTE | 1d | 2026-07-14 A | 2026-07-14 A | QTS-1020 | 100% | 2026-07-16 | 2026-07-16 | ROS | Commissioning | DH2200 | L3 | RPP | DELETED | DH1100 |
| DC1-RPP-L3-CX-2945 | **DELETED** DC1-RPP-C22-02 A/B L3 Startup | 2d | 2026-07-14 A | 2026-07-14 A | QTS-1020 | 100% | 2026-07-17 | 2026-07-20 | SQD | Commissioning | DH2200 | L3 | RPP | DELETED | DH1100 |
| DC1-RPP-L3-CX-2955 | **DELETED** DC1-RPP-C22-02 A/B BMS/EPMS Programming | 1d | 2026-07-14 A | 2026-07-14 A | QTS-1020 | 100% | 2026-07-21 | 2026-07-21 | PRM | Commissioning | DH2200 | L3 | RPP | DELETED | DH1100 |
| DC1-RPP-L3-CX-2965 | **DELETED** DC1-RPP-C22-03 A/B FTE | 1d | 2026-07-14 A | 2026-07-14 A | QTS-1020 | 100% | 2026-07-16 | 2026-07-16 | ROS | Commissioning | DH2200 | L3 | RPP | DELETED | DH1100 |
| DC1-RPP-L3-CX-2975 | **DELETED** DC1-RPP-C22-03 A/B L3 Startup | 2d | 2026-07-14 A | 2026-07-14 A | QTS-1020 | 100% | 2026-07-17 | 2026-07-20 | SQD | Commissioning | DH2200 | L3 | RPP | DELETED | DH1100 |
| DC1-RPP-L3-CX-2985 | **DELETED** DC1-RPP-C22-03 A/B BMS/EPMS Programming | 1d | 2026-07-14 A | 2026-07-14 A | QTS-1020 | 100% | 2026-07-21 | 2026-07-21 | PRM | Commissioning | DH2200 | L3 | RPP | DELETED | DH1100 |
| DC1-RPP-L3-CX-2995 | **DELETED** DC1-RPP-C22-04 A/B FTE | 1d | 2026-07-14 A | 2026-07-14 A | QTS-1020 | 100% | 2026-07-16 | 2026-07-16 | ROS | Commissioning | DH2200 | L3 | RPP | DELETED | DH1100 |
| DC1-RPP-L3-CX-3005 | **DELETED** DC1-RPP-C22-04 A/B L3 Startup | 2d | 2026-07-14 A | 2026-07-14 A | QTS-1020 | 100% | 2026-07-17 | 2026-07-20 | SQD | Commissioning | DH2200 | L3 | RPP | DELETED | DH1100 |
| DC1-RPP-L3-CX-3015 | **DELETED** DC1-RPP-C22-04 A/B BMS/EPMS Programming | 1d | 2026-07-14 A | 2026-07-14 A | QTS-1020 | 100% | 2026-07-21 | 2026-07-21 | PRM | Commissioning | DH2200 | L3 | RPP | DELETED | DH1100 |
| DC1-RPP-L3-CX-3025 | **DELETED** DC1-RPP-C22-05 A/B FTE | 1d | 2026-07-14 A | 2026-07-14 A | QTS-1020 | 100% | 2026-07-16 | 2026-07-16 | ROS | Commissioning | DH2200 | L3 | RPP | DELETED | DH1100 |
| DC1-RPP-L3-CX-3035 | **DELETED** DC1-RPP-C22-05 A/B L3 Startup | 2d | 2026-07-14 A | 2026-07-14 A | QTS-1020 | 100% | 2026-07-17 | 2026-07-20 | SQD | Commissioning | DH2200 | L3 | RPP | DELETED | DH1100 |

Notes:
- DC1-RPP-L2-2520: Steps: EC Installation Checklist; CC Installation Checklist; Vendor Pre-Energization Checklist; CXA Pre-Energization Inspection; PEI/Clean-Walk
- DC1-RPP-L2-2530: Steps: EC Installation Checklist; CC Installation Checklist; Vendor Pre-Energization Checklist; CXA Pre-Energization Inspection; PEI/Clean-Walk
- DC1-RPP-L2-2540: Steps: EC Installation Checklist; CC Installation Checklist; Vendor Pre-Energization Checklist; CXA Pre-Energization Inspection; PEI/Clean-Walk
- DC1-RPP-L2-2550: Steps: EC Installation Checklist; CC Installation Checklist; Vendor Pre-Energization Checklist; CXA Pre-Energization Inspection; PEI/Clean-Walk
- DC1-RPP-L2-2560: Steps: EC Installation Checklist; CC Installation Checklist; Vendor Pre-Energization Checklist; CXA Pre-Energization Inspection; PEI/Clean-Walk
- DC1-RPP-L2-2570: Steps: EC Installation Checklist; CC Installation Checklist; Vendor Pre-Energization Checklist; CXA Pre-Energization Inspection; PEI/Clean-Walk
- DC1-RPP-L2-2580: Steps: EC Installation Checklist; CC Installation Checklist; Vendor Pre-Energization Checklist; CXA Pre-Energization Inspection; PEI/Clean-Walk
- DC1-RPP-L2-2590: Steps: EC Installation Checklist; CC Installation Checklist; Vendor Pre-Energization Checklist; CXA Pre-Energization Inspection; PEI/Clean-Walk
- DC1-RPP-L2-2600: Steps: EC Installation Checklist; CC Installation Checklist; Vendor Pre-Energization Checklist; CXA Pre-Energization Inspection; PEI/Clean-Walk
- DC1-RPP-L2-2610: Steps: EC Installation Checklist; CC Installation Checklist; Vendor Pre-Energization Checklist; CXA Pre-Energization Inspection; PEI/Clean-Walk
- DC1-RPP-L2-2620: Steps: EC Installation Checklist; CC Installation Checklist; Vendor Pre-Energization Checklist; CXA Pre-Energization Inspection; PEI/Clean-Walk
- DC1-RPP-L2-2630: Steps: EC Installation Checklist; CC Installation Checklist; Vendor Pre-Energization Checklist; CXA Pre-Energization Inspection; PEI/Clean-Walk
- DC1-RPP-L2-2640: Steps: EC Installation Checklist; CC Installation Checklist; Vendor Pre-Energization Checklist; CXA Pre-Energization Inspection; PEI/Clean-Walk
- DC1-RPP-L2-2650: Steps: EC Installation Checklist; CC Installation Checklist; Vendor Pre-Energization Checklist; CXA Pre-Energization Inspection; PEI/Clean-Walk
- DC1-RPP-L2-2660: Steps: EC Installation Checklist; CC Installation Checklist; Vendor Pre-Energization Checklist; CXA Pre-Energization Inspection; PEI/Clean-Walk
- DC1-RPP-L2-2670: Steps: EC Installation Checklist; CC Installation Checklist; Vendor Pre-Energization Checklist; CXA Pre-Energization Inspection; PEI/Clean-Walk
- DC1-RPP-L2-2680: Steps: EC Installation Checklist; CC Installation Checklist; Vendor Pre-Energization Checklist; CXA Pre-Energization Inspection; PEI/Clean-Walk
- DC1-RPP-L2-2690: Steps: EC Installation Checklist; CC Installation Checklist; Vendor Pre-Energization Checklist; CXA Pre-Energization Inspection; PEI/Clean-Walk
- DC1-RPP-L2-2700: Steps: EC Installation Checklist; CC Installation Checklist; Vendor Pre-Energization Checklist; CXA Pre-Energization Inspection; PEI/Clean-Walk
- DC1-RPP-L2-2710: Steps: EC Installation Checklist; CC Installation Checklist; Vendor Pre-Energization Checklist; CXA Pre-Energization Inspection; PEI/Clean-Walk
- DC1-RPP-L3-CX-2555: Steps: EC Startup Report; Vendor Startup
- DC1-RPP-L3-CX-2585: Steps: EC Startup Report; Vendor Startup
- DC1-RPP-L3-CX-2615: Steps: EC Startup Report; Vendor Startup
- DC1-RPP-L3-CX-2645: Steps: EC Startup Report; Vendor Startup
- DC1-RPP-L3-CX-2675: Steps: EC Startup Report; Vendor Startup
- DC1-RPP-L3-CX-2705: Steps: EC Startup Report; Vendor Startup
- DC1-RPP-L3-CX-2735: Steps: EC Startup Report; Vendor Startup
- DC1-RPP-L3-CX-2765: Steps: EC Startup Report; Vendor Startup
- DC1-RPP-L3-CX-2795: Steps: EC Startup Report; Vendor Startup
- DC1-RPP-L3-CX-2825: Steps: EC Startup Report; Vendor Startup
- DC1-RPP-L3-CX-2855: Steps: EC Startup Report; Vendor Startup
- DC1-RPP-L3-CX-2885: Steps: EC Startup Report; Vendor Startup
- DC1-RPP-L3-CX-2915: Steps: EC Startup Report; Vendor Startup
- DC1-RPP-L3-CX-2945: Steps: EC Startup Report; Vendor Startup
- DC1-RPP-L3-CX-2975: Steps: EC Startup Report; Vendor Startup
- DC1-RPP-L3-CX-3005: Steps: EC Startup Report; Vendor Startup
- DC1-RPP-L3-CX-3035: Steps: EC Startup Report; Vendor Startup

| ID | Activity | Duration | Start | Finish | Predecessors | Complete | Planned start | Planned finish | Calendar | Vendor Responsible Party | Layton Discipline | Location | CX Level | Equipment | DELETED | D | Layton Super | TFO-CONST ONLY | Contract | NICK |
| --- | --- | --- | --- | --- | --- | --- | --- | --- | --- | --- | --- | --- | --- | --- | --- | --- | --- | --- | --- | --- |
| DC1-RPP-L3-CX-3045 | **DELETED** DC1-RPP-C22-05 A/B BMS/EPMS Programming | 1d | 2026-07-14 A | 2026-07-14 A | QTS-1020 | 100% | 2026-07-21 | 2026-07-21 |  | PRM | Commissioning | DH2200 | L3 | RPP | DELETED | DH1100 |  |  |  |  |
| DC1-RPP-L3-CX-3055 | **DELETED** DC1-RPP-C22-06 A/B FTE | 1d | 2026-07-14 A | 2026-07-14 A | QTS-1020 | 100% | 2026-07-16 | 2026-07-16 |  | ROS | Commissioning | DH2200 | L3 | RPP | DELETED | DH1100 |  |  |  |  |
| DC1-RPP-L3-CX-3065 | **DELETED** DC1-RPP-C22-06 A/B L3 Startup | 2d | 2026-07-14 A | 2026-07-14 A | QTS-1020 | 100% | 2026-07-17 | 2026-07-20 |  | SQD | Commissioning | DH2200 | L3 | RPP | DELETED | DH1100 |  |  |  |  |
| DC1-RPP-L3-CX-3075 | **DELETED** DC1-RPP-C22-06 A/B BMS/EPMS Programming | 1d | 2026-07-14 A | 2026-07-14 A | QTS-1020 | 100% | 2026-07-21 | 2026-07-21 |  | PRM | Commissioning | DH2200 | L3 | RPP | DELETED | DH1100 |  |  |  |  |
| DC1-RPP-L3-CX-3085 | **DELETED** DC1-RPP-D22-01 A/B FTE | 1d | 2026-07-14 A | 2026-07-14 A | QTS-1020 | 100% | 2026-07-16 | 2026-07-16 |  | ROS | Commissioning | DH2200 | L3 | RPP | DELETED | DH1100 |  |  |  |  |
| DC1-RPP-L3-CX-3095 | **DELETED** DC1-RPP-D22-01 A/B L3 Startup | 2d | 2026-07-14 A | 2026-07-14 A | QTS-1020 | 100% | 2026-07-17 | 2026-07-20 |  | SQD | Commissioning | DH2200 | L3 | RPP | DELETED | DH1100 |  |  |  |  |
| DC1-RPP-L3-CX-3105 | **DELETED** DC1-RPP-D22-01 A/B BMS/EPMS Programming | 1d | 2026-07-14 A | 2026-07-14 A | QTS-1020 | 100% | 2026-07-21 | 2026-07-21 |  | PRM | Commissioning | DH2200 | L3 | RPP | DELETED | DH1100 |  |  |  |  |
| DC1-RPP-L3-CX-3115 | **DELETED** DC1-RPP-D22-02 A/B FTE | 1d | 2026-07-14 A | 2026-07-14 A | QTS-1020 | 100% | 2026-07-16 | 2026-07-16 |  | ROS | Commissioning | DH2200 | L3 | RPP | DELETED | DH1100 |  |  |  |  |
| DC1-RPP-L3-CX-3125 | **DELETED** DC1-RPP-D22-02 A/B L3 Startup | 2d | 2026-07-14 A | 2026-07-14 A | QTS-1020 | 100% | 2026-07-17 | 2026-07-20 |  | SQD | Commissioning | DH2200 | L3 | RPP | DELETED | DH1100 |  |  |  |  |
| DC1-RPP-L3-CX-3135 | **DELETED** DC1-RPP-D22-02 A/B BMS/EPMS Programming | 1d | 2026-07-14 A | 2026-07-14 A | QTS-1020 | 100% | 2026-07-21 | 2026-07-21 |  | PRM | Commissioning | DH2200 | L3 | RPP | DELETED | DH1100 |  |  |  |  |
| DC1-RPP-L3-CX-3145 | **DELETED** DC1-RPP-D22-03 A/B FTE | 1d | 2026-07-14 A | 2026-07-14 A | QTS-1020 | 100% | 2026-07-16 | 2026-07-16 |  | ROS | Commissioning | DH2200 | L3 | RPP | DELETED | DH1100 |  |  |  |  |
| DC1-RPP-L3-CX-3155 | **DELETED** DC1-RPP-D22-03 A/B L3 Startup | 2d | 2026-07-14 A | 2026-07-14 A | QTS-1020 | 100% | 2026-07-17 | 2026-07-20 |  | SQD | Commissioning | DH2200 | L3 | RPP | DELETED | DH1100 |  |  |  |  |
| DC1-RPP-L3-CX-3165 | **DELETED** DC1-RPP-D22-03 A/B BMS/EPMS Programming | 1d | 2026-07-14 A | 2026-07-14 A | QTS-1020 | 100% | 2026-07-21 | 2026-07-21 |  | PRM | Commissioning | DH2200 | L3 | RPP | DELETED | DH1100 |  |  |  |  |
| DC1-RPP-L3-CX-3175 | **DELETED** DC1-RPP-D22-04 A/B FTE | 1d | 2026-07-14 A | 2026-07-14 A | QTS-1020 | 100% | 2026-07-16 | 2026-07-16 |  | ROS | Commissioning | DH2200 | L3 | RPP | DELETED | DH1100 |  |  |  |  |
| DC1-RPP-L3-CX-3185 | **DELETED** DC1-RPP-D22-04 A/B L3 Startup | 2d | 2026-07-14 A | 2026-07-14 A | QTS-1020 | 100% | 2026-07-17 | 2026-07-20 |  | SQD | Commissioning | DH2200 | L3 | RPP | DELETED | DH1100 |  |  |  |  |
| DC1-RPP-L3-CX-3195 | **DELETED** DC1-RPP-D22-04 A/B BMS/EPMS Programming | 1d | 2026-07-14 A | 2026-07-14 A | QTS-1020 | 100% | 2026-07-21 | 2026-07-21 |  | PRM | Commissioning | DH2200 | L3 | RPP | DELETED | DH1100 |  |  |  |  |
| DC1-RPP-L3-CX-3205 | **DELETED** DC1-RPP-D22-05 A/B FTE | 1d | 2026-07-14 A | 2026-07-14 A | QTS-1020 | 100% | 2026-07-16 | 2026-07-16 |  | ROS | Commissioning | DH2200 | L3 | RPP | DELETED | DH1100 |  |  |  |  |
| DC1-RPP-L3-CX-3215 | **DELETED** DC1-RPP-D22-05 A/B L3 Startup | 2d | 2026-07-14 A | 2026-07-14 A | QTS-1020 | 100% | 2026-07-17 | 2026-07-20 |  | SQD | Commissioning | DH2200 | L3 | RPP | DELETED | DH1100 |  |  |  |  |
| DC1-RPP-L3-CX-3225 | **DELETED** DC1-RPP-D22-05 A/B BMS/EPMS Programming | 1d | 2026-07-14 A | 2026-07-14 A | QTS-1020 | 100% | 2026-07-21 | 2026-07-21 |  | PRM | Commissioning | DH2200 | L3 | RPP | DELETED | DH1100 |  |  |  |  |
| DC1-RPP-L3-CX-3235 | **DELETED** DC1-RPP-D22-06 A/B FTE | 1d | 2026-07-14 A | 2026-07-14 A | QTS-1020 | 100% | 2026-07-16 | 2026-07-16 |  | ROS | Commissioning | DH2200 | L3 | RPP | DELETED | DH1100 |  |  |  |  |
| DC1-RPP-L3-CX-3245 | **DELETED** DC1-RPP-D22-06 A/B L3 Startup | 2d | 2026-07-14 A | 2026-07-14 A | QTS-1020 | 100% | 2026-07-17 | 2026-07-20 |  | SQD | Commissioning | DH2200 | L3 | RPP | DELETED | DH1100 |  |  |  |  |
| DC1-RPP-L3-CX-3255 | **DELETED** DC1-RPP-D22-06 A/B BMS/EPMS Programming | 1d | 2026-07-14 A | 2026-07-14 A | QTS-1020 | 100% | 2026-07-21 | 2026-07-21 |  | PRM | Commissioning | DH2200 | L3 | RPP | DELETED | DH1100 |  |  |  |  |
| DC1-RPP-L3-CX-3265 | **DELETED** DC1-RPP-E22-01 A/B FTE | 1d | 2026-07-14 A | 2026-07-14 A | QTS-1020 | 100% | 2026-07-16 | 2026-07-16 |  | ROS | Commissioning | DH2200 | L3 | RPP | DELETED | DH1100 |  |  |  |  |
| DC1-RPP-L3-CX-3275 | **DELETED** DC1-RPP-E22-01 A/B L3 Startup | 2d | 2026-07-14 A | 2026-07-14 A | QTS-1020 | 100% | 2026-07-17 | 2026-07-20 |  | SQD | Commissioning | DH2200 | L3 | RPP | DELETED | DH1100 |  |  |  |  |
| DC1-RPP-L3-CX-3285 | **DELETED** DC1-RPP-E22-01 A/B BMS/EPMS Programming | 1d | 2026-07-14 A | 2026-07-14 A | QTS-1020 | 100% | 2026-07-21 | 2026-07-21 |  | PRM | Commissioning | DH2200 | L3 | RPP | DELETED | DH1100 |  |  |  |  |
| DC1-RPP-L3-CX-3295 | **DELETED** DC1-RPP-E22-02 A/B FTE | 1d | 2026-07-14 A | 2026-07-14 A | QTS-1020 | 100% | 2026-07-16 | 2026-07-16 |  | ROS | Commissioning | DH2200 | L3 | RPP | DELETED | DH1100 |  |  |  |  |
| DC1-RPP-L3-CX-3305 | **DELETED** DC1-RPP-E22-02 A/B L3 Startup | 2d | 2026-07-14 A | 2026-07-14 A | QTS-1020 | 100% | 2026-07-17 | 2026-07-20 |  | SQD | Commissioning | DH2200 | L3 | RPP | DELETED | DH1100 |  |  |  |  |
| DC1-RPP-L3-CX-3315 | **DELETED** DC1-RPP-E22-02 A/B BMS/EPMS Programming | 1d | 2026-07-14 A | 2026-07-14 A | QTS-1020 | 100% | 2026-07-21 | 2026-07-21 |  | PRM | Commissioning | DH2200 | L3 | RPP | DELETED | DH1100 |  |  |  |  |
| DC1-RPP-L3-CX-3325 | **DELETED** DC1-RPP-E22-03 A/B FTE | 1d | 2026-07-14 A | 2026-07-14 A | QTS-1020 | 100% | 2026-07-16 | 2026-07-16 |  | ROS | Commissioning | DH2200 | L3 | RPP | DELETED | DH1100 |  |  |  |  |
| DC1-RPP-L3-CX-3335 | **DELETED** DC1-RPP-E22-03 A/B L3 Startup | 2d | 2026-07-14 A | 2026-07-14 A | QTS-1020 | 100% | 2026-07-17 | 2026-07-20 |  | SQD | Commissioning | DH2200 | L3 | RPP | DELETED | DH1100 |  |  |  |  |
| DC1-RPP-L3-CX-3345 | **DELETED** DC1-RPP-E22-03 A/B BMS/EPMS Programming | 1d | 2026-07-14 A | 2026-07-14 A | QTS-1020 | 100% | 2026-07-21 | 2026-07-21 |  | PRM | Commissioning | DH2200 | L3 | RPP | DELETED | DH1100 |  |  |  |  |
| DC1-RPP-L3-CX-3355 | **DELETED** DC1-RPP-E22-04 A/B FTE | 1d | 2026-07-14 A | 2026-07-14 A | QTS-1020 | 100% | 2026-07-16 | 2026-07-16 |  | ROS | Commissioning | DH2200 | L3 | RPP | DELETED | DH1100 |  |  |  |  |
| DC1-RPP-L3-CX-3365 | **DELETED** DC1-RPP-E22-04 A/B L3 Startup | 2d | 2026-07-14 A | 2026-07-14 A | QTS-1020 | 100% | 2026-07-17 | 2026-07-20 |  | SQD | Commissioning | DH2200 | L3 | RPP | DELETED | DH1100 |  |  |  |  |
| DC1-RPP-L3-CX-3375 | **DELETED** DC1-RPP-E22-04 A/B BMS/EPMS Programming | 1d | 2026-07-14 A | 2026-07-14 A | QTS-1020 | 100% | 2026-07-21 | 2026-07-21 |  | PRM | Commissioning | DH2200 | L3 | RPP | DELETED | DH1100 |  |  |  |  |
| DC1-RPP-L3-CX-3385 | **DELETED** DC1-RPP-E22-05 A/B FTE | 1d | 2026-07-14 A | 2026-07-14 A | QTS-1020 | 100% | 2026-07-16 | 2026-07-16 |  | ROS | Commissioning | DH2200 | L3 | RPP | DELETED | DH1100 |  |  |  |  |
| DC1-RPP-L3-CX-3395 | **DELETED** DC1-RPP-E22-05 A/B L3 Startup | 2d | 2026-07-14 A | 2026-07-14 A | QTS-1020 | 100% | 2026-07-17 | 2026-07-20 |  | SQD | Commissioning | DH2200 | L3 | RPP | DELETED | DH1100 |  |  |  |  |
| DC1-RPP-L3-CX-3405 | **DELETED** DC1-RPP-E22-05 A/B BMS/EPMS Programming | 1d | 2026-07-14 A | 2026-07-14 A | QTS-1020 | 100% | 2026-07-21 | 2026-07-21 |  | PRM | Commissioning | DH2200 | L3 | RPP | DELETED | DH1100 |  |  |  |  |
| DC1-RPP-L3-CX-3415 | **DELETED** DC1-RPP-E22-06 A/B FTE | 1d | 2026-07-14 A | 2026-07-14 A | QTS-1020 | 100% | 2026-07-16 | 2026-07-16 |  | ROS | Commissioning | DH2200 | L3 | RPP | DELETED | DH1100 |  |  |  |  |
| DC1-RPP-L3-CX-3425 | **DELETED** DC1-RPP-E22-06 A/B L3 Startup | 2d | 2026-07-14 A | 2026-07-14 A | QTS-1020 | 100% | 2026-07-17 | 2026-07-20 |  | SQD | Commissioning | DH2200 | L3 | RPP | DELETED | DH1100 |  |  |  |  |
| DC1-RPP-L3-CX-3435 | **DELETED** DC1-RPP-E22-06 A/B BMS/EPMS Programming | 1d | 2026-07-14 A | 2026-07-14 A | QTS-1020 | 100% | 2026-07-21 | 2026-07-21 |  | PRM | Commissioning | DH2200 | L3 | RPP | DELETED | DH1100 |  |  |  |  |
| DC1-RPP-L3-CX-3445 | **DELETED** DC1-RPP-F22-01 A/B FTE | 1d | 2026-07-14 A | 2026-07-14 A | QTS-1020 | 100% | 2026-07-16 | 2026-07-16 |  | ROS | Commissioning | DH2200 | L3 | RPP | DELETED | DH1100 |  |  |  |  |
| DC1-RPP-L3-CX-3455 | **DELETED** DC1-RPP-F22-01 A/B L3 Startup | 2d | 2026-07-14 A | 2026-07-14 A | QTS-1020 | 100% | 2026-07-17 | 2026-07-20 |  | SQD | Commissioning | DH2200 | L3 | RPP | DELETED | DH1100 |  |  |  |  |
| DC1-RPP-L3-CX-3465 | **DELETED** DC1-RPP-F22-01 A/B BMS/EPMS Programming | 1d | 2026-07-14 A | 2026-07-14 A | QTS-1020 | 100% | 2026-07-21 | 2026-07-21 |  | PRM | Commissioning | DH2200 | L3 | RPP | DELETED | DH1100 |  |  |  |  |
| DC1-RPP-L3-CX-3475 | **DELETED** DC1-RPP-F22-02 A/B FTE | 1d | 2026-07-14 A | 2026-07-14 A | QTS-1020 | 100% | 2026-07-16 | 2026-07-16 |  | ROS | Commissioning | DH2200 | L3 | RPP | DELETED | DH1100 |  |  |  |  |
| DC1-RPP-L3-CX-3485 | **DELETED** DC1-RPP-F22-02 A/B L3 Startup | 2d | 2026-07-14 A | 2026-07-14 A | QTS-1020 | 100% | 2026-07-17 | 2026-07-20 |  | SQD | Commissioning | DH2200 | L3 | RPP | DELETED | DH1100 |  |  |  |  |
| DC1-RPP-L3-CX-3495 | **DELETED** DC1-RPP-F22-02 A/B BMS/EPMS Programming | 1d | 2026-07-14 A | 2026-07-14 A | QTS-1020 | 100% | 2026-07-21 | 2026-07-21 |  | PRM | Commissioning | DH2200 | L3 | RPP | DELETED | DH1100 |  |  |  |  |
| DC1-RPP-L3-CX-3505 | **DELETED** DC1-RPP-F22-03 A/B FTE | 1d | 2026-07-14 A | 2026-07-14 A | QTS-1020 | 100% | 2026-07-16 | 2026-07-16 |  | ROS | Commissioning | DH2200 | L3 | RPP | DELETED | DH1100 |  |  |  |  |
| DC1-RPP-L3-CX-3515 | **DELETED** DC1-RPP-F22-03 A/B L3 Startup | 2d | 2026-07-14 A | 2026-07-14 A | QTS-1020 | 100% | 2026-07-17 | 2026-07-20 |  | SQD | Commissioning | DH2200 | L3 | RPP | DELETED | DH1100 |  |  |  |  |
| DC1-RPP-L3-CX-3525 | **DELETED** DC1-RPP-F22-03 A/B BMS/EPMS Programming | 1d | 2026-07-14 A | 2026-07-14 A | QTS-1020 | 100% | 2026-07-21 | 2026-07-21 |  | PRM | Commissioning | DH2200 | L3 | RPP | DELETED | DH1100 |  |  |  |  |
| DC1-RPP-L3-CX-3535 | **DELETED** DC1-RPP-F22-04 A/B FTE | 1d | 2026-07-14 A | 2026-07-14 A | QTS-1020 | 100% | 2026-07-16 | 2026-07-16 |  | ROS | Commissioning | DH2200 | L3 | RPP | DELETED | DH1100 |  |  |  |  |
| DC1-RPP-L3-CX-3545 | **DELETED** DC1-RPP-F22-04 A/B L3 Startup | 2d | 2026-07-14 A | 2026-07-14 A | QTS-1020 | 100% | 2026-07-17 | 2026-07-20 |  | SQD | Commissioning | DH2200 | L3 | RPP | DELETED | DH1100 |  |  |  |  |
| DC1-RPP-L3-CX-3555 | **DELETED** DC1-RPP-F22-04 A/B BMS/EPMS Programming | 1d | 2026-07-14 A | 2026-07-14 A | QTS-1020 | 100% | 2026-07-21 | 2026-07-21 |  | PRM | Commissioning | DH2200 | L3 | RPP | DELETED | DH1100 |  |  |  |  |
| DC1-RPP-L3-CX-3565 | **DELETED** DC1-RPP-F22-05 A/B FTE | 1d | 2026-07-14 A | 2026-07-14 A | QTS-1020 | 100% | 2026-07-16 | 2026-07-16 |  | ROS | Commissioning | DH2200 | L3 | RPP | DELETED | DH1100 |  |  |  |  |
| DC1-RPP-L3-CX-3575 | **DELETED** DC1-RPP-F22-05 A/B L3 Startup | 2d | 2026-07-14 A | 2026-07-14 A | QTS-1020 | 100% | 2026-07-17 | 2026-07-20 |  | SQD | Commissioning | DH2200 | L3 | RPP | DELETED | DH1100 |  |  |  |  |
| DC1-RPP-L3-CX-3585 | **DELETED** DC1-RPP-F22-05 A/B BMS/EPMS Programming | 1d | 2026-07-14 A | 2026-07-14 A | QTS-1020 | 100% | 2026-07-21 | 2026-07-21 |  | PRM | Commissioning | DH2200 | L3 | RPP | DELETED | DH1100 |  |  |  |  |
| DC1-RPP-L3-CX-3595 | **DELETED** DC1-RPP-F22-06 A/B FTE | 1d | 2026-07-14 A | 2026-07-14 A | QTS-1020 | 100% | 2026-07-16 | 2026-07-16 |  | ROS | Commissioning | DH2200 | L3 | RPP | DELETED | DH1100 |  |  |  |  |
| DC1-RPP-L3-CX-3605 | **DELETED** DC1-RPP-F22-06 A/B L3 Startup | 2d | 2026-07-14 A | 2026-07-14 A | QTS-1020 | 100% | 2026-07-17 | 2026-07-20 |  | SQD | Commissioning | DH2200 | L3 | RPP | DELETED | DH1100 |  |  |  |  |
| DC1-RPP-L3-CX-3615 | **DELETED** DC1-RPP-F22-06 A/B BMS/EPMS Programming | 1d | 2026-07-14 A | 2026-07-14 A | QTS-1020 | 100% | 2026-07-21 | 2026-07-21 |  | PRM | Commissioning | DH2200 | L3 | RPP | DELETED | DH1100 |  |  |  |  |
| QTS - 10000 | **DELETED** TFO Scope // DH 1300 - 1303 Mechanical Gallery / Final Connection to CDU Lineup - C - D | 5d | 2026-07-14 A | 2026-07-14 A | QTS-1020 | 100% | 2026-07-15 | 2026-07-20 | QTS-PHX3 DC1 - 6 day w/ Holidays |  | Mechanical | DH1300 |  |  | DELETED | DH1100 | Mechanical | TFO CONST | TFO | NICK |
| QTS - 10010 | **DELETED** TFO Scope // DH 1300 - 1303 Mechanical Gallery / Final Connection to CDU Lineup - E - F | 5d | 2026-07-14 A | 2026-07-14 A | QTS-1020 | 100% | 2026-07-15 | 2026-07-20 | QTS-PHX3 DC1 - 6 day w/ Holidays |  | Mechanical | DH1300 |  |  | DELETED | DH1100 | Mechanical | TFO CONST | TFO | NICK |
| QTS - 10020 | **DELETED** TFO Scope // DH 1300 - 1303 Mechanical Gallery / Fill & Flush Technical Loop E - F | 9d | 2026-07-14 A | 2026-07-14 A | QTS-1020 | 100% | 2026-07-15 | 2026-07-23 | QTS-PHX3 DC1 - 7 day No Holidays |  | Mechanical | DH1300 |  |  | DELETED | DH1100 | Mechanical | TFO CONST | TFO | NICK |
| QTS - 10060 | **DELETED** TFO Scope // DH 1300 / Lineup A - B / Install Power Tray Tier # 1 | 10d | 2026-07-14 A | 2026-07-14 A | QTS-1020 | 100% | 2026-09-09 | 2026-09-19 | QTS-PHX3 DC1 - 6 day w/ Holidays |  | LV | DH1300 |  |  | DELETED | DH1100 |  | TFO CONST | TFO | NICK |
| QTS - 10070 | **DELETED** TFO Scope // DH 1300 / Lineup C - D / Pull RPP Whips - RPPs to Racks | 5d | 2026-07-14 A | 2026-07-14 A | QTS-1020 | 100% | 2026-10-08 | 2026-10-13 | QTS-PHX3 DC1 - 6 day w/ Holidays |  | Electrical | DH1300 |  |  | DELETED | DH1100 |  | TFO CONST | TFO | NICK |
| QTS - 10080 | **DELETED** TFO Scope // DH 1300 / Lineup C - D / Terminate Whips at RPP | 7d | 2026-07-14 A | 2026-07-14 A | QTS-1020 | 100% | 2026-10-09 | 2026-10-16 | QTS-PHX3 DC1 - 6 day w/ Holidays |  | Electrical | DH1300 |  |  | DELETED | DH1100 |  | TFO CONST | TFO | NICK |
| QTS - 10090 | **DELETED** TFO Scope // DH 1300 / Lineup A - B / Terminate Whips at RPP | 7d | 2026-07-14 A | 2026-07-14 A | QTS-1020 | 100% | 2026-10-09 | 2026-10-16 | QTS-PHX3 DC1 - 6 day w/ Holidays |  | Electrical | DH1300 |  |  | DELETED | DH1100 |  | TFO CONST | TFO | NICK |
| QTS - 10100 | **DELETED** TFO Scope // DH 1300 / Lineup A - B / Pull RPP Whips - RPPs to Racks | 5d | 2026-07-14 A | 2026-07-14 A | QTS-1020 | 100% | 2026-10-08 | 2026-10-13 | QTS-PHX3 DC1 - 6 day w/ Holidays |  | Electrical | DH1300 |  |  | DELETED | DH1100 |  | TFO CONST | TFO | NICK |
| QTS - 10110 | **DELETED** TFO Scope // DH 1300 - 1301 Mechanical Gallery / Final Connection Tie-In to CDU Lineup - A - B | 5d | 2026-07-14 A | 2026-07-14 A | QTS-1020 | 100% | 2026-07-15 | 2026-07-20 | QTS-PHX3 DC1 - 6 day w/ Holidays |  | Mechanical | DH1300 |  |  | DELETED | DH1100 | Mechanical | TFO CONST | TFO | NICK |
| QTS - 10120 | **DELETED** TFO Scope // DH 1300 - 1301 Mechanical Gallery / Fill & Flush Technical Loop C - D | 9d | 2026-07-14 A | 2026-07-14 A | QTS-1020 | 100% | 2026-07-15 | 2026-07-23 | QTS-PHX3 DC1 - 7 day No Holidays |  | Mechanical | DH1300 |  |  | DELETED | DH1100 | Mechanical | TFO CONST | TFO | NICK |
| QTS - 10130 | **DELETED** TFO Scope // DH 1300 - 1301 Mechanical Gallery / Final Connection Tie-In to CDU Lineup - C - D | 5d | 2026-07-14 A | 2026-07-14 A | QTS-1020 | 100% | 2026-07-15 | 2026-07-20 | QTS-PHX3 DC1 - 6 day w/ Holidays |  | Mechanical | DH1300 |  |  | DELETED | DH1100 | Mechanical | TFO CONST | TFO | NICK |
| QTS - 10140 | **DELETED** TFO Scope // DH 1300 - 1301 Mechanical Gallery / Fill & Flush Technical Loop E - F | 9d | 2026-07-14 A | 2026-07-14 A | QTS-1020 | 100% | 2026-07-15 | 2026-07-23 | QTS-PHX3 DC1 - 7 day No Holidays |  | Mechanical | DH1300 |  |  | DELETED | DH1100 | Mechanical | TFO CONST | TFO | NICK |

Notes:
- DC1-RPP-L3-CX-3065: Steps: EC Startup Report; Vendor Startup
- DC1-RPP-L3-CX-3095: Steps: EC Startup Report; Vendor Startup
- DC1-RPP-L3-CX-3125: Steps: EC Startup Report; Vendor Startup
- DC1-RPP-L3-CX-3155: Steps: EC Startup Report; Vendor Startup
- DC1-RPP-L3-CX-3185: Steps: EC Startup Report; Vendor Startup
- DC1-RPP-L3-CX-3215: Steps: EC Startup Report; Vendor Startup
- DC1-RPP-L3-CX-3245: Steps: EC Startup Report; Vendor Startup
- DC1-RPP-L3-CX-3275: Steps: EC Startup Report; Vendor Startup
- DC1-RPP-L3-CX-3305: Steps: EC Startup Report; Vendor Startup
- DC1-RPP-L3-CX-3335: Steps: EC Startup Report; Vendor Startup
- DC1-RPP-L3-CX-3365: Steps: EC Startup Report; Vendor Startup
- DC1-RPP-L3-CX-3395: Steps: EC Startup Report; Vendor Startup
- DC1-RPP-L3-CX-3425: Steps: EC Startup Report; Vendor Startup
- DC1-RPP-L3-CX-3455: Steps: EC Startup Report; Vendor Startup
- DC1-RPP-L3-CX-3485: Steps: EC Startup Report; Vendor Startup
- DC1-RPP-L3-CX-3515: Steps: EC Startup Report; Vendor Startup
- DC1-RPP-L3-CX-3545: Steps: EC Startup Report; Vendor Startup
- DC1-RPP-L3-CX-3575: Steps: EC Startup Report; Vendor Startup
- DC1-RPP-L3-CX-3605: Steps: EC Startup Report; Vendor Startup

| ID | Activity | Duration | Start | Finish | Predecessors | Complete | Planned start | Planned finish | Calendar | Layton Discipline | Location | Layton Super | DELETED | TFO-CONST ONLY | Contract | NICK | D | Note/Comments | Allucent CSI Group | Vendor Responsible Party | If Not Started or Finished Why? |
| --- | --- | --- | --- | --- | --- | --- | --- | --- | --- | --- | --- | --- | --- | --- | --- | --- | --- | --- | --- | --- | --- |
| QTS - 10150 | **DELETED** TFO Scope // DH 1300 - 1301 Mechanical Gallery / Final Connection Tie-In to CDU Lineup - E - F | 5d | 2026-07-14 A | 2026-07-14 A | QTS-1020 | 100% | 2026-07-15 | 2026-07-20 | QTS-PHX3 DC1 - 6 day w/ Holidays | Mechanical | DH1300 | Mechanical | DELETED | TFO CONST | TFO | NICK | DH1100 |  |  |  |  |
| QTS - 10180 | **DELETED** TFO Scope // DH 2100 - 2101 Mechanical Gallery / Clean Walk & PEI - Controls | 2d | 2026-07-14 A | 2026-07-14 A | QTS-1020 | 100% | 2026-07-15 | 2026-07-16 | QTS-PHX3 DC1 - 6 day w/ Holidays | Electrical | DH2100 | Oscar Armenta | DELETED | TFO CONST | TFO | NICK | DH1100 |  |  |  |  |
| QTS - 10270 | **DELETED** TFO Scope // DH 2300 - 2301 Mechanical Gallery / Install Telecom Conduit from MMR to IDF Cabinet | 10d | 2026-07-14 A | 2026-07-14 A | QTS-1020 | 100% | 2026-07-15 | 2026-07-25 | QTS-PHX3 DC1 - 6 day w/ Holidays | Electrical | DH2300 | Electrical | DELETED | TFO CONST | TFO | NICK | DH1100 |  |  |  |  |
| QTS - 10280 | **DELETED** TFO Scope // DH 2300 - 2301 Mechanical Gallery / Pull Telecom Wire from MMR to IDF Cabinet | 10d | 2026-07-14 A | 2026-07-14 A | QTS-1020 | 100% | 2026-07-27 | 2026-08-06 | QTS-PHX3 DC1 - 6 day w/ Holidays | Electrical | DH2300 | Electrical | DELETED | TFO CONST | TFO | NICK | DH1100 |  |  |  |  |
| QTS - 10290 | **DELETED** TFO Scope // DH 1300 - 1301 Mechanical Gallery / Install Telecom Conduit from MMR to IDF Cabinet | 10d | 2026-07-14 A | 2026-07-14 A | QTS-1020 | 100% | 2026-07-15 | 2026-07-25 | QTS-PHX3 DC1 - 6 day w/ Holidays | LV | DH1300 | Low Voltage | DELETED | TFO CONST | TFO | NICK | DH1100 |  |  |  |  |
| QTS - 10300 | **DELETED** TFO Scope // DH 1300 - 1301 Mechanical Gallery / Pull Telecom Wire from MMR to IDF Cabinet | 10d | 2026-07-14 A | 2026-07-14 A | QTS-1020 | 100% | 2026-07-15 | 2026-07-25 | QTS-PHX3 DC1 - 6 day w/ Holidays | LV | DH1300 | Low Voltage | DELETED | TFO CONST | TFO | NICK | DH1100 |  |  |  |  |
| QTS - 10390 | **DELETED**TFO Scope // DH 2200 / Lineup A - B / Pull RPP Whips - RPPs to Racks | 15d | 2026-07-14 A | 2026-07-14 A | QTS-1020 | 100% | 2026-08-17 | 2026-09-02 | QTS-PHX3 DC1 - 6 day w/ Holidays | Electrical | DH2200 |  | DELETED | TFO CONST | TFO | NICK | DH1100 |  |  |  |  |
| QTS - 10410 | **DELETED** TFO Scope // DH 2200 / Lineup C - D / Pull RPP Whips - RPPs to Racks | 15d | 2026-07-14 A | 2026-07-14 A | QTS-1020 | 100% | 2026-08-05 | 2026-08-21 | QTS-PHX3 DC1 - 6 day w/ Holidays | Electrical | DH2200 |  | DELETED | TFO CONST | TFO | NICK | DH1100 |  |  |  |  |
| QTS - 10430 | **DELETED** TFO Scope // DH 2200 / Lineup E - F / Pull RPP Whips - RPPs to Racks | 15d | 2026-07-14 A | 2026-07-14 A | QTS-1020 | 100% | 2026-08-05 | 2026-08-21 | QTS-PHX3 DC1 - 6 day w/ Holidays | Electrical | DH2200 |  | DELETED | TFO CONST | TFO | NICK | DH1100 |  |  |  |  |
| QTS - 10450 | **DELETED** TFO Scope // DH 1200 / Lineup A - B / Pull RPP Whips - RPPs to Racks | 15d | 2026-07-14 A | 2026-07-14 A | QTS-1020 | 100% | 2026-08-07 | 2026-08-24 | QTS-PHX3 DC1 - 6 day w/ Holidays | Electrical | DH1200 |  | DELETED | TFO CONST | TFO | NICK | DH1100 |  |  |  |  |
| QTS - 10470 | **DELETED** TFO Scope // DH 1200 / Lineup C - D / Pull RPP Whips - RPPs to Racks | 10d | 2026-07-14 A | 2026-07-14 A | QTS-1020 | 100% | 2026-07-15 | 2026-07-25 | QTS-PHX3 DC1 - 6 day w/ Holidays | Electrical | DH1200 | Oscar Armenta | DELETED | TFO CONST | TFO | NICK | DH1100 |  |  |  |  |
| QTS - 10490 | **DELETED** TFO Scope // DH 1200 / Lineup E - F / Pull RPP Whips - RPPs to Racks | 15d | 2026-07-14 A | 2026-07-14 A | QTS-1020 | 100% | 2026-07-15 | 2026-07-31 | QTS-PHX3 DC1 - 6 day w/ Holidays | Electrical | DH1200 | Oscar Armenta | DELETED | TFO CONST | TFO | NICK | DH1100 |  |  |  |  |
| QTS - 1240 | **DELETED**TFO Scope // DH 2100 - 2101 Mechanical Gallery / Clean Walk & PEI - Mechanical | 5d | 2026-07-14 A | 2026-07-14 A | QTS-1020 | 100% | 2026-07-24 | 2026-07-29 | QTS-PHX3 DC1 - 6 day w/ Holidays | Mechanical | DH2100 | Mechanical | DELETED | TFO CONST | TFO | NICK | DH1100 |  |  |  |  |
| QTS - 1280 | **DELETED**TFO Scope // DH 2100 / Lineup A - B / Rough-In I&C | 10d | 2026-07-14 A | 2026-07-14 A | QTS-1020 | 100% | 2026-07-15 | 2026-07-25 | QTS-PHX3 DC1 - 6 day w/ Holidays | Electrical | DH2100 | Oscar Armenta | DELETED | TFO CONST | TFO | NICK | DH1100 |  |  |  |  |
| QTS - 1330 | **DELETED** TFO Scope // DH 2100 / Lineup A - B / Clean Walk & PEI - Electrical & Controls | 2d | 2026-07-14 A | 2026-07-14 A | QTS-1020 | 100% | 2026-07-29 | 2026-07-30 | QTS-PHX3 DC1 - 6 day w/ Holidays | Electrical | DH2100 |  | DELETED | TFO CONST | TFO | NICK | DH1100 |  |  |  |  |
| QTS - 15010 | **DELETED**TFO Scope // DH 1100 / Lineup C - D / Clean Walk & PEI - Electrical & Controls | 2d | 2026-07-14 A | 2026-07-14 A | QTS-1020 | 100% | 2026-07-28 | 2026-07-29 | QTS-PHX3 DC1 - 6 day w/ Holidays | Electrical | DH1100 | Oscar Armenta | DELETED | TFO CONST | TFO | NICK | DH1100 |  |  |  |  |
| QTS - 1720 | **DELETED** TFO Scope // DH 2100 - 2101 Mechanical Gallery / CDU Unit 4" Mechanical Connections Lineup - E - F | 4d | 2026-07-14 A | 2026-07-14 A | QTS-1020 | 100% | 2026-07-15 | 2026-07-18 | QTS-PHX3 DC1 - 6 day w/ Holidays | Mechanical | DH2100 | Mechanical | DELETED | TFO CONST | TFO | NICK | DH1100 |  |  |  |  |
| QTS - 24411 | **DELETED** TFO Scope // Flex Space // Millwork Installation | 5d | 2026-07-14 A | 2026-07-14 A | QTS-1020 | 100% | 2026-08-12 | 2026-08-17 | QTS-PHX3 DC1 - 6 day w/ Holidays | Build Out | FOH | Ed Carter | DELETED | TFO CONST | TFO | NICK | DH1100 |  |  |  |  |
| QTS - 24451 | **DELETED** TFO Scope // Flex Space // Final Clean | 2d | 2026-07-14 A | 2026-07-14 A | QTS-1020 | 100% | 2026-07-15 | 2026-07-16 | QTS-PHX3 DC1 - 6 day w/ Holidays | Build Out | FOH | Ed Carter | DELETED | TFO CONST | TFO | NICK | DH1100 | 7/14: pending final MEP work completion |  |  |  |
| QTS - 24471 | **DELETED**TFO Scope // DH 1100 / Lineup E - F / Clean Walk & PEI - Electrical & Controls | 2d | 2026-07-14 A | 2026-07-14 A | QTS-1020 | 100% | 2026-08-03 | 2026-08-04 | QTS-PHX3 DC1 - 6 day w/ Holidays | Electrical | DH1100 | Oscar Armenta | DELETED | TFO CONST | TFO | NICK | DH1100 |  |  |  |  |
| QTS - 25201 | **DELETED**TFO Scope // DH 2200 / Lineup A - B / Install Telecom Trays - Grid | 10d | 2026-07-14 A | 2026-07-14 A | QTS-1020 | 100% | 2026-07-15 | 2026-07-25 | QTS-PHX3 DC1 - 6 day w/ Holidays | LV | DH2200 | Oscar Armenta | DELETED | TFO CONST | TFO | NICK | DH1100 |  |  |  |  |
| QTS - 25321 | **DELETED** TFO Scope // DH 1200 / Lineup A - B / Install Telecom Trays - Grid | 10d | 2026-07-14 A | 2026-07-14 A | QTS-1020 | 100% | 2026-07-15 | 2026-07-25 | QTS-PHX3 DC1 - 6 day w/ Holidays | LV | DH1200 | Oscar Armenta | DELETED | TFO CONST | TFO | NICK | DH1100 |  |  |  |  |
| QTS - 25431 | **DELETED** TFO Scope // DH 2300 / Lineup A - B / Install Grid Hangers | 5d | 2026-07-14 A | 2026-07-14 A | QTS-1020 | 100% | 2026-08-06 | 2026-08-11 | QTS-PHX3 DC1 - 6 day w/ Holidays | Electrical | DH2300 |  | DELETED | TFO CONST | TFO | NICK | DH1100 |  |  |  |  |
| QTS - 25441 | **DELETED** TFO Scope // DH 2300 / Lineup A - B / Install Telecom Trays - Grid | 10d | 2026-07-14 A | 2026-07-14 A | QTS-1020 | 100% | 2026-07-15 | 2026-07-25 | QTS-PHX3 DC1 - 6 day w/ Holidays | Electrical | DH2300 | Electrical | DELETED | TFO CONST | TFO | NICK | DH1100 |  |  |  |  |
| QTS - 25551 | **DELETED** TFO Scope // DH 1300 / Lineup A - B / Install Grid Hangers | 5d | 2026-07-14 A | 2026-07-14 A | QTS-1020 | 100% | 2026-08-05 | 2026-08-10 | QTS-PHX3 DC1 - 6 day w/ Holidays | Electrical | DH1300 |  | DELETED | TFO CONST | TFO | NICK | DH1100 |  |  |  |  |
| QTS - 25561 | **DELETED** TFO Scope // DH 1300 / Lineup A - B / Install Telecom Trays - Grid | 10d | 2026-07-14 A | 2026-07-14 A | QTS-1020 | 100% | 2026-07-15 | 2026-07-25 | QTS-PHX3 DC1 - 6 day w/ Holidays | Electrical | DH1300 | Electrical | DELETED | TFO CONST | TFO | NICK | DH1100 |  |  |  |  |
| QTS - 25811 | **DELETED** TFO Scope // DH 1300 / Lineup E - F / Terminate Feeders CODs | 5d | 2026-07-14 A | 2026-07-14 A | QTS-1020 | 100% | 2026-08-08 | 2026-08-13 | QTS-PHX3 DC1 - 6 day w/ Holidays | Electrical | DH1300 |  | DELETED | TFO CONST | TFO | NICK | DH1100 |  |  |  |  |
| QTS - 25821 | **DELETED** TFO Scope // DH 1300 / Lineup C - D / Terminate Feeder at CODs | 5d | 2026-07-14 A | 2026-07-14 A | QTS-1020 | 100% | 2026-08-05 | 2026-08-10 | QTS-PHX3 DC1 - 6 day w/ Holidays | Electrical | DH1300 |  | DELETED | TFO CONST | TFO | NICK | DH1100 |  |  |  |  |
| QTS - 25831 | **DELETED** TFO Scope // DH 1300 / Lineup A - B / Terminate Feeder at CODs | 5d | 2026-07-14 A | 2026-07-14 A | QTS-1020 | 100% | 2026-08-01 | 2026-08-06 | QTS-PHX3 DC1 - 6 day w/ Holidays | Electrical | DH1300 | Oscar Armenta | DELETED | TFO CONST | TFO | NICK | DH1100 |  |  |  |  |
| QTS - 25841 | **DELETED** TFO Scope // DH 2300 / Lineup E - F / Terminate Feeder at CODs | 5d | 2026-07-14 A | 2026-07-14 A | QTS-1020 | 100% | 2026-08-08 | 2026-08-13 | QTS-PHX3 DC1 - 6 day w/ Holidays | Electrical | DH2300 |  | DELETED | TFO CONST | TFO | NICK | DH1100 |  |  |  |  |
| QTS - 25851 | **DELETED** TFO Scope // DH 2300 / Lineup C - D / Terminate Feeder at CODs | 5d | 2026-07-14 A | 2026-07-14 A | QTS-1020 | 100% | 2026-08-05 | 2026-08-10 | QTS-PHX3 DC1 - 6 day w/ Holidays | Electrical | DH2300 | Oscar Armenta | DELETED | TFO CONST | TFO | NICK | DH1100 |  |  |  |  |
| QTS - 25861 | **DELETED** TFO Scope // DH 2300 / Lineup A - B / Terminate Feeder at CODs | 5d | 2026-07-14 A | 2026-07-14 A | QTS-1020 | 100% | 2026-08-01 | 2026-08-06 | QTS-PHX3 DC1 - 6 day w/ Holidays | Electrical | DH2300 | Oscar Armenta | DELETED | TFO CONST | TFO | NICK | DH1100 |  |  |  |  |
| QTS - 25931 | **DELETED** TFO Scope // DH 2100 / Lineup C - D / Install Liquid Cooled Control Panels | 3d | 2026-07-14 A | 2026-07-14 A | QTS-1020 | 100% | 2026-07-16 | 2026-07-18 | QTS-PHX3 DC1 - 6 day w/ Holidays | Electrical | DH2100 | Oscar Armenta | DELETED | TFO CONST | TFO | NICK | DH1100 |  |  |  |  |
| QTS - 25941 | **DELETED**TFO Scope // DH 2100 / Lineup A - B / Install Liquid Cooled Control Panels | 3d | 2026-07-14 A | 2026-07-14 A | QTS-1020 | 100% | 2026-07-16 | 2026-07-18 | QTS-PHX3 DC1 - 6 day w/ Holidays | Electrical | DH2100 | Oscar Armenta | DELETED | TFO CONST | TFO | NICK | DH1100 |  |  |  |  |
| QTS - 25951 | **DELETED** TFO Scope // DH 2100 / Lineup E - F / Install Liquid Cooled Control Panels | 3d | 2026-07-14 A | 2026-07-14 A | QTS-1020 | 100% | 2026-07-16 | 2026-07-18 | QTS-PHX3 DC1 - 6 day w/ Holidays | Electrical | DH2100 | Oscar Armenta | DELETED | TFO CONST | TFO | NICK | DH1100 |  |  |  |  |
| QTS - 26501 | **DELETED** TFO Scope // Flex Space // Countertop Installation | 3d | 2026-07-14 A | 2026-07-14 A | QTS-1020 | 100% | 2026-08-12 | 2026-08-14 | QTS-PHX3 DC1 - 6 day w/ Holidays | Build Out | FOH | Ed Carter | DELETED | TFO CONST | TFO | NICK | DH1100 |  |  |  |  |
| QTS - 26511 | **DELETED** TFO Scope // Flex Space // Appliance Installation | 3d | 2026-07-14 A | 2026-07-14 A | QTS-1020 | 100% | 2026-08-18 | 2026-08-20 | QTS-PHX3 DC1 - 6 day w/ Holidays | Build Out | FOH | Ed Carter | DELETED | TFO CONST | TFO | NICK | DH1100 |  |  |  |  |
| QTS - 26521 | **DELETED** TFO Scope // Flex Space // Install Window Shade | 5d | 2026-07-14 A | 2026-07-14 A | QTS-1020 | 100% | 2026-09-23 | 2026-09-28 | QTS-PHX3 DC1 - 6 day w/ Holidays | Build Out | FOH |  | DELETED | TFO CONST | TFO | NICK | DH1100 |  | 01ADMIN |  |  |
| QTS - 3050 | **DELETED** TFO Scope // DH 2100 / Lineup C - D / Clean Walk & PEI - Electrical & Controls | 2d | 2026-07-14 A | 2026-07-14 A | QTS-1020 | 100% | 2026-08-04 | 2026-08-05 | QTS-PHX3 DC1 - 6 day w/ Holidays | Electrical | DH2100 |  | DELETED | TFO CONST | TFO | NICK | DH1100 |  |  |  |  |
| QTS - 3280 | **DELETED** TFO Scope // DH 2100 / Lineup E - F / Clean Walk & PEI - Electrical & Controls | 2d | 2026-07-14 A | 2026-07-14 A | QTS-1020 | 100% | 2026-08-10 | 2026-08-11 | QTS-PHX3 DC1 - 6 day w/ Holidays | Electrical | DH2100 |  | DELETED | TFO CONST | TFO | NICK | DH1100 |  |  |  |  |
| QTS - 3360 | **DELETED**TFO Scope // DH 2100 - 2103 Mechanical Gallery / CDU Unit 4" Mechanical Connections Lineup - E - F | 4d | 2026-07-14 A | 2026-07-14 A | QTS-1020 | 100% | 2026-07-15 | 2026-07-18 | QTS-PHX3 DC1 - 6 day w/ Holidays | Mechanical | DH2100 | Mechanical | DELETED | TFO CONST | TFO | NICK | DH1100 |  |  |  |  |
| QTS - 3390 | **DELETED**TFO Scope // DH 2100 - 2103 Mechanical Gallery / Clean Walk & PEI - Mechanical | 5d | 2026-07-14 A | 2026-07-14 A | QTS-1020 | 100% | 2026-07-24 | 2026-07-29 | QTS-PHX3 DC1 - 6 day w/ Holidays | Mechanical | DH2100 |  | DELETED | TFO CONST | TFO | NICK | DH1100 |  |  |  |  |
| QTS - 3410 | **DELETED**TFO Scope // DH 2100 - 2103 Mechanical Gallery / Clean Walk & PEI - Electrical | 2d | 2026-07-14 A | 2026-07-14 A | QTS-1020 | 100% | 2026-07-17 | 2026-07-18 | QTS-PHX3 DC1 - 6 day w/ Holidays | Electrical | DH2100 | Oscar Armenta | DELETED | TFO CONST | TFO | NICK | DH1100 |  |  |  |  |
| QTS - 3420 | **DELETED**TFO Scope // DH 2100 - 2103 Mechanical Gallery / BMS & EPMS Terminations | 2d | 2026-07-14 A | 2026-07-14 A | QTS-1020 | 100% | 2026-07-15 | 2026-07-16 | QTS-PHX3 DC1 - 6 day w/ Holidays | LV | DH2100 | Low Voltage | DELETED | TFO CONST | TFO | NICK | DH1100 |  |  |  |  |
| QTS - 3430 | **DELETED** TFO Scope // DH 2100 - 2101 Mechanical Gallery / Clean Walk & PEI - Electrical | 2d | 2026-07-14 A | 2026-07-14 A | QTS-1020 | 100% | 2026-07-15 | 2026-07-16 | QTS-PHX3 DC1 - 6 day w/ Holidays | Electrical | DH2100 | Oscar Armenta | DELETED | TFO CONST | TFO | NICK | DH1100 |  |  |  |  |
| QTS - 3540 | **DELETED**TFO Scope // DH 2100 - 2103 Mechanical Gallery / Final Connection to CDU Lineup - E - F | 1d | 2026-07-14 A | 2026-07-14 A | QTS-1020 | 100% | 2026-07-23 | 2026-07-23 | QTS-PHX3 DC1 - 6 day w/ Holidays | Mechanical | DH2100 |  | DELETED | TFO CONST | TFO | NICK | DH1100 |  |  |  |  |
| QTS - 3550 | **DELETED**TFO Scope // DH 2100 - 2103 Mechanical Gallery / Fill & Flush Technical Loop E - F | 5d | 2026-07-14 A | 2026-07-14 A | QTS-1020 | 100% | 2026-07-18 | 2026-07-22 | QTS-PHX3 DC1 - 7 day No Holidays | Mechanical | DH2100 |  | DELETED | TFO CONST | TFO | NICK | DH1100 |  |  |  |  |
| QTS - 3620 | **DELETED** TFO Scope // DH 2100 / Lineup A - B / Terminate Whips at RPP | 5d | 2026-07-14 A | 2026-07-14 A | QTS-1020 | 100% | 2026-07-15 | 2026-07-20 | QTS-PHX3 DC1 - 6 day w/ Holidays | Electrical | DH2100 |  | DELETED | TFO CONST | TFO | NICK | DH1100 |  |  |  |  |
| QTS - 3660 | **DELETED**TFO Scope // DH 2100 - 2101 Mechanical Gallery / Final Connection Tie-In to CDU Lineup - E - F | 1d | 2026-07-14 A | 2026-07-14 A | QTS-1020 | 100% | 2026-07-23 | 2026-07-23 | QTS-PHX3 DC1 - 6 day w/ Holidays | Mechanical | DH2100 | Mechanical | DELETED | TFO CONST | TFO | NICK | DH1100 |  |  |  |  |
| QTS - 3670 | **DELETED** TFO Scope // DH 2100 - 2101 Mechanical Gallery / Fill & Flush Technical Loop E - F | 5d | 2026-07-14 A | 2026-07-14 A | QTS-1020 | 100% | 2026-07-18 | 2026-07-22 | QTS-PHX3 DC1 - 7 day No Holidays | Mechanical | DH2100 | Mechanical | DELETED | TFO CONST | TFO | NICK | DH1100 |  |  |  |  |
| QTS - 3830 | **DELETED** TFO Scope // DH 1100 / Lineup A - B / Clean Walk & PEI - Electrical & Controls | 2d | 2026-07-14 A | 2026-07-14 A | QTS-1020 | 100% | 2026-07-29 | 2026-07-30 | QTS-PHX3 DC1 - 6 day w/ Holidays | Electrical | DH1100 | Oscar Armenta | DELETED | TFO CONST | TFO | NICK | DH1100 |  |  | PRM |  |
| QTS - 4670 | **DELETE** TFO Scope // DH 1100 - 1103 Mechanical Gallery / Clean Walk & PEI - Mechanical | 5d | 2026-07-14 A | 2026-07-14 A | QTS-1020 | 100% | 2026-07-21 | 2026-07-25 | QTS-PHX3 DC1 - 6 day w/ Holidays | Mechanical | DH1100 | Mechanical | DELETED | TFO CONST | TFO | NICK | DH1100 |  |  |  |  |
| QTS - 5050 | **DELETED** TFO Scope // DH 2200 / Lineup A - B / Rough-In I&C | 10d | 2026-07-14 A | 2026-07-14 A | QTS-1020 | 100% | 2026-07-15 | 2026-07-25 | QTS-PHX3 DC1 - 6 day w/ Holidays | Electrical | DH2200 | Oscar Armenta | DELETED | TFO CONST | TFO | NICK | DH1100 |  |  |  |  |
| QTS - 5060 | **DELETED**TFO Scope // DH 2200 / Lineup A - B / Install Fire Alarm & Security | 7d | 2026-07-14 A | 2026-07-14 A | QTS-1020 | 100% | 2026-07-27 | 2026-08-03 | QTS-PHX3 DC1 - 6 day w/ Holidays | Electrical | DH2200 | Oscar Armenta | DELETED | TFO CONST | TFO | NICK | DH1100 |  |  |  |  |
| QTS - 5100 | **DELETED** TFO Scope // DH 2200 - 2201 Mechanical Gallery / Install OH 8" Technical Loop CDU Piping | 7d | 2026-07-14 A | 2026-07-14 A | QTS-1020 | 100% | 2026-07-21 | 2026-07-28 | QTS-PHX3 DC1 - 6 day w/ Holidays | Mechanical | DH2200 | Mechanical | DELETED | TFO CONST | TFO | NICK | DH1100 |  |  |  |  |
| QTS - 5110 | **DELETED** TFO Scope // DH 2200 - 2201 Mechanical Gallery / CDU Unit 4" Mechanical Connections Lineup - A - B | 7d | 2026-07-14 A | 2026-07-14 A | QTS-1020 | 100% | 2026-08-06 | 2026-08-13 | QTS-PHX3 DC1 - 6 day w/ Holidays | Mechanical | DH2200 |  | DELETED | TFO CONST | TFO | NICK | DH1100 |  |  |  |  |
| QTS - 5130 | **DELETED** TFO Scope // DH 2200 - 2201 Mechanical Gallery / Fill & Flush Technical Loop A - B | 7d | 2026-07-14 A | 2026-07-14 A | QTS-1020 | 100% | 2026-08-14 | 2026-08-20 | QTS-PHX3 DC1 - 7 day No Holidays | Mechanical | DH2200 |  | DELETED | TFO CONST | TFO | NICK | DH1100 |  |  |  |  |
| QTS - 5140 | **DELETED** TFO Scope // DH 2200 - 2201 Mechanical Gallery / Clean Walk & PEI - Mechanical | 5d | 2026-07-14 A | 2026-07-14 A | QTS-1020 | 100% | 2026-09-14 | 2026-09-18 | QTS-PHX3 DC1 - 6 day w/ Holidays | Mechanical | DH2200 |  | DELETED | TFO CONST | TFO | NICK | DH1100 |  |  |  |  |
| QTS - 5160 | **DELETED**TFO Scope // DH 2200 / Lineup A - B / Terminate - BMS & EPMS Connections | 7d | 2026-07-14 A | 2026-07-14 A | QTS-1020 | 100% | 2026-08-10 | 2026-08-17 | QTS-PHX3 DC1 - 6 day w/ Holidays | LV | DH2200 |  | DELETED | TFO CONST | TFO | NICK | DH1100 |  |  |  |  |
| QTS - 5170 | **DELETED**TFO Scope // DH 2200 / Lineup A - B / Clean Walk & PEI - Electrical & Controls | 2d | 2026-07-14 A | 2026-07-14 A | QTS-1020 | 100% | 2026-08-31 | 2026-09-01 | QTS-PHX3 DC1 - 6 day w/ Holidays | Electrical | DH2200 |  | DELETED | TFO CONST | TFO | NICK | DH1100 |  |  |  |  |
| QTS - 5230 | **DELETED** TFO Scope // DH 2200 - 2201 Mechanical Gallery / Detail & Fabricate CDU Mechanical Connections | 7d | 2026-07-14 A | 2026-07-14 A | QTS-1020 | 100% | 2026-07-29 | 2026-08-05 | QTS-PHX3 DC1 - 6 day w/ Holidays | Mechanical | DH2200 | Mechanical | DELETED | TFO CONST | TFO | NICK | DH1100 |  |  |  |  |
| QTS - 5240 | **DELETED** TFO Scope // DH 2200 - 2201 Mechanical Gallery / CDU Unit 4" Mechanical Connections Lineup - C - D | 7d | 2026-07-14 A | 2026-07-14 A | QTS-1020 | 100% | 2026-08-14 | 2026-08-21 | QTS-PHX3 DC1 - 6 day w/ Holidays | Mechanical | DH2200 |  | DELETED | TFO CONST | TFO | NICK | DH1100 |  |  |  |  |
| QTS - 5250 | **DELETED** TFO Scope // DH 2200 - 2201 Mechanical Gallery / CDU Unit 4" Mechanical Connections Lineup - E - F | 7d | 2026-07-14 A | 2026-07-14 A | QTS-1020 | 100% | 2026-08-22 | 2026-08-29 | QTS-PHX3 DC1 - 6 day w/ Holidays | Mechanical | DH2200 |  | DELETED | TFO CONST | TFO | NICK | DH1100 |  |  |  |  |
| QTS - 5330 | **DELETED**TFO Scope // DH 2200 / Lineup A - B / Install QCool Arms | 3d | 2026-07-14 A | 2026-07-14 A | QTS-1020 | 100% | 2026-07-15 | 2026-07-17 | QTS-PHX3 DC1 - 6 day w/ Holidays | Electrical | DH2200 | Oscar Armenta | DELETED | TFO CONST | TFO | NICK | DH1100 |  |  |  | Waiting on Grid/OH Work |
| QTS - 5340 | **DELETED**TFO Scope // DH 2200 / Lineup A - B / Install Power Cable Tray Racks | 4d | 2026-07-14 A | 2026-07-14 A | QTS-1020 | 100% | 2026-07-25 | 2026-07-29 | QTS-PHX3 DC1 - 6 day w/ Holidays | LV | DH2200 |  | DELETED | TFO CONST | TFO | NICK | DH1100 |  |  |  |  |
| QTS - 5350 | **DELETED**TFO Scope // DH 2200 / Lineup A - B / Install Power Cable Tray | 15d | 2026-07-14 A | 2026-07-14 A | QTS-1020 | 100% | 2026-07-30 | 2026-08-15 | QTS-PHX3 DC1 - 6 day w/ Holidays | LV | DH2200 |  | DELETED | TFO CONST | TFO | NICK | DH1100 |  |  |  |  |
| QTS - 5510 | **DELETED** TFO Scope // DH 2200 / Lineup C - D / Rough-In I&C | 10d | 2026-07-14 A | 2026-07-14 A | QTS-1020 | 100% | 2026-07-15 | 2026-07-25 | QTS-PHX3 DC1 - 6 day w/ Holidays | Electrical | DH2200 | Oscar Armenta | DELETED | TFO CONST | TFO | NICK | DH1100 |  |  |  |  |
| QTS - 5540 | **DELETED** TFO Scope // DH 2200 / Lineup C - D / Terminate - BMS & EPMS Connections | 7d | 2026-07-14 A | 2026-07-14 A | QTS-1020 | 100% | 2026-08-10 | 2026-08-17 | QTS-PHX3 DC1 - 6 day w/ Holidays | LV | DH2200 |  | DELETED | TFO CONST | TFO | NICK | DH1100 |  |  |  |  |
| QTS - 5550 | **DELETED** TFO Scope // DH 2200 / Lineup C - D / Clean Walk & PEI - Electrical & Controls | 2d | 2026-07-14 A | 2026-07-14 A | QTS-1020 | 100% | 2026-08-10 | 2026-08-11 | QTS-PHX3 DC1 - 6 day w/ Holidays | Electrical | DH2200 |  | DELETED | TFO CONST | TFO | NICK | DH1100 |  |  |  |  |
| QTS - 5580 | **DELETED** TFO Scope // DH 2200 / Lineup C - D / Install QCool Arms | 3d | 2026-07-14 A | 2026-07-14 A | QTS-1020 | 100% | 2026-07-15 | 2026-07-17 | QTS-PHX3 DC1 - 6 day w/ Holidays | Electrical | DH2200 | Oscar Armenta | DELETED | TFO CONST | TFO | NICK | DH1100 |  |  |  | Waiting on Grid/OH Work |

| ID | Activity | Duration | Start | Finish | Predecessors | Complete | Planned start | Planned finish | Calendar | Layton Discipline | Location | DELETED | TFO-CONST ONLY | Contract | NICK | D | Note/Comments | If Not Started or Finished Why? | Layton Super | Allucent CSI Group |
| --- | --- | --- | --- | --- | --- | --- | --- | --- | --- | --- | --- | --- | --- | --- | --- | --- | --- | --- | --- | --- |
| QTS - 5770 | **DELETED** TFO Scope // DH 2200 / Lineup E - F / Terminate - BMS & EPMS Connections | 7d | 2026-07-14 A | 2026-07-14 A | QTS-1020 | 100% | 2026-08-15 | 2026-08-22 | QTS-PHX3 DC1 - 6 day w/ Holidays | LV | DH2200 | DELETED | TFO CONST | TFO | NICK | DH1100 |  |  |  |  |
| QTS - 5780 | **DELETED** TFO Scope // DH 2200 / Lineup E - F / Clean Walk & PEI - Electrical & Controls | 2d | 2026-07-14 A | 2026-07-14 A | QTS-1020 | 100% | 2026-08-15 | 2026-08-17 | QTS-PHX3 DC1 - 6 day w/ Holidays | Electrical | DH2200 | DELETED | TFO CONST | TFO | NICK | DH1100 |  |  |  |  |
| QTS - 5810 | **DELETED** TFO Scope // DH 2200 / Lineup E - F / Install QCool Arms | 3d | 2026-07-14 A | 2026-07-14 A | QTS-1020 | 100% | 2026-07-18 | 2026-07-21 | QTS-PHX3 DC1 - 6 day w/ Holidays | Electrical | DH2200 | DELETED | TFO CONST | TFO | NICK | DH1100 | 7/14: waiting on grid around Q-cools | Waiting on Grid/OH Work | Oscar Armenta |  |
| QTS - 5870 | **DELETED** TFO Scope // DH 2200 - 2203 Mechanical Gallery / Pull LV Main / IDF Cabinet to Basket Tray | 7d | 2026-07-14 A | 2026-07-14 A | QTS-1020 | 100% | 2026-07-15 | 2026-07-22 | QTS-PHX3 DC1 - 6 day w/ Holidays | LV | DH2200 | DELETED | TFO CONST | TFO | NICK | DH1100 |  |  | Low Voltage |  |
| QTS - 5890 | **DELETED** TFO Scope // DH 2200 - 2203 Mechanical Gallery / Install OH 8" Technical Loop CDU Piping | 5d | 2026-07-14 A | 2026-07-14 A | QTS-1020 | 100% | 2026-07-21 | 2026-07-25 | QTS-PHX3 DC1 - 6 day w/ Holidays | Mechanical | DH2200 | DELETED | TFO CONST | TFO | NICK | DH1100 |  |  | Mechanical | 01ADMIN |
| QTS - 5900 | **DELETED** TFO Scope // DH 2200 - 2203 Mechanical Gallery / CDU Unit 4" Mechanical Connections Lineup - A - B | 7d | 2026-07-14 A | 2026-07-14 A | QTS-1020 | 100% | 2026-08-04 | 2026-08-11 | QTS-PHX3 DC1 - 6 day w/ Holidays | Mechanical | DH2200 | DELETED | TFO CONST | TFO | NICK | DH1100 |  |  |  |  |
| QTS - 5920 | **DELETED** TFO Scope // DH 2200 - 2203 Mechanical Gallery / Fill & Flush Technical Loop A - B | 9d | 2026-07-14 A | 2026-07-14 A | QTS-1020 | 100% | 2026-08-12 | 2026-08-20 | QTS-PHX3 DC1 - 7 day No Holidays | Mechanical | DH2200 | DELETED | TFO CONST | TFO | NICK | DH1100 |  |  |  |  |
| QTS - 5930 | **DELETED** TFO Scope // DH 2200 - 2203 Mechanical Gallery / Clean Walk & PEI - Mechanical | 3d | 2026-07-14 A | 2026-07-14 A | QTS-1020 | 100% | 2026-09-11 | 2026-09-14 | QTS-PHX3 DC1 - 6 day w/ Holidays | Mechanical | DH2200 | DELETED | TFO CONST | TFO | NICK | DH1100 |  |  |  |  |
| QTS - 5940 | **DELETED** TFO Scope // DH 2200 - 2203 Mechanical Gallery / Detail & Fabricate CDU Mechanical Connections | 7d | 2026-07-14 A | 2026-07-14 A | QTS-1020 | 100% | 2026-07-27 | 2026-08-03 | QTS-PHX3 DC1 - 6 day w/ Holidays | Mechanical | DH2200 | DELETED | TFO CONST | TFO | NICK | DH1100 |  |  | Mechanical |  |
| QTS - 5950 | **DELETED** TFO Scope // DH 2200 - 2203 Mechanical Gallery / CDU Unit 4" Mechanical Connections Lineup - C - D | 7d | 2026-07-14 A | 2026-07-14 A | QTS-1020 | 100% | 2026-08-12 | 2026-08-19 | QTS-PHX3 DC1 - 6 day w/ Holidays | Mechanical | DH2200 | DELETED | TFO CONST | TFO | NICK | DH1100 |  |  |  |  |
| QTS - 5960 | **DELETED** TFO Scope // DH 2200 - 2203 Mechanical Gallery / CDU Unit 4" Mechanical Connections Lineup - E - F | 7d | 2026-07-14 A | 2026-07-14 A | QTS-1020 | 100% | 2026-08-20 | 2026-08-27 | QTS-PHX3 DC1 - 6 day w/ Holidays | Mechanical | DH2200 | DELETED | TFO CONST | TFO | NICK | DH1100 |  |  |  |  |
| QTS - 5970 | **DELETED** TFO Scope // DH 2200 - 2203 Mechanical Gallery / Install OH Technical Loop Hangers | 5d | 2026-07-14 A | 2026-07-14 A | QTS-1020 | 100% | 2026-07-15 | 2026-07-20 | QTS-PHX3 DC1 - 6 day w/ Holidays | Mechanical | DH2200 | DELETED | TFO CONST | TFO | NICK | DH1100 |  |  | Mechanical | 01ADMIN |
| QTS - 5980 | **DELETED** TFO Scope // DH 2200 - 2203 Mechanical Gallery / Clean Walk & PEI - Electrical | 2d | 2026-07-14 A | 2026-07-14 A | QTS-1020 | 100% | 2026-07-25 | 2026-07-27 | QTS-PHX3 DC1 - 6 day w/ Holidays | Electrical | DH2200 | DELETED | TFO CONST | TFO | NICK | DH1100 |  |  |  |  |
| QTS - 5990 | **DELETED** TFO Scope // DH 2200 - 2203 Mechanical Gallery / BMS & EPMS Terminations | 2d | 2026-07-14 A | 2026-07-14 A | QTS-1020 | 100% | 2026-07-23 | 2026-07-24 | QTS-PHX3 DC1 - 6 day w/ Holidays | LV | DH2200 | DELETED | TFO CONST | TFO | NICK | DH1100 |  |  | Low Voltage |  |
| QTS - 6000 | **DELETED** TFO Scope // DH 2200 - 2201 Mechanical Gallery / Clean Walk & PEI - Electrical | 2d | 2026-07-14 A | 2026-07-14 A | QTS-1020 | 100% | 2026-07-17 | 2026-07-18 | QTS-PHX3 DC1 - 6 day w/ Holidays | Electrical | DH2200 | DELETED | TFO CONST | TFO | NICK | DH1100 |  |  |  |  |
| QTS - 6010 | **DELETED** TFO Scope // DH 2200 - 2201 Mechanical Gallery / BMS & EPMS Terminations | 2d | 2026-07-14 A | 2026-07-14 A | QTS-1020 | 100% | 2026-07-15 | 2026-07-16 | QTS-PHX3 DC1 - 6 day w/ Holidays | LV | DH2200 | DELETED | TFO CONST | TFO | NICK | DH1100 |  |  | Low Voltage |  |
| QTS - 6050 | **DELETED** TFO Scope // DH 2200 / Lineup E - F / Terminate Whips at RPP | 10d | 2026-07-14 A | 2026-07-14 A | QTS-1020 | 100% | 2026-08-22 | 2026-09-02 | QTS-PHX3 DC1 - 6 day w/ Holidays | Electrical | DH2200 | DELETED | TFO CONST | TFO | NICK | DH1100 |  |  |  |  |
| QTS - 6060 | **DELETED** TFO Scope // DH 2200 - 2203 Mechanical Gallery / Final Connection to CDU Lineup - A - B | 5d | 2026-07-14 A | 2026-07-14 A | QTS-1020 | 100% | 2026-08-21 | 2026-08-26 | QTS-PHX3 DC1 - 6 day w/ Holidays | Mechanical | DH2200 | DELETED | TFO CONST | TFO | NICK | DH1100 |  |  |  |  |
| QTS - 6070 | **DELETED** TFO Scope // DH 2200 - 2203 Mechanical Gallery / Fill & Flush Technical Loop C - D | 8d | 2026-07-14 A | 2026-07-14 A | QTS-1020 | 100% | 2026-08-20 | 2026-08-27 | QTS-PHX3 DC1 - 7 day No Holidays | Mechanical | DH2200 | DELETED | TFO CONST | TFO | NICK | DH1100 |  |  |  |  |
| QTS - 6080 | **DELETED** TFO Scope // DH 2200 - 2203 Mechanical Gallery / Final Connection to CDU Lineup - C - D | 5d | 2026-07-14 A | 2026-07-14 A | QTS-1020 | 100% | 2026-08-28 | 2026-09-02 | QTS-PHX3 DC1 - 6 day w/ Holidays | Mechanical | DH2200 | DELETED | TFO CONST | TFO | NICK | DH1100 |  |  |  |  |
| QTS - 6090 | **DELETED** TFO Scope // DH 2200 - 2203 Mechanical Gallery / Final Connection to CDU Lineup - E - F | 5d | 2026-07-14 A | 2026-07-14 A | QTS-1020 | 100% | 2026-09-04 | 2026-09-10 | QTS-PHX3 DC1 - 6 day w/ Holidays | Mechanical | DH2200 | DELETED | TFO CONST | TFO | NICK | DH1100 |  |  |  |  |
| QTS - 6100 | **DELETED** TFO Scope // DH 2200 - 2203 Mechanical Gallery / Fill & Flush Technical Loop E - F | 7d | 2026-07-14 A | 2026-07-14 A | QTS-1020 | 100% | 2026-08-28 | 2026-09-03 | QTS-PHX3 DC1 - 7 day No Holidays | Mechanical | DH2200 | DELETED | TFO CONST | TFO | NICK | DH1100 |  |  |  |  |
| QTS - 6140 | **DELETED**TFO Scope // DH 2200 / Lineup A - B / Install LV Cable Tray | 15d | 2026-07-14 A | 2026-07-14 A | QTS-1020 | 100% | 2026-07-30 | 2026-08-15 | QTS-PHX3 DC1 - 6 day w/ Holidays | LV | DH2200 | DELETED | TFO CONST | TFO | NICK | DH1100 |  |  |  |  |
| QTS - 6160 | **DELETED** TFO Scope // DH 2200 / Lineup C - D / Terminate Whips at RPP | 10d | 2026-07-14 A | 2026-07-14 A | QTS-1020 | 100% | 2026-08-22 | 2026-09-02 | QTS-PHX3 DC1 - 6 day w/ Holidays | Electrical | DH2200 | DELETED | TFO CONST | TFO | NICK | DH1100 |  |  |  |  |
| QTS - 6170 | **DELETED**TFO Scope // DH 2200 / Lineup A - B / Terminate Whips at RPP | 10d | 2026-07-14 A | 2026-07-14 A | QTS-1020 | 100% | 2026-08-26 | 2026-09-05 | QTS-PHX3 DC1 - 6 day w/ Holidays | Electrical | DH2200 | DELETED | TFO CONST | TFO | NICK | DH1100 |  |  |  |  |
| QTS - 6190 | **DELETED** TFO Scope // DH 2200 - 2201 Mechanical Gallery / Final Connection Tie-In to CDU Lineup - A - B | 5d | 2026-07-14 A | 2026-07-14 A | QTS-1020 | 100% | 2026-08-21 | 2026-08-26 | QTS-PHX3 DC1 - 6 day w/ Holidays | Mechanical | DH2200 | DELETED | TFO CONST | TFO | NICK | DH1100 |  |  |  |  |
| QTS - 6200 | **DELETED** TFO Scope // DH 2200 - 2201 Mechanical Gallery / Fill & Flush Technical Loop C - D | 8d | 2026-07-14 A | 2026-07-14 A | QTS-1020 | 100% | 2026-08-22 | 2026-08-29 | QTS-PHX3 DC1 - 7 day No Holidays | Mechanical | DH2200 | DELETED | TFO CONST | TFO | NICK | DH1100 |  |  |  |  |
| QTS - 6210 | **DELETED** TFO Scope // DH 2200 - 2201 Mechanical Gallery / Final Connection Tie-In to CDU Lineup - C - D | 5d | 2026-07-14 A | 2026-07-14 A | QTS-1020 | 100% | 2026-08-31 | 2026-09-04 | QTS-PHX3 DC1 - 6 day w/ Holidays | Mechanical | DH2200 | DELETED | TFO CONST | TFO | NICK | DH1100 |  |  |  |  |
| QTS - 6220 | **DELETED** TFO Scope // DH 2200 - 2201 Mechanical Gallery / Fill & Flush Technical Loop E - F | 8d | 2026-07-14 A | 2026-07-14 A | QTS-1020 | 100% | 2026-08-30 | 2026-09-06 | QTS-PHX3 DC1 - 7 day No Holidays | Mechanical | DH2200 | DELETED | TFO CONST | TFO | NICK | DH1100 |  |  |  |  |
| QTS - 6230 | **DELETED** TFO Scope // DH 2200 - 2201 Mechanical Gallery / Final Connection Tie-In to CDU Lineup - E - F | 5d | 2026-07-14 A | 2026-07-14 A | QTS-1020 | 100% | 2026-09-08 | 2026-09-12 | QTS-PHX3 DC1 - 6 day w/ Holidays | Mechanical | DH2200 | DELETED | TFO CONST | TFO | NICK | DH1100 |  |  |  |  |
| QTS - 6250 | **DELETED** TFO Scope // DH 2300 / Lineup A - B / Install Stainless Steel Piping Hangers | 4d | 2026-07-14 A | 2026-07-14 A | QTS-1020 | 100% | 2026-07-15 | 2026-07-18 | QTS-PHX3 DC1 - 6 day w/ Holidays | Mechanical | DH2300 | DELETED | TFO CONST | TFO | NICK | DH1100 |  |  | Mechanical |  |
| QTS - 6280 | **DELETED** TFO Scope // DH 2300 / Lineup A - B / Set RPP # 12 Units | 5d | 2026-07-14 A | 2026-07-14 A | QTS-1020 | 100% | 2026-07-15 | 2026-07-20 | QTS-PHX3 DC1 - 6 day w/ Holidays | Electrical | DH2300 | DELETED | TFO CONST | TFO | NICK | DH1100 |  |  | Electrical |  |
| QTS - 6300 | **DELETED** TFO Scope // DH 2300 / Lineup A - B / Install OH Trapeze - Screen Wall to CODs | 3d | 2026-07-14 A | 2026-07-14 A | QTS-1020 | 100% | 2026-07-15 | 2026-07-17 | QTS-PHX3 DC1 - 6 day w/ Holidays | Electrical | DH2300 | DELETED | TFO CONST | TFO | NICK | DH1100 |  |  | Electrical |  |
| QTS - 6320 | **DELETED** TFO Scope // DH 2300 / Lineup A - B / Pull MC Feeders - CODs to RPPs | 12d | 2026-07-14 A | 2026-07-14 A | QTS-1020 | 100% | 2026-07-18 | 2026-07-31 | QTS-PHX3 DC1 - 6 day w/ Holidays | Electrical | DH2300 | DELETED | TFO CONST | TFO | NICK | DH1100 |  |  | Electrical |  |
| QTS - 6340 | **DELETED** TFO Scope // DH 2300 / Lineup A - B / Terminate Feeder at RPPs | 5d | 2026-07-14 A | 2026-07-14 A | QTS-1020 | 100% | 2026-07-30 | 2026-08-04 | QTS-PHX3 DC1 - 6 day w/ Holidays | Electrical | DH2300 | DELETED | TFO CONST | TFO | NICK | DH1100 |  |  | Electrical |  |
| QTS - 6350 | **DELETED** TFO Scope // DH 2300 / Lineup A - B / Rough-In I&C | 10d | 2026-07-14 A | 2026-07-14 A | QTS-1020 | 100% | 2026-07-21 | 2026-07-31 | QTS-PHX3 DC1 - 6 day w/ Holidays | LV | DH2300 | DELETED | TFO CONST | TFO | NICK | DH1100 |  |  | Low Voltage |  |
| QTS - 6360 | **DELETED** TFO Scope // DH 2300 / Lineup A - B / Install Fire Alarm & Security | 7d | 2026-07-14 A | 2026-07-14 A | QTS-1020 | 100% | 2026-08-01 | 2026-08-08 | QTS-PHX3 DC1 - 6 day w/ Holidays | Electrical | DH2300 | DELETED | TFO CONST | TFO | NICK | DH1100 |  |  | Electrical |  |
| QTS - 6380 | **DELETED** TFO Scope // DH 2300 - 2301 Mechanical Gallery / Pull LV Main / IDF Cabinet to Basket Tray | 7d | 2026-07-14 A | 2026-07-14 A | QTS-1020 | 100% | 2026-07-15 | 2026-07-22 | QTS-PHX3 DC1 - 6 day w/ Holidays | LV | DH2300 | DELETED | TFO CONST | TFO | NICK | DH1100 |  |  | Low Voltage |  |
| QTS - 6390 | **DELETED** TFO Scope // DH 2300 - 2301 Mechanical Gallery / Terminate & Torque - CDU Connections | 5d | 2026-07-14 A | 2026-07-14 A | QTS-1020 | 100% | 2026-07-24 | 2026-07-29 | QTS-PHX3 DC1 - 6 day w/ Holidays | Electrical | DH2300 | DELETED | TFO CONST | TFO | NICK | DH1100 |  |  | Electrical |  |
| QTS - 6400 | **DELETED** TFO Scope // DH 2300 - 2301 Mechanical Gallery / Install OH 8" Technical Loop CDU Piping | 9d | 2026-07-14 A | 2026-07-14 A | QTS-1020 | 100% | 2026-07-28 | 2026-08-06 | QTS-PHX3 DC1 - 6 day w/ Holidays | Mechanical | DH2300 | DELETED | TFO CONST | TFO | NICK | DH1100 |  |  | Mechanical |  |
| QTS - 6410 | **DELETED** TFO Scope // DH 2300 - 2301 Mechanical Gallery / CDU Unit 4" Mechanical Connections Lineup - A - B | 7d | 2026-07-14 A | 2026-07-14 A | QTS-1020 | 100% | 2026-07-27 | 2026-08-03 | QTS-PHX3 DC1 - 6 day w/ Holidays | Mechanical | DH2300 | DELETED | TFO CONST | TFO | NICK | DH1100 |  |  | Mechanical |  |
| QTS - 6420 | **DELETED** TFO Scope // DH 2300 - 2301 Mechanical Gallery / Pull Branches From MOD-03 to CDUs | 8d | 2026-07-14 A | 2026-07-14 A | QTS-1020 | 100% | 2026-07-15 | 2026-07-23 | QTS-PHX3 DC1 - 6 day w/ Holidays | Electrical | DH2300 | DELETED | TFO CONST | TFO | NICK | DH1100 |  |  | Electrical |  |
| QTS - 6430 | **DELETED** TFO Scope // DH 2300 - 2301 Mechanical Gallery / Fill & Flush Technical Loop A - B | 9d | 2026-07-14 A | 2026-07-14 A | QTS-1020 | 100% | 2026-08-07 | 2026-08-15 | QTS-PHX3 DC1 - 7 day No Holidays | Mechanical | DH2300 | DELETED | TFO CONST | TFO | NICK | DH1100 |  |  | Mechanical |  |
| QTS - 6440 | **DELETED** TFO Scope // DH 2300 - 2301 Mechanical Gallery / Clean Walk & PEI - Mechanical | 5d | 2026-07-14 A | 2026-07-14 A | QTS-1020 | 100% | 2026-09-10 | 2026-09-15 | QTS-PHX3 DC1 - 6 day w/ Holidays | Mechanical | DH2300 | DELETED | TFO CONST | TFO | NICK | DH1100 |  |  |  |  |
| QTS - 6450 | **DELETED** TFO Scope // DH 2300 / Lineup A - B / Terminate I&C | 5d | 2026-07-14 A | 2026-07-14 A | QTS-1020 | 100% | 2026-08-10 | 2026-08-14 | QTS-PHX3 DC1 - 6 day w/ Holidays | LV | DH2300 | DELETED | TFO CONST | TFO | NICK | DH1100 |  |  | Low Voltage |  |
| QTS - 6470 | **DELETED** TFO Scope // DH 2300 / Lineup A - B / Clean Walk & PEI - Electrical & Controls | 2d | 2026-07-14 A | 2026-07-14 A | QTS-1020 | 100% | 2026-08-22 | 2026-08-24 | QTS-PHX3 DC1 - 6 day w/ Holidays | Electrical | DH2300 | DELETED | TFO CONST | TFO | NICK | DH1100 |  |  |  |  |
| QTS - 6530 | **DELETED** TFO Scope // DH 2300 - 2301 Mechanical Gallery / Detail & Fabricate CDU Mechanical Connections | 10d | 2026-07-14 A | 2026-07-14 A | QTS-1020 | 100% | 2026-07-15 | 2026-07-25 | QTS-PHX3 DC1 - 6 day w/ Holidays | Mechanical | DH2300 | DELETED | TFO CONST | TFO | NICK | DH1100 |  |  | Mechanical |  |
| QTS - 6540 | **DELETED** TFO Scope // DH 2300 - 2301 Mechanical Gallery / CDU Unit 4" Mechanical Connections Lineup - C - D | 7d | 2026-07-14 A | 2026-07-14 A | QTS-1020 | 100% | 2026-08-04 | 2026-08-11 | QTS-PHX3 DC1 - 6 day w/ Holidays | Mechanical | DH2300 | DELETED | TFO CONST | TFO | NICK | DH1100 |  |  | Mechanical |  |
| QTS - 6550 | **DELETED** TFO Scope // DH 2300 - 2301 Mechanical Gallery / CDU Unit 4" Mechanical Connections Lineup - E - F | 7d | 2026-07-14 A | 2026-07-14 A | QTS-1020 | 100% | 2026-08-15 | 2026-08-22 | QTS-PHX3 DC1 - 6 day w/ Holidays | Mechanical | DH2300 | DELETED | TFO CONST | TFO | NICK | DH1100 |  |  | Mechanical |  |
| QTS - 6560 | **DELETED** TFO Scope // DH 2300 / Lineup A - B / Hang Stainless Steel 6" Fan Wall - QCool | 9d | 2026-07-14 A | 2026-07-14 A | QTS-1020 | 100% | 2026-07-20 | 2026-07-29 | QTS-PHX3 DC1 - 6 day w/ Holidays | Mechanical | DH2300 | DELETED | TFO CONST | TFO | NICK | DH1100 |  |  | Mechanical |  |
| QTS - 6620 | **DELETED** TFO Scope // DH 2300 - 2301 Mechanical Gallery / Install OH Technical Loop Hangers | 5d | 2026-07-14 A | 2026-07-14 A | QTS-1020 | 100% | 2026-07-22 | 2026-07-27 | QTS-PHX3 DC1 - 6 day w/ Holidays | Mechanical | DH2300 | DELETED | TFO CONST | TFO | NICK | DH1100 |  |  | Mechanical |  |
| QTS - 6630 | **DELETED** TFO Scope // DH 2300 / Lineup A - B / Install QCool Arms | 5d | 2026-07-14 A | 2026-07-14 A | QTS-1020 | 100% | 2026-08-06 | 2026-08-11 | QTS-PHX3 DC1 - 6 day w/ Holidays | Electrical | DH2300 | DELETED | TFO CONST | TFO | NICK | DH1100 |  |  |  |  |
| QTS - 6640 | **DELETED** TFO Scope // DH 2300 / Lineup A - B / Install Power Cable Tray Racks | 4d | 2026-07-14 A | 2026-07-14 A | QTS-1020 | 100% | 2026-07-15 | 2026-07-18 | QTS-PHX3 DC1 - 6 day w/ Holidays | Electrical | DH2300 | DELETED | TFO CONST | TFO | NICK | DH1100 |  |  | Electrical |  |
| QTS - 6650 | **DELETED** TFO Scope // DH 2300 / Lineup A - B / Install Power Cable Tray | 15d | 2026-07-14 A | 2026-07-14 A | QTS-1020 | 100% | 2026-08-31 | 2026-09-17 | QTS-PHX3 DC1 - 6 day w/ Holidays | LV | DH2300 | DELETED | TFO CONST | TFO | NICK | DH1100 |  |  |  |  |
| QTS - 6660 | **DELETED** TFO Scope // DH 2300 / Lineup A - B / Install OH Trapeze - Screen Wall to RPPs | 3d | 2026-07-14 A | 2026-07-14 A | QTS-1020 | 100% | 2026-07-15 | 2026-07-17 | QTS-PHX3 DC1 - 6 day w/ Holidays | Electrical | DH2300 | DELETED | TFO CONST | TFO | NICK | DH1100 |  |  | Electrical |  |
| QTS - 6710 | **DELETED** TFO Scope // DH 2300 / Lineup C - D / Install Stainless Steel Piping Hangers | 4d | 2026-07-14 A | 2026-07-14 A | QTS-1020 | 100% | 2026-07-20 | 2026-07-23 | QTS-PHX3 DC1 - 6 day w/ Holidays | Mechanical | DH2300 | DELETED | TFO CONST | TFO | NICK | DH1100 |  |  | Mechanical |  |
| QTS - 6740 | **DELETED** TFO Scope // DH 2300 / Lineup C - D / Set RPP # 12 Units | 5d | 2026-07-14 A | 2026-07-14 A | QTS-1020 | 100% | 2026-07-15 | 2026-07-20 | QTS-PHX3 DC1 - 6 day w/ Holidays | Electrical | DH2300 | DELETED | TFO CONST | TFO | NICK | DH1100 |  |  | Electrical |  |
| QTS - 6760 | **DELETED** TFO Scope // DH 2300 / Lineup C - D / Install OH Trapeze - Screen Wall to RPPs | 3d | 2026-07-14 A | 2026-07-14 A | QTS-1020 | 100% | 2026-07-18 | 2026-07-21 | QTS-PHX3 DC1 - 6 day w/ Holidays | Electrical | DH2300 | DELETED | TFO CONST | TFO | NICK | DH1100 |  |  | Electrical |  |
| QTS - 6780 | **DELETED** TFO Scope // DH 2300 / Lineup C - D / Pull MC Feeders - CODs to RPPs | 12d | 2026-07-14 A | 2026-07-14 A | QTS-1020 | 100% | 2026-07-22 | 2026-08-04 | QTS-PHX3 DC1 - 6 day w/ Holidays | Electrical | DH2300 | DELETED | TFO CONST | TFO | NICK | DH1100 |  |  | Oscar Armenta |  |
| QTS - 6800 | **DELETED** TFO Scope // DH 2300 / Lineup C - D / Terminate Feeder at RPPs | 5d | 2026-07-14 A | 2026-07-14 A | QTS-1020 | 100% | 2026-08-06 | 2026-08-11 | QTS-PHX3 DC1 - 6 day w/ Holidays | Electrical | DH2300 | DELETED | TFO CONST | TFO | NICK | DH1100 |  |  |  |  |
| QTS - 6810 | **DELETED** TFO Scope // DH 2300 / Lineup C - D / Rough-In I&C | 10d | 2026-07-14 A | 2026-07-14 A | QTS-1020 | 100% | 2026-07-21 | 2026-07-31 | QTS-PHX3 DC1 - 6 day w/ Holidays | LV | DH2300 | DELETED | TFO CONST | TFO | NICK | DH1100 |  |  | Low Voltage |  |
| QTS - 6820 | **DELETED** TFO Scope // DH 2300 / Lineup C - D / Install Fire Alarm & Security | 7d | 2026-07-14 A | 2026-07-14 A | QTS-1020 | 100% | 2026-08-01 | 2026-08-08 | QTS-PHX3 DC1 - 6 day w/ Holidays | Electrical | DH2300 | DELETED | TFO CONST | TFO | NICK | DH1100 |  |  | Electrical |  |
| QTS - 6830 | **DELETED** TFO Scope // DH 2300 / Lineup C - D / Terminate I&C | 5d | 2026-07-14 A | 2026-07-14 A | QTS-1020 | 100% | 2026-08-15 | 2026-08-20 | QTS-PHX3 DC1 - 6 day w/ Holidays | LV | DH2300 | DELETED | TFO CONST | TFO | NICK | DH1100 |  |  | Low Voltage |  |
| QTS - 6850 | **DELETED** TFO Scope // DH 2300 / Lineup C - D / Clean Walk & PEI - Electrical & Controls | 2d | 2026-07-14 A | 2026-07-14 A | QTS-1020 | 100% | 2026-10-05 | 2026-10-06 | QTS-PHX3 DC1 - 6 day w/ Holidays | Electrical | DH2300 | DELETED | TFO CONST | TFO | NICK | DH1100 |  |  |  |  |
| QTS - 6860 | **DELETED** TFO Scope // DH 2300 / Lineup C - D / Hang Stainless Steel 6" Fan Wall - QCool | 9d | 2026-07-14 A | 2026-07-14 A | QTS-1020 | 100% | 2026-07-24 | 2026-08-03 | QTS-PHX3 DC1 - 6 day w/ Holidays | Mechanical | DH2300 | DELETED | TFO CONST | TFO | NICK | DH1100 |  |  | Mechanical |  |
| QTS - 6880 | **DELETED** TFO Scope // DH 2300 / Lineup C - D / Install QCool Arms | 5d | 2026-07-14 A | 2026-07-14 A | QTS-1020 | 100% | 2026-08-12 | 2026-08-17 | QTS-PHX3 DC1 - 6 day w/ Holidays | Electrical | DH2300 | DELETED | TFO CONST | TFO | NICK | DH1100 |  |  |  |  |
| QTS - 6910 | **DELETED** TFO Scope // DH 2300 / Lineup C - D / Install OH Trapeze - Screen Wall to CODs | 3d | 2026-07-14 A | 2026-07-14 A | QTS-1020 | 100% | 2026-07-18 | 2026-07-21 | QTS-PHX3 DC1 - 6 day w/ Holidays | Electrical | DH2300 | DELETED | TFO CONST | TFO | NICK | DH1100 |  |  | Electrical |  |
| QTS - 6940 | **DELETED** TFO Scope // DH 2300 / Lineup E - F / Install Stainless Steel Piping Hangers | 4d | 2026-07-14 A | 2026-07-14 A | QTS-1020 | 100% | 2026-07-24 | 2026-07-28 | QTS-PHX3 DC1 - 6 day w/ Holidays | Mechanical | DH2300 | DELETED | TFO CONST | TFO | NICK | DH1100 |  |  | Mechanical |  |
| QTS - 6970 | **DELETED** TFO Scope // DH 2300 / Lineup E - F / Set RPP # 12 Units | 5d | 2026-07-14 A | 2026-07-14 A | QTS-1020 | 100% | 2026-07-15 | 2026-07-20 | QTS-PHX3 DC1 - 6 day w/ Holidays | Electrical | DH2300 | DELETED | TFO CONST | TFO | NICK | DH1100 |  |  | Electrical |  |
| QTS - 6990 | **DELETED** TFO Scope // DH 2300 / Lineup E - F / Install OH Trapeze - Screen Wall to RPPs | 3d | 2026-07-14 A | 2026-07-14 A | QTS-1020 | 100% | 2026-07-22 | 2026-07-24 | QTS-PHX3 DC1 - 6 day w/ Holidays | Electrical | DH2300 | DELETED | TFO CONST | TFO | NICK | DH1100 |  |  | Electrical |  |

| ID | Activity | Duration | Start | Finish | Predecessors | Complete | Planned start | Planned finish | Calendar | Layton Discipline | Location | Layton Super | DELETED | TFO-CONST ONLY | Contract | NICK | D |
| --- | --- | --- | --- | --- | --- | --- | --- | --- | --- | --- | --- | --- | --- | --- | --- | --- | --- |
| QTS - 7010 | **DELETED** TFO Scope // DH 2300 / Lineup E - F / Pull MC Feeders - CODs to RPPs | 12d | 2026-07-14 A | 2026-07-14 A | QTS-1020 | 100% | 2026-07-25 | 2026-08-07 | QTS-PHX3 DC1 - 6 day w/ Holidays | Electrical | DH2300 | Oscar Armenta | DELETED | TFO CONST | TFO | NICK | DH1100 |
| QTS - 7030 | **DELETED** TFO Scope // DH 2300 / Lineup E - F / Terminate Feeder at RPPs | 5d | 2026-07-14 A | 2026-07-14 A | QTS-1020 | 100% | 2026-08-11 | 2026-08-15 | QTS-PHX3 DC1 - 6 day w/ Holidays | Electrical | DH2300 |  | DELETED | TFO CONST | TFO | NICK | DH1100 |
| QTS - 7040 | **DELETED** TFO Scope // DH 2300 / Lineup E - F / Rough-In I&C | 10d | 2026-07-14 A | 2026-07-14 A | QTS-1020 | 100% | 2026-07-21 | 2026-07-31 | QTS-PHX3 DC1 - 6 day w/ Holidays | LV | DH2300 | Low Voltage | DELETED | TFO CONST | TFO | NICK | DH1100 |
| QTS - 7050 | **DELETED** TFO Scope // DH 2300 / Lineup E - F / Install Fire Alarm & Security | 7d | 2026-07-14 A | 2026-07-14 A | QTS-1020 | 100% | 2026-08-01 | 2026-08-08 | QTS-PHX3 DC1 - 6 day w/ Holidays | Electrical | DH2300 | Electrical | DELETED | TFO CONST | TFO | NICK | DH1100 |
| QTS - 7060 | **DELETED** TFO Scope // DH 2300 / Lineup E - F / Terminate I&C | 5d | 2026-07-14 A | 2026-07-14 A | QTS-1020 | 100% | 2026-08-21 | 2026-08-26 | QTS-PHX3 DC1 - 6 day w/ Holidays | LV | DH2300 | Low Voltage | DELETED | TFO CONST | TFO | NICK | DH1100 |
| QTS - 7080 | **DELETED** TFO Scope // DH 2300 / Lineup E - F / Clean Walk & PEI - Electrical & Controls | 2d | 2026-07-14 A | 2026-07-14 A | QTS-1020 | 100% | 2026-10-09 | 2026-10-10 | QTS-PHX3 DC1 - 6 day w/ Holidays | Electrical | DH2300 |  | DELETED | TFO CONST | TFO | NICK | DH1100 |
| QTS - 7090 | **DELETED** TFO Scope // DH 2300 / Lineup E - F / Hang Stainless Steel 6" Fan Wall - QCool | 9d | 2026-07-14 A | 2026-07-14 A | QTS-1020 | 100% | 2026-07-29 | 2026-08-07 | QTS-PHX3 DC1 - 6 day w/ Holidays | Mechanical | DH2300 | Mechanical | DELETED | TFO CONST | TFO | NICK | DH1100 |
| QTS - 7110 | **DELETED** TFO Scope // DH 2300 / Lineup E - F / Install QCool Arms | 5d | 2026-07-14 A | 2026-07-14 A | QTS-1020 | 100% | 2026-08-18 | 2026-08-22 | QTS-PHX3 DC1 - 6 day w/ Holidays | Electrical | DH2300 |  | DELETED | TFO CONST | TFO | NICK | DH1100 |
| QTS - 7140 | **DELETED** TFO Scope // DH 2300 / Lineup E - F / Install OH Trapeze - Screen Wall to CODs | 3d | 2026-07-14 A | 2026-07-14 A | QTS-1020 | 100% | 2026-07-22 | 2026-07-24 | QTS-PHX3 DC1 - 6 day w/ Holidays | Electrical | DH2300 | Electrical | DELETED | TFO CONST | TFO | NICK | DH1100 |
| QTS - 7170 | **DELETED** TFO Scope // DH 2300 - 2303 Mechanical Gallery / Pull LV Main / IDF Cabinet to Basket Tray | 7d | 2026-07-14 A | 2026-07-14 A | QTS-1020 | 100% | 2026-07-15 | 2026-07-22 | QTS-PHX3 DC1 - 6 day w/ Holidays | LV | DH2300 | Low Voltage | DELETED | TFO CONST | TFO | NICK | DH1100 |
| QTS - 7180 | **DELETED** TFO Scope // DH 2300 - 2303 Mechanical Gallery / Terminate & Torque - CDU Connections | 5d | 2026-07-14 A | 2026-07-14 A | QTS-1020 | 100% | 2026-07-15 | 2026-07-20 | QTS-PHX3 DC1 - 6 day w/ Holidays | Electrical | DH2300 | Electrical | DELETED | TFO CONST | TFO | NICK | DH1100 |
| QTS - 7190 | **DELETED** TFO Scope // DH 2300 - 2303 Mechanical Gallery / Install OH 8" Technical Loop CDU Piping | 9d | 2026-07-14 A | 2026-07-14 A | QTS-1020 | 100% | 2026-07-15 | 2026-07-24 | QTS-PHX3 DC1 - 6 day w/ Holidays | Mechanical | DH2300 | Mechanical | DELETED | TFO CONST | TFO | NICK | DH1100 |
| QTS - 7200 | **DELETED** TFO Scope // DH 2300 - 2303 Mechanical Gallery / CDU Unit 4" Mechanical Connections Lineup - A - B | 7d | 2026-07-14 A | 2026-07-14 A | QTS-1020 | 100% | 2026-07-15 | 2026-07-22 | QTS-PHX3 DC1 - 6 day w/ Holidays | Mechanical | DH2300 | Mechanical | DELETED | TFO CONST | TFO | NICK | DH1100 |
| QTS - 7210 | **DELETED** TFO Scope // DH 2300 - 2303 Mechanical Gallery / Pull Branches From MOD-03 to CDUs | 8d | 2026-07-14 A | 2026-07-14 A | QTS-1020 | 100% | 2026-07-15 | 2026-07-23 | QTS-PHX3 DC1 - 6 day w/ Holidays | Electrical | DH2300 | Electrical | DELETED | TFO CONST | TFO | NICK | DH1100 |
| QTS - 7220 | **DELETED** TFO Scope // DH 2300 - 2303 Mechanical Gallery / Fill & Flush Technical Loop A - B | 9d | 2026-07-14 A | 2026-07-14 A | QTS-1020 | 100% | 2026-07-15 | 2026-07-23 | QTS-PHX3 DC1 - 7 day No Holidays | Mechanical | DH2300 | Mechanical | DELETED | TFO CONST | TFO | NICK | DH1100 |
| QTS - 7230 | **DELETED** TFO Scope // DH 2300 - 2303 Mechanical Gallery / Clean Walk & PEI - Mechanical | 5d | 2026-07-14 A | 2026-07-14 A | QTS-1020 | 100% | 2026-09-23 | 2026-09-28 | QTS-PHX3 DC1 - 6 day w/ Holidays | Mechanical | DH2300 |  | DELETED | TFO CONST | TFO | NICK | DH1100 |
| QTS - 7240 | **DELETED** TFO Scope // DH 2300 - 2303 Mechanical Gallery / Detail & Fabricate CDU Mechanical Connections | 10d | 2026-07-14 A | 2026-07-14 A | QTS-1020 | 100% | 2026-07-15 | 2026-07-25 | QTS-PHX3 DC1 - 6 day w/ Holidays | Mechanical | DH2300 | Mechanical | DELETED | TFO CONST | TFO | NICK | DH1100 |
| QTS - 7250 | **DELETED** TFO Scope // DH 2300 - 2303 Mechanical Gallery / CDU Unit 4" Mechanical Connections Lineup - C - D | 7d | 2026-07-14 A | 2026-07-14 A | QTS-1020 | 100% | 2026-07-15 | 2026-07-22 | QTS-PHX3 DC1 - 6 day w/ Holidays | Mechanical | DH2300 | Mechanical | DELETED | TFO CONST | TFO | NICK | DH1100 |
| QTS - 7260 | **DELETED** TFO Scope // DH 2300 - 2303 Mechanical Gallery / CDU Unit 4" Mechanical Connections Lineup - E - F | 7d | 2026-07-14 A | 2026-07-14 A | QTS-1020 | 100% | 2026-07-15 | 2026-07-22 | QTS-PHX3 DC1 - 6 day w/ Holidays | Mechanical | DH2300 | Mechanical | DELETED | TFO CONST | TFO | NICK | DH1100 |
| QTS - 7270 | **DELETED** TFO Scope // DH 2300 - 2303 Mechanical Gallery / Install OH Technical Loop Hangers | 5d | 2026-07-14 A | 2026-07-14 A | QTS-1020 | 100% | 2026-07-15 | 2026-07-20 | QTS-PHX3 DC1 - 6 day w/ Holidays | Mechanical | DH2300 | Mechanical | DELETED | TFO CONST | TFO | NICK | DH1100 |
| QTS - 7280 | **DELETED** TFO Scope // DH 2300 - 2303 Mechanical Gallery / Clean Walk & PEI - Electrical | 2d | 2026-07-14 A | 2026-07-14 A | QTS-1020 | 100% | 2026-08-05 | 2026-08-06 | QTS-PHX3 DC1 - 6 day w/ Holidays | Electrical | DH2300 |  | DELETED | TFO CONST | TFO | NICK | DH1100 |
| QTS - 7290 | **DELETED** TFO Scope // DH 2300 - 2303 Mechanical Gallery / BMS & EPMS Terminations | 2d | 2026-07-14 A | 2026-07-14 A | QTS-1020 | 100% | 2026-07-15 | 2026-07-16 | QTS-PHX3 DC1 - 6 day w/ Holidays | Electrical | DH2300 | Electrical | DELETED | TFO CONST | TFO | NICK | DH1100 |
| QTS - 7300 | **DELETED** TFO Scope // DH 2300 - 2301 Mechanical Gallery / Clean Walk & PEI - Electrical | 2d | 2026-07-14 A | 2026-07-14 A | QTS-1020 | 100% | 2026-08-10 | 2026-08-11 | QTS-PHX3 DC1 - 6 day w/ Holidays | Electrical | DH2300 |  | DELETED | TFO CONST | TFO | NICK | DH1100 |
| QTS - 7310 | **DELETED** TFO Scope // DH 2300 - 2301 Mechanical Gallery / BMS & EPMS Terminations | 2d | 2026-07-14 A | 2026-07-14 A | QTS-1020 | 100% | 2026-08-07 | 2026-08-08 | QTS-PHX3 DC1 - 6 day w/ Holidays | LV | DH2300 | Electrical | DELETED | TFO CONST | TFO | NICK | DH1100 |
| QTS - 7340 | **DELETED** TFO Scope // DH 2300 / Lineup E - F / Pull RPP Whips - RPPs to Racks | 15d | 2026-07-14 A | 2026-07-14 A | QTS-1020 | 100% | 2026-07-15 | 2026-07-31 | QTS-PHX3 DC1 - 6 day w/ Holidays | Electrical | DH2300 | Electrical | DELETED | TFO CONST | TFO | NICK | DH1100 |
| QTS - 7350 | **DELETED** TFO Scope // DH 2300 / Lineup E - F / Terminate Whips at RPP | 10d | 2026-07-14 A | 2026-07-14 A | QTS-1020 | 100% | 2026-07-24 | 2026-08-04 | QTS-PHX3 DC1 - 6 day w/ Holidays | Electrical | DH2300 | Oscar Armenta | DELETED | TFO CONST | TFO | NICK | DH1100 |
| QTS - 7360 | **DELETED** TFO Scope // DH 2300 - 2303 Mechanical Gallery / Final Connection to CDU Lineup - A - B | 5d | 2026-07-14 A | 2026-07-14 A | QTS-1020 | 100% | 2026-07-15 | 2026-07-20 | QTS-PHX3 DC1 - 6 day w/ Holidays | Mechanical | DH2300 | Mechanical | DELETED | TFO CONST | TFO | NICK | DH1100 |
| QTS - 7370 | **DELETED** TFO Scope // DH 2300 - 2303 Mechanical Gallery / Fill & Flush Technical Loop C - D | 9d | 2026-07-14 A | 2026-07-14 A | QTS-1020 | 100% | 2026-07-15 | 2026-07-23 | QTS-PHX3 DC1 - 7 day No Holidays | Mechanical | DH2300 | Mechanical | DELETED | TFO CONST | TFO | NICK | DH1100 |
| QTS - 7380 | **DELETED** TFO Scope // DH 2300 - 2303 Mechanical Gallery / Final Connection to CDU Lineup - C - D | 5d | 2026-07-14 A | 2026-07-14 A | QTS-1020 | 100% | 2026-07-15 | 2026-07-20 | QTS-PHX3 DC1 - 6 day w/ Holidays | Mechanical | DH2300 | Mechanical | DELETED | TFO CONST | TFO | NICK | DH1100 |
| QTS - 7390 | **DELETED** TFO Scope // DH 2300 - 2303 Mechanical Gallery / Final Connection to CDU Lineup - E - F | 5d | 2026-07-14 A | 2026-07-14 A | QTS-1020 | 100% | 2026-07-15 | 2026-07-20 | QTS-PHX3 DC1 - 6 day w/ Holidays | Mechanical | DH2300 | Mechanical | DELETED | TFO CONST | TFO | NICK | DH1100 |
| QTS - 7400 | **DELETED** TFO Scope // DH 2300 - 2303 Mechanical Gallery / Fill & Flush Technical Loop E - F | 9d | 2026-07-14 A | 2026-07-14 A | QTS-1020 | 100% | 2026-07-15 | 2026-07-23 | QTS-PHX3 DC1 - 7 day No Holidays | Mechanical | DH2300 | Mechanical | DELETED | TFO CONST | TFO | NICK | DH1100 |
| QTS - 7430 | **DELETED** TFO Scope // DH 2300 / Lineup A - B / Install LV Cable Tray | 15d | 2026-07-14 A | 2026-07-14 A | QTS-1020 | 100% | 2026-08-31 | 2026-09-17 | QTS-PHX3 DC1 - 6 day w/ Holidays | LV | DH2300 |  | DELETED | TFO CONST | TFO | NICK | DH1100 |
| QTS - 7440 | **DELETED** TFO Scope // DH 2300 / Lineup A - B / Install Power Tray Tier # 1 | 10d | 2026-07-14 A | 2026-07-14 A | QTS-1020 | 100% | 2026-07-15 | 2026-07-25 | QTS-PHX3 DC1 - 6 day w/ Holidays | Electrical | DH2300 | Electrical | DELETED | TFO CONST | TFO | NICK | DH1100 |
| QTS - 7450 | **DELETED** TFO Scope // DH 2300 / Lineup C - D / Pull RPP Whips - RPPs to Racks | 15d | 2026-07-14 A | 2026-07-14 A | QTS-1020 | 100% | 2026-07-15 | 2026-07-31 | QTS-PHX3 DC1 - 6 day w/ Holidays | Electrical | DH2300 | Electrical | DELETED | TFO CONST | TFO | NICK | DH1100 |
| QTS - 7460 | **DELETED** TFO Scope // DH 2300 / Lineup C - D / Terminate Whips at RPP | 10d | 2026-07-14 A | 2026-07-14 A | QTS-1020 | 100% | 2026-07-24 | 2026-08-04 | QTS-PHX3 DC1 - 6 day w/ Holidays | Electrical | DH2300 | Oscar Armenta | DELETED | TFO CONST | TFO | NICK | DH1100 |
| QTS - 7470 | **DELETED** TFO Scope // DH 2300 / Lineup A - B / Terminate Whips at RPP | 10d | 2026-07-14 A | 2026-07-14 A | QTS-1020 | 100% | 2026-10-09 | 2026-10-20 | QTS-PHX3 DC1 - 6 day w/ Holidays | Electrical | DH2300 |  | DELETED | TFO CONST | TFO | NICK | DH1100 |
| QTS - 7480 | **DELETED** TFO Scope // DH 2300 / Lineup A - B / Pull RPP Whips - RPPs to Racks | 15d | 2026-07-14 A | 2026-07-14 A | QTS-1020 | 100% | 2026-09-30 | 2026-10-16 | QTS-PHX3 DC1 - 6 day w/ Holidays | Electrical | DH2300 |  | DELETED | TFO CONST | TFO | NICK | DH1100 |
| QTS - 7490 | **DELETED** TFO Scope // DH 2300 - 2301 Mechanical Gallery / Final Connection Tie-In to CDU Lineup - A - B | 5d | 2026-07-14 A | 2026-07-14 A | QTS-1020 | 100% | 2026-08-17 | 2026-08-21 | QTS-PHX3 DC1 - 6 day w/ Holidays | Mechanical | DH2300 | Mechanical | DELETED | TFO CONST | TFO | NICK | DH1100 |
| QTS - 7500 | **DELETED** TFO Scope // DH 2300 - 2301 Mechanical Gallery / Fill & Flush Technical Loop C - D | 9d | 2026-07-14 A | 2026-07-14 A | QTS-1020 | 100% | 2026-08-16 | 2026-08-24 | QTS-PHX3 DC1 - 7 day No Holidays | Mechanical | DH2300 | Mechanical | DELETED | TFO CONST | TFO | NICK | DH1100 |
| QTS - 7510 | **DELETED** TFO Scope // DH 2300 - 2301 Mechanical Gallery / Final Connection Tie-In to CDU Lineup - C - D | 5d | 2026-07-14 A | 2026-07-14 A | QTS-1020 | 100% | 2026-08-25 | 2026-08-29 | QTS-PHX3 DC1 - 6 day w/ Holidays | Mechanical | DH2300 | Mechanical | DELETED | TFO CONST | TFO | NICK | DH1100 |
| QTS - 7520 | **DELETED** TFO Scope // DH 2300 - 2301 Mechanical Gallery / Fill & Flush Technical Loop E - F | 9d | 2026-07-14 A | 2026-07-14 A | QTS-1020 | 100% | 2026-08-25 | 2026-09-02 | QTS-PHX3 DC1 - 7 day No Holidays | Mechanical | DH2300 | Mechanical | DELETED | TFO CONST | TFO | NICK | DH1100 |
| QTS - 7530 | **DELETED** TFO Scope // DH 2300 - 2301 Mechanical Gallery / Final Connection Tie-In to CDU Lineup - E - F | 5d | 2026-07-14 A | 2026-07-14 A | QTS-1020 | 100% | 2026-09-03 | 2026-09-09 | QTS-PHX3 DC1 - 6 day w/ Holidays | Mechanical | DH2300 | Mechanical | DELETED | TFO CONST | TFO | NICK | DH1100 |
| QTS - 7670 | **DELETED** TFO Scope // DH 1200 / Lineup A - B / Rough-In I&C | 7d | 2026-07-14 A | 2026-07-14 A | QTS-1020 | 100% | 2026-07-15 | 2026-07-22 | QTS-PHX3 DC1 - 6 day w/ Holidays | Electrical | DH1200 | Oscar Armenta | DELETED | TFO CONST | TFO | NICK | DH1100 |
| QTS - 7680 | **DELETED** TFO Scope // DH 1200 / Lineup A - B / Install Fire Alarm & Security | 7d | 2026-07-14 A | 2026-07-14 A | QTS-1020 | 100% | 2026-07-23 | 2026-07-30 | QTS-PHX3 DC1 - 6 day w/ Holidays | Electrical | DH1200 | Oscar Armenta | DELETED | TFO CONST | TFO | NICK | DH1100 |
| QTS - 7720 | **DELETED** TFO Scope // DH 1200 - 1201 Mechanical Gallery / Install OH 8" Technical Loop CDU Piping | 9d | 2026-07-14 A | 2026-07-14 A | QTS-1020 | 100% | 2026-07-25 | 2026-08-04 | QTS-PHX3 DC1 - 6 day w/ Holidays | Mechanical | DH1200 | Mechanical | DELETED | TFO CONST | TFO | NICK | DH1100 |
| QTS - 7730 | **DELETED** TFO Scope // DH 1200 - 1201 Mechanical Gallery / CDU Unit 4" Mechanical Connections Lineup - A - B | 7d | 2026-07-14 A | 2026-07-14 A | QTS-1020 | 100% | 2026-07-27 | 2026-08-03 | QTS-PHX3 DC1 - 6 day w/ Holidays | Mechanical | DH1200 |  | DELETED | TFO CONST | TFO | NICK | DH1100 |
| QTS - 7750 | **DELETED** TFO Scope // DH 1200 - 1201 Mechanical Gallery / Fill & Flush Technical Loop A - B | 9d | 2026-07-14 A | 2026-07-14 A | QTS-1020 | 100% | 2026-08-05 | 2026-08-13 | QTS-PHX3 DC1 - 7 day No Holidays | Mechanical | DH1200 |  | DELETED | TFO CONST | TFO | NICK | DH1100 |
| QTS - 7760 | **DELETED** TFO Scope // DH 1200 - 1201 Mechanical Gallery / Clean Walk & PEI - CDU (01-09) | 5d | 2026-07-14 A | 2026-07-14 A | QTS-1020 | 100% | 2026-07-30 | 2026-08-04 | QTS-PHX3 DC1 - 6 day w/ Holidays | Mechanical | DH1200 | Mechanical | DELETED | TFO CONST | TFO | NICK | DH1100 |
| QTS - 7780 | **DELETED** TFO Scope // DH 1200 / Lineup A - B / Terminate - BMS & EPMS Connections | 7d | 2026-07-14 A | 2026-07-14 A | QTS-1020 | 100% | 2026-08-06 | 2026-08-13 | QTS-PHX3 DC1 - 6 day w/ Holidays | LV | DH1200 |  | DELETED | TFO CONST | TFO | NICK | DH1100 |
| QTS - 7790 | **DELETED** TFO Scope // DH 1200 / Lineup A - B / Clean Walk & PEI - Electrical & Controls | 2d | 2026-07-14 A | 2026-07-14 A | QTS-1020 | 100% | 2026-08-15 | 2026-08-17 | QTS-PHX3 DC1 - 6 day w/ Holidays | Electrical | DH1200 |  | DELETED | TFO CONST | TFO | NICK | DH1100 |
| QTS - 7860 | **DELETED** TFO Scope // DH 1200 - 1201 Mechanical Gallery / CDU Unit 4" Mechanical Connections Lineup - C - D | 7d | 2026-07-14 A | 2026-07-14 A | QTS-1020 | 100% | 2026-08-04 | 2026-08-11 | QTS-PHX3 DC1 - 6 day w/ Holidays | Mechanical | DH1200 |  | DELETED | TFO CONST | TFO | NICK | DH1100 |
| QTS - 7870 | **DELETED** TFO Scope // DH 1200 - 1201 Mechanical Gallery / CDU Unit 4" Mechanical Connections Lineup - E - F | 7d | 2026-07-14 A | 2026-07-14 A | QTS-1020 | 100% | 2026-08-12 | 2026-08-19 | QTS-PHX3 DC1 - 6 day w/ Holidays | Mechanical | DH1200 |  | DELETED | TFO CONST | TFO | NICK | DH1100 |
| QTS - 7950 | **DELETED** TFO Scope // DH 1200 / Lineup A - B / Install QCool Arms | 5d | 2026-07-14 A | 2026-07-14 A | QTS-1020 | 100% | 2026-07-15 | 2026-07-20 | QTS-PHX3 DC1 - 6 day w/ Holidays | Electrical | DH1200 | Oscar Armenta | DELETED | TFO CONST | TFO | NICK | DH1100 |
| QTS - 7970 | **DELETED** TFO Scope // DH 1200 / Lineup A - B / Install Power Cable Tray | 15d | 2026-07-14 A | 2026-07-14 A | QTS-1020 | 100% | 2026-07-15 | 2026-07-31 | QTS-PHX3 DC1 - 6 day w/ Holidays | LV | DH1200 | Oscar Armenta | DELETED | TFO CONST | TFO | NICK | DH1100 |
| QTS - 8130 | **DELETED** TFO Scope // DH 1200 / Lineup C - D / Rough-In I&C | 7d | 2026-07-14 A | 2026-07-14 A | QTS-1020 | 100% | 2026-07-15 | 2026-07-22 | QTS-PHX3 DC1 - 6 day w/ Holidays | Electrical | DH1200 | Oscar Armenta | DELETED | TFO CONST | TFO | NICK | DH1100 |
| QTS - 8160 | **DELETED** TFO Scope // DH 1200 / Lineup C - D / Terminate - BMS & EPMS Connections | 7d | 2026-07-14 A | 2026-07-14 A | QTS-1020 | 100% | 2026-08-12 | 2026-08-19 | QTS-PHX3 DC1 - 6 day w/ Holidays | LV | DH1200 |  | DELETED | TFO CONST | TFO | NICK | DH1100 |
| QTS - 8170 | **DELETED** TFO Scope // DH 1200 / Lineup C - D / Clean Walk & PEI - Electrical & Controls | 2d | 2026-07-14 A | 2026-07-14 A | QTS-1020 | 100% | 2026-08-20 | 2026-08-21 | QTS-PHX3 DC1 - 6 day w/ Holidays | Electrical | DH1200 |  | DELETED | TFO CONST | TFO | NICK | DH1100 |
| QTS - 8200 | **DELETED** TFO Scope // DH 1200 / Lineup C - D / Install QCool Arms | 5d | 2026-07-14 A | 2026-07-14 A | QTS-1020 | 100% | 2026-07-15 | 2026-07-20 | QTS-PHX3 DC1 - 6 day w/ Holidays | Electrical | DH1200 | Oscar Armenta | DELETED | TFO CONST | TFO | NICK | DH1100 |
| QTS - 8360 | **DELETED** TFO Scope // DH 1200 / Lineup E - F / Rough-In I&C | 10d | 2026-07-14 A | 2026-07-14 A | QTS-1020 | 100% | 2026-08-07 | 2026-08-18 | QTS-PHX3 DC1 - 6 day w/ Holidays | Electrical | DH1200 |  | DELETED | TFO CONST | TFO | NICK | DH1100 |
| QTS - 8390 | **DELETED** TFO Scope // DH 1200 / Lineup E - F / Terminate - BMS & EPMS Connections | 7d | 2026-07-14 A | 2026-07-14 A | QTS-1020 | 100% | 2026-09-02 | 2026-09-10 | QTS-PHX3 DC1 - 6 day w/ Holidays | LV | DH1200 |  | DELETED | TFO CONST | TFO | NICK | DH1100 |
| QTS - 8400 | **DELETED** TFO Scope // DH 1200 / Lineup E - F / Clean Walk & PEI - Electrical & Controls | 2d | 2026-07-14 A | 2026-07-14 A | QTS-1020 | 100% | 2026-09-11 | 2026-09-12 | QTS-PHX3 DC1 - 6 day w/ Holidays | Electrical | DH1200 |  | DELETED | TFO CONST | TFO | NICK | DH1100 |
| QTS - 8430 | **DELETED** TFO Scope // DH 1200 / Lineup E - F / Install QCool Arms | 5d | 2026-07-14 A | 2026-07-14 A | QTS-1020 | 100% | 2026-07-15 | 2026-07-20 | QTS-PHX3 DC1 - 6 day w/ Holidays | Electrical | DH1200 | Oscar Armenta | DELETED | TFO CONST | TFO | NICK | DH1100 |
| QTS - 8510 | **DELETED** TFO Scope // DH 1200 - 1203 Mechanical Gallery / Install OH 8" Technical Loop CDU Piping | 9d | 2026-07-14 A | 2026-07-14 A | QTS-1020 | 100% | 2026-07-25 | 2026-08-04 | QTS-PHX3 DC1 - 6 day w/ Holidays | Mechanical | DH1200 | Mechanical | DELETED | TFO CONST | TFO | NICK | DH1100 |
| QTS - 8520 | **DELETED** TFO Scope // DH 1200 - 1203 Mechanical Gallery / CDU Unit 4" Mechanical Connections Lineup - A - B | 7d | 2026-07-14 A | 2026-07-14 A | QTS-1020 | 100% | 2026-08-05 | 2026-08-12 | QTS-PHX3 DC1 - 6 day w/ Holidays | Mechanical | DH1200 |  | DELETED | TFO CONST | TFO | NICK | DH1100 |
| QTS - 8530 | **DELETED** TFO Scope // DH 1200 - 1203 Mechanical Gallery / Pull Branches From MOD-03 to CDUs | 8d | 2026-07-14 A | 2026-07-14 A | QTS-1020 | 100% | 2026-07-15 | 2026-07-23 | QTS-PHX3 DC1 - 6 day w/ Holidays | Electrical | DH1200 | Oscar Armenta | DELETED | TFO CONST | TFO | NICK | DH1100 |
| QTS - 8540 | **DELETE** TFO Scope // DH 1200 - 1203 Mechanical Gallery / Fill & Flush Technical Loop A - B | 9d | 2026-07-14 A | 2026-07-14 A | QTS-1020 | 100% | 2026-08-13 | 2026-08-21 | QTS-PHX3 DC1 - 7 day No Holidays | Mechanical | DH1200 |  | DELETED | TFO CONST | TFO | NICK | DH1100 |
| QTS - 8550 | **DELETED** TFO Scope // DH 1200 - 1203 Mechanical Gallery / Clean Walk & PEI - Mechanical | 5d | 2026-07-14 A | 2026-07-14 A | QTS-1020 | 100% | 2026-09-15 | 2026-09-19 | QTS-PHX3 DC1 - 6 day w/ Holidays | Mechanical | DH1200 |  | DELETED | TFO CONST | TFO | NICK | DH1100 |
| QTS - 8560 | **DELETED** TFO Scope // DH 1200 - 1203 Mechanical Gallery / Detail & Fabricate CDU Mechanical Connections | 10d | 2026-07-14 A | 2026-07-14 A | QTS-1020 | 100% | 2026-07-15 | 2026-07-25 | QTS-PHX3 DC1 - 6 day w/ Holidays | Mechanical | DH1200 | Mechanical | DELETED | TFO CONST | TFO | NICK | DH1100 |
| QTS - 8570 | **DELETED** TFO Scope // DH 1200 - 1203 Mechanical Gallery / CDU Unit 4" Mechanical Connections Lineup - C - D | 7d | 2026-07-14 A | 2026-07-14 A | QTS-1020 | 100% | 2026-08-10 | 2026-08-17 | QTS-PHX3 DC1 - 6 day w/ Holidays | Mechanical | DH1200 |  | DELETED | TFO CONST | TFO | NICK | DH1100 |
| QTS - 8580 | **DELETED** TFO Scope // DH 1200 - 1203 Mechanical Gallery / CDU Unit 4" Mechanical Connections Lineup - E - F | 7d | 2026-07-14 A | 2026-07-14 A | QTS-1020 | 100% | 2026-08-14 | 2026-08-21 | QTS-PHX3 DC1 - 6 day w/ Holidays | Mechanical | DH1200 |  | DELETED | TFO CONST | TFO | NICK | DH1100 |

| ID | Activity | Duration | Start | Finish | Predecessors | Complete | Planned start | Planned finish | Calendar | Allucent CSI Group | Layton Discipline | Location | Layton Super | DELETED | TFO-CONST ONLY | Contract | NICK | D |
| --- | --- | --- | --- | --- | --- | --- | --- | --- | --- | --- | --- | --- | --- | --- | --- | --- | --- | --- |
| QTS - 8590 | **DELETED** TFO Scope // DH 1200 - 1203 Mechanical Gallery / Install OH Technical Loop Hangers | 5d | 2026-07-14 A | 2026-07-14 A | QTS-1020 | 100% | 2026-07-15 | 2026-07-20 | QTS-PHX3 DC1 - 6 day w/ Holidays | 01ADMIN | Mechanical | DH1200 | Mechanical | DELETED | TFO CONST | TFO | NICK | DH1100 |
| QTS - 8600 | **DELETED** TFO Scope // DH 1200 - 1203 Mechanical Gallery / Clean Walk & PEI - Electrical | 2d | 2026-07-14 A | 2026-07-14 A | QTS-1020 | 100% | 2026-08-01 | 2026-08-03 | QTS-PHX3 DC1 - 6 day w/ Holidays |  | Electrical | DH1200 | Oscar Armenta | DELETED | TFO CONST | TFO | NICK | DH1100 |
| QTS - 8670 | **DELETED** TFO Scope // DH 1200 / Lineup E - F / Terminate Whips at RPP | 10d | 2026-07-14 A | 2026-07-14 A | QTS-1020 | 100% | 2026-08-01 | 2026-08-12 | QTS-PHX3 DC1 - 6 day w/ Holidays |  | Electrical | DH1200 | Oscar Armenta | DELETED | TFO CONST | TFO | NICK | DH1100 |
| QTS - 8680 | **DELETED** TFO Scope // DH 1200 - 1203 Mechanical Gallery / Final Connection to CDU Lineup - A - B | 5d | 2026-07-14 A | 2026-07-14 A | QTS-1020 | 100% | 2026-08-22 | 2026-08-27 | QTS-PHX3 DC1 - 6 day w/ Holidays |  | Mechanical | DH1200 |  | DELETED | TFO CONST | TFO | NICK | DH1100 |
| QTS - 8690 | **DELETE** TFO Scope // DH 1200 - 1203 Mechanical Gallery / Fill & Flush Technical Loop C - D | 9d | 2026-07-14 A | 2026-07-14 A | QTS-1020 | 100% | 2026-08-22 | 2026-08-30 | QTS-PHX3 DC1 - 7 day No Holidays |  | Mechanical | DH1200 |  | DELETED | TFO CONST | TFO | NICK | DH1100 |
| QTS - 8700 | **DELETED** TFO Scope // DH 1200 - 1203 Mechanical Gallery / Final Connection to CDU Lineup - C - D | 5d | 2026-07-14 A | 2026-07-14 A | QTS-1020 | 100% | 2026-08-31 | 2026-09-04 | QTS-PHX3 DC1 - 6 day w/ Holidays |  | Mechanical | DH1200 |  | DELETED | TFO CONST | TFO | NICK | DH1100 |
| QTS - 8710 | **DELETED** TFO Scope // DH 1200 - 1203 Mechanical Gallery / Final Connection to CDU Lineup - E - F | 5d | 2026-07-14 A | 2026-07-14 A | QTS-1020 | 100% | 2026-09-09 | 2026-09-14 | QTS-PHX3 DC1 - 6 day w/ Holidays |  | Mechanical | DH1200 |  | DELETED | TFO CONST | TFO | NICK | DH1100 |
| QTS - 8720 | **DELETE** TFO Scope // DH 1200 - 1203 Mechanical Gallery / Fill & Flush Technical Loop E - F | 9d | 2026-07-14 A | 2026-07-14 A | QTS-1020 | 100% | 2026-08-31 | 2026-09-08 | QTS-PHX3 DC1 - 7 day No Holidays |  | Mechanical | DH1200 |  | DELETED | TFO CONST | TFO | NICK | DH1100 |
| QTS - 8750 | **DELETED** TFO Scope // DH 1200 / Lineup A - B / Install LV Cable Tray | 15d | 2026-07-14 A | 2026-07-14 A | QTS-1020 | 100% | 2026-07-15 | 2026-07-31 | QTS-PHX3 DC1 - 6 day w/ Holidays |  | LV | DH1200 | Oscar Armenta | DELETED | TFO CONST | TFO | NICK | DH1100 |
| QTS - 8760 | **DELETED** TFO Scope // DH 1200 / Lineup A - B / Install Power Tray Tier # 1 | 10d | 2026-07-14 A | 2026-07-14 A | QTS-1020 | 100% | 2026-07-27 | 2026-08-06 | QTS-PHX3 DC1 - 6 day w/ Holidays |  | LV | DH1200 | Oscar Armenta | DELETED | TFO CONST | TFO | NICK | DH1100 |
| QTS - 8780 | **DELETED** TFO Scope // DH 1200 / Lineup C - D / Terminate Whips at RPP | 10d | 2026-07-14 A | 2026-07-14 A | QTS-1020 | 100% | 2026-07-27 | 2026-08-06 | QTS-PHX3 DC1 - 6 day w/ Holidays |  | Electrical | DH1200 | Oscar Armenta | DELETED | TFO CONST | TFO | NICK | DH1100 |
| QTS - 8790 | **DELETED** TFO Scope // DH 1200 / Lineup A - B / Terminate Whips at RPP | 10d | 2026-07-14 A | 2026-07-14 A | QTS-1020 | 100% | 2026-08-25 | 2026-09-04 | QTS-PHX3 DC1 - 6 day w/ Holidays |  | Electrical | DH1200 |  | DELETED | TFO CONST | TFO | NICK | DH1100 |
| QTS - 8810 | **DELETED** TFO Scope // DH 1200 - 1201 Mechanical Gallery / Final Connection Tie-In to CDU Lineup - A - B | 5d | 2026-07-14 A | 2026-07-14 A | QTS-1020 | 100% | 2026-08-14 | 2026-08-19 | QTS-PHX3 DC1 - 6 day w/ Holidays |  | Mechanical | DH1200 |  | DELETED | TFO CONST | TFO | NICK | DH1100 |
| QTS - 8820 | **DELETED** TFO Scope // DH 1200 - 1201 Mechanical Gallery / Fill & Flush Technical Loop C - D | 9d | 2026-07-14 A | 2026-07-14 A | QTS-1020 | 100% | 2026-08-14 | 2026-08-22 | QTS-PHX3 DC1 - 7 day No Holidays |  | Mechanical | DH1200 |  | DELETED | TFO CONST | TFO | NICK | DH1100 |
| QTS - 8830 | **DELETED** TFO Scope // DH 1200 - 1201 Mechanical Gallery / Final Connection Tie-In to CDU Lineup - C - D | 5d | 2026-07-14 A | 2026-07-14 A | QTS-1020 | 100% | 2026-08-24 | 2026-08-28 | QTS-PHX3 DC1 - 6 day w/ Holidays |  | Mechanical | DH1200 |  | DELETED | TFO CONST | TFO | NICK | DH1100 |
| QTS - 8840 | **DELETED** TFO Scope // DH 1200 - 1201 Mechanical Gallery / Fill & Flush Technical Loop E - F | 9d | 2026-07-14 A | 2026-07-14 A | QTS-1020 | 100% | 2026-08-23 | 2026-08-31 | QTS-PHX3 DC1 - 7 day No Holidays |  | Mechanical | DH1200 |  | DELETED | TFO CONST | TFO | NICK | DH1100 |
| QTS - 8850 | **DELETED** TFO Scope // DH 1200 - 1201 Mechanical Gallery / Final Connection Tie-In to CDU Lineup - E - F | 5d | 2026-07-14 A | 2026-07-14 A | QTS-1020 | 100% | 2026-09-01 | 2026-09-05 | QTS-PHX3 DC1 - 6 day w/ Holidays |  | Mechanical | DH1200 |  | DELETED | TFO CONST | TFO | NICK | DH1100 |
| QTS - 8870 | **DELETED** TFO Scope // DH 1300 / Lineup A - B / Install Stainless Steel Piping Hangers | 4d | 2026-07-14 A | 2026-07-14 A | QTS-1020 | 100% | 2025-12-10 | 2025-12-13 | QTS-PHX3 DC1 - 6 day w/ Holidays | 01ADMIN | Mechanical | DH1300 | Mechanical | DELETED | TFO CONST | TFO | NICK | DH1100 |
| QTS - 8900 | **DELETED** TFO Scope // DH 1300 / Lineup A - B / Set RPP # 12 Units | 5d | 2026-07-14 A | 2026-07-14 A | QTS-1020 | 100% | 2026-07-15 | 2026-07-20 | QTS-PHX3 DC1 - 6 day w/ Holidays |  | Electrical | DH1300 | Electrical | DELETED | TFO CONST | TFO | NICK | DH1100 |
| QTS - 8910 | **DELETED** TFO Scope // DH 1300 / Lineup A - B / Raise HAC, QCool & Trays | 6d | 2026-07-14 A | 2026-07-14 A | QTS-1020 | 100% | 2026-08-11 | 2026-08-17 | QTS-PHX3 DC1 - 6 day w/ Holidays |  | LV | DH1300 |  | DELETED | TFO CONST | TFO | NICK | DH1100 |
| QTS - 8920 | **DELETED** TFO Scope // DH 1300 / Lineup A - B / Install OH Trapeze - Screen Wall to RPPs | 3d | 2026-07-14 A | 2026-07-14 A | QTS-1020 | 100% | 2026-07-15 | 2026-07-17 | QTS-PHX3 DC1 - 6 day w/ Holidays |  | Electrical | DH1300 | Electrical | DELETED | TFO CONST | TFO | NICK | DH1100 |
| QTS - 8940 | **DELETED** TFO Scope // DH 1300 / Lineup A - B / Pull MC Feeders - CODs to RPPs | 12d | 2026-07-14 A | 2026-07-14 A | QTS-1020 | 100% | 2026-07-18 | 2026-07-31 | QTS-PHX3 DC1 - 6 day w/ Holidays |  | Electrical | DH1300 | Oscar Armenta | DELETED | TFO CONST | TFO | NICK | DH1100 |
| QTS - 8960 | **DELETED** TFO Scope // DH 1300 / Lineup A - B / Terminate Feeder at RPPs | 5d | 2026-07-14 A | 2026-07-14 A | QTS-1020 | 100% | 2026-08-24 | 2026-08-28 | QTS-PHX3 DC1 - 6 day w/ Holidays |  | Electrical | DH1300 |  | DELETED | TFO CONST | TFO | NICK | DH1100 |
| QTS - 8970 | **DELETED** TFO Scope // DH 1300 / Lineup A - B / Rough-In I&C | 7d | 2026-07-14 A | 2026-07-14 A | QTS-1020 | 100% | 2026-07-15 | 2026-07-22 | QTS-PHX3 DC1 - 6 day w/ Holidays |  | LV | DH1300 | Low Voltage | DELETED | TFO CONST | TFO | NICK | DH1100 |
| QTS - 8980 | **DELETED** TFO Scope // DH 1300 / Lineup A - B / Install Fire Alarm & Security | 7d | 2026-07-14 A | 2026-07-14 A | QTS-1020 | 100% | 2026-09-01 | 2026-09-09 | QTS-PHX3 DC1 - 6 day w/ Holidays |  | Electrical | DH1300 |  | DELETED | TFO CONST | TFO | NICK | DH1100 |
| QTS - 9000 | **DELETED** TFO Scope // DH 1300 - 1301 Mechanical Gallery / Pull LV Main / IDF Cabinet to Basket Tray | 7d | 2026-07-14 A | 2026-07-14 A | QTS-1020 | 100% | 2026-07-21 | 2026-07-28 | QTS-PHX3 DC1 - 6 day w/ Holidays |  | LV | DH1300 | Low Voltage | DELETED | TFO CONST | TFO | NICK | DH1100 |
| QTS - 9010 | **DELETED** TFO Scope // DH 1300 - 1301 Mechanical Gallery / Terminate & Torque - CDU Connections | 5d | 2026-07-14 A | 2026-07-14 A | QTS-1020 | 100% | 2026-07-15 | 2026-07-20 | QTS-PHX3 DC1 - 6 day w/ Holidays |  | Electrical | DH1300 | Electrical | DELETED | TFO CONST | TFO | NICK | DH1100 |
| QTS - 9020 | **DELETED** TFO Scope // DH 1300 - 1301 Mechanical Gallery / Install OH 8" Technical Loop CDU Piping | 9d | 2026-07-14 A | 2026-07-14 A | QTS-1020 | 100% | 2026-07-15 | 2026-07-24 | QTS-PHX3 DC1 - 6 day w/ Holidays |  | Mechanical | DH1300 | Mechanical | DELETED | TFO CONST | TFO | NICK | DH1100 |
| QTS - 9030 | **DELETED** TFO Scope // DH 1300 - 1301 Mechanical Gallery / CDU Unit 4" Mechanical Connections Lineup - A - B | 7d | 2026-07-14 A | 2026-07-14 A | QTS-1020 | 100% | 2026-07-15 | 2026-07-22 | QTS-PHX3 DC1 - 6 day w/ Holidays |  | Mechanical | DH1300 | Mechanical | DELETED | TFO CONST | TFO | NICK | DH1100 |
| QTS - 9040 | **DELETED** TFO Scope // DH 1300 - 1301 Mechanical Gallery / Pull Branches From MOD-03 to CDUs | 8d | 2026-07-14 A | 2026-07-14 A | QTS-1020 | 100% | 2026-07-15 | 2026-07-23 | QTS-PHX3 DC1 - 6 day w/ Holidays |  | Electrical | DH1300 | Electrical | DELETED | TFO CONST | TFO | NICK | DH1100 |
| QTS - 9050 | **DELETED** TFO Scope // DH 1300 - 1301 Mechanical Gallery / Fill & Flush Technical Loop A - B | 10d | 2026-07-14 A | 2026-07-14 A | QTS-1020 | 100% | 2026-07-15 | 2026-07-24 | QTS-PHX3 DC1 - 7 day No Holidays |  | Mechanical | DH1300 | Mechanical | DELETED | TFO CONST | TFO | NICK | DH1100 |
| QTS - 9060 | **DELETED** TFO Scope // DH 1300 - 1301 Mechanical Gallery / Clean Walk & PEI - Mechanical | 5d | 2026-07-14 A | 2026-07-14 A | QTS-1020 | 100% | 2026-09-11 | 2026-09-16 | QTS-PHX3 DC1 - 6 day w/ Holidays |  | Mechanical | DH1300 |  | DELETED | TFO CONST | TFO | NICK | DH1100 |
| QTS - 9080 | **DELETED** TFO Scope // DH 1300 / Lineup A - B / Terminate - BMS & EPMS Connections | 7d | 2026-07-14 A | 2026-07-14 A | QTS-1020 | 100% | 2026-09-16 | 2026-09-23 | QTS-PHX3 DC1 - 6 day w/ Holidays |  | LV | DH1300 |  | DELETED | TFO CONST | TFO | NICK | DH1100 |
| QTS - 9090 | **DELETED** TFO Scope // DH 1300 / Lineup A - B / Clean Walk & PEI - Electrical & Controls | 2d | 2026-07-14 A | 2026-07-14 A | QTS-1020 | 100% | 2026-09-29 | 2026-09-30 | QTS-PHX3 DC1 - 6 day w/ Holidays |  | Electrical | DH1300 |  | DELETED | TFO CONST | TFO | NICK | DH1100 |
| QTS - 9150 | **DELETED** TFO Scope // DH 1300 - 1301 Mechanical Gallery / Detail & Fabricate CDU Mechanical Connections | 10d | 2026-07-14 A | 2026-07-14 A | QTS-1020 | 100% | 2026-07-15 | 2026-07-25 | QTS-PHX3 DC1 - 6 day w/ Holidays |  | Mechanical | DH1300 | Mechanical | DELETED | TFO CONST | TFO | NICK | DH1100 |
| QTS - 9160 | **DELETED** TFO Scope // DH 1300 - 1301 Mechanical Gallery / CDU Unit 4" Mechanical Connections Lineup - C - D | 7d | 2026-07-14 A | 2026-07-14 A | QTS-1020 | 100% | 2026-07-15 | 2026-07-22 | QTS-PHX3 DC1 - 6 day w/ Holidays |  | Mechanical | DH1300 | Mechanical | DELETED | TFO CONST | TFO | NICK | DH1100 |
| QTS - 9170 | **DELETED** TFO Scope // DH 1300 - 1301 Mechanical Gallery / CDU Unit 4" Mechanical Connections Lineup - E - F | 7d | 2026-07-14 A | 2026-07-14 A | QTS-1020 | 100% | 2026-07-15 | 2026-07-22 | QTS-PHX3 DC1 - 6 day w/ Holidays |  | Mechanical | DH1300 | Mechanical | DELETED | TFO CONST | TFO | NICK | DH1100 |
| QTS - 9180 | **DELETED** TFO Scope // DH 1300 / Lineup A - B / Hang Stainless Steel 6" Fan Wall - QCool | 9d | 2026-07-14 A | 2026-07-14 A | QTS-1020 | 100% | 2026-07-16 | 2026-07-25 | QTS-PHX3 DC1 - 6 day w/ Holidays | 01ADMIN | Mechanical | DH1300 | Mechanical | DELETED | TFO CONST | TFO | NICK | DH1100 |
| QTS - 9240 | **DELETED** TFO Scope // DH 1300 - 1301 Mechanical Gallery / Install OH Technical Loop Hangers | 5d | 2026-07-14 A | 2026-07-14 A | QTS-1020 | 100% | 2026-07-15 | 2026-07-20 | QTS-PHX3 DC1 - 6 day w/ Holidays |  | Mechanical | DH1300 | Mechanical | DELETED | TFO CONST | TFO | NICK | DH1100 |
| QTS - 9250 | **DELETED** TFO Scope // DH 1300 / Lineup A - B / Install QCool Arms | 5d | 2026-07-14 A | 2026-07-14 A | QTS-1020 | 100% | 2026-08-05 | 2026-08-10 | QTS-PHX3 DC1 - 6 day w/ Holidays |  | Electrical | DH1300 |  | DELETED | TFO CONST | TFO | NICK | DH1100 |
| QTS - 9260 | **DELETED** TFO Scope // DH 1300 / Lineup A - B / Install Power Cable Tray Racks | 4d | 2026-07-14 A | 2026-07-14 A | QTS-1020 | 100% | 2026-08-22 | 2026-08-26 | QTS-PHX3 DC1 - 6 day w/ Holidays |  | LV | DH1300 |  | DELETED | TFO CONST | TFO | NICK | DH1100 |
| QTS - 9270 | **DELETED** TFO Scope // DH 1300 / Lineup A - B / Install Power Cable Tray | 15d | 2026-07-14 A | 2026-07-14 A | QTS-1020 | 100% | 2026-08-27 | 2026-09-14 | QTS-PHX3 DC1 - 6 day w/ Holidays |  | LV | DH1300 |  | DELETED | TFO CONST | TFO | NICK | DH1100 |
| QTS - 9280 | **DELETED** TFO Scope // DH 1300 / Lineup A - B / Install OH Trapeze - Screen Wall to CODs | 3d | 2026-07-14 A | 2026-07-14 A | QTS-1020 | 100% | 2026-07-15 | 2026-07-17 | QTS-PHX3 DC1 - 6 day w/ Holidays |  | Electrical | DH1300 | Electrical | DELETED | TFO CONST | TFO | NICK | DH1100 |
| QTS - 9330 | **DELETED** TFO Scope // DH 1300 / Lineup C - D / Install Stainless Steel Piping Hangers | 4d | 2026-07-14 A | 2026-07-14 A | QTS-1020 | 100% | 2026-07-15 | 2026-07-18 | QTS-PHX3 DC1 - 6 day w/ Holidays | 01ADMIN | Mechanical | DH1300 | Mechanical | DELETED | TFO CONST | TFO | NICK | DH1100 |
| QTS - 9360 | **DELETED** TFO Scope // DH 1300 / Lineup C - D / Set RPP # 12 Units | 5d | 2026-07-14 A | 2026-07-14 A | QTS-1020 | 100% | 2026-07-15 | 2026-07-20 | QTS-PHX3 DC1 - 6 day w/ Holidays |  | Electrical | DH1300 | Mechanical | DELETED | TFO CONST | TFO | NICK | DH1100 |
| QTS - 9370 | **DELETED** TFO Scope // DH 1300 / Lineup C - D / Raise HAC, QCool & Trays | 6d | 2026-07-14 A | 2026-07-14 A | QTS-1020 | 100% | 2026-07-30 | 2026-08-05 | QTS-PHX3 DC1 - 6 day w/ Holidays |  | Build Out | DH1300 |  | DELETED | TFO CONST | TFO | NICK | DH1100 |
| QTS - 9380 | **DELETED** TFO Scope // DH 1300 / Lineup C - D / Install OH Trapeze - Screen Wall to RPPs | 3d | 2026-07-14 A | 2026-07-14 A | QTS-1020 | 100% | 2026-07-15 | 2026-07-17 | QTS-PHX3 DC1 - 6 day w/ Holidays |  | Electrical | DH1300 | Electrical | DELETED | TFO CONST | TFO | NICK | DH1100 |
| QTS - 9400 | **DELETED** TFO Scope // DH 1300 / Lineup C - D / Pull MC Feeders - CODs to RPPs | 12d | 2026-07-14 A | 2026-07-14 A | QTS-1020 | 100% | 2026-07-22 | 2026-08-04 | QTS-PHX3 DC1 - 6 day w/ Holidays |  | Electrical | DH1300 | Oscar Armenta | DELETED | TFO CONST | TFO | NICK | DH1100 |
| QTS - 9420 | **DELETED** TFO Scope // DH 1300 / Lineup C - D / Terminate Feeder at RPPs | 5d | 2026-07-14 A | 2026-07-14 A | QTS-1020 | 100% | 2026-08-12 | 2026-08-17 | QTS-PHX3 DC1 - 6 day w/ Holidays |  | Electrical | DH1300 |  | DELETED | TFO CONST | TFO | NICK | DH1100 |
| QTS - 9430 | **DELETED** TFO Scope // DH 1300 / Lineup C - D / Rough-In I&C | 10d | 2026-07-14 A | 2026-07-14 A | QTS-1020 | 100% | 2026-07-15 | 2026-07-25 | QTS-PHX3 DC1 - 6 day w/ Holidays |  | LV | DH1300 | Low Voltage | DELETED | TFO CONST | TFO | NICK | DH1100 |
| QTS - 9440 | **DELETED** TFO Scope // DH 1300 / Lineup C - D / Install Fire Alarm & Security | 7d | 2026-07-14 A | 2026-07-14 A | QTS-1020 | 100% | 2026-08-24 | 2026-08-31 | QTS-PHX3 DC1 - 6 day w/ Holidays |  | Electrical | DH1300 |  | DELETED | TFO CONST | TFO | NICK | DH1100 |
| QTS - 9460 | **DELETED** TFO Scope // DH 1300 / Lineup C - D / Terminate - BMS & EPMS Connections | 7d | 2026-07-14 A | 2026-07-14 A | QTS-1020 | 100% | 2026-09-22 | 2026-09-29 | QTS-PHX3 DC1 - 6 day w/ Holidays |  | LV | DH1300 |  | DELETED | TFO CONST | TFO | NICK | DH1100 |
| QTS - 9470 | **DELETED** TFO Scope // DH 1300 / Lineup C - D / Clean Walk & PEI - Electrical & Controls | 2d | 2026-07-14 A | 2026-07-14 A | QTS-1020 | 100% | 2026-10-01 | 2026-10-02 | QTS-PHX3 DC1 - 6 day w/ Holidays |  | Electrical | DH1300 |  | DELETED | TFO CONST | TFO | NICK | DH1100 |
| QTS - 9480 | **DELETED** TFO Scope // DH 1300 / Lineup C - D / Hang Stainless Steel 6" Fan Wall - QCool | 9d | 2026-07-14 A | 2026-07-14 A | QTS-1020 | 100% | 2026-07-21 | 2026-07-30 | QTS-PHX3 DC1 - 6 day w/ Holidays | 01ADMIN | Mechanical | DH1300 | Mechanical | DELETED | TFO CONST | TFO | NICK | DH1100 |
| QTS - 9500 | **DELETED** TFO Scope // DH 1300 / Lineup C - D / Install QCool Arms | 5d | 2026-07-14 A | 2026-07-14 A | QTS-1020 | 100% | 2026-08-11 | 2026-08-15 | QTS-PHX3 DC1 - 6 day w/ Holidays |  | Electrical | DH1300 |  | DELETED | TFO CONST | TFO | NICK | DH1100 |
| QTS - 9530 | **DELETED** TFO Scope // DH 1300 / Lineup C - D / Install OH Trapeze - Screen Wall to CODs | 3d | 2026-07-14 A | 2026-07-14 A | QTS-1020 | 100% | 2026-07-15 | 2026-07-17 | QTS-PHX3 DC1 - 6 day w/ Holidays |  | Electrical | DH1300 | Electrical | DELETED | TFO CONST | TFO | NICK | DH1100 |
| QTS - 9560 | **DELETED** TFO Scope // DH 1300 / Lineup E - F / Install Stainless Steel Piping Hangers | 4d | 2026-07-14 A | 2026-07-14 A | QTS-1020 | 100% | 2026-07-15 | 2026-07-18 | QTS-PHX3 DC1 - 6 day w/ Holidays | 01ADMIN | Mechanical | DH1300 | Mechanical | DELETED | TFO CONST | TFO | NICK | DH1100 |
| QTS - 9590 | **DELETED** TFO Scope // DH 1300 / Lineup E - F / Set RPP # 12 Units | 5d | 2026-07-14 A | 2026-07-14 A | QTS-1020 | 100% | 2026-07-15 | 2026-07-20 | QTS-PHX3 DC1 - 6 day w/ Holidays |  | Electrical | DH1300 | Mechanical | DELETED | TFO CONST | TFO | NICK | DH1100 |
| QTS - 9600 | **DELETED** TFO Scope // DH 1300 / Lineup E - F / Raise HAC, QCool & Trays | 6d | 2026-07-14 A | 2026-07-14 A | QTS-1020 | 100% | 2026-07-31 | 2026-08-06 | QTS-PHX3 DC1 - 6 day w/ Holidays |  | Build Out | DH1300 |  | DELETED | TFO CONST | TFO | NICK | DH1100 |
| QTS - 9610 | **DELETED** TFO Scope // DH 1300 / Lineup E - F / Install OH Trapeze - Screen Wall to RPPs | 3d | 2026-07-14 A | 2026-07-14 A | QTS-1020 | 100% | 2026-07-15 | 2026-07-17 | QTS-PHX3 DC1 - 6 day w/ Holidays |  | Electrical | DH1300 | Electrical | DELETED | TFO CONST | TFO | NICK | DH1100 |
| QTS - 9630 | **DELETED** TFO Scope // DH 1300 / Lineup E - F / Pull MC Feeders - CODs to RPPs | 12d | 2026-07-14 A | 2026-07-14 A | QTS-1020 | 100% | 2026-07-25 | 2026-08-07 | QTS-PHX3 DC1 - 6 day w/ Holidays |  | Electrical | DH1300 | Oscar Armenta | DELETED | TFO CONST | TFO | NICK | DH1100 |
| QTS - 9650 | **DELETED** TFO Scope // DH 1300 / Lineup E - F / Terminate Feeders RPPs | 5d | 2026-07-14 A | 2026-07-14 A | QTS-1020 | 100% | 2026-08-13 | 2026-08-18 | QTS-PHX3 DC1 - 6 day w/ Holidays |  | Electrical | DH1300 |  | DELETED | TFO CONST | TFO | NICK | DH1100 |
| QTS - 9660 | **DELETED** TFO Scope // DH 1300 / Lineup E - F / Rough-In I&C | 10d | 2026-07-14 A | 2026-07-14 A | QTS-1020 | 100% | 2026-07-15 | 2026-07-25 | QTS-PHX3 DC1 - 6 day w/ Holidays |  | LV | DH1300 | Low Voltage | DELETED | TFO CONST | TFO | NICK | DH1100 |
| QTS - 9670 | **DELETED** TFO Scope // DH 1300 / Lineup E - F / Install Fire Alarm & Security | 7d | 2026-07-14 A | 2026-07-14 A | QTS-1020 | 100% | 2026-08-25 | 2026-09-01 | QTS-PHX3 DC1 - 6 day w/ Holidays |  | Electrical | DH1300 |  | DELETED | TFO CONST | TFO | NICK | DH1100 |
| QTS - 9690 | **DELETED** TFO Scope // DH 1300 / Lineup E - F / Terminate - BMS & EPMS Connections | 7d | 2026-07-14 A | 2026-07-14 A | QTS-1020 | 100% | 2026-09-28 | 2026-10-05 | QTS-PHX3 DC1 - 6 day w/ Holidays |  | LV | DH1300 |  | DELETED | TFO CONST | TFO | NICK | DH1100 |
| QTS - 9700 | **DELETED** TFO Scope // DH 1300 / Lineup E - F / Clean Walk & PEI - Electrical & Controls | 2d | 2026-07-14 A | 2026-07-14 A | QTS-1020 | 100% | 2026-10-03 | 2026-10-05 | QTS-PHX3 DC1 - 6 day w/ Holidays |  | Electrical | DH1300 |  | DELETED | TFO CONST | TFO | NICK | DH1100 |
| QTS - 9710 | **DELETED** TFO Scope // DH 1300 / Lineup E - F / Hang Stainless Steel 6" Fan Wall - QCool | 9d | 2026-07-14 A | 2026-07-14 A | QTS-1020 | 100% | 2026-07-25 | 2026-08-04 | QTS-PHX3 DC1 - 6 day w/ Holidays | 01ADMIN | Mechanical | DH1300 | Mechanical | DELETED | TFO CONST | TFO | NICK | DH1100 |
| QTS - 9730 | **DELETED** TFO Scope // DH 1300 / Lineup E - F / Install QCool Arms | 5d | 2026-07-14 A | 2026-07-14 A | QTS-1020 | 100% | 2026-08-17 | 2026-08-21 | QTS-PHX3 DC1 - 6 day w/ Holidays |  | Electrical | DH1300 |  | DELETED | TFO CONST | TFO | NICK | DH1100 |
| QTS - 9760 | **DELETED** TFO Scope // DH 1300 / Lineup E - F / Install OH Trapeze - Screen Wall to CODs | 3d | 2026-07-14 A | 2026-07-14 A | QTS-1020 | 100% | 2026-07-15 | 2026-07-17 | QTS-PHX3 DC1 - 6 day w/ Holidays |  | Electrical | DH1300 | Electrical | DELETED | TFO CONST | TFO | NICK | DH1100 |
| QTS - 9790 | **DELETED** TFO Scope // DH 1300 - 1303 Mechanical Gallery / Pull LV Main / IDF Cabinet to Basket Tray | 7d | 2026-07-14 A | 2026-07-14 A | QTS-1020 | 100% | 2026-07-15 | 2026-07-22 | QTS-PHX3 DC1 - 6 day w/ Holidays |  | LV | DH1300 | Low Voltage | DELETED | TFO CONST | TFO | NICK | DH1100 |

Notes:
- QTS - 8870: allucent_notes_20251216_165335: Jason Johnston on 2025-12-09 20:32: Need update from team / Scott Masterson on 2025-12-16 16:34: Late start due to AF steel access needed. / allucent_notes_20251209_203830: Jason Johnston on 2025-12-09 20:32: Need update from team / allucent_notes_20251230_164549: Jason Johnston on 2025-12-09 20:32: Need update from team / Scott Masterson on 2025-12-16 16:34: Late start due to AF steel access needed. / David Wiltberger on 2025-12-30 16:32: no update / allucent_notes: 2025-12-09 20:32 - User: Jason Johnston - Date Added: 2025-12-09 20:32 - Note: Need update from team / 2025-12-16 16:34 - User: Scott Masterson - Date Added: 2025-12-16 16:34 - Note: Late start due to AF steel access needed. / 2025-12-30 16:32 - User: D

| ID | Activity | Duration | Start | Finish | Predecessors | Complete | Planned start | Planned finish | Calendar | Layton Discipline | Location | Layton Super | DELETED | TFO-CONST ONLY | Contract | NICK | D | If Not Started or Finished Why? | Allucent CSI Group | Project Section | Baseline | Phase-1-1 | Project Section-1 | Level | Notes | Fragnet | Fragnet Responsible Party | Last Period Finish | Last Period Start | Note/Comments |
| --- | --- | --- | --- | --- | --- | --- | --- | --- | --- | --- | --- | --- | --- | --- | --- | --- | --- | --- | --- | --- | --- | --- | --- | --- | --- | --- | --- | --- | --- | --- |
| QTS - 9800 | **DELETED** TFO Scope // DH 1300 - 1303 Mechanical Gallery / Terminate & Torque - CDU Connections | 5d | 2026-07-14 A | 2026-07-14 A | QTS-1020 | 100% | 2026-07-15 | 2026-07-20 | QTS-PHX3 DC1 - 6 day w/ Holidays | Electrical | DH1300 | Electrical | DELETED | TFO CONST | TFO | NICK | DH1100 |  |  |  |  |  |  |  |  |  |  |  |  |  |
| QTS - 9810 | **DELETED** TFO Scope // DH 1300 - 1303 Mechanical Gallery / Install OH 8" Technical Loop CDU Piping | 9d | 2026-07-14 A | 2026-07-14 A | QTS-1020 | 100% | 2026-07-15 | 2026-07-24 | QTS-PHX3 DC1 - 6 day w/ Holidays | Mechanical | DH1300 | Mechanical | DELETED | TFO CONST | TFO | NICK | DH1100 |  |  |  |  |  |  |  |  |  |  |  |  |  |
| QTS - 9820 | **DELETED** TFO Scope // DH 1300 - 1303 Mechanical Gallery / CDU Unit 4" Mechanical Connections Lineup - A - B | 7d | 2026-07-14 A | 2026-07-14 A | QTS-1020 | 100% | 2026-07-15 | 2026-07-22 | QTS-PHX3 DC1 - 6 day w/ Holidays | Mechanical | DH1300 | Mechanical | DELETED | TFO CONST | TFO | NICK | DH1100 |  |  |  |  |  |  |  |  |  |  |  |  |  |
| QTS - 9830 | **DELETED** TFO Scope // DH 1300 - 1303 Mechanical Gallery / Pull Branches From MOD-03 to CDUs | 8d | 2026-07-14 A | 2026-07-14 A | QTS-1020 | 100% | 2026-07-15 | 2026-07-23 | QTS-PHX3 DC1 - 6 day w/ Holidays | Electrical | DH1300 | Electrical | DELETED | TFO CONST | TFO | NICK | DH1100 |  |  |  |  |  |  |  |  |  |  |  |  |  |
| QTS - 9840 | **DELETED** TFO Scope // DH 1300 - 1303 Mechanical Gallery / Fill & Flush Technical Loop A - B | 10d | 2026-07-14 A | 2026-07-14 A | QTS-1020 | 100% | 2026-07-15 | 2026-07-24 | QTS-PHX3 DC1 - 7 day No Holidays | Mechanical | DH1300 | Mechanical | DELETED | TFO CONST | TFO | NICK | DH1100 |  |  |  |  |  |  |  |  |  |  |  |  |  |
| QTS - 9850 | **DELETED** TFO Scope // DH 1300 - 1303 Mechanical Gallery / Clean Walk & PEI - Mechanical | 5d | 2026-07-14 A | 2026-07-14 A | QTS-1020 | 100% | 2026-09-24 | 2026-09-29 | QTS-PHX3 DC1 - 6 day w/ Holidays | Mechanical | DH1300 |  | DELETED | TFO CONST | TFO | NICK | DH1100 |  |  |  |  |  |  |  |  |  |  |  |  |  |
| QTS - 9860 | **DELETED** TFO Scope // DH 1300 - 1303 Mechanical Gallery / Detail & Fabricate CDU Mechanical Connections | 10d | 2026-07-14 A | 2026-07-14 A | QTS-1020 | 100% | 2026-07-15 | 2026-07-25 | QTS-PHX3 DC1 - 6 day w/ Holidays | Mechanical | DH1300 | Mechanical | DELETED | TFO CONST | TFO | NICK | DH1100 |  |  |  |  |  |  |  |  |  |  |  |  |  |
| QTS - 9870 | **DELETED** TFO Scope // DH 1300 - 1303 Mechanical Gallery / CDU Unit 4" Mechanical Connections Lineup - C - D | 7d | 2026-07-14 A | 2026-07-14 A | QTS-1020 | 100% | 2026-07-15 | 2026-07-22 | QTS-PHX3 DC1 - 6 day w/ Holidays | Mechanical | DH1300 | Mechanical | DELETED | TFO CONST | TFO | NICK | DH1100 |  |  |  |  |  |  |  |  |  |  |  |  |  |
| QTS - 9880 | **DELETED** TFO Scope // DH 1300 - 1303 Mechanical Gallery / CDU Unit 4" Mechanical Connections Lineup - E - F | 7d | 2026-07-14 A | 2026-07-14 A | QTS-1020 | 100% | 2026-07-15 | 2026-07-22 | QTS-PHX3 DC1 - 6 day w/ Holidays | Mechanical | DH1300 | Mechanical | DELETED | TFO CONST | TFO | NICK | DH1100 |  |  |  |  |  |  |  |  |  |  |  |  |  |
| QTS - 9890 | **DELETED** TFO Scope // DH 1300 - 1303 Mechanical Gallery / Install OH Technical Loop Hangers | 5d | 2026-07-14 A | 2026-07-14 A | QTS-1020 | 100% | 2026-07-15 | 2026-07-20 | QTS-PHX3 DC1 - 6 day w/ Holidays | Mechanical | DH1300 | Mechanical | DELETED | TFO CONST | TFO | NICK | DH1100 |  |  |  |  |  |  |  |  |  |  |  |  |  |
| QTS - 9900 | **DELETED** TFO Scope // DH 1300 - 1303 Mechanical Gallery / Clean Walk & PEI - Electrical | 2d | 2026-07-14 A | 2026-07-14 A | QTS-1020 | 100% | 2026-08-05 | 2026-08-06 | QTS-PHX3 DC1 - 6 day w/ Holidays | Electrical | DH1300 |  | DELETED | TFO CONST | TFO | NICK | DH1100 |  |  |  |  |  |  |  |  |  |  |  |  |  |
| QTS - 9910 | **DELETED** TFO Scope // DH 1300 - 1303 Mechanical Gallery / BMS & EPMS Terminations | 2d | 2026-07-14 A | 2026-07-14 A | QTS-1020 | 100% | 2026-07-15 | 2026-07-16 | QTS-PHX3 DC1 - 6 day w/ Holidays | Electrical | DH1300 | Electrical | DELETED | TFO CONST | TFO | NICK | DH1100 |  |  |  |  |  |  |  |  |  |  |  |  |  |
| QTS - 9920 | **DELETED** TFO Scope // DH 1300 - 1301 Mechanical Gallery / Clean Walk & PEI - Electrical | 2d | 2026-07-14 A | 2026-07-14 A | QTS-1020 | 100% | 2026-08-03 | 2026-08-04 | QTS-PHX3 DC1 - 6 day w/ Holidays | Electrical | DH1300 |  | DELETED | TFO CONST | TFO | NICK | DH1100 |  |  |  |  |  |  |  |  |  |  |  |  |  |
| QTS - 9930 | **DELETED** TFO Scope // DH 1300 - 1301 Mechanical Gallery / BMS & EPMS Terminations | 2d | 2026-07-14 A | 2026-07-14 A | QTS-1020 | 100% | 2026-07-15 | 2026-07-16 | QTS-PHX3 DC1 - 6 day w/ Holidays | LV | DH1300 | Electrical | DELETED | TFO CONST | TFO | NICK | DH1100 |  |  |  |  |  |  |  |  |  |  |  |  |  |
| QTS - 9960 | **DELETED** TFO Scope // DH 1300 / Lineup E - F / Pull RPP Whips - RPPs to Racks | 15d | 2026-07-14 A | 2026-07-14 A | QTS-1020 | 100% | 2026-10-08 | 2026-10-24 | QTS-PHX3 DC1 - 6 day w/ Holidays | Electrical | DH1300 |  | DELETED | TFO CONST | TFO | NICK | DH1100 |  |  |  |  |  |  |  |  |  |  |  |  |  |
| QTS - 9970 | **DELETED** TFO Scope // DH 1300 / Lineup E - F / Terminate Whips at RPP | 10d | 2026-07-14 A | 2026-07-14 A | QTS-1020 | 100% | 2026-10-17 | 2026-10-28 | QTS-PHX3 DC1 - 6 day w/ Holidays | Electrical | DH1300 |  | DELETED | TFO CONST | TFO | NICK | DH1100 |  |  |  |  |  |  |  |  |  |  |  |  |  |
| QTS - 9980 | **DELETED** TFO Scope // DH 1300 - 1303 Mechanical Gallery / Final Connection to CDU Lineup - A - B | 5d | 2026-07-14 A | 2026-07-14 A | QTS-1020 | 100% | 2026-07-15 | 2026-07-20 | QTS-PHX3 DC1 - 6 day w/ Holidays | Mechanical | DH1300 | Mechanical | DELETED | TFO CONST | TFO | NICK | DH1100 |  |  |  |  |  |  |  |  |  |  |  |  |  |
| QTS - 9990 | **DELETED** TFO Scope // DH 1300 - 1303 Mechanical Gallery / Fill & Flush Technical Loop C - D | 9d | 2026-07-14 A | 2026-07-14 A | QTS-1020 | 100% | 2026-07-15 | 2026-07-23 | QTS-PHX3 DC1 - 7 day No Holidays | Mechanical | DH1300 | Mechanical | DELETED | TFO CONST | TFO | NICK | DH1100 |  |  |  |  |  |  |  |  |  |  |  |  |  |
| QTS-1003070 | **DELETED** DH 2200 // Install Structural Ceiling Grid - South | 10d | 2026-07-14 A | 2026-07-14 A | QTS-1020 | 100% | 2026-07-15 | 2026-07-25 | QTS-PHX3 DC1 - 6 day w/ Holidays | Build Out | DH2200 | Ed Carter | DELETED |  | BAB |  | DH1100 | Waiting on MEP | 01ADMIN | Construction | IGMP | Phase 2 | Construction |  |  |  |  |  |  |  |
| QTS-1003550 | **DELETED** DH 1200 / Mechanical Gallery 1203 // Install Wall Base | 3d | 2026-07-14 A | 2026-07-14 A | QTS-1020 | 100% | 2026-07-15 | 2026-07-17 | QTS-PHX3 DC1 - 6 day w/ Holidays | Build Out | DH1200 | Ed Carter | DELETED |  | BAB |  | DH1100 |  | 01ADMIN | Construction | IGMP | Phase 2 | Construction |  |  |  |  |  |  |  |
| QTS-1003580 | **DELETED** DH 2300 // Install Structural Ceiling Grid - South | 7d | 2026-07-14 A | 2026-07-14 A | QTS-1020 | 100% | 2026-07-29 | 2026-08-05 | QTS-PHX3 DC1 - 6 day w/ Holidays | Build Out | DH2300 | Jason Hendley | DELETED |  | BAB |  | DH1100 |  | 01ADMIN | Construction | IGMP | Phase 3 | Construction |  |  |  |  |  |  |  |
| QTS-1003750 | **DELETED** DH 2300 / Mechanical Gallery 2303 // Prime & Paint Fan Wall - DH Side | 2d | 2026-07-14 A | 2026-07-14 A | QTS-1020 | 100% | 2026-07-15 | 2026-07-16 | QTS-PHX3 DC1 - 6 day w/ Holidays | Build Out | DH2300 | Jason Hendley | DELETED |  | BAB |  | DH1100 |  |  | Construction | IGMP | Phase 3 | Construction |  |  |  |  |  |  |  |
| QTS-1003800 | **DELETED** DH 1300 // Install Structural Ceiling Grid - South | 10d | 2026-07-14 A | 2026-07-14 A | QTS-1020 | 100% | 2026-07-24 | 2026-08-04 | QTS-PHX3 DC1 - 6 day w/ Holidays | Build Out | DH1300 | Jason Hendley | DELETED |  | BAB |  | DH1100 |  | 01ADMIN | Construction | IGMP | Phase 3 | Construction |  |  |  |  |  |  |  |
| QTS-1008800 | **DELETED** DH 2300 / Mechanical Gallery 2301 // Install OH EPMS/BMS Conduit & Grounding | 10d | 2026-07-14 A | 2026-07-14 A | QTS-1020 | 100% | 2026-07-15 | 2026-07-25 | QTS-PHX3 DC1 - 6 day w/ Holidays | Electrical | DH2300 | Oscar Armenta | DELETED |  | BAB |  | DH1100 |  | 01ADMIN | Construction | IGMP | Phase 3 | Construction |  |  |  |  |  |  |  |
| QTS-1008860 | **DELETED** DH 1300 / Mechanical Gallery 1301 // Install OH EPMS/BMS Conduit & Grounding | 10d | 2026-07-14 A | 2026-07-14 A | QTS-1020 | 100% | 2026-07-15 | 2026-07-25 | QTS-PHX3 DC1 - 6 day w/ Holidays | Electrical | DH1300 | Oscar Armenta | DELETED |  | BAB |  | DH1100 |  | 01ADMIN | Construction | IGMP | Phase 3 | Construction |  |  |  |  |  |  |  |
| QTS-1010580 | **DELETED** DH 2300 / Mechanical Gallery 2303 // Pull Fiber from MDF to DCIM 2303 | 3d | 2026-07-14 A | 2026-07-14 A | QTS-1020 | 100% | 2026-08-07 | 2026-08-10 | QTS-PHX3 DC1 - 6 day w/ Holidays | LV | DH2300 |  | DELETED |  | BAB |  | DH1100 |  |  | Construction | IGMP | Phase 2 | Construction |  |  |  |  |  |  |  |
| QTS-1010590 | **DELETED** DH 2300 / Mechanical Gallery 2303 // Pull BMS & EPMS Cable to DCIM 2303 | 1d | 2026-07-14 A | 2026-07-14 A | QTS-1020 | 100% | 2026-08-11 | 2026-08-11 | QTS-PHX3 DC1 - 6 day w/ Holidays | LV | DH2300 |  | DELETED |  | BAB |  | DH1100 |  |  | Construction | IGMP | Phase 2 | Construction |  |  |  |  |  |  |  |
| QTS-1010600 | **DELETED** DH 2300 / Mechanical Gallery 2303 // Terminate and Test Fiber from MDF to DCIM 2303 | 3d | 2026-07-14 A | 2026-07-14 A | QTS-1020 | 100% | 2026-08-11 | 2026-08-13 | QTS-PHX3 DC1 - 6 day w/ Holidays | LV | DH2300 |  | DELETED |  | BAB |  | DH1100 |  |  | Construction | IGMP | Phase 2 | Construction |  |  |  |  |  |  |  |
| QTS-1010610 | **DELETED** DH 1300 / Mechanical Gallery 1303 // Pull Fiber from MDF to DCIM 1303 | 3d | 2026-07-14 A | 2026-07-14 A | QTS-1020 | 100% | 2026-08-17 | 2026-08-19 | QTS-PHX3 DC1 - 6 day w/ Holidays | LV | DH1300 |  | DELETED |  | BAB |  | DH1100 |  |  | Construction | IGMP | Phase 2 | Construction |  |  |  |  |  |  |  |
| QTS-1010620 | **DELETED** DH 1300 / Mechanical Gallery 1303 // Pull BMS & EPMS Cable to DCIM 1303 | 1d | 2026-07-14 A | 2026-07-14 A | QTS-1020 | 100% | 2026-08-20 | 2026-08-20 | QTS-PHX3 DC1 - 6 day w/ Holidays | LV | DH1300 |  | DELETED |  | BAB |  | DH1100 |  |  | Construction | IGMP | Phase 2 | Construction |  |  |  |  |  |  |  |
| QTS-1010630 | **DELETED** DH 1300 / Mechanical Gallery 1303 // Terminate and Test Fiber from MDF to DCIM 1303 | 3d | 2026-07-14 A | 2026-07-14 A | QTS-1020 | 100% | 2026-08-20 | 2026-08-22 | QTS-PHX3 DC1 - 6 day w/ Holidays | LV | DH1300 |  | DELETED |  | BAB |  | DH1100 |  |  | Construction | IGMP | Phase 2 | Construction |  |  |  |  |  |  |  |
| QTS-1010670 | **DELETED** DH 2300 / Electrical Gallery 2302 // Pull Fiber from MDF to DCIM 2302 | 3d | 2026-07-14 A | 2026-07-14 A | QTS-1020 | 100% | 2026-07-15 | 2026-07-17 | QTS-PHX3 DC1 - 6 day w/ Holidays | LV | DH2300 | Low Voltage | DELETED |  | BAB |  | DH1100 |  |  | Construction | IGMP | Phase 2 | Construction |  |  |  |  |  |  |  |
| QTS-1010680 | **DELETED** DH 2300 / Electrical Gallery 2302 // Terminate and Test Fiber from MDF to DCIM 2302 | 3d | 2026-07-14 A | 2026-07-14 A | QTS-1020 | 100% | 2026-07-18 | 2026-07-21 | QTS-PHX3 DC1 - 6 day w/ Holidays | LV | DH2300 | Low Voltage | DELETED |  | BAB |  | DH1100 |  |  | Construction | IGMP | Phase 2 | Construction |  |  |  |  |  |  |  |
| QTS-1010690 | **DELETED** DH 2300 / Electrical Gallery 2302 // Pull BMS & EPMS Cable to DCIM 2302 | 1d | 2026-07-14 A | 2026-07-14 A | QTS-1020 | 100% | 2026-07-22 | 2026-07-22 | QTS-PHX3 DC1 - 6 day w/ Holidays | LV | DH2300 | Low Voltage | DELETED |  | BAB |  | DH1100 |  |  | Construction | IGMP | Phase 2 | Construction |  |  |  |  |  |  |  |
| QTS-1010700 | **DELETED** DH 1300 / Electrical Gallery 1302 // Pull Fiber from MDF to DCIM 1302 | 3d | 2026-07-14 A | 2026-07-14 A | QTS-1020 | 100% | 2026-07-29 | 2026-07-31 | QTS-PHX3 DC1 - 6 day w/ Holidays | LV | DH1300 |  | DELETED |  | BAB |  | DH1100 |  |  | Construction | IGMP | Phase 2 | Construction |  |  |  |  |  |  |  |
| QTS-1010710 | **DELETED** DH 1300 / Electrical Gallery 1302 // Terminate and Test Fiber from MDF to DCIM 1302 | 3d | 2026-07-14 A | 2026-07-14 A | QTS-1020 | 100% | 2026-08-01 | 2026-08-04 | QTS-PHX3 DC1 - 6 day w/ Holidays | LV | DH1300 |  | DELETED |  | BAB |  | DH1100 |  |  | Construction | IGMP | Phase 2 | Construction |  |  |  |  |  |  |  |
| QTS-1010720 | **DELETED** DH 1300 / Electrical Gallery 1302 // Pull BMS & EPMS Cable to DCIM 1302 | 1d | 2026-07-14 A | 2026-07-14 A | QTS-1020 | 100% | 2026-08-05 | 2026-08-05 | QTS-PHX3 DC1 - 6 day w/ Holidays | LV | DH1300 |  | DELETED |  | BAB |  | DH1100 |  |  | Construction | IGMP | Phase 2 | Construction |  |  |  |  |  |  |  |
| QTS-1010950 | **DELETED** DH 2200 / Mechanical Gallery 2203 // Install Provision Switches DCIM 2203 | 2d | 2026-07-14 A | 2026-07-14 A | QTS-1020 | 100% | 2026-07-15 | 2026-07-16 | QTS-PHX3 DC1 - 6 day w/ Holidays | Electrical | DH2200 | Oscar Armenta | DELETED |  | BAB |  | DH1100 |  |  | Construction | IGMP | Phase 2 | Construction |  |  |  |  |  |  |  |
| QTS-1010960 | **DELETED** DH 2200 / Mechanical Gallery 2203 // Load Project and Verify Communication DCIM 2203 | 2d | 2026-07-14 A | 2026-07-14 A | QTS-1020 | 100% | 2026-07-17 | 2026-07-18 | QTS-PHX3 DC1 - 6 day w/ Holidays | Electrical | DH2200 | Oscar Armenta | DELETED |  | BAB |  | DH1100 |  |  | Construction | IGMP | Phase 2 | Construction |  |  |  |  |  |  |  |
| QTS-1010970 | **DELETED** DH 2300 / Mechanical Gallery 2303 // Install Provision Switches DCIM 2303 | 2d | 2026-07-14 A | 2026-07-14 A | QTS-1020 | 100% | 2026-08-15 | 2026-08-17 | QTS-PHX3 DC1 - 6 day w/ Holidays | Electrical | DH2300 |  | DELETED |  | BAB |  | DH1100 |  |  | Construction | IGMP | Phase 2 | Construction |  |  |  |  |  |  |  |
| QTS-1010980 | **DELETED** DH 2300 / Mechanical Gallery 2303 // Load Project and Verify Communication DCIM 2303 | 2d | 2026-07-14 A | 2026-07-14 A | QTS-1020 | 100% | 2026-08-18 | 2026-08-19 | QTS-PHX3 DC1 - 6 day w/ Holidays | Electrical | DH2300 |  | DELETED |  | BAB |  | DH1100 |  |  | Construction | IGMP | Phase 2 | Construction |  |  |  |  |  |  |  |
| QTS-1010990 | **DELETED** DH 1300 / Mechanical Gallery 1303 // Install Provision Switches DCIM 1303 | 2d | 2026-07-14 A | 2026-07-14 A | QTS-1020 | 100% | 2026-08-26 | 2026-08-27 | QTS-PHX3 DC1 - 6 day w/ Holidays | Electrical | DH1300 |  | DELETED |  | BAB |  | DH1100 |  |  | Construction | IGMP | Phase 2 | Construction |  |  |  |  |  |  |  |
| QTS-1011000 | **DELETED** DH 1300 / Mechanical Gallery 1303 // Load Project and Verify Communication DCIM 1303 | 2d | 2026-07-14 A | 2026-07-14 A | QTS-1020 | 100% | 2026-08-28 | 2026-08-29 | QTS-PHX3 DC1 - 6 day w/ Holidays | Electrical | DH1300 |  | DELETED |  | BAB |  | DH1100 |  |  | Construction | IGMP | Phase 2 | Construction |  |  |  |  |  |  |  |
| QTS-1011030 | **DELETED** DH 2300 / Electrical Gallery 2302 // Install Provision Switches DCIM 2302 | 2d | 2026-07-14 A | 2026-07-14 A | QTS-1020 | 100% | 2026-07-28 | 2026-07-29 | QTS-PHX3 DC1 - 6 day w/ Holidays | Electrical | DH2300 | Low Voltage | DELETED |  | BAB |  | DH1100 |  |  | Construction | IGMP | Phase 2 | Construction |  |  |  |  |  |  |  |
| QTS-1011040 | **DELETED** DH 2300 / Electrical Gallery 2302 // Load Project and Verify Communication DCIM 2302 | 2d | 2026-07-14 A | 2026-07-14 A | QTS-1020 | 100% | 2026-07-30 | 2026-07-31 | QTS-PHX3 DC1 - 6 day w/ Holidays | Electrical | DH2300 | Low Voltage | DELETED |  | BAB |  | DH1100 |  |  | Construction | IGMP | Phase 2 | Construction |  |  |  |  |  |  |  |
| QTS-1011050 | **DELETED** DH 1300 / Electrical Gallery 1302 // Install Provision Switches DCIM 1302 | 2d | 2026-07-14 A | 2026-07-14 A | QTS-1020 | 100% | 2026-08-11 | 2026-08-12 | QTS-PHX3 DC1 - 6 day w/ Holidays | Electrical | DH1300 |  | DELETED |  | BAB |  | DH1100 |  |  | Construction | IGMP | Phase 2 | Construction |  |  |  |  |  |  |  |
| QTS-1011060 | **DELETED** DH 1300 / Electrical Gallery 1302 // Load Project and Verify Communication DCIM 1302 | 2d | 2026-07-14 A | 2026-07-14 A | QTS-1020 | 100% | 2026-08-13 | 2026-08-14 | QTS-PHX3 DC1 - 6 day w/ Holidays | Electrical | DH1300 |  | DELETED |  | BAB |  | DH1100 |  |  | Construction | IGMP | Phase 2 | Construction |  |  |  |  |  |  |  |
| QTS-1012290 | **DELETED** Freedom Cafe #0103 // Install Window Shades | 10d | 2026-07-14 A | 2026-07-14 A | QTS-1020 | 100% | 2026-08-18 | 2026-08-28 | QTS-PHX3 DC1 - 6 day w/ Holidays | Build Out | FOH | Ed Carter | DELETED |  | BAB |  | DH1100 |  |  | Construction | IGMP | Phase 1 | Construction | Level 1 |  |  |  |  |  |  |
| QTS-1012340 | **DELETED** DH 2300 / Electrical Gallery 2302 // Pull Wire & Install Devices | 10d | 2026-07-14 A | 2026-07-14 A | QTS-1020 | 100% | 2026-07-15 | 2026-07-25 | QTS-PHX3 DC1 - 6 day w/ Holidays | Electrical | DH2100 | Oscar Armenta | DELETED |  | BAB |  | DH1100 |  | 01ADMIN | Construction | IGMP |  | Construction | Level 2 |  |  |  |  |  |  |
| QTS-1012360 | **DELETED** Vestibule #0100 / Install ACM Panels | 5d | 2026-07-14 A | 2026-07-14 A | QTS-1020 | 100% | 2026-07-15 | 2026-07-20 | QTS-PHX3 DC1 - 6 day w/ Holidays | Build Out | FOH | Freddy Arrizon | DELETED |  | BAB |  | DH1100 | Waiting on MEP |  | Construction | IGMP | Phase 1 | Construction | Level 1 | Waiting on MEP |  |  |  |  |  |
| QTS-1012470 | **DELETED** DH 1300 / Electrical Gallery 1302 // Fragnet to Set 1 Remaining EPMS/BMS Panel | 4d | 2026-07-14 A | 2026-07-14 A | QTS-1020 | 100% | 2026-07-15 | 2026-07-18 | QTS-PHX3 DC1 - 6 day w/ Holidays | Electrical | DH1300 | Oscar Armenta | DELETED |  | BAB |  | DH1100 |  |  | Construction | IGMP | Phase 3 | Construction |  |  | Fragnet | Prime Controls LP |  |  |  |
| QTS-1012510 | **DELETE** Zone 2 Gridline 21-30 / Corridor 2010 // Burnish Floors | 2d | 2026-07-14 A | 2026-07-14 A | QTS-1020 | 100% | 2026-07-15 | 2026-07-16 | QTS-PHX3 DC1 - 6 day w/ Holidays | Build Out |  | Ben Ribble | DELETED |  | BAB |  | DH1100 |  |  | Construction | IGMP |  |  | Level 2 |  |  |  |  |  |  |
| QTS-1013410 | **DELETED** DH 1200 / Data Hall 2200 / Air Test and Balance | 5d | 2026-07-14 A | 2026-07-14 A | QTS-1020 | 100% | 2026-08-10 | 2026-08-14 | **GLOBAL - 6 Day Workweek w/ Basic Holidays |  |  |  | DELETED |  |  |  | DH1100 |  |  |  |  |  |  |  |  |  |  |  |  |  |
| QTS-1013420 | **DELETED** DH 1200 / Data Hall 2200 / L4 Electrical | 18d | 2026-07-14 A | 2026-07-14 A | QTS-1020 | 100% | 2026-08-15 | 2026-09-04 | **GLOBAL - 6 Day Workweek w/ Basic Holidays |  |  |  | DELETED |  |  | NICK | DH1100 |  |  |  |  |  |  |  |  |  |  |  |  |  |
| QTS-1013430 | **DELETED** DH 1200 / Data Hall 2200 / L4 Mechanical | 18d | 2026-07-14 A | 2026-07-14 A | QTS-1020 | 100% | 2026-08-15 | 2026-09-04 | **GLOBAL - 6 Day Workweek w/ Basic Holidays |  |  |  | DELETED |  |  | NICK | DH1100 |  |  |  |  |  |  |  |  |  |  |  |  |  |
| QTS-102520 | **DELETED** DH 2300 // Paint Data Hall / Corridor Wall 2307 (East) - 14x14 Leave Outs | 1d | 2026-07-14 A | 2026-07-14 A | QTS-1020 | 100% | 2026-07-15 | 2026-07-15 | QTS-PHX3 DC1 - 6 day w/ Holidays | Build Out | DH2100 | Jason Hendley | DELETED |  | BAB |  | DH1100 |  | 01ADMIN | Construction | IGMP |  | Construction | Level 2 |  |  |  |  |  |  |
| QTS-11051 | **DELETED** Restrooms #2071 // Plumbing Fixtures Install | 5d | 2026-07-14 A | 2026-07-14 A | QTS-1020 | 100% | 2026-08-05 | 2026-08-10 | QTS-PHX3 DC1 - 6 day w/ Holidays | Mechanical | BOH |  | DELETED |  | BAB |  | DH1100 |  |  | Construction | IGMP | Phase 1 | Construction | Level 2 |  |  |  | 2023-04-14 | 2023-04-13 |  |
| QTS-11061 | **DELETED** Restrooms #2071 // Electrical Trim | 1d | 2026-07-14 A | 2026-07-14 A | QTS-1020 | 100% | 2026-08-05 | 2026-08-05 | QTS-PHX3 DC1 - 6 day w/ Holidays | Electrical | BOH |  | DELETED |  | BAB |  | DH1100 |  |  | Construction | IGMP | Phase 1 | Construction | Level 2 |  |  |  | 2023-04-14 | 2023-04-13 |  |
| QTS-11071 | **DELETED** Restrooms #2071 // Field Measure for Countertops | 1d | 2026-07-14 A | 2026-07-14 A | QTS-1020 | 100% | 2026-08-05 | 2026-08-05 | QTS-PHX3 DC1 - 6 day w/ Holidays | Build Out | BOH | Jake Shimmin | DELETED |  | BAB |  | DH1100 |  |  | Construction | IGMP | Phase 1 | Construction | Level 2 |  |  |  |  |  |  |
| QTS-11081 | **DELETED** Restrooms #2071 // Set Lockers | 2d | 2026-07-14 A | 2026-07-14 A | QTS-1020 | 100% | 2026-08-05 | 2026-08-06 | QTS-PHX3 DC1 - 6 day w/ Holidays | Build Out | BOH | Jake Shimmin | DELETED |  | BAB |  | DH1100 |  |  | Construction | IGMP | Phase 1 | Construction | Level 2 |  |  |  |  |  |  |
| QTS-11441 | **DELETED** Restrooms #2071 // Final Coat of Paint | 1d | 2026-07-14 A | 2026-07-14 A | QTS-1020 | 100% | 2026-08-06 | 2026-08-06 | QTS-PHX3 DC1 - 6 day w/ Holidays | Build Out | BOH | Jake Shimmin | DELETED |  | BAB |  | DH1100 |  |  | Construction | IGMP | Phase 1 | Construction | Level 2 |  |  |  |  |  |  |
| QTS-11451 | **DELETED** Restrooms #2071 // Fabricate & Delivery Countertops | 10d | 2026-07-14 A | 2026-07-14 A | QTS-1020 | 100% | 2026-08-06 | 2026-08-17 | QTS-PHX3 DC1 - 6 day w/ Holidays | Build Out | BOH | Jake Shimmin | DELETED |  | BAB |  | DH1100 |  |  | Construction | IGMP | Phase 1 | Construction | Level 2 |  |  |  |  |  |  |
| QTS-11501 | **DELETED** Restrooms #2071 // Install Mechanical Trim | 1d | 2026-07-14 A | 2026-07-14 A | QTS-1020 | 100% | 2026-08-07 | 2026-08-07 | QTS-PHX3 DC1 - 6 day w/ Holidays | Mechanical | BOH |  | DELETED |  | BAB |  | DH1100 |  |  | Construction | IGMP | Phase 1 | Construction | Level 2 |  |  |  | 2023-04-14 | 2023-04-13 |  |
| QTS-12131 | **DELETED** Restrooms #2071 // Install Restroom Specialties/ ADA Trim | 2d | 2026-07-14 A | 2026-07-14 A | QTS-1020 | 100% | 2026-08-11 | 2026-08-12 | QTS-PHX3 DC1 - 6 day w/ Holidays | Build Out | BOH | Jake Shimmin | DELETED |  | BAB |  | DH1100 |  |  | Construction | IGMP | Phase 1 | Construction | Level 2 |  |  |  | 2023-04-21 | 2023-04-20 |  |
| QTS-12511 | **DELETED** Restrooms #2071 // Set Doors & Hardware | 2d | 2026-07-14 A | 2026-07-14 A | QTS-1020 | 100% | 2026-08-13 | 2026-08-14 | QTS-PHX3 DC1 - 6 day w/ Holidays | Build Out | BOH | Jake Shimmin | DELETED |  | BAB |  | DH1100 |  |  | Construction | IGMP | Phase 1 | Construction | Level 2 |  |  |  | 2023-04-21 | 2023-04-20 |  |
| QTS-13181 | **DELETED** Restrooms #2071 // Set Countertops | 2d | 2026-07-14 A | 2026-07-14 A | QTS-1020 | 100% | 2026-08-18 | 2026-08-19 | QTS-PHX3 DC1 - 6 day w/ Holidays | Build Out | BOH | Jake Shimmin | DELETED |  | BAB |  | DH1100 |  |  | Construction | IGMP | Phase 1 | Construction | Level 2 |  |  |  |  |  |  |
| QTS-13311 | **DELETED** Restrooms #2071 // Install Plumbing Trim at Countertops | 2d | 2026-07-14 A | 2026-07-14 A | QTS-1020 | 100% | 2026-08-20 | 2026-08-21 | QTS-PHX3 DC1 - 6 day w/ Holidays | Mechanical | BOH |  | DELETED |  | BAB |  | DH1100 |  |  | Construction | IGMP | Phase 1 | Construction | Level 2 |  |  |  |  |  |  |
| QTS-13871 | **DELETED** DH 2300 // Install Telecom Sleeves | 3d | 2026-07-14 A | 2026-07-14 A | QTS-1020 | 100% | 2026-07-15 | 2026-07-17 | QTS-PHX3 DC1 - 6 day w/ Holidays | Electrical | DH2300 | Oscar Armenta | DELETED |  | BAB |  | DH1100 |  |  | Construction | IGMP | Phase 3 | Construction |  |  |  |  |  |  |  |
| QTS-14261 | **DELETED** DH 2300 // Install Structural Ceiling Grid - North | 7d | 2026-07-14 A | 2026-07-14 A | QTS-1020 | 100% | 2026-07-21 | 2026-07-28 | QTS-PHX3 DC1 - 6 day w/ Holidays | Build Out | DH2300 | Ed Carter | DELETED |  | BAB |  | DH1100 |  | 01ADMIN | Construction | IGMP | Phase 3 | Construction |  |  |  |  |  |  |  |
| QTS-14321 | **DELETED** DH 1300 // Install Structural Ceiling Grid - North | 7d | 2026-07-14 A | 2026-07-14 A | QTS-1020 | 100% | 2026-07-16 | 2026-07-23 | QTS-PHX3 DC1 - 6 day w/ Holidays | Build Out | DH1300 | Ed Carter | DELETED |  | BAB |  | DH1100 |  | 01ADMIN | Construction | IGMP | Phase 3 | Construction |  |  |  |  |  |  | 7/14: Material in the way |

Notes:
- QTS-1012360: Scheduler Notes: Waiting on MEP
- QTS-102520: allucent_notes_20251014_152335: Zack Goertz on 2025-09-08T20:45:26.651Z: Not started. PCI has been put on notice that they are behind / Jason Johnston on 2025-10-08 08:10: not done / allucent_notes: 2025-09-08T20:45:26.651Z - User: Zack Goertz - Date Added: 2025-09-08T20:45:26.651Z - Note: Not started. PCI has been put on notice that they are behind / 2025-10-08 08:10 - User: Jason Johnston - Date Added: 2025-10-08 08:10 - Note: not done

| ID | Activity | Duration | Start | Finish | Predecessors | Complete | Planned start | Planned finish | Calendar | Project Section | Layton Discipline | Baseline | Phase-1-1 | Project Section-1 | Location | Layton Super | DELETED | Contract | D | Allucent CSI Group | Level | Note/Comments | If Not Started or Finished Why? |
| --- | --- | --- | --- | --- | --- | --- | --- | --- | --- | --- | --- | --- | --- | --- | --- | --- | --- | --- | --- | --- | --- | --- | --- |
| QTS-14351 | **DELETED** DH 1300 / Electrical Gallery 1302 // Install Electrical Tray | 5d | 2026-07-14 A | 2026-07-14 A | QTS-1020 | 100% | 2026-07-17 | 2026-07-22 | QTS-PHX3 DC1 - 6 day w/ Holidays | Construction | Electrical | IGMP | Phase 3 | Construction | DH1300 | Oscar Armenta | DELETED | BAB | DH1100 |  |  |  |  |
| QTS-14531 | **DELETED** DH 2300 / Mechanical Gallery 2301 // Install Raceway from UPS Pod to MOD-02/03 Boards | 5d | 2026-07-14 A | 2026-07-14 A | QTS-1020 | 100% | 2026-08-03 | 2026-08-07 | QTS-PHX3 DC1 - 6 day w/ Holidays | Construction | Electrical | IGMP | Phase 3 | Construction | DH2300 | Oscar Armenta | DELETED | BAB | DH1100 |  |  |  |  |
| QTS-14551 | **DELETED** DH 1300 / Mechanical Gallery 1301 // Install Raceway from UPS Pod to MOD-02/03 Boards | 7d | 2026-07-14 A | 2026-07-14 A | QTS-1020 | 100% | 2026-07-27 | 2026-08-03 | QTS-PHX3 DC1 - 6 day w/ Holidays | Construction | Electrical | IGMP | Phase 3 | Construction | DH1300 |  | DELETED | BAB | DH1100 |  |  |  |  |
| QTS-14941 | **DELETED** DH 2200 // Install VESDA | 10d | 2026-07-14 A | 2026-07-14 A | QTS-1020 | 100% | 2026-07-27 | 2026-08-06 | QTS-PHX3 DC1 - 6 day w/ Holidays | Construction | Electrical | IGMP | Phase 2 | Construction | DH2200 | Oscar Armenta | DELETED | BAB | DH1100 |  |  |  |  |
| QTS-14961 | **DELETED** DH 1200 // Install VESDA | 10d | 2026-07-14 A | 2026-07-14 A | QTS-1020 | 100% | 2026-07-15 | 2026-07-25 | QTS-PHX3 DC1 - 6 day w/ Holidays | Construction | Electrical | IGMP | Phase 2 | Construction | DH1200 | Oscar Armenta | DELETED | BAB | DH1100 |  |  |  |  |
| QTS-14981 | **DELETED** DH 2300 // Install VESDA | 5d | 2026-07-14 A | 2026-07-14 A | QTS-1020 | 100% | 2026-08-06 | 2026-08-11 | QTS-PHX3 DC1 - 6 day w/ Holidays | Construction | Electrical | IGMP | Phase 3 | Construction | DH2300 |  | DELETED | BAB | DH1100 |  |  |  |  |
| QTS-15001 | **DELETED** DH 1300 // Install VESDA | 7d | 2026-07-14 A | 2026-07-14 A | QTS-1020 | 100% | 2026-07-20 | 2026-07-27 | QTS-PHX3 DC1 - 6 day w/ Holidays | Construction | Electrical | IGMP | Phase 3 | Construction | DH1300 | Oscar Armenta | DELETED | BAB | DH1100 |  |  |  |  |
| QTS-15331 | **DELETED** DH 1300 / Electrical Gallery 1302 // Install Basket Tray for LV | 5d | 2026-07-14 A | 2026-07-14 A | QTS-1020 | 100% | 2026-07-23 | 2026-07-28 | QTS-PHX3 DC1 - 6 day w/ Holidays | Construction | Electrical | IGMP | Phase 3 | Construction | DH1300 | Oscar Armenta | DELETED | BAB | DH1100 |  |  |  |  |
| QTS-15471 | **DELETED** DH 2200 / Mechanical Gallery 2201 // Install Angle Seal Around CRAH Units | 2d | 2026-07-14 A | 2026-07-14 A | QTS-1020 | 100% | 2026-07-15 | 2026-07-16 | QTS-PHX3 DC1 - 6 day w/ Holidays | Construction | Mechanical | IGMP | Phase 2 | Construction | DH2200 | Mechanical | DELETED | BAB | DH1100 |  |  |  |  |
| QTS-15501 | **DELETED** DH 2300 / Mechanical Gallery 2301 // DH CRAH Unit Mechanical Connections | 7d | 2026-07-14 A | 2026-07-14 A | QTS-1020 | 100% | 2026-07-15 | 2026-07-22 | QTS-PHX3 DC1 - 6 day w/ Holidays | Construction | Mechanical | IGMP | Phase 3 | Construction | DH2300 | Mechanical | DELETED | BAB | DH1100 |  |  |  |  |
| QTS-15511 | **DELETED** DH 2300 / Mechanical Gallery 2301 // Install Angle Seal Around CRAH Units | 2d | 2026-07-14 A | 2026-07-14 A | QTS-1020 | 100% | 2026-07-15 | 2026-07-16 | QTS-PHX3 DC1 - 6 day w/ Holidays | Construction | Mechanical | IGMP | Phase 3 | Construction | DH2300 | Mechanical | DELETED | BAB | DH1100 |  |  |  |  |
| QTS-15521 | **DELETED** DH 1300 / Mechanical Gallery 1301 // EG CRAH Unit Mechanical Connections | 10d | 2026-07-14 A | 2026-07-14 A | QTS-1020 | 100% | 2026-07-25 | 2026-08-05 | QTS-PHX3 DC1 - 6 day w/ Holidays | Construction | Mechanical | IGMP | Phase 3 | Construction | DH1300 | Mechanical | DELETED | BAB | DH1100 |  |  |  |  |
| QTS-15531 | **DELETED** DH 1300 / Mechanical Gallery 1301 // Install Angle Seal Around CRAH Units | 2d | 2026-07-14 A | 2026-07-14 A | QTS-1020 | 100% | 2026-07-25 | 2026-07-27 | QTS-PHX3 DC1 - 6 day w/ Holidays | Construction | Mechanical | IGMP | Phase 3 | Construction | DH1300 | Mechanical | DELETED | BAB | DH1100 |  |  |  |  |
| QTS-15641 | **DELETED** DH 2300 / Mechanical Gallery 2301 // Install Electrical Tray | 5d | 2026-07-14 A | 2026-07-14 A | QTS-1020 | 100% | 2026-08-08 | 2026-08-13 | QTS-PHX3 DC1 - 6 day w/ Holidays | Construction | LV | IGMP | Phase 3 | Construction | DH2300 |  | DELETED | BAB | DH1100 |  |  |  |  |
| QTS-15651 | **DELETED** DH 2300 / Mechanical Gallery 2301 // Install OH Electrical Conduit & Grounding | 7d | 2026-07-14 A | 2026-07-14 A | QTS-1020 | 100% | 2026-07-15 | 2026-07-22 | QTS-PHX3 DC1 - 6 day w/ Holidays | Construction | Electrical | IGMP | Phase 3 | Construction | DH2300 | Oscar Armenta | DELETED | BAB | DH1100 | 01ADMIN |  |  |  |
| QTS-15671 | **DELETED** DH 1300 / Mechanical Gallery 1301 // Install OH Electrical Conduit & Grounding | 10d | 2026-07-14 A | 2026-07-14 A | QTS-1020 | 100% | 2026-07-15 | 2026-07-25 | QTS-PHX3 DC1 - 6 day w/ Holidays | Construction | Electrical | IGMP | Phase 3 | Construction | DH1300 | Oscar Armenta | DELETED | BAB | DH1100 | 01ADMIN |  |  |  |
| QTS-16101 | **DELETED** DH 2300 // Install Overhead Lighting | 7d | 2026-07-14 A | 2026-07-14 A | QTS-1020 | 100% | 2026-08-06 | 2026-08-13 | QTS-PHX3 DC1 - 6 day w/ Holidays | Construction | Electrical | IGMP | Phase 3 | Construction | DH2300 |  | DELETED | BAB | DH1100 |  |  |  |  |
| QTS-16111 | **DELETED** DH 2300 / Electrical Gallery 2302 // Terminate and Test BMS & EPMS Cable to DCIM 2302 | 4d | 2026-07-14 A | 2026-07-14 A | QTS-1020 | 100% | 2026-07-23 | 2026-07-27 | QTS-PHX3 DC1 - 6 day w/ Holidays | Construction | LV | IGMP | Phase 3 | Construction | DH2300 | Low Voltage | DELETED | BAB | DH1100 |  |  |  |  |
| QTS-16121 | **DELETED** DH 1300 // Install Overhead Lighting | 10d | 2026-07-14 A | 2026-07-14 A | QTS-1020 | 100% | 2026-07-24 | 2026-08-04 | QTS-PHX3 DC1 - 6 day w/ Holidays | Construction | Electrical | IGMP | Phase 3 | Construction | DH1300 | Oscar Armenta | DELETED | BAB | DH1100 |  |  |  |  |
| QTS-16131 | **DELETED** DH 1300 / Electrical Gallery 1302 // Terminate and Test BMS & EPMS Cable to DCIM 1302 | 4d | 2026-07-14 A | 2026-07-14 A | QTS-1020 | 100% | 2026-08-06 | 2026-08-10 | QTS-PHX3 DC1 - 6 day w/ Holidays | Construction | LV | IGMP | Phase 3 | Construction | DH1300 |  | DELETED | BAB | DH1100 |  |  |  |  |
| QTS-16291 | **DELETED** DH 2200 / Mechanical Gallery 2203 // Install Angle Seal Around CRAH Units | 2d | 2026-07-14 A | 2026-07-14 A | QTS-1020 | 100% | 2026-07-15 | 2026-07-16 | QTS-PHX3 DC1 - 6 day w/ Holidays | Construction | Mechanical | IGMP | Phase 2 | Construction | DH2200 | Mechanical | DELETED | BAB | DH1100 |  |  |  |  |
| QTS-16341 | **DELETED** DH 1200 / Mechanical Gallery 1203 // Install Angle Seal Around CRAH Units | 2d | 2026-07-14 A | 2026-07-14 A | QTS-1020 | 100% | 2026-07-15 | 2026-07-16 | QTS-PHX3 DC1 - 6 day w/ Holidays | Construction | Mechanical | IGMP | Phase 2 | Construction | DH1200 | Mechanical | DELETED | BAB | DH1100 |  |  |  |  |
| QTS-16381 | **DELETED** DH 2300 / Mechanical Gallery 2303 // CRAH Unit Mechanical Connections | 5d | 2026-07-14 A | 2026-07-14 A | QTS-1020 | 100% | 2026-07-15 | 2026-07-20 | QTS-PHX3 DC1 - 6 day w/ Holidays | Construction | Mechanical | IGMP | Phase 3 | Construction | DH2300 | Mechanical | DELETED | BAB | DH1100 |  |  |  |  |
| QTS-16391 | **DELETED** DH 2300 / Mechanical Gallery 2303 // Install Angle Seal Around CRAH Units | 2d | 2026-07-14 A | 2026-07-14 A | QTS-1020 | 100% | 2026-07-17 | 2026-07-18 | QTS-PHX3 DC1 - 6 day w/ Holidays | Construction | Mechanical | IGMP | Phase 3 | Construction | DH2300 |  | DELETED | BAB | DH1100 |  |  |  |  |
| QTS-16431 | ** DELETED ** Security and DevicesDH 1300 / Mechanical Gallery 1303 // CRAH Unit Mechanical Connections | 10d | 2026-07-14 A | 2026-07-14 A | QTS-1020 | 100% | 2026-07-15 | 2026-07-25 | QTS-PHX3 DC1 - 6 day w/ Holidays | Construction | Mechanical | IGMP | Phase 3 | Construction | DH1300 | Mechanical | DELETED | BAB | DH1100 |  |  |  |  |
| QTS-16441 | ** DELETED ** DH 1300 / Mechanical Gallery 1303 // Install Angle Seal Around CRAH Units | 2d | 2026-07-14 A | 2026-07-14 A | QTS-1020 | 100% | 2026-07-15 | 2026-07-16 | QTS-PHX3 DC1 - 6 day w/ Holidays | Construction | Mechanical | IGMP | Phase 3 | Construction | DH1300 | Mechanical | DELETED | BAB | DH1100 |  |  |  |  |
| QTS-16571 | **DELETED** DH 2300 / Mechanical Gallery 2303 // Install Electrical Tray | 5d | 2026-07-14 A | 2026-07-14 A | QTS-1020 | 100% | 2026-07-27 | 2026-07-31 | QTS-PHX3 DC1 - 6 day w/ Holidays | Construction | Electrical | IGMP | Phase 3 | Construction | DH2300 | Oscar Armenta | DELETED | BAB | DH1100 |  |  |  |  |
| QTS-16581 | **DELETED** DH 2300 / Mechanical Gallery 2303 // Install OH Electrical Conduit & Grounding | 10d | 2026-07-14 A | 2026-07-14 A | QTS-1020 | 100% | 2026-07-15 | 2026-07-25 | QTS-PHX3 DC1 - 6 day w/ Holidays | Construction | Electrical | IGMP | Phase 3 | Construction | DH2300 | Oscar Armenta | DELETED | BAB | DH1100 |  |  |  |  |
| QTS-16591 | **DELETED** DH 2300 / Mechanical Gallery 2301 // Install Basket Tray for LV | 5d | 2026-07-14 A | 2026-07-14 A | QTS-1020 | 100% | 2026-08-14 | 2026-08-19 | QTS-PHX3 DC1 - 6 day w/ Holidays | Construction | LV | IGMP | Phase 3 | Construction | DH2300 |  | DELETED | BAB | DH1100 |  |  |  |  |
| QTS-16611 | ** DELETED ** Security and DevicesDH 1300 / Mechanical Gallery 1303 // Install OH Electrical Conduit & Grounding | 10d | 2026-07-14 A | 2026-07-14 A | QTS-1020 | 100% | 2026-07-15 | 2026-07-25 | QTS-PHX3 DC1 - 6 day w/ Holidays | Construction | Electrical | IGMP | Phase 3 | Construction | DH1300 | Electrical | DELETED | BAB | DH1100 | 01ADMIN |  |  |  |
| QTS-16891 | **DELETED** DH 1300 / Electrical Gallery 1302 // Set House Panels | 2d | 2026-07-14 A | 2026-07-14 A | QTS-1020 | 100% | 2026-07-16 | 2026-07-17 | QTS-PHX3 DC1 - 6 day w/ Holidays | Construction | Electrical | IGMP | Phase 3 | Construction | DH1300 | Oscar Armenta | DELETED | BAB | DH1100 |  |  |  |  |
| QTS-17191 | **DELETED** DH 2300 / Mechanical Gallery 2303 // Install Basket Tray for LV | 5d | 2026-07-14 A | 2026-07-14 A | QTS-1020 | 100% | 2026-08-01 | 2026-08-06 | QTS-PHX3 DC1 - 6 day w/ Holidays | Construction | LV | IGMP | Phase 3 | Construction | DH2300 |  | DELETED | BAB | DH1100 |  |  |  |  |
| QTS-17231 | **DELETED** DH 1300 / Mechanical Gallery 1303 // Install Basket Tray for LV | 5d | 2026-07-14 A | 2026-07-14 A | QTS-1020 | 100% | 2026-08-11 | 2026-08-15 | QTS-PHX3 DC1 - 6 day w/ Holidays | Construction | LV | IGMP | Phase 3 | Construction | DH1300 |  | DELETED | BAB | DH1100 |  |  |  |  |
| QTS-17541 | **DELETED **DH 2200 // Install Ceiling Tile | 7d | 2026-07-14 A | 2026-07-14 A | QTS-1020 | 100% | 2026-08-07 | 2026-08-14 | QTS-PHX3 DC1 - 6 day w/ Holidays | Construction | Build Out | IGMP | Phase 2 | Construction | DH2200 | Jason Hendley | DELETED | BAB | DH1100 |  |  |  |  |
| QTS-17551 | **DELETED** DH 2200 // Install Fire Sprinkler Heads | 5d | 2026-07-14 A | 2026-07-14 A | QTS-1020 | 100% | 2026-07-16 | 2026-07-21 | QTS-PHX3 DC1 - 6 day w/ Holidays | Construction | Mechanical | IGMP | Phase 2 | Construction | DH2200 |  | DELETED | BAB | DH1100 |  |  |  |  |
| QTS-17561 | **DELETED** DH 1200 // Install Ceiling Tile | 7d | 2026-07-14 A | 2026-07-14 A | QTS-1020 | 100% | 2026-07-27 | 2026-08-03 | QTS-PHX3 DC1 - 6 day w/ Holidays | Construction | Build Out | IGMP | Phase 2 | Construction | DH1200 | Ed Carter | DELETED | BAB | DH1100 |  |  |  |  |
| QTS-17571 | **DELETED** DH 1200 // Install Fire Sprinkler Heads | 5d | 2026-07-14 A | 2026-07-14 A | QTS-1020 | 100% | 2026-07-27 | 2026-07-31 | QTS-PHX3 DC1 - 6 day w/ Holidays | Construction | Mechanical | IGMP | Phase 2 | Construction | DH1200 | Mechanical | DELETED | BAB | DH1100 |  |  |  |  |
| QTS-17581 | **DELETED** DH 2300 // Install Ceiling Tile | 7d | 2026-07-14 A | 2026-07-14 A | QTS-1020 | 100% | 2026-08-14 | 2026-08-21 | QTS-PHX3 DC1 - 6 day w/ Holidays | Construction | Build Out | IGMP | Phase 3 | Construction | DH2300 | Jason Hendley | DELETED | BAB | DH1100 |  |  |  |  |
| QTS-17591 | **DELETED** DH 2300 // Install Fire Sprinkler Heads | 5d | 2026-07-14 A | 2026-07-14 A | QTS-1020 | 100% | 2026-08-14 | 2026-08-19 | QTS-PHX3 DC1 - 6 day w/ Holidays | Construction | Mechanical | IGMP | Phase 3 | Construction | DH2300 |  | DELETED | BAB | DH1100 |  |  |  |  |
| QTS-17601 | **DELETED** DH 1300 // Install Ceiling Tile | 7d | 2026-07-14 A | 2026-07-14 A | QTS-1020 | 100% | 2026-08-05 | 2026-08-12 | QTS-PHX3 DC1 - 6 day w/ Holidays | Construction | Build Out | IGMP | Phase 3 | Construction | DH1300 | Jason Hendley | DELETED | BAB | DH1100 |  |  |  |  |
| QTS-17611 | **DELETED** DH 1300 // Install Fire Sprinkler Heads | 5d | 2026-07-14 A | 2026-07-14 A | QTS-1020 | 100% | 2026-08-05 | 2026-08-10 | QTS-PHX3 DC1 - 6 day w/ Holidays | Construction | Mechanical | IGMP | Phase 3 | Construction | DH1300 |  | DELETED | BAB | DH1100 |  |  |  |  |
| QTS-17831 | **DELETED** DH 1300 / Electrical Gallery 1302 // Install Conduit from UPS Pod to Chillers R-C | 6d | 2026-07-14 A | 2026-07-14 A | QTS-1020 | 100% | 2026-07-18 | 2026-07-24 | QTS-PHX3 DC1 - 6 day w/ Holidays | Construction | Electrical | IGMP | Phase 3 | Construction | DH1300 | Oscar Armenta | DELETED | BAB | DH1100 |  |  |  |  |
| QTS-18001 | **DELETED** DH 2300 / Mechanical Gallery 2303 // Terminate and Test BMS & EPMS Cable to DCIM 2303 | 3d | 2026-07-14 A | 2026-07-14 A | QTS-1020 | 100% | 2026-08-12 | 2026-08-14 | QTS-PHX3 DC1 - 6 day w/ Holidays | Construction | LV | IGMP | Phase 3 | Construction | DH2300 |  | DELETED | BAB | DH1100 |  |  |  |  |
| QTS-18021 | **DELETED** DH 1300 / Mechanical Gallery 1303 // Terminate and Test BMS & EPMS Cable to DCIM 1303 | 4d | 2026-07-14 A | 2026-07-14 A | QTS-1020 | 100% | 2026-08-21 | 2026-08-25 | QTS-PHX3 DC1 - 6 day w/ Holidays | Construction | LV | IGMP | Phase 3 | Construction | DH1300 |  | DELETED | BAB | DH1100 |  |  |  |  |
| QTS-18191 | **DELETED** Gallery 2302 / Lineup A2300 // Terminate & Torque COD | 7d | 2026-07-14 A | 2026-07-14 A | QTS-1020 | 100% | 2026-07-23 | 2026-07-30 | QTS-PHX3 DC1 - 6 day w/ Holidays | Construction | Electrical | IGMP | Phase 3 | Construction | DH2300 | Oscar Armenta | DELETED | BAB | DH1100 |  |  |  |  |
| QTS-18211 | **DELETED** Gallery 1302 / Lineup A1300 // Terminate & Torque ATS | 7d | 2026-07-14 A | 2026-07-14 A | QTS-1020 | 100% | 2026-07-15 | 2026-07-22 | QTS-PHX3 DC1 - 6 day w/ Holidays | Construction | Electrical | IGMP | Phase 3 | Construction | DH1300 | Oscar Armenta | DELETED | BAB | DH1100 |  |  |  |  |
| QTS-18221 | **DELETED** Gallery 1302 / Lineup A1300 // Terminate & Torque COD | 7d | 2026-07-14 A | 2026-07-14 A | QTS-1020 | 100% | 2026-07-23 | 2026-07-30 | QTS-PHX3 DC1 - 6 day w/ Holidays | Construction | Electrical | IGMP | Phase 3 | Construction | DH1300 |  | DELETED | BAB | DH1100 |  |  |  |  |
| QTS-18321 | **DELETED** DH 2300 / Electrical Gallery 2302 // Pull LV Cables Branch Circuits | 5d | 2026-07-14 A | 2026-07-14 A | QTS-1020 | 100% | 2026-07-15 | 2026-07-20 | QTS-PHX3 DC1 - 6 day w/ Holidays | Construction | LV | IGMP | Phase 3 | Construction | DH2300 | Low Voltage | DELETED | BAB | DH1100 |  |  |  |  |
| QTS-18341 | **DELETED** DH 1300 / Electrical Gallery 1302 // Pull LV Cables Branch Circuits | 5d | 2026-07-14 A | 2026-07-14 A | QTS-1020 | 100% | 2026-07-18 | 2026-07-23 | QTS-PHX3 DC1 - 6 day w/ Holidays | Construction | LV | IGMP | Phase 3 | Construction | DH1300 | Low Voltage | DELETED | BAB | DH1100 |  |  |  |  |
| QTS-18401 | **DELETED** DH 2200 // Install Temporary Hot Aisle Containment | 10d | 2026-07-14 A | 2026-07-14 A | QTS-1020 | 100% | 2026-08-15 | 2026-08-26 | QTS-PHX3 DC1 - 6 day w/ Holidays | Construction | Mechanical | IGMP | Phase 2 | Construction | DH2200 |  | DELETED | BAB | DH1100 |  |  |  |  |
| QTS-18421 | **DELETED** DH 1200 // Install Temporary Hot Aisle Containment | 10d | 2026-07-14 A | 2026-07-14 A | QTS-1020 | 100% | 2026-08-04 | 2026-08-14 | QTS-PHX3 DC1 - 6 day w/ Holidays | Construction | Mechanical | IGMP | Phase 2 | Construction | DH1200 |  | DELETED | BAB | DH1100 |  |  |  |  |
| QTS-18441 | **DELETED** DH 2300 // Install Temporary Hot Aisle Containment | 10d | 2026-07-14 A | 2026-07-14 A | QTS-1020 | 100% | 2026-08-22 | 2026-09-02 | QTS-PHX3 DC1 - 6 day w/ Holidays | Construction | Build Out | IGMP | Phase 3 | Construction | DH2300 | Jason Hendley | DELETED | BAB | DH1100 |  |  |  |  |
| QTS-18461 | **DELETED** DH 1300 // Install Temporary Hot Aisle Containment | 10d | 2026-07-14 A | 2026-07-14 A | QTS-1020 | 100% | 2026-08-13 | 2026-08-24 | QTS-PHX3 DC1 - 6 day w/ Holidays | Construction | Mechanical | IGMP | Phase 3 | Construction | DH1300 |  | DELETED | BAB | DH1100 |  |  |  |  |
| QTS-18541 | **DELETED** DH 2300 / Electrical Gallery 2302 // Terminate Panels | 6d | 2026-07-14 A | 2026-07-14 A | QTS-1020 | 100% | 2026-07-21 | 2026-07-27 | QTS-PHX3 DC1 - 6 day w/ Holidays | Construction | Electrical | IGMP | Phase 3 | Construction | DH2300 | Oscar Armenta | DELETED | BAB | DH1100 |  |  |  |  |
| QTS-18551 | **DELETED** DH 1300 / Electrical Gallery 1302 // Terminate Panels | 6d | 2026-07-14 A | 2026-07-14 A | QTS-1020 | 100% | 2026-07-24 | 2026-07-30 | QTS-PHX3 DC1 - 6 day w/ Holidays | Construction | Electrical | IGMP | Phase 3 | Construction | DH1300 | Oscar Armenta | DELETED | BAB | DH1100 |  |  |  |  |
| QTS-18681 | **DELETED** DH 2300 / Electrical Gallery 2302 // Pull Control Wire From Pod to Dog House | 7d | 2026-07-14 A | 2026-07-14 A | QTS-1020 | 100% | 2026-07-15 | 2026-07-22 | QTS-PHX3 DC1 - 6 day w/ Holidays | Construction | Electrical | IGMP | Phase 3 | Construction | DH2300 | Oscar Armenta | DELETED | BAB | DH1100 |  |  |  |  |
| QTS-18691 | **DELETED** DH 2300 / Electrical Gallery 2302 // Pull Electrical Wire From Pod to Dog House | 7d | 2026-07-14 A | 2026-07-14 A | QTS-1020 | 100% | 2026-07-15 | 2026-07-22 | QTS-PHX3 DC1 - 6 day w/ Holidays | Construction | Electrical | IGMP | Phase 3 | Construction | DH2300 | Oscar Armenta | DELETED | BAB | DH1100 |  |  |  |  |
| QTS-18701 | **DELETED** DH 1300 / Electrical Gallery 1302 // Pull & Terminate from UPS Pod to Chillers R-C | 3d | 2026-07-14 A | 2026-07-14 A | QTS-1020 | 100% | 2026-07-25 | 2026-07-28 | QTS-PHX3 DC1 - 6 day w/ Holidays | Construction | Electrical | IGMP | Phase 3 | Construction | DH1300 | Oscar Armenta | DELETED | BAB | DH1100 |  |  |  |  |
| QTS-18711 | **DELETED** DH 1300 / Electrical Gallery 1302 // Install Conduit from UPS Pod to Pumps R-C | 6d | 2026-07-14 A | 2026-07-14 A | QTS-1020 | 100% | 2026-07-21 | 2026-07-27 | QTS-PHX3 DC1 - 6 day w/ Holidays | Construction | Electrical | IGMP | Phase 3 | Construction | DH1300 | Oscar Armenta | DELETED | BAB | DH1100 |  |  |  |  |
| QTS-18991 | **DELETED** DH 1300 / Electrical Gallery 1302 // Pull & Terminate from UPS Pod to Pumps R-C | 3d | 2026-07-14 A | 2026-07-14 A | QTS-1020 | 100% | 2026-07-28 | 2026-07-30 | QTS-PHX3 DC1 - 6 day w/ Holidays | Construction | Electrical | IGMP | Phase 3 | Construction | DH1300 | Oscar Armenta | DELETED | BAB | DH1100 |  |  |  |  |
| QTS-24641 | **DELETED** Zone 3 Gridlines 30-41 Corridor 2307 // Install Light Fixtures On Walls | 8d | 2026-07-14 A | 2026-07-14 A | QTS-1020 | 100% | 2026-07-15 | 2026-07-23 | QTS-PHX3 DC1 - 6 day w/ Holidays | Construction | Electrical | IGMP |  |  | DH2300 | Oscar Armenta | DELETED | BAB | DH1100 |  | Level 2 |  |  |
| QTS-24681 | **DELETE** Zone 2 Gridline 21-30 / Corridor 2010 // Install Light Fixtures On Walls | 8d | 2026-07-14 A | 2026-07-14 A | QTS-1020 | 100% | 2026-07-15 | 2026-07-23 | QTS-PHX3 DC1 - 6 day w/ Holidays | Construction | Electrical | IGMP |  |  | DH2200 | Oscar Armenta | DELETED | BAB | DH1100 |  | Level 2 | 7/7: Manpower/low priority | Manpower / Non Critical |
| QTS-24741 | **DELETED** Zone 3 Gridlines 30-41 Corridor 1012 // Install Light Fixtures | 4d | 2026-07-14 A | 2026-07-14 A | QTS-1020 | 100% | 2026-07-15 | 2026-07-18 | QTS-PHX3 DC1 - 6 day w/ Holidays | Construction | Electrical | IGMP |  |  | DH1300 | Oscar Armenta | DELETED | BAB | DH1100 |  | Level 1 |  |  |
| QTS-25771 | **DELETE** Zone 3 Gridlines 30-41 Corridor 2307 // Install Wall Base | 2d | 2026-07-14 A | 2026-07-14 A | QTS-1020 | 100% | 2026-07-16 | 2026-07-17 | QTS-PHX3 DC1 - 6 day w/ Holidays | Construction | Build Out | IGMP |  |  |  | Ben Ribble | DELETED | BAB | DH1100 | 01ADMIN | Level 2 |  |  |
| QTS-25791 | **DELETE** Zone 2 Gridline 21-30 / Corridor 2010 // Install Wall Base | 1d | 2026-07-14 A | 2026-07-14 A | QTS-1020 | 100% | 2026-07-17 | 2026-07-17 | QTS-PHX3 DC1 - 6 day w/ Holidays | Construction | Build Out | IGMP |  |  |  | Ben Ribble | DELETED | BAB | DH1100 |  | Level 2 |  |  |
| QTS-25801 | **DELETED** Zone 3 Gridlines 30-41 Corridor 1012 // Install Wall Base | 1d | 2026-07-14 A | 2026-07-14 A | QTS-1020 | 100% | 2026-07-15 | 2026-07-15 | QTS-PHX3 DC1 - 6 day w/ Holidays | Construction | Build Out | IGMP |  |  |  | Ben Ribble | DELETED | BAB | DH1100 |  | Level 1 |  |  |
| QTS-28241 | ** DELETED** Zone 2 Gridline 21-30 / Corridor 1013 // Install Wall Base | 2d | 2026-07-14 A | 2026-07-14 A | QTS-1020 | 100% | 2026-07-15 | 2026-07-16 | QTS-PHX3 DC1 - 6 day w/ Holidays | Construction | Build Out | IGMP |  |  |  | Ben Ribble | DELETED | BAB | DH1100 |  | Level 1 |  |  |
| QTS-3051 | **DELETED** Gallery 1302 / Lineup B1300 // Install Raceways from LV POD to COD | 7d | 2026-07-14 A | 2026-07-14 A | QTS-1020 | 100% | 2026-07-15 | 2026-07-22 | QTS-PHX3 DC1 - 6 day w/ Holidays | Construction | LV | IGMP | Phase 3 | Construction | DH1300 | Oscar Armenta | DELETED | BAB | DH1100 |  |  |  |  |
| QTS-3061 | **DELETED** Gallery 1302 / Lineup C1300 // Install Raceways from LV POD to COD | 7d | 2026-07-14 A | 2026-07-14 A | QTS-1020 | 100% | 2026-07-23 | 2026-07-30 | QTS-PHX3 DC1 - 6 day w/ Holidays | Construction | LV | IGMP | Phase 3 | Construction | DH1300 | Oscar Armenta | DELETED | BAB | DH1100 |  |  |  |  |
| QTS-3071 | **DELETED** Gallery 1302 / Lineup D1300 // Install Raceways from LV POD to COD | 7d | 2026-07-14 A | 2026-07-14 A | QTS-1020 | 100% | 2026-07-23 | 2026-07-30 | QTS-PHX3 DC1 - 6 day w/ Holidays | Construction | LV | IGMP | Phase 3 | Construction | DH1300 | Oscar Armenta | DELETED | BAB | DH1100 |  |  |  |  |

| ID | Activity | Duration | Start | Finish | Predecessors | Complete | Planned start | Planned finish | Calendar | Project Section | Layton Discipline | Baseline | Phase-1-1 | Project Section-1 | Location | Layton Super | DELETED | Contract | D | Note/Comments | Level | Allucent CSI Group | Notes | If Not Started or Finished Why? | Last Period Finish | Last Period Start | Vendor Responsible Party | CX Level | Equipment |
| --- | --- | --- | --- | --- | --- | --- | --- | --- | --- | --- | --- | --- | --- | --- | --- | --- | --- | --- | --- | --- | --- | --- | --- | --- | --- | --- | --- | --- | --- |
| QTS-3081 | **DELETED** Gallery 1302 / Lineup E1300 // Install Raceways from LV POD to COD | 7d | 2026-07-14 A | 2026-07-14 A | QTS-1020 | 100% | 2026-07-31 | 2026-08-07 | QTS-PHX3 DC1 - 6 day w/ Holidays | Construction | LV | IGMP | Phase 3 | Construction | DH1300 | Oscar Armenta | DELETED | BAB | DH1100 |  |  |  |  |  |  |  |  |  |  |
| QTS-3091 | **DELETED** Gallery 1302 / Lineup F1300 // Install Raceways from LV POD to COD | 7d | 2026-07-14 A | 2026-07-14 A | QTS-1020 | 100% | 2026-07-31 | 2026-08-07 | QTS-PHX3 DC1 - 6 day w/ Holidays | Construction | LV | IGMP | Phase 3 | Construction | DH1300 | Oscar Armenta | DELETED | BAB | DH1100 |  |  |  |  |  |  |  |  |  |  |
| QTS-38641 | **DELETED** DH 2300 / Electrical Gallery 2302/2303 // Set IDF Cabinet | 1d | 2026-07-14 A | 2026-07-14 A | QTS-1020 | 100% | 2026-07-15 | 2026-07-15 | QTS-PHX3 DC1 - 6 day w/ Holidays | Construction | Electrical | GMP | Phase 3 | Construction | DH2300 | Oscar Armenta | DELETED | BAB | DH1100 | 7/8: Cabinet in place but no set |  |  |  |  |  |  |  |  |  |
| QTS-38651 | **DELETED** DH 2300 / Electrical Gallery 2302/2303 // Set IDF Conduit | 2d | 2026-07-14 A | 2026-07-14 A | QTS-1020 | 100% | 2026-07-16 | 2026-07-17 | QTS-PHX3 DC1 - 6 day w/ Holidays | Construction | Electrical | GMP | Phase 3 | Construction | DH2300 | Oscar Armenta | DELETED | BAB | DH1100 | 7/8: Cabinet in place but no set |  |  |  |  |  |  |  |  |  |
| QTS-38671 | **DELETED** DH 1300 / Electrical Gallery 1301/1302 // Set IDF Cabinet | 1d | 2026-07-14 A | 2026-07-14 A | QTS-1020 | 100% | 2026-07-15 | 2026-07-15 | QTS-PHX3 DC1 - 6 day w/ Holidays | Construction | Electrical | GMP | Phase 3 | Construction | DH1300 | Oscar Armenta | DELETED | BAB | DH1100 |  |  |  |  |  |  |  |  |  |  |
| QTS-38681 | **DELETED** DH 1300 / Electrical Gallery 1301/1302 // Set IDF Conduit | 2d | 2026-07-14 A | 2026-07-14 A | QTS-1020 | 100% | 2026-07-16 | 2026-07-17 | QTS-PHX3 DC1 - 6 day w/ Holidays | Construction | Electrical | GMP | Phase 3 | Construction | DH1300 | Oscar Armenta | DELETED | BAB | DH1100 |  |  |  |  |  |  |  |  |  |  |
| QTS-4181 | **DELETED** Gallery 2302 / Lineup R2300 // Set Reserve Busway Segment | 4d | 2026-07-14 A | 2026-07-14 A | QTS-1020 | 100% | 2026-07-15 | 2026-07-18 | QTS-PHX3 DC1 - 6 day w/ Holidays | Construction | Electrical | IGMP | Phase 3 | Construction | DH2300 | Oscar Armenta | DELETED | BAB | DH1100 |  |  |  |  |  |  |  |  |  |  |
| QTS-43821 | **DELETED** DH 2300 / Mechanical Gallery 2301 // Pull & Terminate from UPS Pod to MOD-02/03 Boards | 5d | 2026-07-14 A | 2026-07-14 A | QTS-1020 | 100% | 2026-08-08 | 2026-08-13 | QTS-PHX3 DC1 - 6 day w/ Holidays | Construction | Electrical | IGMP | Phase 3 | Construction | DH2300 |  | DELETED | BAB | DH1100 |  |  |  |  |  |  |  |  |  |  |
| QTS-43831 | **DELETED** DH 1300 / Mechanical Gallery 1301 // Pull & Terminate from UPS Pod to MOD-02/03 Boards | 7d | 2026-07-14 A | 2026-07-14 A | QTS-1020 | 100% | 2026-08-04 | 2026-08-11 | QTS-PHX3 DC1 - 6 day w/ Holidays | Construction | Electrical | IGMP | Phase 3 | Construction | DH1300 |  | DELETED | BAB | DH1100 |  |  |  |  |  |  |  |  |  |  |
| QTS-43841 | **DELETED** DH 1300 / Electrical Gallery 1302 // Install Conduit from UPS Pod to Chillers Lineup D-F | 6d | 2026-07-14 A | 2026-07-14 A | QTS-1020 | 100% | 2026-07-25 | 2026-07-31 | QTS-PHX3 DC1 - 6 day w/ Holidays | Construction | Electrical | IGMP | Phase 3 | Construction | DH1300 | Oscar Armenta | DELETED | BAB | DH1100 |  |  |  |  |  |  |  |  |  |  |
| QTS-43851 | **DELETED** DH 1300 / Electrical Gallery 1302 // Pull & Terminate from UPS Pod to Chillers Lineup D-F | 3d | 2026-07-14 A | 2026-07-14 A | QTS-1020 | 100% | 2026-08-01 | 2026-08-04 | QTS-PHX3 DC1 - 6 day w/ Holidays | Construction | Electrical | IGMP | Phase 3 | Construction | DH1300 | Oscar Armenta | DELETED | BAB | DH1100 |  |  |  |  |  |  |  |  |  |  |
| QTS-43861 | **DELETED** DH 1300 / Electrical Gallery 1302 // Install Conduit from UPS Pod to Pumps Lineup D-F | 6d | 2026-07-14 A | 2026-07-14 A | QTS-1020 | 100% | 2026-07-28 | 2026-08-03 | QTS-PHX3 DC1 - 6 day w/ Holidays | Construction | Electrical | IGMP | Phase 3 | Construction | DH1300 | Oscar Armenta | DELETED | BAB | DH1100 |  |  |  |  |  |  |  |  |  |  |
| QTS-43871 | **DELETED** DH 1300 / Electrical Gallery 1302 // Pull & Terminate from UPS Pod to Pumps Lineup D-F | 3d | 2026-07-14 A | 2026-07-14 A | QTS-1020 | 100% | 2026-08-04 | 2026-08-06 | QTS-PHX3 DC1 - 6 day w/ Holidays | Construction | Electrical | IGMP | Phase 3 | Construction | DH1300 | Oscar Armenta | DELETED | BAB | DH1100 |  |  |  |  |  |  |  |  |  |  |
| QTS-44531 | **DELETED** DH 2300 / Mechanical Gallery 2301 // Install BMS & EPMS Cable and Terminations | 5d | 2026-07-14 A | 2026-07-14 A | QTS-1020 | 100% | 2026-08-20 | 2026-08-25 | QTS-PHX3 DC1 - 6 day w/ Holidays | Construction | LV | IGMP |  | Construction | DH2100 |  | DELETED | BAB | DH1100 |  | Level 2 |  |  |  |  |  |  |  |  |
| QTS-44561 | **DELETED** DH 1300 / Mechanical Gallery 1301 // Install BMS & EPMS Cable and Terminations | 10d | 2026-07-14 A | 2026-07-14 A | QTS-1020 | 100% | 2026-07-21 | 2026-07-31 | QTS-PHX3 DC1 - 6 day w/ Holidays | Construction | LV | IGMP |  | Construction | DH1300 | Oscar Armenta | DELETED | BAB | DH1100 |  | Level 2 |  |  |  |  |  |  |  |  |
| QTS-45131 | **DELETED** Freedom Cafe #0103 // Set Accent Wall Tile | 5d | 2026-07-14 A | 2026-07-14 A | QTS-1020 | 100% | 2026-07-17 | 2026-07-22 | QTS-PHX3 DC1 - 6 day w/ Holidays | Construction | Build Out | IGMP | Phase 1 | Construction | FOH | Ed Carter | DELETED | BAB | DH1100 |  | Level 1 |  |  |  |  |  |  |  |  |
| QTS-45191 | **DELETED** Freedom Cafe #0103 // Install Flooring | 5d | 2026-07-14 A | 2026-07-14 A | QTS-1020 | 100% | 2026-07-27 | 2026-07-31 | QTS-PHX3 DC1 - 6 day w/ Holidays | Construction | Build Out | IGMP | Phase 1 | Construction | FOH | Ed Carter | DELETED | BAB | DH1100 |  | Level 1 |  |  |  |  |  |  |  |  |
| QTS-45231 | **DELETED** Freedom Cafe #0103 // Paint Final Coat | 1d | 2026-07-14 A | 2026-07-14 A | QTS-1020 | 100% | 2026-07-25 | 2026-07-25 | QTS-PHX3 DC1 - 6 day w/ Holidays | Construction | Build Out | IGMP | Phase 1 | Construction | FOH | Ed Carter | DELETED | BAB | DH1100 |  | Level 1 |  |  |  |  |  |  |  |  |
| QTS-45241 | **DELETED** Freedom Cafe #0103 // Install Wall Base | 1d | 2026-07-14 A | 2026-07-14 A | QTS-1020 | 100% | 2026-08-01 | 2026-08-01 | QTS-PHX3 DC1 - 6 day w/ Holidays | Construction | Build Out | IGMP | Phase 1 | Construction | FOH | Ed Carter | DELETED | BAB | DH1100 |  | Level 1 |  |  |  |  |  |  |  |  |
| QTS-45261 | **DELETED** Freedom Cafe #0103 // Install Solid Surface Counter Tops | 2d | 2026-07-14 A | 2026-07-14 A | QTS-1020 | 100% | 2026-07-15 | 2026-07-16 | QTS-PHX3 DC1 - 6 day w/ Holidays | Construction | Build Out | IGMP | Phase 1 | Construction | FOH | Ed Carter | DELETED | BAB | DH1100 |  | Level 1 |  |  |  |  |  |  |  |  |
| QTS-45271 | **DELETED** Freedom Cafe #0103 // Install Doors & Hardware | 1d | 2026-07-14 A | 2026-07-14 A | QTS-1020 | 100% | 2026-08-01 | 2026-08-01 | QTS-PHX3 DC1 - 6 day w/ Holidays | Construction | Build Out | IGMP | Phase 1 | Construction | FOH | Ed Carter | DELETED | BAB | DH1100 |  | Level 1 |  |  |  |  |  |  |  |  |
| QTS-45281 | **DELETED** Freedom Cafe #0103 // Set Vendors Equipment | 1d | 2026-07-14 A | 2026-07-14 A | QTS-1020 | 100% | 2026-08-03 | 2026-08-03 | QTS-PHX3 DC1 - 6 day w/ Holidays | Construction | Build Out | IGMP | Phase 1 | Construction | FOH | Ed Carter | DELETED | BAB | DH1100 |  | Level 1 |  |  |  |  |  |  |  |  |
| QTS-45291 | **DELETED** Freedom Cafe #0103 // Set FFE | 1d | 2026-07-14 A | 2026-07-14 A | QTS-1020 | 100% | 2026-08-03 | 2026-08-03 | QTS-PHX3 DC1 - 6 day w/ Holidays | Construction | Build Out | IGMP | Phase 1 | Construction | FOH | Ed Carter | DELETED | BAB | DH1100 |  | Level 1 |  |  |  |  |  |  |  |  |
| QTS-45471 | **DELETED** Lobby #0101 / Install Art In Lobby Areas | 2d | 2026-07-14 A | 2026-07-14 A | QTS-1020 | 100% | 2026-07-15 | 2026-07-16 | QTS-PHX3 DC1 - 6 day w/ Holidays | Construction | Build Out | IGMP | Phase 1 | Construction | FOH | Ed Carter | DELETED | BAB | DH1100 |  | Level 1 |  |  |  |  |  |  |  |  |
| QTS-46701 | **DELETED** DH 2300 / Mechanical Gallery 2301 // EG CRAH Unit Mechanical Connections | 10d | 2026-07-14 A | 2026-07-14 A | QTS-1020 | 100% | 2026-07-22 | 2026-08-01 | QTS-PHX3 DC1 - 6 day w/ Holidays | Construction | Mechanical | IGMP | Phase 3 | Construction | DH2300 | Mechanical | DELETED | BAB | DH1100 |  |  |  |  |  |  |  |  |  |  |
| QTS-46711 | **DELETED** DH 2300 / Mechanical Gallery 2301 // Set BMS & EPMS Panels | 4d | 2026-07-14 A | 2026-07-14 A | QTS-1020 | 100% | 2026-07-15 | 2026-07-18 | QTS-PHX3 DC1 - 6 day w/ Holidays | Construction | Electrical | IGMP |  | Construction | DH2100 | Oscar Armenta | DELETED | BAB | DH1100 |  | Level 2 | 01ADMIN |  |  |  |  |  |  |  |
| QTS-46721 | **DELETED** DH 2300 / Mechanical Gallery 2301 // Pull & Terminate from MOD-02 to CRAHs | 4d | 2026-07-14 A | 2026-07-14 A | QTS-1020 | 100% | 2026-08-14 | 2026-08-18 | QTS-PHX3 DC1 - 6 day w/ Holidays | Construction | Electrical | IGMP | Phase 3 | Construction | DH2300 |  | DELETED | BAB | DH1100 |  |  |  |  |  |  |  |  |  |  |
| QTS-46731 | **DELETED** DH 2300 / Mechanical Gallery 2301 // Pull & Terminate from MOD-02 to DOAS | 4d | 2026-07-14 A | 2026-07-14 A | QTS-1020 | 100% | 2026-08-19 | 2026-08-22 | QTS-PHX3 DC1 - 6 day w/ Holidays | Construction | Electrical | IGMP | Phase 3 | Construction | DH2300 |  | DELETED | BAB | DH1100 |  |  |  |  |  |  |  |  |  |  |
| QTS-46771 | ** DELETED ** Security and DevicesDH 1300 / Mechanical Gallery 1301 // Pull & Terminate from MOD-02 to CRAHs | 4d | 2026-07-14 A | 2026-07-14 A | QTS-1020 | 100% | 2026-07-15 | 2026-07-18 | QTS-PHX3 DC1 - 6 day w/ Holidays | Construction | Electrical | IGMP | Phase 3 | Construction | DH1300 | Electrical | DELETED | BAB | DH1100 |  |  |  |  |  |  |  |  |  |  |
| QTS-46781 | ** DELETED ** Security and DevicesDH 1300 / Mechanical Gallery 1301 // Pull & Terminate from MOD-02 to DOAS | 4d | 2026-07-14 A | 2026-07-14 A | QTS-1020 | 100% | 2026-07-15 | 2026-07-18 | QTS-PHX3 DC1 - 6 day w/ Holidays | Construction | Electrical | IGMP | Phase 3 | Construction | DH1300 | Electrical | DELETED | BAB | DH1100 |  |  |  |  |  |  |  |  |  |  |
| QTS-4990 | **DELETED** DH 2300 / Data Hall 2300 / Install CRAH Leak Detection Angle | 4d | 2026-07-14 A | 2026-07-14 A | QTS-1020 | 100% | 2026-07-24 | 2026-07-28 | **GLOBAL - 6 Day Workweek w/ Basic Holidays |  |  |  |  |  |  |  | DELETED | BAB | DH1100 |  |  |  |  |  |  |  |  |  |  |
| QTS-5010 | **DELETED** DH 2300 / Data Hall 2300 / Pull MC to RPP Racks | 6d | 2026-07-14 A | 2026-07-14 A | QTS-1020 | 100% | 2026-07-22 | 2026-07-28 | **GLOBAL - 6 Day Workweek w/ Basic Holidays |  |  |  |  |  |  |  | DELETED | BAB | DH1100 |  |  |  |  |  |  |  |  |  |  |
| QTS-5271 | **DELETED** Gallery 2302 / Lineup C2300 // Set Reserve Busway Segment | 2d | 2026-07-14 A | 2026-07-14 A | QTS-1020 | 100% | 2026-07-15 | 2026-07-16 | QTS-PHX3 DC1 - 6 day w/ Holidays | Construction | Electrical | IGMP | Phase 3 | Construction | DH2300 | Oscar Armenta | DELETED | BAB | DH1100 |  |  |  |  |  |  |  |  |  |  |
| QTS-5291 | **DELETED** Gallery 2302 / Lineup D2300 // Set Reserve Busway Segment | 2d | 2026-07-14 A | 2026-07-14 A | QTS-1020 | 100% | 2026-07-15 | 2026-07-16 | QTS-PHX3 DC1 - 6 day w/ Holidays | Construction | Electrical | IGMP | Phase 3 | Construction | DH2300 | Oscar Armenta | DELETED | BAB | DH1100 |  |  |  |  |  |  |  |  |  |  |
| QTS-5311 | **DELETED** Gallery 2302 / Lineup E2300 // Set Reserve Busway Segment | 2d | 2026-07-14 A | 2026-07-14 A | QTS-1020 | 100% | 2026-07-15 | 2026-07-16 | QTS-PHX3 DC1 - 6 day w/ Holidays | Construction | Electrical | IGMP | Phase 3 | Construction | DH2300 | Oscar Armenta | DELETED | BAB | DH1100 |  |  |  |  |  |  |  |  |  |  |
| QTS-5331 | **DELETED** Gallery 2302 / Lineup F2300 // Set Reserve Busway Segment | 2d | 2026-07-14 A | 2026-07-14 A | QTS-1020 | 100% | 2026-07-15 | 2026-07-16 | QTS-PHX3 DC1 - 6 day w/ Holidays | Construction | Electrical | IGMP | Phase 3 | Construction | DH2300 | Oscar Armenta | DELETED | BAB | DH1100 |  |  |  |  |  |  |  |  |  |  |
| QTS-5411 | **DELETED** Gallery 1302 / Lineup E1300 // Set Reserve Busway Segment | 2d | 2026-07-14 A | 2026-07-14 A | QTS-1020 | 100% | 2026-08-08 | 2026-08-10 | QTS-PHX3 DC1 - 6 day w/ Holidays | Construction | Electrical | IGMP | Phase 3 | Construction | DH1300 |  | DELETED | BAB | DH1100 |  |  |  |  |  |  |  |  |  |  |
| QTS-5431 | **DELETED** Gallery 1302 / Lineup F1300 // Set Reserve Busway Segment | 2d | 2026-07-14 A | 2026-07-14 A | QTS-1020 | 100% | 2026-08-08 | 2026-08-10 | QTS-PHX3 DC1 - 6 day w/ Holidays | Construction | Electrical | IGMP | Phase 3 | Construction | DH1300 |  | DELETED | BAB | DH1100 |  |  |  |  |  |  |  |  |  |  |
| QTS-6231 | **DELETED** Gallery 1302 / Lineup R1300 // Pull LV Cables from POD to Reserve Busway | 4d | 2026-07-14 A | 2026-07-14 A | QTS-1020 | 100% | 2026-07-15 | 2026-07-18 | QTS-PHX3 DC1 - 6 day w/ Holidays | Construction | Electrical | IGMP | Phase 3 | Construction | DH1300 | Oscar Armenta | DELETED | BAB | DH1100 |  |  |  |  |  |  |  |  |  |  |
| QTS-7231 | **DELETED** Gallery 2302 / Lineup R2300 // Terminate Reserve Busway | 2d | 2026-07-14 A | 2026-07-14 A | QTS-1020 | 100% | 2026-07-20 | 2026-07-21 | QTS-PHX3 DC1 - 6 day w/ Holidays | Construction | Electrical | IGMP | Phase 3 | Construction | DH2300 | Oscar Armenta | DELETED | BAB | DH1100 |  |  |  |  |  |  |  |  |  |  |
| QTS-7241 | **DELETED** Gallery 2302 / Lineup R2300 // Pull LV Cables from POD to Reserve Busway | 4d | 2026-07-14 A | 2026-07-14 A | QTS-1020 | 100% | 2026-07-15 | 2026-07-18 | QTS-PHX3 DC1 - 6 day w/ Holidays | Construction | Electrical | IGMP | Phase 3 | Construction | DH2300 | Oscar Armenta | DELETED | BAB | DH1100 |  |  |  |  |  |  |  |  |  |  |
| QTS-7281 | **DELETED** Gallery 1302 / Lineup R1300 // Terminate Reserve Busway | 2d | 2026-07-14 A | 2026-07-14 A | QTS-1020 | 100% | 2026-07-20 | 2026-07-21 | QTS-PHX3 DC1 - 6 day w/ Holidays | Construction | Electrical | IGMP | Phase 3 | Construction | DH1300 | Oscar Armenta | DELETED | BAB | DH1100 |  |  |  | Wire needs to be pulled | Wire needs to be pulled |  |  |  |  |  |
| QTS-7811 | **DELETED** Restrooms #2071 // Install Wall & Floor Tile | 10d | 2026-07-14 A | 2026-07-14 A | QTS-1020 | 100% | 2026-07-24 | 2026-08-04 | QTS-PHX3 DC1 - 6 day w/ Holidays | Construction | Build Out | IGMP | Phase 1 | Construction | BOH | Jake Shimmin | DELETED | BAB | DH1100 |  | Level 2 |  |  |  | 2023-04-10 | 2023-04-06 |  |  |  |
| QTS-9401 | **DELETED** Gallery 2302 / Lineup B2300 // Terminate & Torque COD | 7d | 2026-07-14 A | 2026-07-14 A | QTS-1020 | 100% | 2026-07-23 | 2026-07-30 | QTS-PHX3 DC1 - 6 day w/ Holidays | Construction | Electrical | IGMP | Phase 3 | Construction | DH2300 | Oscar Armenta | DELETED | BAB | DH1100 |  |  |  |  |  |  |  |  |  |  |
| QTS-9431 | **DELETED** Gallery 2302 / Lineup C2300 // Terminate & Torque COD | 7d | 2026-07-14 A | 2026-07-14 A | QTS-1020 | 100% | 2026-07-23 | 2026-07-30 | QTS-PHX3 DC1 - 6 day w/ Holidays | Construction | Electrical | IGMP | Phase 3 | Construction | DH2300 | Oscar Armenta | DELETED | BAB | DH1100 |  |  |  |  |  |  |  |  |  |  |
| QTS-9491 | **DELETED** Gallery 2302 / Lineup E2300 // Terminate & Torque COD | 7d | 2026-07-14 A | 2026-07-14 A | QTS-1020 | 100% | 2026-07-23 | 2026-07-30 | QTS-PHX3 DC1 - 6 day w/ Holidays | Construction | Electrical | IGMP | Phase 3 | Construction | DH2300 |  | DELETED | BAB | DH1100 |  |  |  |  |  |  |  |  |  |  |
| QTS-9521 | **DELETED** Gallery 2302 / Lineup F2300 // Terminate & Torque COD | 7d | 2026-07-14 A | 2026-07-14 A | QTS-1020 | 100% | 2026-07-23 | 2026-07-30 | QTS-PHX3 DC1 - 6 day w/ Holidays | Construction | Electrical | IGMP | Phase 3 | Construction | DH2300 |  | DELETED | BAB | DH1100 |  |  |  |  |  |  |  |  |  |  |
| QTS-9551 | **DELETED** Gallery 1302 / Lineup B1300 // Terminate & Torque ATS | 7d | 2026-07-14 A | 2026-07-14 A | QTS-1020 | 100% | 2026-07-15 | 2026-07-22 | QTS-PHX3 DC1 - 6 day w/ Holidays | Construction | Electrical | IGMP | Phase 3 | Construction | DH1300 | Oscar Armenta | DELETED | BAB | DH1100 |  |  |  |  |  |  |  |  |  |  |
| QTS-9561 | **DELETED** Gallery 1302 / Lineup B1300 // Terminate & Torque COD | 7d | 2026-07-14 A | 2026-07-14 A | QTS-1020 | 100% | 2026-07-23 | 2026-07-30 | QTS-PHX3 DC1 - 6 day w/ Holidays | Construction | Electrical | IGMP | Phase 3 | Construction | DH1300 |  | DELETED | BAB | DH1100 |  |  |  |  |  |  |  |  |  |  |
| QTS-9581 | **DELETED** Gallery 1302 / Lineup C1300 // Terminate & Torque ATS | 7d | 2026-07-14 A | 2026-07-14 A | QTS-1020 | 100% | 2026-07-15 | 2026-07-22 | QTS-PHX3 DC1 - 6 day w/ Holidays | Construction | Electrical | IGMP | Phase 3 | Construction | DH1300 |  | DELETED | BAB | DH1100 |  |  |  |  |  |  |  |  |  |  |
| QTS-9591 | **DELETED** Gallery 1302 / Lineup C1300 // Terminate & Torque COD | 7d | 2026-07-14 A | 2026-07-14 A | QTS-1020 | 100% | 2026-07-23 | 2026-07-30 | QTS-PHX3 DC1 - 6 day w/ Holidays | Construction | Electrical | IGMP | Phase 3 | Construction | DH1300 |  | DELETED | BAB | DH1100 |  |  |  |  |  |  |  |  |  |  |
| QTS-9611 | **DELETED** Gallery 1302 / Lineup D1300 // Terminate & Torque ATS | 7d | 2026-07-14 A | 2026-07-14 A | QTS-1020 | 100% | 2026-07-15 | 2026-07-22 | QTS-PHX3 DC1 - 6 day w/ Holidays | Construction | Electrical | IGMP | Phase 3 | Construction | DH1300 |  | DELETED | BAB | DH1100 |  |  |  |  |  |  |  |  |  |  |
| QTS-9621 | **DELETED** Gallery 1302 / Lineup D1300 // Terminate & Torque COD | 7d | 2026-07-14 A | 2026-07-14 A | QTS-1020 | 100% | 2026-07-23 | 2026-07-30 | QTS-PHX3 DC1 - 6 day w/ Holidays | Construction | Electrical | IGMP | Phase 3 | Construction | DH1300 |  | DELETED | BAB | DH1100 |  |  |  |  |  |  |  |  |  |  |
| QTS-9641 | **DELETED** Gallery 1302 / Lineup E1300 // Terminate & Torque ATS | 7d | 2026-07-14 A | 2026-07-14 A | QTS-1020 | 100% | 2026-08-11 | 2026-08-18 | QTS-PHX3 DC1 - 6 day w/ Holidays | Construction | Electrical | IGMP | Phase 3 | Construction | DH1300 |  | DELETED | BAB | DH1100 |  |  |  |  |  |  |  |  |  |  |
| QTS-9651 | **DELETED** Gallery 1302 / Lineup E1300 // Terminate & Torque COD | 7d | 2026-07-14 A | 2026-07-14 A | QTS-1020 | 100% | 2026-08-19 | 2026-08-26 | QTS-PHX3 DC1 - 6 day w/ Holidays | Construction | Electrical | IGMP | Phase 3 | Construction | DH1300 |  | DELETED | BAB | DH1100 |  |  |  |  |  |  |  |  |  |  |
| QTS-9671 | **DELETED** Gallery 1302 / Lineup F1300 // Terminate & Torque ATS | 6d | 2026-07-14 A | 2026-07-14 A | QTS-1020 | 100% | 2026-08-11 | 2026-08-17 | QTS-PHX3 DC1 - 6 day w/ Holidays | Construction | Electrical | IGMP | Phase 3 | Construction | DH1300 |  | DELETED | BAB | DH1100 |  |  |  |  |  |  |  |  |  |  |
| QTS-9681 | **DELETED** Gallery 1302 / Lineup F1300 // Terminate & Torque COD | 6d | 2026-07-14 A | 2026-07-14 A | QTS-1020 | 100% | 2026-08-18 | 2026-08-24 | QTS-PHX3 DC1 - 6 day w/ Holidays | Construction | Electrical | IGMP | Phase 3 | Construction | DH1300 |  | DELETED | BAB | DH1100 |  |  |  |  |  |  |  |  |  |  |
| DC1-ATS-L2-2790 | **DELETED** DH1200 ATS-B12-02 L2 Checklist | 3d | 2026-07-15 A | 2026-07-16 A | QTS-1020 | 100% | 2026-07-15 | 2026-07-17 |  |  | Commissioning |  |  |  | DH1200 |  | DELETED |  | DH1100 |  |  |  |  |  |  |  | MAV | L2 | ATS |
| DC1-ATS-L2-2800 | **DELETED** DH1200 ATS-B12-03 L2 Checklist | 3d | 2026-07-15 A | 2026-07-16 A | QTS-1020 | 100% | 2026-07-15 | 2026-07-17 |  |  | Commissioning |  |  |  | DH1200 |  | DELETED |  | DH1100 |  |  |  |  |  |  |  | MAV | L2 | ATS |
| DC1-ATS-L2-2810 | **DELETED** DH1200 ATS-B12-04 L2 Checklist | 3d | 2026-07-15 A | 2026-07-16 A | QTS-1020 | 100% | 2026-07-15 | 2026-07-17 |  |  | Commissioning |  |  |  | DH1200 |  | DELETED |  | DH1100 |  |  |  |  |  |  |  | MAV | L2 | ATS |
| DC1-ATS-L2-2820 | **DELETED** DH1200 ATS-B12-05 L2 Checklist | 3d | 2026-07-15 A | 2026-07-16 A | QTS-1020 | 100% | 2026-07-15 | 2026-07-17 |  |  | Commissioning |  |  |  | DH1200 |  | DELETED |  | DH1100 |  |  |  |  |  |  |  | MAV | L2 | ATS |
| DC1-ATS-L2-2830 | **DELETED** DH1200 ATS-B12-06 L2 Checklist | 3d | 2026-07-15 A | 2026-07-16 A | QTS-1020 | 100% | 2026-07-15 | 2026-07-17 |  |  | Commissioning |  |  |  | DH1200 |  | DELETED |  | DH1100 |  |  |  |  |  |  |  | MAV | L2 | ATS |
| DC1-ATS-L2-2840 | **DELETED** DH1200 ATS-C12-01 L2 Checklist | 3d | 2026-07-15 A | 2026-07-16 A | QTS-1020 | 100% | 2026-07-15 | 2026-07-17 |  |  | Commissioning |  |  |  | DH1200 |  | DELETED |  | DH1100 |  |  |  |  |  |  |  | MAV | L2 | ATS |
| DC1-ATS-L2-2850 | **DELETED** DH1200 ATS-C12-02 L2 Checklist | 3d | 2026-07-15 A | 2026-07-16 A | QTS-1020 | 100% | 2026-07-15 | 2026-07-17 |  |  | Commissioning |  |  |  | DH1200 |  | DELETED |  | DH1100 |  |  |  |  |  |  |  | MAV | L2 | ATS |
| DC1-ATS-L2-2860 | **DELETED** DH1200 ATS-C12-03 L2 Checklist | 3d | 2026-07-15 A | 2026-07-16 A | QTS-1020 | 100% | 2026-07-15 | 2026-07-17 |  |  | Commissioning |  |  |  | DH1200 |  | DELETED |  | DH1100 |  |  |  |  |  |  |  | MAV | L2 | ATS |
| DC1-ATS-L2-2870 | **DELETED** DH1200 ATS-C12-04 L2 Checklist | 3d | 2026-07-15 A | 2026-07-16 A | QTS-1020 | 100% | 2026-07-15 | 2026-07-17 |  |  | Commissioning |  |  |  | DH1200 |  | DELETED |  | DH1100 |  |  |  |  |  |  |  | MAV | L2 | ATS |
| DC1-ATS-L2-2880 | **DELETED** DH1200 ATS-C12-05 L2 Checklist | 3d | 2026-07-15 A | 2026-07-16 A | QTS-1020 | 100% | 2026-07-15 | 2026-07-17 |  |  | Commissioning |  |  |  | DH1200 |  | DELETED |  | DH1100 |  |  |  |  |  |  |  | MAV | L2 | ATS |
| DC1-ATS-L2-2890 | **DELETED** DH1200 ATS-C12-06 L2 Checklist | 3d | 2026-07-15 A | 2026-07-16 A | QTS-1020 | 100% | 2026-07-15 | 2026-07-17 |  |  | Commissioning |  |  |  | DH1200 |  | DELETED |  | DH1100 |  |  |  |  |  |  |  | MAV | L2 | ATS |
| DC1-ATS-L2-2900 | **DELETED** DH1200 ATS-D12-01 L2 Checklist | 3d | 2026-07-15 A | 2026-07-16 A | QTS-1020 | 100% | 2026-07-15 | 2026-07-17 |  |  | Commissioning |  |  |  | DH1200 |  | DELETED |  | DH1100 |  |  |  |  |  |  |  | MAV | L2 | ATS |
| DC1-ATS-L2-2910 | **DELETED** DH1200 ATS-D12-02 L2 Checklist | 3d | 2026-07-15 A | 2026-07-16 A | QTS-1020 | 100% | 2026-07-15 | 2026-07-17 |  |  | Commissioning |  |  |  | DH1200 |  | DELETED |  | DH1100 |  |  |  |  |  |  |  | MAV | L2 | ATS |

Notes:
- QTS-7281: Scheduler Notes: Wire needs to be pulled
- DC1-ATS-L2-2790: Steps: EC Installation Checklist; CC Installation Checklist; Vendor Pre-Energization Checklist (done); CXA Pre-Energization Inspection; PEI/Clean-Walk
- DC1-ATS-L2-2800: Steps: EC Installation Checklist; CC Installation Checklist; Vendor Pre-Energization Checklist; CXA Pre-Energization Inspection; PEI/Clean-Walk
- DC1-ATS-L2-2810: Steps: EC Installation Checklist; CC Installation Checklist; Vendor Pre-Energization Checklist; CXA Pre-Energization Inspection; PEI/Clean-Walk
- DC1-ATS-L2-2820: Steps: EC Installation Checklist; CC Installation Checklist; Vendor Pre-Energization Checklist; CXA Pre-Energization Inspection; PEI/Clean-Walk
- DC1-ATS-L2-2830: Steps: EC Installation Checklist; CC Installation Checklist; Vendor Pre-Energization Checklist; CXA Pre-Energization Inspection; PEI/Clean-Walk
- DC1-ATS-L2-2840: Steps: EC Installation Checklist; CC Installation Checklist; Vendor Pre-Energization Checklist; CXA Pre-Energization Inspection; PEI/Clean-Walk
- DC1-ATS-L2-2850: Steps: EC Installation Checklist; CC Installation Checklist; Vendor Pre-Energization Checklist; CXA Pre-Energization Inspection; PEI/Clean-Walk
- DC1-ATS-L2-2860: Steps: EC Installation Checklist; CC Installation Checklist; Vendor Pre-Energization Checklist; CXA Pre-Energization Inspection; PEI/Clean-Walk
- DC1-ATS-L2-2870: Steps: EC Installation Checklist; CC Installation Checklist; Vendor Pre-Energization Checklist; CXA Pre-Energization Inspection; PEI/Clean-Walk
- DC1-ATS-L2-2880: Steps: EC Installation Checklist; CC Installation Checklist; Vendor Pre-Energization Checklist; CXA Pre-Energization Inspection; PEI/Clean-Walk
- DC1-ATS-L2-2890: Steps: EC Installation Checklist; CC Installation Checklist; Vendor Pre-Energization Checklist; CXA Pre-Energization Inspection; PEI/Clean-Walk
- DC1-ATS-L2-2900: Steps: EC Installation Checklist; CC Installation Checklist; Vendor Pre-Energization Checklist; CXA Pre-Energization Inspection; PEI/Clean-Walk
- DC1-ATS-L2-2910: Steps: EC Installation Checklist; CC Installation Checklist; Vendor Pre-Energization Checklist; CXA Pre-Energization Inspection; PEI/Clean-Walk

| ID | Activity | Duration | Start | Finish | Predecessors | Complete | Planned start | Planned finish | Vendor Responsible Party | Layton Discipline | Location | CX Level | Equipment | DELETED | D |
| --- | --- | --- | --- | --- | --- | --- | --- | --- | --- | --- | --- | --- | --- | --- | --- |
| DC1-ATS-L2-2920 | **DELETED** DH1200 ATS-D12-03 L2 Checklist | 3d | 2026-07-15 A | 2026-07-16 A | QTS-1020 | 100% | 2026-07-15 | 2026-07-17 | MAV | Commissioning | DH1200 | L2 | ATS | DELETED | DH1100 |
| DC1-ATS-L2-2930 | **DELETED** DH1200 ATS-D12-04 L2 Checklist | 3d | 2026-07-15 A | 2026-07-16 A | QTS-1020 | 100% | 2026-07-15 | 2026-07-17 | MAV | Commissioning | DH1200 | L2 | ATS | DELETED | DH1100 |
| DC1-ATS-L2-2940 | **DELETED** DH1200 ATS-D12-05 L2 Checklist | 3d | 2026-07-15 A | 2026-07-16 A | QTS-1020 | 100% | 2026-07-15 | 2026-07-17 | MAV | Commissioning | DH1200 | L2 | ATS | DELETED | DH1100 |
| DC1-ATS-L2-2950 | **DELETED** DH1200 ATS-D12-06 L2 Checklist | 3d | 2026-07-15 A | 2026-07-16 A | QTS-1020 | 100% | 2026-07-15 | 2026-07-17 | MAV | Commissioning | DH1200 | L2 | ATS | DELETED | DH1100 |
| DC1-ATS-L2-2960 | **DELETED** DH1200 ATS-E12-01 L2 Checklist | 3d | 2026-07-15 A | 2026-07-16 A | QTS-1020 | 100% | 2026-07-15 | 2026-07-17 | MAV | Commissioning | DH1200 | L2 | ATS | DELETED | DH1100 |
| DC1-ATS-L2-2970 | **DELETED** DH1200 ATS-E12-02 L2 Checklist | 3d | 2026-07-15 A | 2026-07-16 A | QTS-1020 | 100% | 2026-07-15 | 2026-07-17 | MAV | Commissioning | DH1200 | L2 | ATS | DELETED | DH1100 |
| DC1-ATS-L2-2980 | **DELETED** DH1200 ATS-E12-03 L2 Checklist | 3d | 2026-07-15 A | 2026-07-16 A | QTS-1020 | 100% | 2026-07-15 | 2026-07-17 | MAV | Commissioning | DH1200 | L2 | ATS | DELETED | DH1100 |
| DC1-ATS-L2-2990 | **DELETED** DH1200 ATS-E12-04 L2 Checklist | 3d | 2026-07-15 A | 2026-07-16 A | QTS-1020 | 100% | 2026-07-15 | 2026-07-17 | MAV | Commissioning | DH1200 | L2 | ATS | DELETED | DH1100 |
| DC1-ATS-L2-3000 | **DELETED** DH1200 ATS-E12-05 L2 Checklist | 3d | 2026-07-15 A | 2026-07-16 A | QTS-1020 | 100% | 2026-07-15 | 2026-07-17 | MAV | Commissioning | DH1200 | L2 | ATS | DELETED | DH1100 |
| DC1-ATS-L2-3010 | **DELETED** DH1200 ATS-E12-06 L2 Checklist | 3d | 2026-07-15 A | 2026-07-16 A | QTS-1020 | 100% | 2026-07-15 | 2026-07-17 | MAV | Commissioning | DH1200 | L2 | ATS | DELETED | DH1100 |
| DC1-ATS-L2-3020 | **DELETED** DH1200 ATS-F12-01 L2 Checklist | 3d | 2026-07-15 A | 2026-07-16 A | QTS-1020 | 100% | 2026-07-15 | 2026-07-17 | MAV | Commissioning | DH1200 | L2 | ATS | DELETED | DH1100 |
| DC1-ATS-L2-3030 | **DELETED** DH1200 ATS-F12-02 L2 Checklist | 3d | 2026-07-15 A | 2026-07-16 A | QTS-1020 | 100% | 2026-07-15 | 2026-07-17 | MAV | Commissioning | DH1200 | L2 | ATS | DELETED | DH1100 |
| DC1-ATS-L2-3040 | **DELETED** DH1200 ATS-F12-03 L2 Checklist | 3d | 2026-07-15 A | 2026-07-16 A | QTS-1020 | 100% | 2026-07-15 | 2026-07-17 | MAV | Commissioning | DH1200 | L2 | ATS | DELETED | DH1100 |
| DC1-ATS-L2-3050 | **DELETED** DH1200 ATS-F12-04 L2 Checklist | 3d | 2026-07-15 A | 2026-07-16 A | QTS-1020 | 100% | 2026-07-15 | 2026-07-17 | MAV | Commissioning | DH1200 | L2 | ATS | DELETED | DH1100 |
| DC1-ATS-L2-3060 | **DELETED** DH1200 ATS-F12-05 L2 Checklist | 3d | 2026-07-15 A | 2026-07-16 A | QTS-1020 | 100% | 2026-07-15 | 2026-07-17 | MAV | Commissioning | DH1200 | L2 | ATS | DELETED | DH1100 |
| DC1-ATS-L2-3070 | **DELETED** DH1200 ATS-F12-06 L2 Checklist | 3d | 2026-07-15 A | 2026-07-16 A | QTS-1020 | 100% | 2026-07-15 | 2026-07-17 | MAV | Commissioning | DH1200 | L2 | ATS | DELETED | DH1100 |
| DC1-ATS-L2-3080 | **DELETED** DH2300 ATS-A23-01 L2 Checklist | 3d | 2026-07-15 A | 2026-07-15 A | QTS-1020 | 100% | 2026-07-15 | 2026-07-17 | MAV | Commissioning | DH2300 | L2 | ATS | DELETED | DH1100 |
| DC1-ATS-L2-3090 | **DELETED** DH2300 ATS-A23-02 L2 Checklist | 3d | 2026-07-15 A | 2026-07-15 A | QTS-1020 | 100% | 2026-07-15 | 2026-07-17 | MAV | Commissioning | DH2300 | L2 | ATS | DELETED | DH1100 |
| DC1-ATS-L2-3100 | **DELETED** DH2300 ATS-A23-03 L2 Checklist | 3d | 2026-07-15 A | 2026-07-15 A | QTS-1020 | 100% | 2026-07-15 | 2026-07-17 | MAV | Commissioning | DH2300 | L2 | ATS | DELETED | DH1100 |
| DC1-ATS-L2-3110 | **DELETED** DH2300 ATS-A23-04 L2 Checklist | 3d | 2026-07-15 A | 2026-07-15 A | QTS-1020 | 100% | 2026-07-15 | 2026-07-17 | MAV | Commissioning | DH2300 | L2 | ATS | DELETED | DH1100 |
| DC1-ATS-L2-3120 | **DELETED** DH2300 ATS-A23-05 L2 Checklist | 3d | 2026-07-15 A | 2026-07-15 A | QTS-1020 | 100% | 2026-07-15 | 2026-07-17 | MAV | Commissioning | DH2300 | L2 | ATS | DELETED | DH1100 |
| DC1-ATS-L2-3130 | **DELETED** DH2300 ATS-A23-06 L2 Checklist | 3d | 2026-07-15 A | 2026-07-15 A | QTS-1020 | 100% | 2026-07-15 | 2026-07-17 | MAV | Commissioning | DH2300 | L2 | ATS | DELETED | DH1100 |
| DC1-ATS-L2-3140 | **DELETED** DH2300 ATS-B23-01 L2 Checklist | 3d | 2026-07-15 A | 2026-07-15 A | QTS-1020 | 100% | 2026-07-15 | 2026-07-17 | MAV | Commissioning | DH2300 | L2 | ATS | DELETED | DH1100 |
| DC1-ATS-L2-3150 | **DELETED** DH2300 ATS-B23-02 L2 Checklist | 3d | 2026-07-15 A | 2026-07-15 A | QTS-1020 | 100% | 2026-07-15 | 2026-07-17 | MAV | Commissioning | DH2300 | L2 | ATS | DELETED | DH1100 |
| DC1-ATS-L2-3160 | **DELETED** DH2300 ATS-B23-03 L2 Checklist | 3d | 2026-07-15 A | 2026-07-15 A | QTS-1020 | 100% | 2026-07-15 | 2026-07-17 | MAV | Commissioning | DH2300 | L2 | ATS | DELETED | DH1100 |
| DC1-ATS-L2-3170 | **DELETED** DH2300 ATS-B23-04 L2 Checklist | 3d | 2026-07-15 A | 2026-07-15 A | QTS-1020 | 100% | 2026-07-15 | 2026-07-17 | MAV | Commissioning | DH2300 | L2 | ATS | DELETED | DH1100 |
| DC1-ATS-L2-3180 | **DELETED** DH2300 ATS-B23-05 L2 Checklist | 3d | 2026-07-15 A | 2026-07-15 A | QTS-1020 | 100% | 2026-07-15 | 2026-07-17 | MAV | Commissioning | DH2300 | L2 | ATS | DELETED | DH1100 |
| DC1-ATS-L2-3190 | **DELETED** DH2300 ATS-B23-06 L2 Checklist | 3d | 2026-07-15 A | 2026-07-15 A | QTS-1020 | 100% | 2026-07-15 | 2026-07-17 | MAV | Commissioning | DH2300 | L2 | ATS | DELETED | DH1100 |
| DC1-ATS-L2-3200 | **DELETED** DH2300 ATS-C23-01 L2 Checklist | 3d | 2026-07-15 A | 2026-07-15 A | QTS-1020 | 100% | 2026-07-15 | 2026-07-17 | MAV | Commissioning | DH2300 | L2 | ATS | DELETED | DH1100 |
| DC1-ATS-L2-3210 | **DELETED** DH2300 ATS-C23-02 L2 Checklist | 3d | 2026-07-15 A | 2026-07-15 A | QTS-1020 | 100% | 2026-07-15 | 2026-07-17 | MAV | Commissioning | DH2300 | L2 | ATS | DELETED | DH1100 |
| DC1-ATS-L2-3220 | **DELETED** DH2300 ATS-C23-03 L2 Checklist | 3d | 2026-07-15 A | 2026-07-15 A | QTS-1020 | 100% | 2026-07-15 | 2026-07-17 | MAV | Commissioning | DH2300 | L2 | ATS | DELETED | DH1100 |
| DC1-ATS-L2-3230 | **DELETED** DH2300 ATS-C23-04 L2 Checklist | 3d | 2026-07-15 A | 2026-07-15 A | QTS-1020 | 100% | 2026-07-15 | 2026-07-17 | MAV | Commissioning | DH2300 | L2 | ATS | DELETED | DH1100 |
| DC1-ATS-L2-3240 | **DELETED** DH2300 ATS-C23-05 L2 Checklist | 3d | 2026-07-15 A | 2026-07-15 A | QTS-1020 | 100% | 2026-07-15 | 2026-07-17 | MAV | Commissioning | DH2300 | L2 | ATS | DELETED | DH1100 |
| DC1-ATS-L2-3250 | **DELETED** DH2300 ATS-C23-06 L2 Checklist | 3d | 2026-07-15 A | 2026-07-15 A | QTS-1020 | 100% | 2026-07-15 | 2026-07-17 | MAV | Commissioning | DH2300 | L2 | ATS | DELETED | DH1100 |
| DC1-ATS-L2-3260 | **DELETED** DH2300 ATS-D23-01 L2 Checklist | 3d | 2026-07-15 A | 2026-07-15 A | QTS-1020 | 100% | 2026-07-15 | 2026-07-17 | MAV | Commissioning | DH2300 | L2 | ATS | DELETED | DH1100 |
| DC1-ATS-L2-3270 | **DELETED** DH2300 ATS-D23-02 L2 Checklist | 3d | 2026-07-15 A | 2026-07-15 A | QTS-1020 | 100% | 2026-07-15 | 2026-07-17 | MAV | Commissioning | DH2300 | L2 | ATS | DELETED | DH1100 |
| DC1-ATS-L2-3280 | **DELETED** DH2300 ATS-D23-03 L2 Checklist | 3d | 2026-07-15 A | 2026-07-15 A | QTS-1020 | 100% | 2026-07-15 | 2026-07-17 | MAV | Commissioning | DH2300 | L2 | ATS | DELETED | DH1100 |
| DC1-ATS-L2-3290 | **DELETED** DH2300 ATS-D23-04 L2 Checklist | 3d | 2026-07-15 A | 2026-07-15 A | QTS-1020 | 100% | 2026-07-15 | 2026-07-17 | MAV | Commissioning | DH2300 | L2 | ATS | DELETED | DH1100 |
| DC1-ATS-L2-3300 | **DELETED** DH2300 ATS-D23-05 L2 Checklist | 3d | 2026-07-15 A | 2026-07-15 A | QTS-1020 | 100% | 2026-07-15 | 2026-07-17 | MAV | Commissioning | DH2300 | L2 | ATS | DELETED | DH1100 |
| DC1-ATS-L2-3310 | **DELETED** DH2300 ATS-D23-06 L2 Checklist | 3d | 2026-07-15 A | 2026-07-15 A | QTS-1020 | 100% | 2026-07-15 | 2026-07-17 | MAV | Commissioning | DH2300 | L2 | ATS | DELETED | DH1100 |
| DC1-ATS-L2-3320 | **DELETED** DH2300 ATS-E23-01 L2 Checklist | 3d | 2026-07-15 A | 2026-07-15 A | QTS-1020 | 100% | 2026-07-15 | 2026-07-17 | MAV | Commissioning | DH2300 | L2 | ATS | DELETED | DH1100 |
| DC1-ATS-L2-3330 | **DELETED** DH2300 ATS-E23-02 L2 Checklist | 3d | 2026-07-15 A | 2026-07-15 A | QTS-1020 | 100% | 2026-07-15 | 2026-07-17 | MAV | Commissioning | DH2300 | L2 | ATS | DELETED | DH1100 |
| DC1-ATS-L2-3340 | **DELETED** DH2300 ATS-E23-03 L2 Checklist | 3d | 2026-07-15 A | 2026-07-15 A | QTS-1020 | 100% | 2026-07-15 | 2026-07-17 | MAV | Commissioning | DH2300 | L2 | ATS | DELETED | DH1100 |
| DC1-ATS-L2-3350 | **DELETED** DH2300 ATS-E23-04 L2 Checklist | 3d | 2026-07-15 A | 2026-07-15 A | QTS-1020 | 100% | 2026-07-15 | 2026-07-17 | MAV | Commissioning | DH2300 | L2 | ATS | DELETED | DH1100 |
| DC1-ATS-L2-3360 | **DELETED** DH2300 ATS-E23-05 L2 Checklist | 3d | 2026-07-15 A | 2026-07-15 A | QTS-1020 | 100% | 2026-07-15 | 2026-07-17 | MAV | Commissioning | DH2300 | L2 | ATS | DELETED | DH1100 |
| DC1-ATS-L2-3370 | **DELETED** DH2300 ATS-E23-06 L2 Checklist | 3d | 2026-07-15 A | 2026-07-15 A | QTS-1020 | 100% | 2026-07-15 | 2026-07-17 | MAV | Commissioning | DH2300 | L2 | ATS | DELETED | DH1100 |
| DC1-ATS-L2-3380 | **DELETED** DH2300 ATS-F23-01 L2 Checklist | 3d | 2026-07-15 A | 2026-07-15 A | QTS-1020 | 100% | 2026-07-15 | 2026-07-17 | MAV | Commissioning | DH2300 | L2 | ATS | DELETED | DH1100 |
| DC1-ATS-L2-3390 | **DELETED** DH2300 ATS-F23-02 L2 Checklist | 3d | 2026-07-15 A | 2026-07-15 A | QTS-1020 | 100% | 2026-07-15 | 2026-07-17 | MAV | Commissioning | DH2300 | L2 | ATS | DELETED | DH1100 |
| DC1-ATS-L2-3400 | **DELETED** DH2300 ATS-F23-03 L2 Checklist | 3d | 2026-07-15 A | 2026-07-15 A | QTS-1020 | 100% | 2026-07-15 | 2026-07-17 | MAV | Commissioning | DH2300 | L2 | ATS | DELETED | DH1100 |
| DC1-ATS-L2-3410 | **DELETED** DH2300 ATS-F23-04 L2 Checklist | 3d | 2026-07-15 A | 2026-07-15 A | QTS-1020 | 100% | 2026-07-15 | 2026-07-17 | MAV | Commissioning | DH2300 | L2 | ATS | DELETED | DH1100 |
| DC1-ATS-L2-3420 | **DELETED** DH2300 ATS-F23-05 L2 Checklist | 3d | 2026-07-15 A | 2026-07-15 A | QTS-1020 | 100% | 2026-07-15 | 2026-07-17 | MAV | Commissioning | DH2300 | L2 | ATS | DELETED | DH1100 |
| DC1-ATS-L2-3430 | **DELETED** DH2300 ATS-F23-06 L2 Checklist | 3d | 2026-07-15 A | 2026-07-15 A | QTS-1020 | 100% | 2026-07-15 | 2026-07-17 | MAV | Commissioning | DH2300 | L2 | ATS | DELETED | DH1100 |
| DC1-ATS-L2-3440 | **DELETED** **DELETED** DH1300 ATS-A13-01 L2 Checklist | 3d | 2026-07-15 A | 2026-07-15 A | QTS-1020 | 100% | 2026-07-15 | 2026-07-17 | MAV | Commissioning | DH1300 | L2 | ATS | DELETED | DH1100 |
| DC1-ATS-L2-3450 | **DELETED** **DELETED** DH1300 ATS-A13-02 L2 Checklist | 3d | 2026-07-15 A | 2026-07-15 A | QTS-1020 | 100% | 2026-07-15 | 2026-07-17 | MAV | Commissioning | DH1300 | L2 | ATS | DELETED | DH1100 |
| DC1-ATS-L2-3460 | **DELETED** **DELETED** DH1300 ATS-A13-03 L2 Checklist | 3d | 2026-07-15 A | 2026-07-15 A | QTS-1020 | 100% | 2026-07-15 | 2026-07-17 | MAV | Commissioning | DH1300 | L2 | ATS | DELETED | DH1100 |
| DC1-ATS-L2-3470 | **DELETED** **DELETED** DH1300 ATS-A13-04 L2 Checklist | 3d | 2026-07-15 A | 2026-07-15 A | QTS-1020 | 100% | 2026-07-15 | 2026-07-17 | MAV | Commissioning | DH1300 | L2 | ATS | DELETED | DH1100 |
| DC1-ATS-L2-3480 | **DELETED** **DELETED** DH1300 ATS-A13-05 L2 Checklist | 3d | 2026-07-15 A | 2026-07-15 A | QTS-1020 | 100% | 2026-07-15 | 2026-07-17 | MAV | Commissioning | DH1300 | L2 | ATS | DELETED | DH1100 |
| DC1-ATS-L2-3490 | **DELETED** **DELETED** DH1300 ATS-A13-06 L2 Checklist | 3d | 2026-07-15 A | 2026-07-15 A | QTS-1020 | 100% | 2026-07-15 | 2026-07-17 | MAV | Commissioning | DH1300 | L2 | ATS | DELETED | DH1100 |
| DC1-ATS-L2-3500 | **DELETED** **DELETED** DH1300 ATS-B13-01 L2 Checklist | 3d | 2026-07-15 A | 2026-07-15 A | QTS-1020 | 100% | 2026-07-15 | 2026-07-17 | MAV | Commissioning | DH1300 | L2 | ATS | DELETED | DH1100 |
| DC1-ATS-L2-3510 | **DELETED** **DELETED** DH1300 ATS-B13-02 L2 Checklist | 3d | 2026-07-15 A | 2026-07-15 A | QTS-1020 | 100% | 2026-07-15 | 2026-07-17 | MAV | Commissioning | DH1300 | L2 | ATS | DELETED | DH1100 |
| DC1-ATS-L2-3520 | **DELETED** **DELETED** DH1300 ATS-B13-03 L2 Checklist | 3d | 2026-07-15 A | 2026-07-15 A | QTS-1020 | 100% | 2026-07-15 | 2026-07-17 | MAV | Commissioning | DH1300 | L2 | ATS | DELETED | DH1100 |
| DC1-ATS-L2-3530 | **DELETED** **DELETED** DH1300 ATS-B13-04 L2 Checklist | 3d | 2026-07-15 A | 2026-07-15 A | QTS-1020 | 100% | 2026-07-15 | 2026-07-17 | MAV | Commissioning | DH1300 | L2 | ATS | DELETED | DH1100 |
| DC1-ATS-L2-3540 | **DELETED** **DELETED** DH1300 ATS-B13-05 L2 Checklist | 3d | 2026-07-15 A | 2026-07-15 A | QTS-1020 | 100% | 2026-07-15 | 2026-07-17 | MAV | Commissioning | DH1300 | L2 | ATS | DELETED | DH1100 |
| DC1-ATS-L2-3550 | **DELETED** **DELETED** DH1300 ATS-B13-06 L2 Checklist | 3d | 2026-07-15 A | 2026-07-15 A | QTS-1020 | 100% | 2026-07-15 | 2026-07-17 | MAV | Commissioning | DH1300 | L2 | ATS | DELETED | DH1100 |
| DC1-ATS-L2-3560 | **DELETED** **DELETED** DH1300 ATS-C13-01 L2 Checklist | 3d | 2026-07-15 A | 2026-07-15 A | QTS-1020 | 100% | 2026-07-15 | 2026-07-17 | MAV | Commissioning | DH1300 | L2 | ATS | DELETED | DH1100 |
| DC1-ATS-L2-3570 | **DELETED** **DELETED** DH1300 ATS-C13-02 L2 Checklist | 3d | 2026-07-15 A | 2026-07-15 A | QTS-1020 | 100% | 2026-07-15 | 2026-07-17 | MAV | Commissioning | DH1300 | L2 | ATS | DELETED | DH1100 |
| DC1-ATS-L2-3580 | **DELETED** **DELETED** DH1300 ATS-C13-03 L2 Checklist | 3d | 2026-07-15 A | 2026-07-15 A | QTS-1020 | 100% | 2026-07-15 | 2026-07-17 | MAV | Commissioning | DH1300 | L2 | ATS | DELETED | DH1100 |
| DC1-ATS-L2-3590 | **DELETED** **DELETED** DH1300 ATS-C13-04 L2 Checklist | 3d | 2026-07-15 A | 2026-07-15 A | QTS-1020 | 100% | 2026-07-15 | 2026-07-17 | MAV | Commissioning | DH1300 | L2 | ATS | DELETED | DH1100 |
| DC1-ATS-L2-3600 | **DELETED** **DELETED** DH1300 ATS-C13-05 L2 Checklist | 3d | 2026-07-15 A | 2026-07-15 A | QTS-1020 | 100% | 2026-07-15 | 2026-07-17 | MAV | Commissioning | DH1300 | L2 | ATS | DELETED | DH1100 |
| DC1-ATS-L2-3610 | **DELETED** **DELETED** DH1300 ATS-C13-06 L2 Checklist | 3d | 2026-07-15 A | 2026-07-15 A | QTS-1020 | 100% | 2026-07-15 | 2026-07-17 | MAV | Commissioning | DH1300 | L2 | ATS | DELETED | DH1100 |

Notes:
- DC1-ATS-L2-2920: Steps: EC Installation Checklist; CC Installation Checklist; Vendor Pre-Energization Checklist; CXA Pre-Energization Inspection; PEI/Clean-Walk
- DC1-ATS-L2-2930: Steps: EC Installation Checklist; CC Installation Checklist; Vendor Pre-Energization Checklist; CXA Pre-Energization Inspection; PEI/Clean-Walk
- DC1-ATS-L2-2940: Steps: EC Installation Checklist; CC Installation Checklist; Vendor Pre-Energization Checklist; CXA Pre-Energization Inspection; PEI/Clean-Walk
- DC1-ATS-L2-2950: Steps: EC Installation Checklist; CC Installation Checklist; Vendor Pre-Energization Checklist; CXA Pre-Energization Inspection; PEI/Clean-Walk
- DC1-ATS-L2-2960: Steps: EC Installation Checklist; CC Installation Checklist; Vendor Pre-Energization Checklist; CXA Pre-Energization Inspection; PEI/Clean-Walk
- DC1-ATS-L2-2970: Steps: EC Installation Checklist; CC Installation Checklist; Vendor Pre-Energization Checklist; CXA Pre-Energization Inspection; PEI/Clean-Walk
- DC1-ATS-L2-2980: Steps: EC Installation Checklist; CC Installation Checklist; Vendor Pre-Energization Checklist; CXA Pre-Energization Inspection; PEI/Clean-Walk
- DC1-ATS-L2-2990: Steps: EC Installation Checklist; CC Installation Checklist; Vendor Pre-Energization Checklist; CXA Pre-Energization Inspection; PEI/Clean-Walk
- DC1-ATS-L2-3000: Steps: EC Installation Checklist; CC Installation Checklist; Vendor Pre-Energization Checklist; CXA Pre-Energization Inspection; PEI/Clean-Walk
- DC1-ATS-L2-3010: Steps: EC Installation Checklist; CC Installation Checklist; Vendor Pre-Energization Checklist; CXA Pre-Energization Inspection; PEI/Clean-Walk
- DC1-ATS-L2-3020: Steps: EC Installation Checklist; CC Installation Checklist; Vendor Pre-Energization Checklist; CXA Pre-Energization Inspection; PEI/Clean-Walk
- DC1-ATS-L2-3030: Steps: EC Installation Checklist; CC Installation Checklist; Vendor Pre-Energization Checklist; CXA Pre-Energization Inspection; PEI/Clean-Walk
- DC1-ATS-L2-3040: Steps: EC Installation Checklist; CC Installation Checklist; Vendor Pre-Energization Checklist; CXA Pre-Energization Inspection; PEI/Clean-Walk
- DC1-ATS-L2-3050: Steps: EC Installation Checklist; CC Installation Checklist; Vendor Pre-Energization Checklist; CXA Pre-Energization Inspection; PEI/Clean-Walk
- DC1-ATS-L2-3060: Steps: EC Installation Checklist; CC Installation Checklist; Vendor Pre-Energization Checklist; CXA Pre-Energization Inspection; PEI/Clean-Walk
- DC1-ATS-L2-3070: Steps: EC Installation Checklist; CC Installation Checklist; Vendor Pre-Energization Checklist; CXA Pre-Energization Inspection; PEI/Clean-Walk
- DC1-ATS-L2-3080: Steps: EC Installation Checklist; CC Installation Checklist; Vendor Pre-Energization Checklist; CXA Pre-Energization Inspection; PEI/Clean-Walk
- DC1-ATS-L2-3090: Steps: EC Installation Checklist; CC Installation Checklist; Vendor Pre-Energization Checklist; CXA Pre-Energization Inspection; PEI/Clean-Walk
- DC1-ATS-L2-3100: Steps: EC Installation Checklist; CC Installation Checklist; Vendor Pre-Energization Checklist; CXA Pre-Energization Inspection; PEI/Clean-Walk
- DC1-ATS-L2-3110: Steps: EC Installation Checklist; CC Installation Checklist; Vendor Pre-Energization Checklist; CXA Pre-Energization Inspection; PEI/Clean-Walk
- DC1-ATS-L2-3120: Steps: EC Installation Checklist; CC Installation Checklist; Vendor Pre-Energization Checklist; CXA Pre-Energization Inspection; PEI/Clean-Walk
- DC1-ATS-L2-3130: Steps: EC Installation Checklist; CC Installation Checklist; Vendor Pre-Energization Checklist; CXA Pre-Energization Inspection; PEI/Clean-Walk
- DC1-ATS-L2-3140: Steps: EC Installation Checklist; CC Installation Checklist; Vendor Pre-Energization Checklist; CXA Pre-Energization Inspection; PEI/Clean-Walk
- DC1-ATS-L2-3150: Steps: EC Installation Checklist; CC Installation Checklist; Vendor Pre-Energization Checklist; CXA Pre-Energization Inspection; PEI/Clean-Walk
- DC1-ATS-L2-3160: Steps: EC Installation Checklist; CC Installation Checklist; Vendor Pre-Energization Checklist; CXA Pre-Energization Inspection; PEI/Clean-Walk
- DC1-ATS-L2-3170: Steps: EC Installation Checklist; CC Installation Checklist; Vendor Pre-Energization Checklist; CXA Pre-Energization Inspection; PEI/Clean-Walk
- DC1-ATS-L2-3180: Steps: EC Installation Checklist; CC Installation Checklist; Vendor Pre-Energization Checklist; CXA Pre-Energization Inspection; PEI/Clean-Walk
- DC1-ATS-L2-3190: Steps: EC Installation Checklist; CC Installation Checklist; Vendor Pre-Energization Checklist; CXA Pre-Energization Inspection; PEI/Clean-Walk
- DC1-ATS-L2-3200: Steps: EC Installation Checklist; CC Installation Checklist; Vendor Pre-Energization Checklist; CXA Pre-Energization Inspection; PEI/Clean-Walk
- DC1-ATS-L2-3210: Steps: EC Installation Checklist; CC Installation Checklist; Vendor Pre-Energization Checklist; CXA Pre-Energization Inspection; PEI/Clean-Walk
- DC1-ATS-L2-3220: Steps: EC Installation Checklist; CC Installation Checklist; Vendor Pre-Energization Checklist; CXA Pre-Energization Inspection; PEI/Clean-Walk
- DC1-ATS-L2-3230: Steps: EC Installation Checklist; CC Installation Checklist; Vendor Pre-Energization Checklist; CXA Pre-Energization Inspection; PEI/Clean-Walk
- DC1-ATS-L2-3240: Steps: EC Installation Checklist; CC Installation Checklist; Vendor Pre-Energization Checklist; CXA Pre-Energization Inspection; PEI/Clean-Walk
- DC1-ATS-L2-3250: Steps: EC Installation Checklist; CC Installation Checklist; Vendor Pre-Energization Checklist; CXA Pre-Energization Inspection; PEI/Clean-Walk
- DC1-ATS-L2-3260: Steps: EC Installation Checklist; CC Installation Checklist; Vendor Pre-Energization Checklist; CXA Pre-Energization Inspection; PEI/Clean-Walk
- DC1-ATS-L2-3270: Steps: EC Installation Checklist; CC Installation Checklist; Vendor Pre-Energization Checklist; CXA Pre-Energization Inspection; PEI/Clean-Walk
- DC1-ATS-L2-3280: Steps: EC Installation Checklist; CC Installation Checklist; Vendor Pre-Energization Checklist; CXA Pre-Energization Inspection; PEI/Clean-Walk
- DC1-ATS-L2-3290: Steps: EC Installation Checklist; CC Installation Checklist; Vendor Pre-Energization Checklist; CXA Pre-Energization Inspection; PEI/Clean-Walk
- DC1-ATS-L2-3300: Steps: EC Installation Checklist; CC Installation Checklist; Vendor Pre-Energization Checklist; CXA Pre-Energization Inspection; PEI/Clean-Walk
- DC1-ATS-L2-3310: Steps: EC Installation Checklist; CC Installation Checklist; Vendor Pre-Energization Checklist; CXA Pre-Energization Inspection; PEI/Clean-Walk
- DC1-ATS-L2-3320: Steps: EC Installation Checklist; CC Installation Checklist; Vendor Pre-Energization Checklist; CXA Pre-Energization Inspection; PEI/Clean-Walk
- DC1-ATS-L2-3330: Steps: EC Installation Checklist; CC Installation Checklist; Vendor Pre-Energization Checklist; CXA Pre-Energization Inspection; PEI/Clean-Walk
- DC1-ATS-L2-3340: Steps: EC Installation Checklist; CC Installation Checklist; Vendor Pre-Energization Checklist; CXA Pre-Energization Inspection; PEI/Clean-Walk
- DC1-ATS-L2-3350: Steps: EC Installation Checklist; CC Installation Checklist; Vendor Pre-Energization Checklist; CXA Pre-Energization Inspection; PEI/Clean-Walk
- DC1-ATS-L2-3360: Steps: EC Installation Checklist; CC Installation Checklist; Vendor Pre-Energization Checklist; CXA Pre-Energization Inspection; PEI/Clean-Walk
- DC1-ATS-L2-3370: Steps: EC Installation Checklist; CC Installation Checklist; Vendor Pre-Energization Checklist; CXA Pre-Energization Inspection; PEI/Clean-Walk
- DC1-ATS-L2-3380: Steps: EC Installation Checklist; CC Installation Checklist; Vendor Pre-Energization Checklist; CXA Pre-Energization Inspection; PEI/Clean-Walk
- DC1-ATS-L2-3390: Steps: EC Installation Checklist; CC Installation Checklist; Vendor Pre-Energization Checklist; CXA Pre-Energization Inspection; PEI/Clean-Walk
- DC1-ATS-L2-3400: Steps: EC Installation Checklist; CC Installation Checklist; Vendor Pre-Energization Checklist; CXA Pre-Energization Inspection; PEI/Clean-Walk
- DC1-ATS-L2-3410: Steps: EC Installation Checklist; CC Installation Checklist; Vendor Pre-Energization Checklist; CXA Pre-Energization Inspection; PEI/Clean-Walk
- DC1-ATS-L2-3420: Steps: EC Installation Checklist; CC Installation Checklist; Vendor Pre-Energization Checklist; CXA Pre-Energization Inspection; PEI/Clean-Walk
- DC1-ATS-L2-3430: Steps: EC Installation Checklist; CC Installation Checklist; Vendor Pre-Energization Checklist; CXA Pre-Energization Inspection; PEI/Clean-Walk
- DC1-ATS-L2-3440: Steps: EC Installation Checklist; CC Installation Checklist; Vendor Pre-Energization Checklist; CXA Pre-Energization Inspection; PEI/Clean-Walk
- DC1-ATS-L2-3450: Steps: EC Installation Checklist; CC Installation Checklist; Vendor Pre-Energization Checklist; CXA Pre-Energization Inspection; PEI/Clean-Walk
- DC1-ATS-L2-3460: Steps: EC Installation Checklist; CC Installation Checklist; Vendor Pre-Energization Checklist; CXA Pre-Energization Inspection; PEI/Clean-Walk
- DC1-ATS-L2-3470: Steps: EC Installation Checklist; CC Installation Checklist; Vendor Pre-Energization Checklist; CXA Pre-Energization Inspection; PEI/Clean-Walk
- DC1-ATS-L2-3480: Steps: EC Installation Checklist; CC Installation Checklist; Vendor Pre-Energization Checklist; CXA Pre-Energization Inspection; PEI/Clean-Walk
- DC1-ATS-L2-3490: Steps: EC Installation Checklist; CC Installation Checklist; Vendor Pre-Energization Checklist; CXA Pre-Energization Inspection; PEI/Clean-Walk
- DC1-ATS-L2-3500: Steps: EC Installation Checklist; CC Installation Checklist; Vendor Pre-Energization Checklist; CXA Pre-Energization Inspection; PEI/Clean-Walk
- DC1-ATS-L2-3510: Steps: EC Installation Checklist; CC Installation Checklist; Vendor Pre-Energization Checklist; CXA Pre-Energization Inspection; PEI/Clean-Walk
- DC1-ATS-L2-3520: Steps: EC Installation Checklist; CC Installation Checklist; Vendor Pre-Energization Checklist; CXA Pre-Energization Inspection; PEI/Clean-Walk
- DC1-ATS-L2-3530: Steps: EC Installation Checklist; CC Installation Checklist; Vendor Pre-Energization Checklist; CXA Pre-Energization Inspection; PEI/Clean-Walk
- DC1-ATS-L2-3540: Steps: EC Installation Checklist; CC Installation Checklist; Vendor Pre-Energization Checklist; CXA Pre-Energization Inspection; PEI/Clean-Walk
- DC1-ATS-L2-3550: Steps: EC Installation Checklist; CC Installation Checklist; Vendor Pre-Energization Checklist; CXA Pre-Energization Inspection; PEI/Clean-Walk
- DC1-ATS-L2-3560: Steps: EC Installation Checklist; CC Installation Checklist; Vendor Pre-Energization Checklist; CXA Pre-Energization Inspection; PEI/Clean-Walk
- DC1-ATS-L2-3570: Steps: EC Installation Checklist; CC Installation Checklist; Vendor Pre-Energization Checklist; CXA Pre-Energization Inspection; PEI/Clean-Walk
- DC1-ATS-L2-3580: Steps: EC Installation Checklist; CC Installation Checklist; Vendor Pre-Energization Checklist; CXA Pre-Energization Inspection; PEI/Clean-Walk
- DC1-ATS-L2-3590: Steps: EC Installation Checklist; CC Installation Checklist; Vendor Pre-Energization Checklist; CXA Pre-Energization Inspection; PEI/Clean-Walk
- DC1-ATS-L2-3600: Steps: EC Installation Checklist; CC Installation Checklist; Vendor Pre-Energization Checklist; CXA Pre-Energization Inspection; PEI/Clean-Walk
- DC1-ATS-L2-3610: Steps: EC Installation Checklist; CC Installation Checklist; Vendor Pre-Energization Checklist; CXA Pre-Energization Inspection; PEI/Clean-Walk

| ID | Activity | Duration | Start | Finish | Predecessors | Complete | Planned start | Planned finish | Vendor Responsible Party | Layton Discipline | Location | CX Level | Equipment | DELETED | D | Notes |
| --- | --- | --- | --- | --- | --- | --- | --- | --- | --- | --- | --- | --- | --- | --- | --- | --- |
| DC1-ATS-L2-3620 | **DELETED** **DELETED** DH1300 ATS-D13-01 L2 Checklist | 3d | 2026-07-15 A | 2026-07-15 A | QTS-1020 | 100% | 2026-07-15 | 2026-07-17 | MAV | Commissioning | DH1300 | L2 | ATS | DELETED | DH1100 |  |
| DC1-ATS-L2-3630 | **DELETED** **DELETED** DH1300 ATS-D13-02 L2 Checklist | 3d | 2026-07-15 A | 2026-07-15 A | QTS-1020 | 100% | 2026-07-15 | 2026-07-17 | MAV | Commissioning | DH1300 | L2 | ATS | DELETED | DH1100 |  |
| DC1-ATS-L2-3640 | **DELETED** **DELETED** DH1300 ATS-D13-03 L2 Checklist | 3d | 2026-07-15 A | 2026-07-15 A | QTS-1020 | 100% | 2026-07-15 | 2026-07-17 | MAV | Commissioning | DH1300 | L2 | ATS | DELETED | DH1100 |  |
| DC1-ATS-L2-3650 | **DELETED** **DELETED** DH1300 ATS-D13-04 L2 Checklist | 3d | 2026-07-15 A | 2026-07-15 A | QTS-1020 | 100% | 2026-07-15 | 2026-07-17 | MAV | Commissioning | DH1300 | L2 | ATS | DELETED | DH1100 |  |
| DC1-ATS-L2-3660 | **DELETED** **DELETED** DH1300 ATS-D13-05 L2 Checklist | 3d | 2026-07-15 A | 2026-07-15 A | QTS-1020 | 100% | 2026-07-15 | 2026-07-17 | MAV | Commissioning | DH1300 | L2 | ATS | DELETED | DH1100 |  |
| DC1-ATS-L2-3670 | **DELETED** **DELETED** DH1300 ATS-D13-06 L2 Checklist | 3d | 2026-07-15 A | 2026-07-15 A | QTS-1020 | 100% | 2026-07-15 | 2026-07-17 | MAV | Commissioning | DH1300 | L2 | ATS | DELETED | DH1100 |  |
| DC1-ATS-L2-3680 | **DELETED** **DELETED** DH1300 ATS-E13-01 L2 Checklist | 3d | 2026-07-15 A | 2026-07-15 A | QTS-1020 | 100% | 2026-07-15 | 2026-07-17 | MAV | Commissioning | DH1300 | L2 | ATS | DELETED | DH1100 |  |
| DC1-ATS-L2-3690 | **DELETED** **DELETED** DH1300 ATS-E13-02 L2 Checklist | 3d | 2026-07-15 A | 2026-07-15 A | QTS-1020 | 100% | 2026-07-15 | 2026-07-17 | MAV | Commissioning | DH1300 | L2 | ATS | DELETED | DH1100 |  |
| DC1-ATS-L2-3700 | **DELETED** **DELETED** DH1300 ATS-E13-03 L2 Checklist | 3d | 2026-07-15 A | 2026-07-15 A | QTS-1020 | 100% | 2026-07-15 | 2026-07-17 | MAV | Commissioning | DH1300 | L2 | ATS | DELETED | DH1100 |  |
| DC1-ATS-L2-3710 | **DELETED** **DELETED** DH1300 ATS-E13-04 L2 Checklist | 3d | 2026-07-15 A | 2026-07-15 A | QTS-1020 | 100% | 2026-07-15 | 2026-07-17 | MAV | Commissioning | DH1300 | L2 | ATS | DELETED | DH1100 |  |
| DC1-ATS-L2-3720 | **DELETED** **DELETED** DH1300 ATS-E13-05 L2 Checklist | 3d | 2026-07-15 A | 2026-07-15 A | QTS-1020 | 100% | 2026-07-15 | 2026-07-17 | MAV | Commissioning | DH1300 | L2 | ATS | DELETED | DH1100 |  |
| DC1-ATS-L2-3730 | **DELETED** **DELETED** DH1300 ATS-E13-06 L2 Checklist | 3d | 2026-07-15 A | 2026-07-15 A | QTS-1020 | 100% | 2026-07-15 | 2026-07-17 | MAV | Commissioning | DH1300 | L2 | ATS | DELETED | DH1100 |  |
| DC1-ATS-L2-3740 | **DELETED** **DELETED** DH1300 ATS-F13-01 L2 Checklist | 3d | 2026-07-15 A | 2026-07-15 A | QTS-1020 | 100% | 2026-07-15 | 2026-07-17 | MAV | Commissioning | DH1300 | L2 | ATS | DELETED | DH1100 |  |
| DC1-ATS-L2-3750 | **DELETED** **DELETED** DH1300 ATS-F13-02 L2 Checklist | 3d | 2026-07-15 A | 2026-07-15 A | QTS-1020 | 100% | 2026-07-15 | 2026-07-17 | MAV | Commissioning | DH1300 | L2 | ATS | DELETED | DH1100 |  |
| DC1-ATS-L2-3760 | **DELETED** **DELETED** DH1300 ATS-F13-03 L2 Checklist | 3d | 2026-07-15 A | 2026-07-15 A | QTS-1020 | 100% | 2026-07-15 | 2026-07-17 | MAV | Commissioning | DH1300 | L2 | ATS | DELETED | DH1100 |  |
| DC1-ATS-L2-3770 | **DELETED** **DELETED** DH1300 ATS-F13-04 L2 Checklist | 3d | 2026-07-15 A | 2026-07-15 A | QTS-1020 | 100% | 2026-07-15 | 2026-07-17 | MAV | Commissioning | DH1300 | L2 | ATS | DELETED | DH1100 |  |
| DC1-ATS-L2-3780 | **DELETED** **DELETED** DH1300 ATS-F13-05 L2 Checklist | 3d | 2026-07-15 A | 2026-07-15 A | QTS-1020 | 100% | 2026-07-15 | 2026-07-17 | MAV | Commissioning | DH1300 | L2 | ATS | DELETED | DH1100 |  |
| DC1-ATS-L2-3790 | **DELETED** **DELETED** DH1300 ATS-F13-06 L2 Checklist | 3d | 2026-07-15 A | 2026-07-15 A | QTS-1020 | 100% | 2026-07-15 | 2026-07-17 | MAV | Commissioning | DH1300 | L2 | ATS | DELETED | DH1100 |  |
| DC1-ATS-L3-CX-4705 | **DELETED** DC1-ATS-A23-01 FTE | 1d | 2026-07-15 A | 2026-07-15 A | QTS-1020 | 100% | 2026-08-11 | 2026-08-11 | ROS | Commissioning | DH2300 | L3 | ATS | DELETED | DH1100 | SWD - FS |
| DC1-ATS-L3-CX-4715 | **DELETED** DC1-ATS-A23-01 L3 Startup | 2d | 2026-07-15 A | 2026-07-15 A | QTS-1020 | 100% | 2026-08-12 | 2026-08-13 | MAV | Commissioning | DH2300 | L3 | ATS | DELETED | DH1100 |  |
| DC1-ATS-L3-CX-4725 | **DELETED** DC1-ATS-A23-01 BMS/EPMS Programming | 1d | 2026-07-15 A | 2026-07-15 A | QTS-1020 | 100% | 2026-08-14 | 2026-08-14 | PRM | Commissioning | DH2300 | L3 | ATS | DELETED | DH1100 |  |
| DC1-ATS-L3-CX-4735 | **DELETED** DC1-ATS-A23-02 FTE | 1d | 2026-07-15 A | 2026-07-15 A | QTS-1020 | 100% | 2026-08-12 | 2026-08-12 | ROS | Commissioning | DH2300 | L3 | ATS | DELETED | DH1100 | SWD - FS |
| DC1-ATS-L3-CX-4745 | **DELETED** DC1-ATS-A23-02 L3 Startup | 2d | 2026-07-15 A | 2026-07-15 A | QTS-1020 | 100% | 2026-08-13 | 2026-08-14 | MAV | Commissioning | DH2300 | L3 | ATS | DELETED | DH1100 |  |
| DC1-ATS-L3-CX-4755 | **DELETED** DC1-ATS-A23-02 BMS/EPMS Programming | 1d | 2026-07-15 A | 2026-07-15 A | QTS-1020 | 100% | 2026-08-17 | 2026-08-17 | PRM | Commissioning | DH2300 | L3 | ATS | DELETED | DH1100 |  |
| DC1-ATS-L3-CX-4765 | **DELETED** DC1-ATS-A23-03 FTE | 1d | 2026-07-15 A | 2026-07-15 A | QTS-1020 | 100% | 2026-08-11 | 2026-08-11 | ROS | Commissioning | DH2300 | L3 | ATS | DELETED | DH1100 | SWD - FS |
| DC1-ATS-L3-CX-4775 | **DELETED** DC1-ATS-A23-03 L3 Startup | 2d | 2026-07-15 A | 2026-07-15 A | QTS-1020 | 100% | 2026-08-12 | 2026-08-13 | MAV | Commissioning | DH2300 | L3 | ATS | DELETED | DH1100 |  |
| DC1-ATS-L3-CX-4785 | **DELETED** DC1-ATS-A23-03 BMS/EPMS Programming | 1d | 2026-07-15 A | 2026-07-15 A | QTS-1020 | 100% | 2026-08-14 | 2026-08-14 | PRM | Commissioning | DH2300 | L3 | ATS | DELETED | DH1100 |  |
| DC1-ATS-L3-CX-4795 | **DELETED** DC1-ATS-A23-04 FTE | 1d | 2026-07-15 A | 2026-07-15 A | QTS-1020 | 100% | 2026-08-12 | 2026-08-12 | ROS | Commissioning | DH2300 | L3 | ATS | DELETED | DH1100 | SWD - FS |
| DC1-ATS-L3-CX-4805 | **DELETED** DC1-ATS-A23-04 L3 Startup | 2d | 2026-07-15 A | 2026-07-15 A | QTS-1020 | 100% | 2026-08-13 | 2026-08-14 | MAV | Commissioning | DH2300 | L3 | ATS | DELETED | DH1100 |  |
| DC1-ATS-L3-CX-4815 | **DELETED** DC1-ATS-A23-04 BMS/EPMS Programming | 1d | 2026-07-15 A | 2026-07-15 A | QTS-1020 | 100% | 2026-08-17 | 2026-08-17 | PRM | Commissioning | DH2300 | L3 | ATS | DELETED | DH1100 |  |
| DC1-ATS-L3-CX-4825 | **DELETED** DC1-ATS-A23-05 FTE | 1d | 2026-07-15 A | 2026-07-15 A | QTS-1020 | 100% | 2026-08-11 | 2026-08-11 | ROS | Commissioning | DH2300 | L3 | ATS | DELETED | DH1100 | SWD - FS |
| DC1-ATS-L3-CX-4835 | **DELETED** DC1-ATS-A23-05 L3 Startup | 2d | 2026-07-15 A | 2026-07-15 A | QTS-1020 | 100% | 2026-08-12 | 2026-08-13 | MAV | Commissioning | DH2300 | L3 | ATS | DELETED | DH1100 |  |
| DC1-ATS-L3-CX-4845 | **DELETED** DC1-ATS-A23-05 BMS/EPMS Programming | 1d | 2026-07-15 A | 2026-07-15 A | QTS-1020 | 100% | 2026-08-14 | 2026-08-14 | PRM | Commissioning | DH2300 | L3 | ATS | DELETED | DH1100 |  |
| DC1-ATS-L3-CX-4855 | **DELETED** DC1-ATS-A23-06 FTE | 1d | 2026-07-15 A | 2026-07-15 A | QTS-1020 | 100% | 2026-08-12 | 2026-08-12 | ROS | Commissioning | DH2300 | L3 | ATS | DELETED | DH1100 | SWD - FS |
| DC1-ATS-L3-CX-4865 | **DELETED** DC1-ATS-A23-06 L3 Startup | 2d | 2026-07-15 A | 2026-07-15 A | QTS-1020 | 100% | 2026-08-13 | 2026-08-14 | MAV | Commissioning | DH2300 | L3 | ATS | DELETED | DH1100 |  |
| DC1-ATS-L3-CX-4875 | **DELETED** DC1-ATS-A23-06 BMS/EPMS Programming | 1d | 2026-07-15 A | 2026-07-15 A | QTS-1020 | 100% | 2026-08-17 | 2026-08-17 | PRM | Commissioning | DH2300 | L3 | ATS | DELETED | DH1100 |  |
| DC1-ATS-L3-CX-4885 | **DELETED** DC1-ATS-B23-01 FTE | 1d | 2026-07-15 A | 2026-07-15 A | QTS-1020 | 100% | 2026-08-11 | 2026-08-11 | ROS | Commissioning | DH2300 | L3 | ATS | DELETED | DH1100 |  |
| DC1-ATS-L3-CX-4895 | **DELETED** DC1-ATS-B23-01 L3 Startup | 2d | 2026-07-15 A | 2026-07-15 A | QTS-1020 | 100% | 2026-08-12 | 2026-08-13 | MAV | Commissioning | DH2300 | L3 | ATS | DELETED | DH1100 |  |
| DC1-ATS-L3-CX-4905 | **DELETED** DC1-ATS-B23-01 BMS/EPMS Programming | 1d | 2026-07-15 A | 2026-07-15 A | QTS-1020 | 100% | 2026-08-14 | 2026-08-14 | PRM | Commissioning | DH2300 | L3 | ATS | DELETED | DH1100 |  |
| DC1-ATS-L3-CX-4915 | **DELETED** DC1-ATS-B23-02 FTE | 1d | 2026-07-15 A | 2026-07-15 A | QTS-1020 | 100% | 2026-08-13 | 2026-08-13 | ROS | Commissioning | DH2300 | L3 | ATS | DELETED | DH1100 |  |
| DC1-ATS-L3-CX-4925 | **DELETED** DC1-ATS-B23-02 L3 Startup | 2d | 2026-07-15 A | 2026-07-15 A | QTS-1020 | 100% | 2026-08-14 | 2026-08-17 | MAV | Commissioning | DH2300 | L3 | ATS | DELETED | DH1100 |  |
| DC1-ATS-L3-CX-4935 | **DELETED** DC1-ATS-B23-02 BMS/EPMS Programming | 1d | 2026-07-15 A | 2026-07-15 A | QTS-1020 | 100% | 2026-08-18 | 2026-08-18 | PRM | Commissioning | DH2300 | L3 | ATS | DELETED | DH1100 |  |
| DC1-ATS-L3-CX-4945 | **DELETED** DC1-ATS-B23-03 FTE | 1d | 2026-07-15 A | 2026-07-15 A | QTS-1020 | 100% | 2026-08-11 | 2026-08-11 | ROS | Commissioning | DH2300 | L3 | ATS | DELETED | DH1100 |  |
| DC1-ATS-L3-CX-4955 | **DELETED** DC1-ATS-B23-03 L3 Startup | 2d | 2026-07-15 A | 2026-07-15 A | QTS-1020 | 100% | 2026-08-12 | 2026-08-13 | MAV | Commissioning | DH2300 | L3 | ATS | DELETED | DH1100 |  |
| DC1-ATS-L3-CX-4965 | **DELETED** DC1-ATS-B23-03 BMS/EPMS Programming | 1d | 2026-07-15 A | 2026-07-15 A | QTS-1020 | 100% | 2026-08-14 | 2026-08-14 | PRM | Commissioning | DH2300 | L3 | ATS | DELETED | DH1100 |  |
| DC1-ATS-L3-CX-4975 | **DELETED** DC1-ATS-B23-04 FTE | 1d | 2026-07-15 A | 2026-07-15 A | QTS-1020 | 100% | 2026-08-13 | 2026-08-13 | ROS | Commissioning | DH2300 | L3 | ATS | DELETED | DH1100 |  |
| DC1-ATS-L3-CX-4985 | **DELETED** DC1-ATS-B23-04 L3 Startup | 2d | 2026-07-15 A | 2026-07-15 A | QTS-1020 | 100% | 2026-08-14 | 2026-08-17 | MAV | Commissioning | DH2300 | L3 | ATS | DELETED | DH1100 |  |
| DC1-ATS-L3-CX-4995 | **DELETED** DC1-ATS-B23-04 BMS/EPMS Programming | 1d | 2026-07-15 A | 2026-07-15 A | QTS-1020 | 100% | 2026-08-18 | 2026-08-18 | PRM | Commissioning | DH2300 | L3 | ATS | DELETED | DH1100 |  |
| DC1-ATS-L3-CX-5005 | **DELETED** DC1-ATS-B23-05 FTE | 1d | 2026-07-15 A | 2026-07-15 A | QTS-1020 | 100% | 2026-08-11 | 2026-08-11 | ROS | Commissioning | DH2300 | L3 | ATS | DELETED | DH1100 |  |
| DC1-ATS-L3-CX-5015 | **DELETED** DC1-ATS-B23-05 L3 Startup | 2d | 2026-07-15 A | 2026-07-15 A | QTS-1020 | 100% | 2026-08-12 | 2026-08-13 | MAV | Commissioning | DH2300 | L3 | ATS | DELETED | DH1100 |  |
| DC1-ATS-L3-CX-5025 | **DELETED** DC1-ATS-B23-05 BMS/EPMS Programming | 1d | 2026-07-15 A | 2026-07-15 A | QTS-1020 | 100% | 2026-08-14 | 2026-08-14 | PRM | Commissioning | DH2300 | L3 | ATS | DELETED | DH1100 |  |
| DC1-ATS-L3-CX-5035 | **DELETED** DC1-ATS-B23-06 FTE | 1d | 2026-07-15 A | 2026-07-15 A | QTS-1020 | 100% | 2026-08-13 | 2026-08-13 | ROS | Commissioning | DH2300 | L3 | ATS | DELETED | DH1100 |  |
| DC1-ATS-L3-CX-5045 | **DELETED** DC1-ATS-B23-06 L3 Startup | 2d | 2026-07-15 A | 2026-07-15 A | QTS-1020 | 100% | 2026-08-14 | 2026-08-17 | MAV | Commissioning | DH2300 | L3 | ATS | DELETED | DH1100 |  |
| DC1-ATS-L3-CX-5055 | **DELETED** DC1-ATS-B23-06 BMS/EPMS Programming | 1d | 2026-07-15 A | 2026-07-15 A | QTS-1020 | 100% | 2026-08-18 | 2026-08-18 | PRM | Commissioning | DH2300 | L3 | ATS | DELETED | DH1100 |  |
| DC1-ATS-L3-CX-5065 | **DELETED** DC1-ATS-C23-01 FTE | 1d | 2026-07-15 A | 2026-07-15 A | QTS-1020 | 100% | 2026-08-11 | 2026-08-11 | ROS | Commissioning | DH2300 | L3 | ATS | DELETED | DH1100 |  |
| DC1-ATS-L3-CX-5075 | **DELETED** DC1-ATS-C23-01 L3 Startup | 2d | 2026-07-15 A | 2026-07-15 A | QTS-1020 | 100% | 2026-08-12 | 2026-08-13 | MAV | Commissioning | DH2300 | L3 | ATS | DELETED | DH1100 |  |
| DC1-ATS-L3-CX-5085 | **DELETED** DC1-ATS-C23-01 BMS/EPMS Programming | 1d | 2026-07-15 A | 2026-07-15 A | QTS-1020 | 100% | 2026-08-14 | 2026-08-14 | PRM | Commissioning | DH2300 | L3 | ATS | DELETED | DH1100 |  |
| DC1-ATS-L3-CX-5095 | **DELETED** DC1-ATS-C23-02 FTE | 1d | 2026-07-15 A | 2026-07-15 A | QTS-1020 | 100% | 2026-08-13 | 2026-08-13 | ROS | Commissioning | DH2300 | L3 | ATS | DELETED | DH1100 |  |
| DC1-ATS-L3-CX-5105 | **DELETED** DC1-ATS-C23-02 L3 Startup | 2d | 2026-07-15 A | 2026-07-15 A | QTS-1020 | 100% | 2026-08-14 | 2026-08-17 | MAV | Commissioning | DH2300 | L3 | ATS | DELETED | DH1100 |  |
| DC1-ATS-L3-CX-5115 | **DELETED** DC1-ATS-C23-02 BMS/EPMS Programming | 1d | 2026-07-15 A | 2026-07-15 A | QTS-1020 | 100% | 2026-08-18 | 2026-08-18 | PRM | Commissioning | DH2300 | L3 | ATS | DELETED | DH1100 |  |
| DC1-ATS-L3-CX-5125 | **DELETED** DC1-ATS-C23-03 FTE | 1d | 2026-07-15 A | 2026-07-15 A | QTS-1020 | 100% | 2026-08-11 | 2026-08-11 | ROS | Commissioning | DH2300 | L3 | ATS | DELETED | DH1100 |  |
| DC1-ATS-L3-CX-5135 | **DELETED** DC1-ATS-C23-03 L3 Startup | 2d | 2026-07-15 A | 2026-07-15 A | QTS-1020 | 100% | 2026-08-12 | 2026-08-13 | MAV | Commissioning | DH2300 | L3 | ATS | DELETED | DH1100 |  |
| DC1-ATS-L3-CX-5145 | **DELETED** DC1-ATS-C23-03 BMS/EPMS Programming | 1d | 2026-07-15 A | 2026-07-15 A | QTS-1020 | 100% | 2026-08-14 | 2026-08-14 | PRM | Commissioning | DH2300 | L3 | ATS | DELETED | DH1100 |  |
| DC1-ATS-L3-CX-5155 | **DELETED** DC1-ATS-C23-04 FTE | 1d | 2026-07-15 A | 2026-07-15 A | QTS-1020 | 100% | 2026-08-13 | 2026-08-13 | ROS | Commissioning | DH2300 | L3 | ATS | DELETED | DH1100 |  |
| DC1-ATS-L3-CX-5165 | **DELETED** DC1-ATS-C23-04 L3 Startup | 2d | 2026-07-15 A | 2026-07-15 A | QTS-1020 | 100% | 2026-08-14 | 2026-08-17 | MAV | Commissioning | DH2300 | L3 | ATS | DELETED | DH1100 |  |
| DC1-ATS-L3-CX-5175 | **DELETED** DC1-ATS-C23-04 BMS/EPMS Programming | 1d | 2026-07-15 A | 2026-07-15 A | QTS-1020 | 100% | 2026-08-18 | 2026-08-18 | PRM | Commissioning | DH2300 | L3 | ATS | DELETED | DH1100 |  |
| DC1-ATS-L3-CX-5185 | **DELETED** DC1-ATS-C23-05 FTE | 1d | 2026-07-15 A | 2026-07-15 A | QTS-1020 | 100% | 2026-08-11 | 2026-08-11 | ROS | Commissioning | DH2300 | L3 | ATS | DELETED | DH1100 |  |
| DC1-ATS-L3-CX-5195 | **DELETED** DC1-ATS-C23-05 L3 Startup | 2d | 2026-07-15 A | 2026-07-15 A | QTS-1020 | 100% | 2026-08-12 | 2026-08-13 | MAV | Commissioning | DH2300 | L3 | ATS | DELETED | DH1100 |  |
| DC1-ATS-L3-CX-5205 | **DELETED** DC1-ATS-C23-05 BMS/EPMS Programming | 1d | 2026-07-15 A | 2026-07-15 A | QTS-1020 | 100% | 2026-08-14 | 2026-08-14 | PRM | Commissioning | DH2300 | L3 | ATS | DELETED | DH1100 |  |
| DC1-ATS-L3-CX-5215 | **DELETED** DC1-ATS-C23-06 FTE | 1d | 2026-07-15 A | 2026-07-15 A | QTS-1020 | 100% | 2026-08-13 | 2026-08-13 | ROS | Commissioning | DH2300 | L3 | ATS | DELETED | DH1100 |  |

Notes:
- DC1-ATS-L2-3620: Steps: EC Installation Checklist; CC Installation Checklist; Vendor Pre-Energization Checklist; CXA Pre-Energization Inspection; PEI/Clean-Walk
- DC1-ATS-L2-3630: Steps: EC Installation Checklist; CC Installation Checklist; Vendor Pre-Energization Checklist; CXA Pre-Energization Inspection; PEI/Clean-Walk
- DC1-ATS-L2-3640: Steps: EC Installation Checklist; CC Installation Checklist; Vendor Pre-Energization Checklist; CXA Pre-Energization Inspection; PEI/Clean-Walk
- DC1-ATS-L2-3650: Steps: EC Installation Checklist; CC Installation Checklist; Vendor Pre-Energization Checklist; CXA Pre-Energization Inspection; PEI/Clean-Walk
- DC1-ATS-L2-3660: Steps: EC Installation Checklist; CC Installation Checklist; Vendor Pre-Energization Checklist; CXA Pre-Energization Inspection; PEI/Clean-Walk
- DC1-ATS-L2-3670: Steps: EC Installation Checklist; CC Installation Checklist; Vendor Pre-Energization Checklist; CXA Pre-Energization Inspection; PEI/Clean-Walk
- DC1-ATS-L2-3680: Steps: EC Installation Checklist; CC Installation Checklist; Vendor Pre-Energization Checklist; CXA Pre-Energization Inspection; PEI/Clean-Walk
- DC1-ATS-L2-3690: Steps: EC Installation Checklist; CC Installation Checklist; Vendor Pre-Energization Checklist; CXA Pre-Energization Inspection; PEI/Clean-Walk
- DC1-ATS-L2-3700: Steps: EC Installation Checklist; CC Installation Checklist; Vendor Pre-Energization Checklist; CXA Pre-Energization Inspection; PEI/Clean-Walk
- DC1-ATS-L2-3710: Steps: EC Installation Checklist; CC Installation Checklist; Vendor Pre-Energization Checklist; CXA Pre-Energization Inspection; PEI/Clean-Walk
- DC1-ATS-L2-3720: Steps: EC Installation Checklist; CC Installation Checklist; Vendor Pre-Energization Checklist; CXA Pre-Energization Inspection; PEI/Clean-Walk
- DC1-ATS-L2-3730: Steps: EC Installation Checklist; CC Installation Checklist; Vendor Pre-Energization Checklist; CXA Pre-Energization Inspection; PEI/Clean-Walk
- DC1-ATS-L2-3740: Steps: EC Installation Checklist; CC Installation Checklist; Vendor Pre-Energization Checklist; CXA Pre-Energization Inspection; PEI/Clean-Walk
- DC1-ATS-L2-3750: Steps: EC Installation Checklist; CC Installation Checklist; Vendor Pre-Energization Checklist; CXA Pre-Energization Inspection; PEI/Clean-Walk
- DC1-ATS-L2-3760: Steps: EC Installation Checklist; CC Installation Checklist; Vendor Pre-Energization Checklist; CXA Pre-Energization Inspection; PEI/Clean-Walk
- DC1-ATS-L2-3770: Steps: EC Installation Checklist; CC Installation Checklist; Vendor Pre-Energization Checklist; CXA Pre-Energization Inspection; PEI/Clean-Walk
- DC1-ATS-L2-3780: Steps: EC Installation Checklist; CC Installation Checklist; Vendor Pre-Energization Checklist; CXA Pre-Energization Inspection; PEI/Clean-Walk
- DC1-ATS-L2-3790: Steps: EC Installation Checklist; CC Installation Checklist; Vendor Pre-Energization Checklist; CXA Pre-Energization Inspection; PEI/Clean-Walk
- DC1-ATS-L3-CX-4715: Steps: EC Startup Report; Vendor Startup
- DC1-ATS-L3-CX-4745: Steps: EC Startup Report; Vendor Startup
- DC1-ATS-L3-CX-4775: Steps: EC Startup Report; Vendor Startup
- DC1-ATS-L3-CX-4805: Steps: EC Startup Report; Vendor Startup
- DC1-ATS-L3-CX-4835: Steps: EC Startup Report; Vendor Startup
- DC1-ATS-L3-CX-4865: Steps: EC Startup Report; Vendor Startup
- DC1-ATS-L3-CX-4895: Steps: EC Startup Report; Vendor Startup
- DC1-ATS-L3-CX-4925: Steps: EC Startup Report; Vendor Startup
- DC1-ATS-L3-CX-4955: Steps: EC Startup Report; Vendor Startup
- DC1-ATS-L3-CX-4985: Steps: EC Startup Report; Vendor Startup
- DC1-ATS-L3-CX-5015: Steps: EC Startup Report; Vendor Startup
- DC1-ATS-L3-CX-5045: Steps: EC Startup Report; Vendor Startup
- DC1-ATS-L3-CX-5075: Steps: EC Startup Report; Vendor Startup
- DC1-ATS-L3-CX-5105: Steps: EC Startup Report; Vendor Startup
- DC1-ATS-L3-CX-5135: Steps: EC Startup Report; Vendor Startup
- DC1-ATS-L3-CX-5165: Steps: EC Startup Report; Vendor Startup
- DC1-ATS-L3-CX-5195: Steps: EC Startup Report; Vendor Startup

| ID | Activity | Duration | Start | Finish | Predecessors | Complete | Planned start | Planned finish | Vendor Responsible Party | Layton Discipline | Location | CX Level | Equipment | DELETED | D | Notes |
| --- | --- | --- | --- | --- | --- | --- | --- | --- | --- | --- | --- | --- | --- | --- | --- | --- |
| DC1-ATS-L3-CX-5225 | **DELETED** DC1-ATS-C23-06 L3 Startup | 2d | 2026-07-15 A | 2026-07-15 A | QTS-1020 | 100% | 2026-08-14 | 2026-08-17 | MAV | Commissioning | DH2300 | L3 | ATS | DELETED | DH1100 |  |
| DC1-ATS-L3-CX-5235 | **DELETED** DC1-ATS-C23-06 BMS/EPMS Programming | 1d | 2026-07-15 A | 2026-07-15 A | QTS-1020 | 100% | 2026-08-18 | 2026-08-18 | PRM | Commissioning | DH2300 | L3 | ATS | DELETED | DH1100 |  |
| DC1-ATS-L3-CX-5245 | **DELETED** DC1-ATS-D23-01 FTE | 1d | 2026-07-15 A | 2026-07-15 A | QTS-1020 | 100% | 2026-08-11 | 2026-08-11 | ROS | Commissioning | DH2300 | L3 | ATS | DELETED | DH1100 |  |
| DC1-ATS-L3-CX-5255 | **DELETED** DC1-ATS-D23-01 L3 Startup | 2d | 2026-07-15 A | 2026-07-15 A | QTS-1020 | 100% | 2026-08-12 | 2026-08-13 | MAV | Commissioning | DH2300 | L3 | ATS | DELETED | DH1100 |  |
| DC1-ATS-L3-CX-5265 | **DELETED** DC1-ATS-D23-01 BMS/EPMS Programming | 1d | 2026-07-15 A | 2026-07-15 A | QTS-1020 | 100% | 2026-08-14 | 2026-08-14 | PRM | Commissioning | DH2300 | L3 | ATS | DELETED | DH1100 |  |
| DC1-ATS-L3-CX-5275 | **DELETED** DC1-ATS-D23-02 FTE | 1d | 2026-07-15 A | 2026-07-15 A | QTS-1020 | 100% | 2026-08-13 | 2026-08-13 | ROS | Commissioning | DH2300 | L3 | ATS | DELETED | DH1100 |  |
| DC1-ATS-L3-CX-5285 | **DELETED** DC1-ATS-D23-02 L3 Startup | 2d | 2026-07-15 A | 2026-07-15 A | QTS-1020 | 100% | 2026-08-14 | 2026-08-17 | MAV | Commissioning | DH2300 | L3 | ATS | DELETED | DH1100 |  |
| DC1-ATS-L3-CX-5295 | **DELETED** DC1-ATS-D23-02 BMS/EPMS Programming | 1d | 2026-07-15 A | 2026-07-15 A | QTS-1020 | 100% | 2026-08-18 | 2026-08-18 | PRM | Commissioning | DH2300 | L3 | ATS | DELETED | DH1100 |  |
| DC1-ATS-L3-CX-5305 | **DELETED** DC1-ATS-D23-03 FTE | 1d | 2026-07-15 A | 2026-07-15 A | QTS-1020 | 100% | 2026-08-11 | 2026-08-11 | ROS | Commissioning | DH2300 | L3 | ATS | DELETED | DH1100 |  |
| DC1-ATS-L3-CX-5315 | **DELETED** DC1-ATS-D23-03 L3 Startup | 2d | 2026-07-15 A | 2026-07-15 A | QTS-1020 | 100% | 2026-08-12 | 2026-08-13 | MAV | Commissioning | DH2300 | L3 | ATS | DELETED | DH1100 |  |
| DC1-ATS-L3-CX-5325 | **DELETED** DC1-ATS-D23-03 BMS/EPMS Programming | 1d | 2026-07-15 A | 2026-07-15 A | QTS-1020 | 100% | 2026-08-14 | 2026-08-14 | PRM | Commissioning | DH2300 | L3 | ATS | DELETED | DH1100 |  |
| DC1-ATS-L3-CX-5335 | **DELETED** DC1-ATS-D23-04 FTE | 1d | 2026-07-15 A | 2026-07-15 A | QTS-1020 | 100% | 2026-08-13 | 2026-08-13 | ROS | Commissioning | DH2300 | L3 | ATS | DELETED | DH1100 |  |
| DC1-ATS-L3-CX-5345 | **DELETED** DC1-ATS-D23-04 L3 Startup | 2d | 2026-07-15 A | 2026-07-15 A | QTS-1020 | 100% | 2026-08-14 | 2026-08-17 | MAV | Commissioning | DH2300 | L3 | ATS | DELETED | DH1100 |  |
| DC1-ATS-L3-CX-5355 | **DELETED** DC1-ATS-D23-04 BMS/EPMS Programming | 1d | 2026-07-15 A | 2026-07-15 A | QTS-1020 | 100% | 2026-08-18 | 2026-08-18 | PRM | Commissioning | DH2300 | L3 | ATS | DELETED | DH1100 |  |
| DC1-ATS-L3-CX-5365 | **DELETED** DC1-ATS-D23-05 FTE | 1d | 2026-07-15 A | 2026-07-15 A | QTS-1020 | 100% | 2026-08-11 | 2026-08-11 | ROS | Commissioning | DH2300 | L3 | ATS | DELETED | DH1100 |  |
| DC1-ATS-L3-CX-5375 | **DELETED** DC1-ATS-D23-05 L3 Startup | 2d | 2026-07-15 A | 2026-07-15 A | QTS-1020 | 100% | 2026-08-12 | 2026-08-13 | MAV | Commissioning | DH2300 | L3 | ATS | DELETED | DH1100 |  |
| DC1-ATS-L3-CX-5385 | **DELETED** DC1-ATS-D23-05 BMS/EPMS Programming | 1d | 2026-07-15 A | 2026-07-15 A | QTS-1020 | 100% | 2026-08-14 | 2026-08-14 | PRM | Commissioning | DH2300 | L3 | ATS | DELETED | DH1100 |  |
| DC1-ATS-L3-CX-5395 | **DELETED** DC1-ATS-D23-06 FTE | 1d | 2026-07-15 A | 2026-07-15 A | QTS-1020 | 100% | 2026-08-13 | 2026-08-13 | ROS | Commissioning | DH2300 | L3 | ATS | DELETED | DH1100 |  |
| DC1-ATS-L3-CX-5405 | **DELETED** DC1-ATS-D23-06 L3 Startup | 2d | 2026-07-15 A | 2026-07-15 A | QTS-1020 | 100% | 2026-08-14 | 2026-08-17 | MAV | Commissioning | DH2300 | L3 | ATS | DELETED | DH1100 |  |
| DC1-ATS-L3-CX-5415 | **DELETED** DC1-ATS-D23-06 BMS/EPMS Programming | 1d | 2026-07-15 A | 2026-07-15 A | QTS-1020 | 100% | 2026-08-18 | 2026-08-18 | PRM | Commissioning | DH2300 | L3 | ATS | DELETED | DH1100 |  |
| DC1-ATS-L3-CX-5425 | **DELETED** DC1-ATS-E23-01 FTE | 1d | 2026-07-15 A | 2026-07-15 A | QTS-1020 | 100% | 2026-08-11 | 2026-08-11 | ROS | Commissioning | DH2300 | L3 | ATS | DELETED | DH1100 |  |
| DC1-ATS-L3-CX-5435 | **DELETED** DC1-ATS-E23-01 L3 Startup | 2d | 2026-07-15 A | 2026-07-15 A | QTS-1020 | 100% | 2026-08-12 | 2026-08-13 | MAV | Commissioning | DH2300 | L3 | ATS | DELETED | DH1100 |  |
| DC1-ATS-L3-CX-5445 | **DELETED** DC1-ATS-E23-01 BMS/EPMS Programming | 1d | 2026-07-15 A | 2026-07-15 A | QTS-1020 | 100% | 2026-08-14 | 2026-08-14 | PRM | Commissioning | DH2300 | L3 | ATS | DELETED | DH1100 |  |
| DC1-ATS-L3-CX-5455 | **DELETED** DC1-ATS-E23-02 FTE | 1d | 2026-07-15 A | 2026-07-15 A | QTS-1020 | 100% | 2026-08-13 | 2026-08-13 | ROS | Commissioning | DH2300 | L3 | ATS | DELETED | DH1100 |  |
| DC1-ATS-L3-CX-5465 | **DELETED** DC1-ATS-E23-02 L3 Startup | 2d | 2026-07-15 A | 2026-07-15 A | QTS-1020 | 100% | 2026-08-14 | 2026-08-17 | MAV | Commissioning | DH2300 | L3 | ATS | DELETED | DH1100 |  |
| DC1-ATS-L3-CX-5475 | **DELETED** DC1-ATS-E23-02 BMS/EPMS Programming | 1d | 2026-07-15 A | 2026-07-15 A | QTS-1020 | 100% | 2026-08-18 | 2026-08-18 | PRM | Commissioning | DH2300 | L3 | ATS | DELETED | DH1100 |  |
| DC1-ATS-L3-CX-5485 | **DELETED** DC1-ATS-E23-03 FTE | 1d | 2026-07-15 A | 2026-07-15 A | QTS-1020 | 100% | 2026-08-11 | 2026-08-11 | ROS | Commissioning | DH2300 | L3 | ATS | DELETED | DH1100 |  |
| DC1-ATS-L3-CX-5495 | **DELETED** DC1-ATS-E23-03 L3 Startup | 2d | 2026-07-15 A | 2026-07-15 A | QTS-1020 | 100% | 2026-08-12 | 2026-08-13 | MAV | Commissioning | DH2300 | L3 | ATS | DELETED | DH1100 |  |
| DC1-ATS-L3-CX-5505 | **DELETED** DC1-ATS-E23-03 BMS/EPMS Programming | 1d | 2026-07-15 A | 2026-07-15 A | QTS-1020 | 100% | 2026-08-14 | 2026-08-14 | PRM | Commissioning | DH2300 | L3 | ATS | DELETED | DH1100 |  |
| DC1-ATS-L3-CX-5515 | **DELETED** DC1-ATS-E23-04 FTE | 1d | 2026-07-15 A | 2026-07-15 A | QTS-1020 | 100% | 2026-08-13 | 2026-08-13 | ROS | Commissioning | DH2300 | L3 | ATS | DELETED | DH1100 |  |
| DC1-ATS-L3-CX-5525 | **DELETED** DC1-ATS-E23-04 L3 Startup | 2d | 2026-07-15 A | 2026-07-15 A | QTS-1020 | 100% | 2026-08-14 | 2026-08-17 | MAV | Commissioning | DH2300 | L3 | ATS | DELETED | DH1100 |  |
| DC1-ATS-L3-CX-5535 | **DELETED** DC1-ATS-E23-04 BMS/EPMS Programming | 1d | 2026-07-15 A | 2026-07-15 A | QTS-1020 | 100% | 2026-08-18 | 2026-08-18 | PRM | Commissioning | DH2300 | L3 | ATS | DELETED | DH1100 |  |
| DC1-ATS-L3-CX-5545 | **DELETED** DC1-ATS-E23-05 FTE | 1d | 2026-07-15 A | 2026-07-15 A | QTS-1020 | 100% | 2026-08-11 | 2026-08-11 | ROS | Commissioning | DH2300 | L3 | ATS | DELETED | DH1100 |  |
| DC1-ATS-L3-CX-5555 | **DELETED** DC1-ATS-E23-05 L3 Startup | 2d | 2026-07-15 A | 2026-07-15 A | QTS-1020 | 100% | 2026-08-12 | 2026-08-13 | MAV | Commissioning | DH2300 | L3 | ATS | DELETED | DH1100 |  |
| DC1-ATS-L3-CX-5565 | **DELETED** DC1-ATS-E23-05 BMS/EPMS Programming | 1d | 2026-07-15 A | 2026-07-15 A | QTS-1020 | 100% | 2026-08-14 | 2026-08-14 | PRM | Commissioning | DH2300 | L3 | ATS | DELETED | DH1100 |  |
| DC1-ATS-L3-CX-5575 | **DELETED** DC1-ATS-E23-06 FTE | 1d | 2026-07-15 A | 2026-07-15 A | QTS-1020 | 100% | 2026-08-13 | 2026-08-13 | ROS | Commissioning | DH2300 | L3 | ATS | DELETED | DH1100 |  |
| DC1-ATS-L3-CX-5585 | **DELETED** DC1-ATS-E23-06 L3 Startup | 2d | 2026-07-15 A | 2026-07-15 A | QTS-1020 | 100% | 2026-08-14 | 2026-08-17 | MAV | Commissioning | DH2300 | L3 | ATS | DELETED | DH1100 |  |
| DC1-ATS-L3-CX-5595 | **DELETED** DC1-ATS-E23-06 BMS/EPMS Programming | 1d | 2026-07-15 A | 2026-07-15 A | QTS-1020 | 100% | 2026-08-18 | 2026-08-18 | PRM | Commissioning | DH2300 | L3 | ATS | DELETED | DH1100 |  |
| DC1-ATS-L3-CX-5605 | **DELETED** DC1-ATS-F23-01 FTE | 1d | 2026-07-15 A | 2026-07-15 A | QTS-1020 | 100% | 2026-08-11 | 2026-08-11 | ROS | Commissioning | DH2300 | L3 | ATS | DELETED | DH1100 |  |
| DC1-ATS-L3-CX-5615 | **DELETED** DC1-ATS-F23-01 L3 Startup | 2d | 2026-07-15 A | 2026-07-15 A | QTS-1020 | 100% | 2026-08-12 | 2026-08-13 | MAV | Commissioning | DH2300 | L3 | ATS | DELETED | DH1100 |  |
| DC1-ATS-L3-CX-5625 | **DELETED** DC1-ATS-F23-01 BMS/EPMS Programming | 1d | 2026-07-15 A | 2026-07-15 A | QTS-1020 | 100% | 2026-08-14 | 2026-08-14 | PRM | Commissioning | DH2300 | L3 | ATS | DELETED | DH1100 |  |
| DC1-ATS-L3-CX-5635 | **DELETED** DC1-ATS-F23-02 FTE | 1d | 2026-07-15 A | 2026-07-15 A | QTS-1020 | 100% | 2026-08-13 | 2026-08-13 | ROS | Commissioning | DH2300 | L3 | ATS | DELETED | DH1100 |  |
| DC1-ATS-L3-CX-5645 | **DELETED** DC1-ATS-F23-02 L3 Startup | 2d | 2026-07-15 A | 2026-07-15 A | QTS-1020 | 100% | 2026-08-14 | 2026-08-17 | MAV | Commissioning | DH2300 | L3 | ATS | DELETED | DH1100 |  |
| DC1-ATS-L3-CX-5655 | **DELETED** DC1-ATS-F23-02 BMS/EPMS Programming | 1d | 2026-07-15 A | 2026-07-15 A | QTS-1020 | 100% | 2026-08-18 | 2026-08-18 | PRM | Commissioning | DH2300 | L3 | ATS | DELETED | DH1100 |  |
| DC1-ATS-L3-CX-5665 | **DELETED** DC1-ATS-F23-03 FTE | 1d | 2026-07-15 A | 2026-07-15 A | QTS-1020 | 100% | 2026-08-11 | 2026-08-11 | ROS | Commissioning | DH2300 | L3 | ATS | DELETED | DH1100 |  |
| DC1-ATS-L3-CX-5675 | **DELETED** DC1-ATS-F23-03 L3 Startup | 2d | 2026-07-15 A | 2026-07-15 A | QTS-1020 | 100% | 2026-08-12 | 2026-08-13 | MAV | Commissioning | DH2300 | L3 | ATS | DELETED | DH1100 |  |
| DC1-ATS-L3-CX-5685 | **DELETED** DC1-ATS-F23-03 BMS/EPMS Programming | 1d | 2026-07-15 A | 2026-07-15 A | QTS-1020 | 100% | 2026-08-14 | 2026-08-14 | PRM | Commissioning | DH2300 | L3 | ATS | DELETED | DH1100 |  |
| DC1-ATS-L3-CX-5695 | **DELETED** DC1-ATS-F23-04 FTE | 1d | 2026-07-15 A | 2026-07-15 A | QTS-1020 | 100% | 2026-08-13 | 2026-08-13 | ROS | Commissioning | DH2300 | L3 | ATS | DELETED | DH1100 |  |
| DC1-ATS-L3-CX-5705 | **DELETED** DC1-ATS-F23-04 L3 Startup | 2d | 2026-07-15 A | 2026-07-15 A | QTS-1020 | 100% | 2026-08-14 | 2026-08-17 | MAV | Commissioning | DH2300 | L3 | ATS | DELETED | DH1100 |  |
| DC1-ATS-L3-CX-5715 | **DELETED** DC1-ATS-F23-04 BMS/EPMS Programming | 1d | 2026-07-15 A | 2026-07-15 A | QTS-1020 | 100% | 2026-08-18 | 2026-08-18 | PRM | Commissioning | DH2300 | L3 | ATS | DELETED | DH1100 |  |
| DC1-ATS-L3-CX-5725 | **DELETED** DC1-ATS-F23-05 FTE | 1d | 2026-07-15 A | 2026-07-15 A | QTS-1020 | 100% | 2026-08-11 | 2026-08-11 | ROS | Commissioning | DH2300 | L3 | ATS | DELETED | DH1100 |  |
| DC1-ATS-L3-CX-5735 | **DELETED** DC1-ATS-F23-05 L3 Startup | 2d | 2026-07-15 A | 2026-07-15 A | QTS-1020 | 100% | 2026-08-12 | 2026-08-13 | MAV | Commissioning | DH2300 | L3 | ATS | DELETED | DH1100 |  |
| DC1-ATS-L3-CX-5745 | **DELETED** DC1-ATS-F23-05 BMS/EPMS Programming | 1d | 2026-07-15 A | 2026-07-15 A | QTS-1020 | 100% | 2026-08-14 | 2026-08-14 | PRM | Commissioning | DH2300 | L3 | ATS | DELETED | DH1100 |  |
| DC1-ATS-L3-CX-5755 | **DELETED** DC1-ATS-F23-06 FTE | 1d | 2026-07-15 A | 2026-07-15 A | QTS-1020 | 100% | 2026-08-13 | 2026-08-13 | ROS | Commissioning | DH2300 | L3 | ATS | DELETED | DH1100 |  |
| DC1-ATS-L3-CX-5765 | **DELETED** DC1-ATS-F23-06 L3 Startup | 2d | 2026-07-15 A | 2026-07-15 A | QTS-1020 | 100% | 2026-08-14 | 2026-08-17 | MAV | Commissioning | DH2300 | L3 | ATS | DELETED | DH1100 |  |
| DC1-ATS-L3-CX-5775 | **DELETED** DC1-ATS-F23-06 BMS/EPMS Programming | 1d | 2026-07-15 A | 2026-07-15 A | QTS-1020 | 100% | 2026-08-18 | 2026-08-18 | PRM | Commissioning | DH2300 | L3 | ATS | DELETED | DH1100 |  |
| DC1-ATS-L3-CX-5785 | **DELETED** DC1-ATS-A13-01 FTE | 1d | 2026-07-15 A | 2026-07-15 A | QTS-1020 | 100% | 2026-08-11 | 2026-08-11 | ROS | Commissioning | DH1300 | L3 | ATS | DELETED | DH1100 | SWD - FS |
| DC1-ATS-L3-CX-5795 | **DELETED** DC1-ATS-A13-01 L3 Startup | 2d | 2026-07-15 A | 2026-07-15 A | QTS-1020 | 100% | 2026-08-12 | 2026-08-13 | MAV | Commissioning | DH1300 | L3 | ATS | DELETED | DH1100 |  |
| DC1-ATS-L3-CX-5805 | **DELETED** DC1-ATS-A13-01 BMS/EPMS Programming | 1d | 2026-07-15 A | 2026-07-15 A | DC1-ATS-L3-CX-5795, QTS-1020 | 100% | 2026-08-14 | 2026-08-14 | PRM | Commissioning | DH1300 | L3 | ATS | DELETED | DH1100 |  |
| DC1-ATS-L3-CX-5815 | **DELETED** DC1-ATS-A13-02 FTE | 1d | 2026-07-15 A | 2026-07-15 A | QTS-1020 | 100% | 2026-08-12 | 2026-08-12 | ROS | Commissioning | DH1300 | L3 | ATS | DELETED | DH1100 | SWD - FS |
| DC1-ATS-L3-CX-5825 | **DELETED** DC1-ATS-A13-02 L3 Startup | 2d | 2026-07-15 A | 2026-07-15 A | DC1-ATS-L3-CX-5815, QTS-1020 | 100% | 2026-08-13 | 2026-08-14 | MAV | Commissioning | DH1300 | L3 | ATS | DELETED | DH1100 |  |
| DC1-ATS-L3-CX-5835 | **DELETED** DC1-ATS-A13-02 BMS/EPMS Programming | 1d | 2026-07-15 A | 2026-07-15 A | DC1-ATS-L3-CX-5825, QTS-1020 | 100% | 2026-08-17 | 2026-08-17 | PRM | Commissioning | DH1300 | L3 | ATS | DELETED | DH1100 |  |
| DC1-ATS-L3-CX-5845 | **DELETED** DC1-ATS-A13-03 FTE | 1d | 2026-07-15 A | 2026-07-15 A | DC1-SWD-L3-CX-2840 SS, QTS-1020 | 100% | 2026-08-11 | 2026-08-11 | ROS | Commissioning | DH1300 | L3 | ATS | DELETED | DH1100 | SWD - FS |
| DC1-ATS-L3-CX-5855 | **DELETED** DC1-ATS-A13-03 L3 Startup | 2d | 2026-07-15 A | 2026-07-15 A | DC1-ATS-L3-CX-5845, QTS-1020 | 100% | 2026-08-12 | 2026-08-13 | MAV | Commissioning | DH1300 | L3 | ATS | DELETED | DH1100 |  |
| DC1-ATS-L3-CX-5865 | **DELETED** DC1-ATS-A13-03 BMS/EPMS Programming | 1d | 2026-07-15 A | 2026-07-15 A | DC1-ATS-L3-CX-5855, QTS-1020 | 100% | 2026-08-14 | 2026-08-14 | PRM | Commissioning | DH1300 | L3 | ATS | DELETED | DH1100 |  |
| DC1-ATS-L3-CX-5875 | **DELETED** DC1-ATS-A13-04 FTE | 1d | 2026-07-15 A | 2026-07-15 A | QTS-1020 | 100% | 2026-08-12 | 2026-08-12 | ROS | Commissioning | DH1300 | L3 | ATS | DELETED | DH1100 | SWD - FS |
| DC1-ATS-L3-CX-5885 | **DELETED** DC1-ATS-A13-04 L3 Startup | 2d | 2026-07-15 A | 2026-07-15 A | DC1-ATS-L3-CX-5875, QTS-1020 | 100% | 2026-08-13 | 2026-08-14 | MAV | Commissioning | DH1300 | L3 | ATS | DELETED | DH1100 |  |
| DC1-ATS-L3-CX-5895 | **DELETED** DC1-ATS-A13-04 BMS/EPMS Programming | 1d | 2026-07-15 A | 2026-07-15 A | DC1-ATS-L3-CX-5885, QTS-1020 | 100% | 2026-08-17 | 2026-08-17 | PRM | Commissioning | DH1300 | L3 | ATS | DELETED | DH1100 |  |
| DC1-ATS-L3-CX-5905 | **DELETED** DC1-ATS-A13-05 FTE | 1d | 2026-07-15 A | 2026-07-15 A | DC1-SWD-L3-CX-2840 SS, QTS-1020 | 100% | 2026-08-11 | 2026-08-11 | ROS | Commissioning | DH1300 | L3 | ATS | DELETED | DH1100 | SWD - FS |
| DC1-ATS-L3-CX-5915 | **DELETED** DC1-ATS-A13-05 L3 Startup | 2d | 2026-07-15 A | 2026-07-15 A | DC1-ATS-L3-CX-5905, QTS-1020 | 100% | 2026-08-12 | 2026-08-13 | MAV | Commissioning | DH1300 | L3 | ATS | DELETED | DH1100 |  |

Notes:
- DC1-ATS-L3-CX-5225: Steps: EC Startup Report; Vendor Startup
- DC1-ATS-L3-CX-5255: Steps: EC Startup Report; Vendor Startup
- DC1-ATS-L3-CX-5285: Steps: EC Startup Report; Vendor Startup
- DC1-ATS-L3-CX-5315: Steps: EC Startup Report; Vendor Startup
- DC1-ATS-L3-CX-5345: Steps: EC Startup Report; Vendor Startup
- DC1-ATS-L3-CX-5375: Steps: EC Startup Report; Vendor Startup
- DC1-ATS-L3-CX-5405: Steps: EC Startup Report; Vendor Startup
- DC1-ATS-L3-CX-5435: Steps: EC Startup Report; Vendor Startup
- DC1-ATS-L3-CX-5465: Steps: EC Startup Report; Vendor Startup
- DC1-ATS-L3-CX-5495: Steps: EC Startup Report; Vendor Startup
- DC1-ATS-L3-CX-5525: Steps: EC Startup Report; Vendor Startup
- DC1-ATS-L3-CX-5555: Steps: EC Startup Report; Vendor Startup
- DC1-ATS-L3-CX-5585: Steps: EC Startup Report; Vendor Startup
- DC1-ATS-L3-CX-5615: Steps: EC Startup Report; Vendor Startup
- DC1-ATS-L3-CX-5645: Steps: EC Startup Report; Vendor Startup
- DC1-ATS-L3-CX-5675: Steps: EC Startup Report; Vendor Startup
- DC1-ATS-L3-CX-5705: Steps: EC Startup Report; Vendor Startup
- DC1-ATS-L3-CX-5735: Steps: EC Startup Report; Vendor Startup
- DC1-ATS-L3-CX-5765: Steps: EC Startup Report; Vendor Startup
- DC1-ATS-L3-CX-5795: Steps: EC Startup Report; Vendor Startup
- DC1-ATS-L3-CX-5825: Steps: EC Startup Report; Vendor Startup
- DC1-ATS-L3-CX-5855: Steps: EC Startup Report; Vendor Startup
- DC1-ATS-L3-CX-5885: Steps: EC Startup Report; Vendor Startup
- DC1-ATS-L3-CX-5915: Steps: EC Startup Report; Vendor Startup

| ID | Activity | Duration | Start | Finish | Predecessors | Complete | Planned start | Planned finish | Vendor Responsible Party | Layton Discipline | Location | CX Level | Equipment | DELETED | D | Notes |
| --- | --- | --- | --- | --- | --- | --- | --- | --- | --- | --- | --- | --- | --- | --- | --- | --- |
| DC1-ATS-L3-CX-5925 | **DELETED** DC1-ATS-A13-05 BMS/EPMS Programming | 1d | 2026-07-15 A | 2026-07-15 A | DC1-ATS-L3-CX-5915, QTS-1020 | 100% | 2026-08-14 | 2026-08-14 | PRM | Commissioning | DH1300 | L3 | ATS | DELETED | DH1100 |  |
| DC1-ATS-L3-CX-5935 | **DELETED** DC1-ATS-A13-06 FTE | 1d | 2026-07-15 A | 2026-07-15 A | QTS-1020 | 100% | 2026-08-12 | 2026-08-12 | ROS | Commissioning | DH1300 | L3 | ATS | DELETED | DH1100 | SWD - FS |
| DC1-ATS-L3-CX-5945 | **DELETED** DC1-ATS-A13-06 L3 Startup | 2d | 2026-07-15 A | 2026-07-15 A | DC1-ATS-L3-CX-5935, QTS-1020 | 100% | 2026-08-13 | 2026-08-14 | MAV | Commissioning | DH1300 | L3 | ATS | DELETED | DH1100 |  |
| DC1-ATS-L3-CX-5955 | **DELETED** DC1-ATS-A13-06 BMS/EPMS Programming | 1d | 2026-07-15 A | 2026-07-15 A | DC1-ATS-L3-CX-5945, QTS-1020 | 100% | 2026-08-17 | 2026-08-17 | PRM | Commissioning | DH1300 | L3 | ATS | DELETED | DH1100 |  |
| DC1-ATS-L3-CX-5965 | **DELETED** DC1-ATS-B13-01 FTE | 1d | 2026-07-15 A | 2026-07-15 A | DC1-SWD-L3-CX-2870 SS, QTS-1020 | 100% | 2026-08-11 | 2026-08-11 | ROS | Commissioning | DH1300 | L3 | ATS | DELETED | DH1100 |  |
| DC1-ATS-L3-CX-5975 | **DELETED** DC1-ATS-B13-01 L3 Startup | 2d | 2026-07-15 A | 2026-07-15 A | DC1-ATS-L3-CX-5965, QTS-1020 | 100% | 2026-08-12 | 2026-08-13 | MAV | Commissioning | DH1300 | L3 | ATS | DELETED | DH1100 |  |
| DC1-ATS-L3-CX-5985 | **DELETED** DC1-ATS-B13-01 BMS/EPMS Programming | 1d | 2026-07-15 A | 2026-07-15 A | DC1-ATS-L3-CX-5975, QTS-1020 | 100% | 2026-08-14 | 2026-08-14 | PRM | Commissioning | DH1300 | L3 | ATS | DELETED | DH1100 |  |
| DC1-ATS-L3-CX-5995 | **DELETED** DC1-ATS-B13-02 FTE | 1d | 2026-07-15 A | 2026-07-15 A | QTS-1020 | 100% | 2026-08-13 | 2026-08-13 | ROS | Commissioning | DH1300 | L3 | ATS | DELETED | DH1100 |  |
| DC1-ATS-L3-CX-6005 | **DELETED** DC1-ATS-B13-02 L3 Startup | 2d | 2026-07-15 A | 2026-07-15 A | DC1-ATS-L3-CX-5995, QTS-1020 | 100% | 2026-08-14 | 2026-08-17 | MAV | Commissioning | DH1300 | L3 | ATS | DELETED | DH1100 |  |
| DC1-ATS-L3-CX-6015 | **DELETED** DC1-ATS-B13-02 BMS/EPMS Programming | 1d | 2026-07-15 A | 2026-07-15 A | DC1-ATS-L3-CX-6005, QTS-1020 | 100% | 2026-08-18 | 2026-08-18 | PRM | Commissioning | DH1300 | L3 | ATS | DELETED | DH1100 |  |
| DC1-ATS-L3-CX-6025 | **DELETED** DC1-ATS-B13-03 FTE | 1d | 2026-07-15 A | 2026-07-15 A | DC1-SWD-L3-CX-2870 SS, QTS-1020 | 100% | 2026-08-11 | 2026-08-11 | ROS | Commissioning | DH1300 | L3 | ATS | DELETED | DH1100 |  |
| DC1-ATS-L3-CX-6035 | **DELETED** DC1-ATS-B13-03 L3 Startup | 2d | 2026-07-15 A | 2026-07-15 A | DC1-ATS-L3-CX-6025, QTS-1020 | 100% | 2026-08-12 | 2026-08-13 | MAV | Commissioning | DH1300 | L3 | ATS | DELETED | DH1100 |  |
| DC1-ATS-L3-CX-6045 | **DELETED** DC1-ATS-B13-03 BMS/EPMS Programming | 1d | 2026-07-15 A | 2026-07-15 A | DC1-ATS-L3-CX-6035, QTS-1020 | 100% | 2026-08-14 | 2026-08-14 | PRM | Commissioning | DH1300 | L3 | ATS | DELETED | DH1100 |  |
| DC1-ATS-L3-CX-6055 | **DELETED** DC1-ATS-B13-04 FTE | 1d | 2026-07-15 A | 2026-07-15 A | QTS-1020 | 100% | 2026-08-13 | 2026-08-13 | ROS | Commissioning | DH1300 | L3 | ATS | DELETED | DH1100 |  |
| DC1-ATS-L3-CX-6065 | **DELETED** DC1-ATS-B13-04 L3 Startup | 2d | 2026-07-15 A | 2026-07-15 A | DC1-ATS-L3-CX-6055, QTS-1020 | 100% | 2026-08-14 | 2026-08-17 | MAV | Commissioning | DH1300 | L3 | ATS | DELETED | DH1100 |  |
| DC1-ATS-L3-CX-6075 | **DELETED** DC1-ATS-B13-04 BMS/EPMS Programming | 1d | 2026-07-15 A | 2026-07-15 A | DC1-ATS-L3-CX-6065, QTS-1020 | 100% | 2026-08-18 | 2026-08-18 | PRM | Commissioning | DH1300 | L3 | ATS | DELETED | DH1100 |  |
| DC1-ATS-L3-CX-6085 | **DELETED** DC1-ATS-B13-05 FTE | 1d | 2026-07-15 A | 2026-07-15 A | DC1-SWD-L3-CX-2870 SS, QTS-1020 | 100% | 2026-08-11 | 2026-08-11 | ROS | Commissioning | DH1300 | L3 | ATS | DELETED | DH1100 |  |
| DC1-ATS-L3-CX-6095 | **DELETED** DC1-ATS-B13-05 L3 Startup | 2d | 2026-07-15 A | 2026-07-15 A | DC1-ATS-L3-CX-6085, QTS-1020 | 100% | 2026-08-12 | 2026-08-13 | MAV | Commissioning | DH1300 | L3 | ATS | DELETED | DH1100 |  |
| DC1-ATS-L3-CX-6105 | **DELETED** DC1-ATS-B13-05 BMS/EPMS Programming | 1d | 2026-07-15 A | 2026-07-15 A | DC1-ATS-L3-CX-6095, QTS-1020 | 100% | 2026-08-14 | 2026-08-14 | PRM | Commissioning | DH1300 | L3 | ATS | DELETED | DH1100 |  |
| DC1-ATS-L3-CX-6115 | **DELETED** DC1-ATS-B13-06 FTE | 1d | 2026-07-15 A | 2026-07-15 A | QTS-1020 | 100% | 2026-08-13 | 2026-08-13 | ROS | Commissioning | DH1300 | L3 | ATS | DELETED | DH1100 |  |
| DC1-ATS-L3-CX-6125 | **DELETED** DC1-ATS-B13-06 L3 Startup | 2d | 2026-07-15 A | 2026-07-15 A | DC1-ATS-L3-CX-6115, QTS-1020 | 100% | 2026-08-14 | 2026-08-17 | MAV | Commissioning | DH1300 | L3 | ATS | DELETED | DH1100 |  |
| DC1-ATS-L3-CX-6135 | **DELETED** DC1-ATS-B13-06 BMS/EPMS Programming | 1d | 2026-07-15 A | 2026-07-15 A | DC1-ATS-L3-CX-6125, QTS-1020 | 100% | 2026-08-18 | 2026-08-18 | PRM | Commissioning | DH1300 | L3 | ATS | DELETED | DH1100 |  |
| DC1-ATS-L3-CX-6145 | **DELETED** DC1-ATS-C13-01 FTE | 1d | 2026-07-15 A | 2026-07-15 A | DC1-SWD-L3-CX-2900 SS, QTS-1020 | 100% | 2026-08-11 | 2026-08-11 | ROS | Commissioning | DH1300 | L3 | ATS | DELETED | DH1100 |  |
| DC1-ATS-L3-CX-6155 | **DELETED** DC1-ATS-C13-01 L3 Startup | 2d | 2026-07-15 A | 2026-07-15 A | DC1-ATS-L3-CX-6145, QTS-1020 | 100% | 2026-08-12 | 2026-08-13 | MAV | Commissioning | DH1300 | L3 | ATS | DELETED | DH1100 |  |
| DC1-ATS-L3-CX-6165 | **DELETED** DC1-ATS-C13-01 BMS/EPMS Programming | 1d | 2026-07-15 A | 2026-07-15 A | DC1-ATS-L3-CX-6155, QTS-1020 | 100% | 2026-08-14 | 2026-08-14 | PRM | Commissioning | DH1300 | L3 | ATS | DELETED | DH1100 |  |
| DC1-ATS-L3-CX-6175 | **DELETED** DC1-ATS-C13-02 FTE | 1d | 2026-07-15 A | 2026-07-15 A | QTS-1020 | 100% | 2026-08-13 | 2026-08-13 | ROS | Commissioning | DH1300 | L3 | ATS | DELETED | DH1100 |  |
| DC1-ATS-L3-CX-6185 | **DELETED** DC1-ATS-C13-02 L3 Startup | 2d | 2026-07-15 A | 2026-07-15 A | DC1-ATS-L3-CX-6175, QTS-1020 | 100% | 2026-08-14 | 2026-08-17 | MAV | Commissioning | DH1300 | L3 | ATS | DELETED | DH1100 |  |
| DC1-ATS-L3-CX-6195 | **DELETED** DC1-ATS-C13-02 BMS/EPMS Programming | 1d | 2026-07-15 A | 2026-07-15 A | DC1-ATS-L3-CX-6185, QTS-1020 | 100% | 2026-08-18 | 2026-08-18 | PRM | Commissioning | DH1300 | L3 | ATS | DELETED | DH1100 |  |
| DC1-ATS-L3-CX-6205 | **DELETED** DC1-ATS-C13-03 FTE | 1d | 2026-07-15 A | 2026-07-15 A | DC1-SWD-L3-CX-2900 SS, QTS-1020 | 100% | 2026-08-11 | 2026-08-11 | ROS | Commissioning | DH1300 | L3 | ATS | DELETED | DH1100 |  |
| DC1-ATS-L3-CX-6215 | **DELETED** DC1-ATS-C13-03 L3 Startup | 2d | 2026-07-15 A | 2026-07-15 A | DC1-ATS-L3-CX-6205, QTS-1020 | 100% | 2026-08-12 | 2026-08-13 | MAV | Commissioning | DH1300 | L3 | ATS | DELETED | DH1100 |  |
| DC1-ATS-L3-CX-6225 | **DELETED** DC1-ATS-C13-03 BMS/EPMS Programming | 1d | 2026-07-15 A | 2026-07-15 A | DC1-ATS-L3-CX-6215, QTS-1020 | 100% | 2026-08-14 | 2026-08-14 | PRM | Commissioning | DH1300 | L3 | ATS | DELETED | DH1100 |  |
| DC1-ATS-L3-CX-6235 | **DELETED** DC1-ATS-C13-04 FTE | 1d | 2026-07-15 A | 2026-07-15 A | DC1-ATS-L2-3590, QTS-1020 | 100% | 2026-08-13 | 2026-08-13 | ROS | Commissioning | DH1300 | L3 | ATS | DELETED | DH1100 |  |
| DC1-ATS-L3-CX-6245 | **DELETED** DC1-ATS-C13-04 L3 Startup | 2d | 2026-07-15 A | 2026-07-15 A | DC1-ATS-L3-CX-6235, QTS-1020 | 100% | 2026-08-14 | 2026-08-17 | MAV | Commissioning | DH1300 | L3 | ATS | DELETED | DH1100 |  |
| DC1-ATS-L3-CX-6255 | **DELETED** DC1-ATS-C13-04 BMS/EPMS Programming | 1d | 2026-07-15 A | 2026-07-15 A | DC1-ATS-L3-CX-6245, QTS-1020 | 100% | 2026-08-18 | 2026-08-18 | PRM | Commissioning | DH1300 | L3 | ATS | DELETED | DH1100 |  |
| DC1-ATS-L3-CX-6265 | **DELETED** DC1-ATS-C13-05 FTE | 1d | 2026-07-15 A | 2026-07-15 A | DC1-SWD-L3-CX-2900 SS, DC1-ATS-L2-3600, QTS-1020 | 100% | 2026-08-11 | 2026-08-11 | ROS | Commissioning | DH1300 | L3 | ATS | DELETED | DH1100 |  |
| DC1-ATS-L3-CX-6275 | **DELETED** DC1-ATS-C13-05 L3 Startup | 2d | 2026-07-15 A | 2026-07-15 A | DC1-ATS-L3-CX-6265, QTS-1020 | 100% | 2026-08-12 | 2026-08-13 | MAV | Commissioning | DH1300 | L3 | ATS | DELETED | DH1100 |  |
| DC1-ATS-L3-CX-6285 | **DELETED** DC1-ATS-C13-05 BMS/EPMS Programming | 1d | 2026-07-15 A | 2026-07-15 A | DC1-ATS-L3-CX-6275, QTS-1020 | 100% | 2026-08-14 | 2026-08-14 | PRM | Commissioning | DH1300 | L3 | ATS | DELETED | DH1100 |  |
| DC1-ATS-L3-CX-6295 | **DELETED** DC1-ATS-C13-06 FTE | 1d | 2026-07-15 A | 2026-07-15 A | DC1-ATS-L2-3610, QTS-1020 | 100% | 2026-08-13 | 2026-08-13 | ROS | Commissioning | DH1300 | L3 | ATS | DELETED | DH1100 |  |
| DC1-ATS-L3-CX-6305 | **DELETED** DC1-ATS-C13-06 L3 Startup | 2d | 2026-07-15 A | 2026-07-15 A | DC1-ATS-L3-CX-6295, QTS-1020 | 100% | 2026-08-14 | 2026-08-17 | MAV | Commissioning | DH1300 | L3 | ATS | DELETED | DH1100 |  |
| DC1-ATS-L3-CX-6315 | **DELETED** DC1-ATS-C13-06 BMS/EPMS Programming | 1d | 2026-07-15 A | 2026-07-15 A | DC1-ATS-L3-CX-6305, QTS-1020 | 100% | 2026-08-18 | 2026-08-18 | PRM | Commissioning | DH1300 | L3 | ATS | DELETED | DH1100 |  |
| DC1-ATS-L3-CX-6325 | **DELETED** DC1-ATS-D13-01 FTE | 1d | 2026-07-15 A | 2026-07-15 A | DC1-SWD-L3-CX-2930 SS, DC1-ATS-L2-3620, QTS-1020 | 100% | 2026-08-11 | 2026-08-11 | ROS | Commissioning | DH1300 | L3 | ATS | DELETED | DH1100 |  |
| DC1-ATS-L3-CX-6335 | **DELETED** DC1-ATS-D13-01 L3 Startup | 2d | 2026-07-15 A | 2026-07-15 A | DC1-ATS-L3-CX-6325, QTS-1020 | 100% | 2026-08-12 | 2026-08-13 | MAV | Commissioning | DH1300 | L3 | ATS | DELETED | DH1100 |  |
| DC1-ATS-L3-CX-6345 | **DELETED** DC1-ATS-D13-01 BMS/EPMS Programming | 1d | 2026-07-15 A | 2026-07-15 A | DC1-ATS-L3-CX-6335, QTS-1020 | 100% | 2026-08-14 | 2026-08-14 | PRM | Commissioning | DH1300 | L3 | ATS | DELETED | DH1100 |  |
| DC1-ATS-L3-CX-6355 | **DELETED** DC1-ATS-D13-02 FTE | 1d | 2026-07-15 A | 2026-07-15 A | DC1-ATS-L2-3630, QTS-1020 | 100% | 2026-08-13 | 2026-08-13 | ROS | Commissioning | DH1300 | L3 | ATS | DELETED | DH1100 |  |
| DC1-ATS-L3-CX-6365 | **DELETED** DC1-ATS-D13-02 L3 Startup | 2d | 2026-07-15 A | 2026-07-15 A | DC1-ATS-L3-CX-6355, QTS-1020 | 100% | 2026-08-14 | 2026-08-17 | MAV | Commissioning | DH1300 | L3 | ATS | DELETED | DH1100 |  |
| DC1-ATS-L3-CX-6375 | **DELETED** DC1-ATS-D13-02 BMS/EPMS Programming | 1d | 2026-07-15 A | 2026-07-15 A | DC1-ATS-L3-CX-6365, QTS-1020 | 100% | 2026-08-18 | 2026-08-18 | PRM | Commissioning | DH1300 | L3 | ATS | DELETED | DH1100 |  |
| DC1-ATS-L3-CX-6385 | **DELETED** DC1-ATS-D13-03 FTE | 1d | 2026-07-15 A | 2026-07-15 A | DC1-SWD-L3-CX-2930 SS, DC1-ATS-L2-3640, QTS-1020 | 100% | 2026-08-11 | 2026-08-11 | ROS | Commissioning | DH1300 | L3 | ATS | DELETED | DH1100 |  |
| DC1-ATS-L3-CX-6395 | **DELETED** DC1-ATS-D13-03 L3 Startup | 2d | 2026-07-15 A | 2026-07-15 A | DC1-ATS-L3-CX-6385, QTS-1020 | 100% | 2026-08-12 | 2026-08-13 | MAV | Commissioning | DH1300 | L3 | ATS | DELETED | DH1100 |  |
| DC1-ATS-L3-CX-6405 | **DELETED** DC1-ATS-D13-03 BMS/EPMS Programming | 1d | 2026-07-15 A | 2026-07-15 A | DC1-ATS-L3-CX-6395, QTS-1020 | 100% | 2026-08-14 | 2026-08-14 | PRM | Commissioning | DH1300 | L3 | ATS | DELETED | DH1100 |  |
| DC1-ATS-L3-CX-6415 | **DELETED** DC1-ATS-D13-04 FTE | 1d | 2026-07-15 A | 2026-07-15 A | DC1-ATS-L2-3650, QTS-1020 | 100% | 2026-08-13 | 2026-08-13 | ROS | Commissioning | DH1300 | L3 | ATS | DELETED | DH1100 |  |
| DC1-ATS-L3-CX-6425 | **DELETED** DC1-ATS-D13-04 L3 Startup | 2d | 2026-07-15 A | 2026-07-15 A | DC1-ATS-L3-CX-6415, QTS-1020 | 100% | 2026-08-14 | 2026-08-17 | MAV | Commissioning | DH1300 | L3 | ATS | DELETED | DH1100 |  |
| DC1-ATS-L3-CX-6435 | **DELETED** DC1-ATS-D13-04 BMS/EPMS Programming | 1d | 2026-07-15 A | 2026-07-15 A | DC1-ATS-L3-CX-6425, QTS-1020 | 100% | 2026-08-18 | 2026-08-18 | PRM | Commissioning | DH1300 | L3 | ATS | DELETED | DH1100 |  |
| DC1-ATS-L3-CX-6445 | **DELETED** DC1-ATS-D13-05 FTE | 1d | 2026-07-15 A | 2026-07-15 A | DC1-SWD-L3-CX-2930 SS, DC1-ATS-L2-3660, QTS-1020 | 100% | 2026-08-11 | 2026-08-11 | ROS | Commissioning | DH1300 | L3 | ATS | DELETED | DH1100 |  |
| DC1-ATS-L3-CX-6455 | **DELETED** DC1-ATS-D13-05 L3 Startup | 2d | 2026-07-15 A | 2026-07-15 A | DC1-ATS-L3-CX-6445, QTS-1020 | 100% | 2026-08-12 | 2026-08-13 | MAV | Commissioning | DH1300 | L3 | ATS | DELETED | DH1100 |  |
| DC1-ATS-L3-CX-6465 | **DELETED** DC1-ATS-D13-05 BMS/EPMS Programming | 1d | 2026-07-15 A | 2026-07-15 A | DC1-ATS-L3-CX-6455, QTS-1020 | 100% | 2026-08-14 | 2026-08-14 | PRM | Commissioning | DH1300 | L3 | ATS | DELETED | DH1100 |  |
| DC1-ATS-L3-CX-6475 | **DELETED** DC1-ATS-D13-06 FTE | 1d | 2026-07-15 A | 2026-07-15 A | DC1-ATS-L2-3670, QTS-1020 | 100% | 2026-08-13 | 2026-08-13 | ROS | Commissioning | DH1300 | L3 | ATS | DELETED | DH1100 |  |
| DC1-ATS-L3-CX-6485 | **DELETED** DC1-ATS-D13-06 L3 Startup | 2d | 2026-07-15 A | 2026-07-15 A | DC1-ATS-L3-CX-6475, QTS-1020 | 100% | 2026-08-14 | 2026-08-17 | MAV | Commissioning | DH1300 | L3 | ATS | DELETED | DH1100 |  |
| DC1-ATS-L3-CX-6495 | **DELETED** DC1-ATS-D13-06 BMS/EPMS Programming | 1d | 2026-07-15 A | 2026-07-15 A | DC1-ATS-L3-CX-6485, QTS-1020 | 100% | 2026-08-18 | 2026-08-18 | PRM | Commissioning | DH1300 | L3 | ATS | DELETED | DH1100 |  |
| DC1-ATS-L3-CX-6505 | **DELETED** DC1-ATS-E13-01 FTE | 1d | 2026-07-15 A | 2026-07-15 A | DC1-SWD-L3-CX-2960 SS, DC1-ATS-L2-3680, QTS-1020 | 100% | 2026-08-11 | 2026-08-11 | ROS | Commissioning | DH1300 | L3 | ATS | DELETED | DH1100 |  |
| DC1-ATS-L3-CX-6515 | **DELETED** DC1-ATS-E13-01 L3 Startup | 2d | 2026-07-15 A | 2026-07-15 A | DC1-ATS-L3-CX-6505, QTS-1020 | 100% | 2026-08-12 | 2026-08-13 | MAV | Commissioning | DH1300 | L3 | ATS | DELETED | DH1100 |  |
| DC1-ATS-L3-CX-6525 | **DELETED** DC1-ATS-E13-01 BMS/EPMS Programming | 1d | 2026-07-15 A | 2026-07-15 A | DC1-ATS-L3-CX-6515, QTS-1020 | 100% | 2026-08-14 | 2026-08-14 | PRM | Commissioning | DH1300 | L3 | ATS | DELETED | DH1100 |  |
| DC1-ATS-L3-CX-6535 | **DELETED** DC1-ATS-E13-02 FTE | 1d | 2026-07-15 A | 2026-07-15 A | DC1-ATS-L2-3690, QTS-1020 | 100% | 2026-08-13 | 2026-08-13 | ROS | Commissioning | DH1300 | L3 | ATS | DELETED | DH1100 |  |
| DC1-ATS-L3-CX-6545 | **DELETED** DC1-ATS-E13-02 L3 Startup | 2d | 2026-07-15 A | 2026-07-15 A | DC1-ATS-L3-CX-6535, QTS-1020 | 100% | 2026-08-14 | 2026-08-17 | MAV | Commissioning | DH1300 | L3 | ATS | DELETED | DH1100 |  |
| DC1-ATS-L3-CX-6555 | **DELETED** DC1-ATS-E13-02 BMS/EPMS Programming | 1d | 2026-07-15 A | 2026-07-15 A | DC1-ATS-L3-CX-6545, QTS-1020 | 100% | 2026-08-18 | 2026-08-18 | PRM | Commissioning | DH1300 | L3 | ATS | DELETED | DH1100 |  |
| DC1-ATS-L3-CX-6565 | **DELETED** DC1-ATS-E13-03 FTE | 1d | 2026-07-15 A | 2026-07-15 A | DC1-SWD-L3-CX-2960 SS, DC1-ATS-L2-3700, QTS-1020 | 100% | 2026-08-11 | 2026-08-11 | ROS | Commissioning | DH1300 | L3 | ATS | DELETED | DH1100 |  |
| DC1-ATS-L3-CX-6575 | **DELETED** DC1-ATS-E13-03 L3 Startup | 2d | 2026-07-15 A | 2026-07-15 A | DC1-ATS-L3-CX-6565, QTS-1020 | 100% | 2026-08-12 | 2026-08-13 | MAV | Commissioning | DH1300 | L3 | ATS | DELETED | DH1100 |  |
| DC1-ATS-L3-CX-6585 | **DELETED** DC1-ATS-E13-03 BMS/EPMS Programming | 1d | 2026-07-15 A | 2026-07-15 A | DC1-ATS-L3-CX-6575, QTS-1020 | 100% | 2026-08-14 | 2026-08-14 | PRM | Commissioning | DH1300 | L3 | ATS | DELETED | DH1100 |  |
| DC1-ATS-L3-CX-6595 | **DELETED** DC1-ATS-E13-04 FTE | 1d | 2026-07-15 A | 2026-07-15 A | DC1-ATS-L2-3710, QTS-1020 | 100% | 2026-08-13 | 2026-08-13 | ROS | Commissioning | DH1300 | L3 | ATS | DELETED | DH1100 |  |
| DC1-ATS-L3-CX-6605 | **DELETED** DC1-ATS-E13-04 L3 Startup | 2d | 2026-07-15 A | 2026-07-15 A | DC1-ATS-L3-CX-6595, QTS-1020 | 100% | 2026-08-14 | 2026-08-17 | MAV | Commissioning | DH1300 | L3 | ATS | DELETED | DH1100 |  |
| DC1-ATS-L3-CX-6615 | **DELETED** DC1-ATS-E13-04 BMS/EPMS Programming | 1d | 2026-07-15 A | 2026-07-15 A | DC1-ATS-L3-CX-6605, QTS-1020 | 100% | 2026-08-18 | 2026-08-18 | PRM | Commissioning | DH1300 | L3 | ATS | DELETED | DH1100 |  |

Notes:
- DC1-ATS-L3-CX-5945: Steps: EC Startup Report; Vendor Startup
- DC1-ATS-L3-CX-5975: Steps: EC Startup Report; Vendor Startup
- DC1-ATS-L3-CX-6005: Steps: EC Startup Report; Vendor Startup
- DC1-ATS-L3-CX-6035: Steps: EC Startup Report; Vendor Startup
- DC1-ATS-L3-CX-6065: Steps: EC Startup Report; Vendor Startup
- DC1-ATS-L3-CX-6095: Steps: EC Startup Report; Vendor Startup
- DC1-ATS-L3-CX-6125: Steps: EC Startup Report; Vendor Startup
- DC1-ATS-L3-CX-6155: Steps: EC Startup Report; Vendor Startup
- DC1-ATS-L3-CX-6185: Steps: EC Startup Report; Vendor Startup
- DC1-ATS-L3-CX-6215: Steps: EC Startup Report; Vendor Startup
- DC1-ATS-L3-CX-6245: Steps: EC Startup Report; Vendor Startup
- DC1-ATS-L3-CX-6275: Steps: EC Startup Report; Vendor Startup
- DC1-ATS-L3-CX-6305: Steps: EC Startup Report; Vendor Startup
- DC1-ATS-L3-CX-6335: Steps: EC Startup Report; Vendor Startup
- DC1-ATS-L3-CX-6365: Steps: EC Startup Report; Vendor Startup
- DC1-ATS-L3-CX-6395: Steps: EC Startup Report; Vendor Startup
- DC1-ATS-L3-CX-6425: Steps: EC Startup Report; Vendor Startup
- DC1-ATS-L3-CX-6455: Steps: EC Startup Report; Vendor Startup
- DC1-ATS-L3-CX-6485: Steps: EC Startup Report; Vendor Startup
- DC1-ATS-L3-CX-6515: Steps: EC Startup Report; Vendor Startup
- DC1-ATS-L3-CX-6545: Steps: EC Startup Report; Vendor Startup
- DC1-ATS-L3-CX-6575: Steps: EC Startup Report; Vendor Startup
- DC1-ATS-L3-CX-6605: Steps: EC Startup Report; Vendor Startup

| ID | Activity | Duration | Start | Finish | Predecessors | Complete | Planned start | Planned finish | Vendor Responsible Party | Layton Discipline | Location | CX Level | Equipment | DELETED | D | Notes |
| --- | --- | --- | --- | --- | --- | --- | --- | --- | --- | --- | --- | --- | --- | --- | --- | --- |
| DC1-ATS-L3-CX-6625 | **DELETED** DC1-ATS-E13-05 FTE | 1d | 2026-07-15 A | 2026-07-15 A | DC1-SWD-L3-CX-2960 SS, DC1-ATS-L2-3720, QTS-1020 | 100% | 2026-08-11 | 2026-08-11 | ROS | Commissioning | DH1300 | L3 | ATS | DELETED | DH1100 |  |
| DC1-ATS-L3-CX-6635 | **DELETED** DC1-ATS-E13-05 L3 Startup | 2d | 2026-07-15 A | 2026-07-15 A | DC1-ATS-L3-CX-6625, QTS-1020 | 100% | 2026-08-12 | 2026-08-13 | MAV | Commissioning | DH1300 | L3 | ATS | DELETED | DH1100 |  |
| DC1-ATS-L3-CX-6645 | **DELETED** DC1-ATS-E13-05 BMS/EPMS Programming | 1d | 2026-07-15 A | 2026-07-15 A | DC1-ATS-L3-CX-6635, QTS-1020 | 100% | 2026-08-14 | 2026-08-14 | PRM | Commissioning | DH1300 | L3 | ATS | DELETED | DH1100 |  |
| DC1-ATS-L3-CX-6655 | **DELETED** DC1-ATS-E13-06 FTE | 1d | 2026-07-15 A | 2026-07-15 A | DC1-ATS-L2-3730, QTS-1020 | 100% | 2026-08-13 | 2026-08-13 | ROS | Commissioning | DH1300 | L3 | ATS | DELETED | DH1100 |  |
| DC1-ATS-L3-CX-6665 | **DELETED** DC1-ATS-E13-06 L3 Startup | 2d | 2026-07-15 A | 2026-07-15 A | DC1-ATS-L3-CX-6655, QTS-1020 | 100% | 2026-08-14 | 2026-08-17 | MAV | Commissioning | DH1300 | L3 | ATS | DELETED | DH1100 |  |
| DC1-ATS-L3-CX-6675 | **DELETED** DC1-ATS-E13-06 BMS/EPMS Programming | 1d | 2026-07-15 A | 2026-07-15 A | DC1-ATS-L3-CX-6665, QTS-1020 | 100% | 2026-08-18 | 2026-08-18 | PRM | Commissioning | DH1300 | L3 | ATS | DELETED | DH1100 |  |
| DC1-ATS-L3-CX-6685 | **DELETED** DC1-ATS-F13-01 FTE | 1d | 2026-07-15 A | 2026-07-15 A | DC1-SWD-L3-CX-2990 SS, DC1-ATS-L2-3740, QTS-1020 | 100% | 2026-08-11 | 2026-08-11 | ROS | Commissioning | DH1300 | L3 | ATS | DELETED | DH1100 |  |
| DC1-ATS-L3-CX-6695 | **DELETED** DC1-ATS-F13-01 L3 Startup | 2d | 2026-07-15 A | 2026-07-15 A | DC1-ATS-L3-CX-6685, QTS-1020 | 100% | 2026-08-12 | 2026-08-13 | MAV | Commissioning | DH1300 | L3 | ATS | DELETED | DH1100 |  |
| DC1-ATS-L3-CX-6705 | **DELETED** DC1-ATS-F13-01 BMS/EPMS Programming | 1d | 2026-07-15 A | 2026-07-15 A | DC1-ATS-L3-CX-6695, QTS-1020 | 100% | 2026-08-14 | 2026-08-14 | PRM | Commissioning | DH1300 | L3 | ATS | DELETED | DH1100 |  |
| DC1-ATS-L3-CX-6715 | **DELETED** DC1-ATS-F13-02 FTE | 1d | 2026-07-15 A | 2026-07-15 A | DC1-ATS-L2-3750, QTS-1020 | 100% | 2026-08-13 | 2026-08-13 | ROS | Commissioning | DH1300 | L3 | ATS | DELETED | DH1100 |  |
| DC1-ATS-L3-CX-6725 | **DELETED** DC1-ATS-F13-02 L3 Startup | 2d | 2026-07-15 A | 2026-07-15 A | DC1-ATS-L3-CX-6715, QTS-1020 | 100% | 2026-08-14 | 2026-08-17 | MAV | Commissioning | DH1300 | L3 | ATS | DELETED | DH1100 |  |
| DC1-ATS-L3-CX-6735 | **DELETED** DC1-ATS-F13-02 BMS/EPMS Programming | 1d | 2026-07-15 A | 2026-07-15 A | DC1-ATS-L3-CX-6725, QTS-1020 | 100% | 2026-08-18 | 2026-08-18 | PRM | Commissioning | DH1300 | L3 | ATS | DELETED | DH1100 |  |
| DC1-ATS-L3-CX-6745 | **DELETED** DC1-ATS-F13-03 FTE | 1d | 2026-07-15 A | 2026-07-15 A | DC1-SWD-L3-CX-2990 SS, DC1-ATS-L2-3760, QTS-1020 | 100% | 2026-08-11 | 2026-08-11 | ROS | Commissioning | DH1300 | L3 | ATS | DELETED | DH1100 |  |
| DC1-ATS-L3-CX-6755 | **DELETED** DC1-ATS-F13-03 L3 Startup | 2d | 2026-07-15 A | 2026-07-15 A | DC1-ATS-L3-CX-6745, QTS-1020 | 100% | 2026-08-12 | 2026-08-13 | MAV | Commissioning | DH1300 | L3 | ATS | DELETED | DH1100 |  |
| DC1-ATS-L3-CX-6765 | **DELETED** DC1-ATS-F13-03 BMS/EPMS Programming | 1d | 2026-07-15 A | 2026-07-15 A | DC1-ATS-L3-CX-6755, QTS-1020 | 100% | 2026-08-14 | 2026-08-14 | PRM | Commissioning | DH1300 | L3 | ATS | DELETED | DH1100 |  |
| DC1-ATS-L3-CX-6775 | **DELETED** DC1-ATS-F13-04 FTE | 1d | 2026-07-15 A | 2026-07-15 A | DC1-ATS-L2-3770, QTS-1020 | 100% | 2026-08-13 | 2026-08-13 | ROS | Commissioning | DH1300 | L3 | ATS | DELETED | DH1100 |  |
| DC1-ATS-L3-CX-6785 | **DELETED** DC1-ATS-F13-04 L3 Startup | 2d | 2026-07-15 A | 2026-07-15 A | DC1-ATS-L3-CX-6775, QTS-1020 | 100% | 2026-08-14 | 2026-08-17 | MAV | Commissioning | DH1300 | L3 | ATS | DELETED | DH1100 |  |
| DC1-ATS-L3-CX-6795 | **DELETED** DC1-ATS-F13-04 BMS/EPMS Programming | 1d | 2026-07-15 A | 2026-07-15 A | DC1-ATS-L3-CX-6785, QTS-1020 | 100% | 2026-08-18 | 2026-08-18 | PRM | Commissioning | DH1300 | L3 | ATS | DELETED | DH1100 |  |
| DC1-ATS-L3-CX-6805 | **DELETED** DC1-ATS-F13-05 FTE | 1d | 2026-07-15 A | 2026-07-15 A | DC1-SWD-L3-CX-2990 SS, DC1-ATS-L2-3780, QTS-1020 | 100% | 2026-08-11 | 2026-08-11 | ROS | Commissioning | DH1300 | L3 | ATS | DELETED | DH1100 |  |
| DC1-ATS-L3-CX-6815 | **DELETED** DC1-ATS-F13-05 L3 Startup | 2d | 2026-07-15 A | 2026-07-15 A | DC1-ATS-L3-CX-6805, QTS-1020 | 100% | 2026-08-12 | 2026-08-13 | MAV | Commissioning | DH1300 | L3 | ATS | DELETED | DH1100 |  |
| DC1-ATS-L3-CX-6825 | **DELETED** DC1-ATS-F13-05 BMS/EPMS Programming | 1d | 2026-07-15 A | 2026-07-15 A | DC1-ATS-L3-CX-6815, QTS-1020 | 100% | 2026-08-14 | 2026-08-14 | PRM | Commissioning | DH1300 | L3 | ATS | DELETED | DH1100 |  |
| DC1-ATS-L3-CX-6835 | **DELETED** DC1-ATS-F13-06 FTE | 1d | 2026-07-15 A | 2026-07-15 A | DC1-ATS-L2-3790, QTS-1020 | 100% | 2026-08-13 | 2026-08-13 | ROS | Commissioning | DH1300 | L3 | ATS | DELETED | DH1100 |  |
| DC1-ATS-L3-CX-6845 | **DELETED** DC1-ATS-F13-06 L3 Startup | 2d | 2026-07-15 A | 2026-07-15 A | DC1-ATS-L3-CX-6835, QTS-1020 | 100% | 2026-08-14 | 2026-08-17 | MAV | Commissioning | DH1300 | L3 | ATS | DELETED | DH1100 |  |
| DC1-ATS-L3-CX-6855 | **DELETED** DC1-ATS-F13-06 BMS/EPMS Programming | 1d | 2026-07-15 A | 2026-07-15 A | DC1-ATS-L3-CX-6845, QTS-1020 | 100% | 2026-08-18 | 2026-08-18 | PRM | Commissioning | DH1300 | L3 | ATS | DELETED | DH1100 |  |
| DC1-BUS-L2-1030 | **DELETED** DH2200 BUS-R1 (R12) CATCHER BUS Duct L2 Checklist | 3d | 2026-07-15 A | 2026-07-17 A | QTS-1020 | 100% |  |  | LAY | Commissioning | DH2200 | L2 | BUS DUCT | DELETED | DH1100 | CFCI |
| DC1-BUS-L2-1050 | **DELETED** DH1200 BUS-R2 (R12) MAINTENANCE BUS Duct L2 Checklist | 3d | 2026-07-15 A | 2026-07-17 A | QTS-1020 | 100% |  |  | LAY | Commissioning | DH1200 | L2 | BUS DUCT | DELETED | DH1100 | CFCI |
| DC1-BUS-L2-1060 | **DELETED** DH2300 BUS-R2 (R23) MAINTENANCE BUS Duct L2 Checklist | 3d | 2026-07-15 A | 2026-07-15 A | QTS-1020 | 100% | 2026-07-15 | 2026-07-17 | LAY | Commissioning | DH2300 | L2 | BUS DUCT | DELETED | DH1100 | CFCI - Bus duct complete (PRED) |
| DC1-BUS-L2-1070 | **DELETED** DH2300 BUS-R1 (R13) CATCHER BUS Duct L2 Checklist | 3d | 2026-07-15 A | 2026-07-15 A | QTS-1020 | 100% | 2026-07-15 | 2026-07-17 | LAY | Commissioning | DH2300 | L2 | BUS DUCT | DELETED | DH1100 | CFCI |
| DC1-BUS-L2-1080 | **DELETED** **DELETED** DH1300 BUS-R1 (R23) CATCHER BUS Duct L2 Checklist | 3d | 2026-07-15 A | 2026-07-15 A | QTS-1020 | 100% | 2026-07-15 | 2026-07-17 | LAY | Commissioning | DH1300 | L2 | BUS DUCT | DELETED | DH1100 | CFCI - Bus duct complete (PRED) |
| DC1-BUS-L2-1090 | **DELETED** **DELETED** DH1300 BUS-R2 (R13) MAINTENANCE BUS Duct L2 Checklist | 3d | 2026-07-15 A | 2026-07-15 A | QTS-1020 | 100% | 2026-07-15 | 2026-07-17 | LAY | Commissioning | DH1300 | L2 | BUS DUCT | DELETED | DH1100 | CFCI |
| DC1-BUS-L3-CX-2180 | **DELETED** DC1-DH2300-BUS-R2 (R23) MAINTENANCE BUS FTE | 1d | 2026-07-15 A | 2026-07-15 A | QTS-1020 | 100% | 2026-08-11 | 2026-08-11 | ROS | Commissioning | DH2300 | L3 | BUS DUCT | DELETED | DH1100 | CFCI |
| DC1-BUS-L3-CX-2190 | **DELETED** DC1-DH2300-BUS-R2 (R23) MAINTENANCE BUS L3 Startup | 2d | 2026-07-15 A | 2026-07-15 A | QTS-1020 | 100% | 2026-08-12 | 2026-08-13 | LAY | Commissioning | DH2300 | L3 | BUS DUCT | DELETED | DH1100 | CFCI |
| DC1-BUS-L3-CX-2200 | **DELETED** DC1-DH2300-BUS-R2 (R23) MAINTENANCE BUS BMS/EPMS Programming | 1d | 2026-07-15 A | 2026-07-15 A | QTS-1020 | 100% | 2026-08-14 | 2026-08-14 | PRM | Commissioning | DH2300 | L3 | BUS DUCT | DELETED | DH1100 | CFCI |
| DC1-BUS-L3-CX-2210 | **DELETED** DC1-DH2300-BUS-R1 (R13) CATCHER BUS FTE | 1d | 2026-07-15 A | 2026-07-15 A | QTS-1020 | 100% | 2026-08-12 | 2026-08-12 | ROS | Commissioning | DH2300 | L3 | BUS DUCT | DELETED | DH1100 | CFCI |
| DC1-BUS-L3-CX-2220 | **DELETED** DC1-DH2300-BUS-R1 (R13) CATCHER BUS L3 Startup | 2d | 2026-07-15 A | 2026-07-15 A | QTS-1020 | 100% | 2026-08-13 | 2026-08-14 | LAY | Commissioning | DH2300 | L3 | BUS DUCT | DELETED | DH1100 | CFCI |
| DC1-BUS-L3-CX-2230 | **DELETED** DC1-DH2300-BUS-R1 (R13) CATCHER BUS BMS/EPMS Programming | 1d | 2026-07-15 A | 2026-07-15 A | QTS-1020 | 100% | 2026-08-17 | 2026-08-17 | PRM | Commissioning | DH2300 | L3 | BUS DUCT | DELETED | DH1100 | CFCI |
| DC1-BUS-L3-CX-2240 | **DELETED** DC1-DH1300-BUS-R1 (R23) CATCHER BUS FTE | 1d | 2026-07-15 A | 2026-07-15 A | QTS-1020 | 100% | 2026-08-11 | 2026-08-11 | ROS | Commissioning | DH1300 | L3 | BUS DUCT | DELETED | DH1100 | CFCI |
| DC1-BUS-L3-CX-2250 | **DELETED** DC1-DH1300-BUS-R1 (R23) CATCHER BUS L3 Startup | 2d | 2026-07-15 A | 2026-07-15 A | QTS-1020 | 100% | 2026-08-12 | 2026-08-13 | LAY | Commissioning | DH1300 | L3 | BUS DUCT | DELETED | DH1100 | CFCI |
| DC1-BUS-L3-CX-2260 | **DELETED** DC1-DH1300-BUS-R1 (R23) CATCHER BUS BMS/EPMS Programming | 1d | 2026-07-15 A | 2026-07-15 A | QTS-1020 | 100% | 2026-08-14 | 2026-08-14 | PRM | Commissioning | DH1300 | L3 | BUS DUCT | DELETED | DH1100 | CFCI |
| DC1-BUS-L3-CX-2270 | **DELETED** DC1-DH1300-BUS-R2 (R13) MAINTENANCE BUS FTE | 1d | 2026-07-15 A | 2026-07-15 A | QTS-1020 | 100% | 2026-08-12 | 2026-08-12 | ROS | Commissioning | DH1300 | L3 | BUS DUCT | DELETED | DH1100 | CFCI |
| DC1-BUS-L3-CX-2280 | **DELETED** DC1-DH1300-BUS-R2 (R13) MAINTENANCE BUS L3 Startup | 2d | 2026-07-15 A | 2026-07-15 A | QTS-1020 | 100% | 2026-08-13 | 2026-08-14 | LAY | Commissioning | DH1300 | L3 | BUS DUCT | DELETED | DH1100 | CFCI |
| DC1-BUS-L3-CX-2290 | **DELETED** DC1-DH1300-BUS-R2 (R13) MAINTENANCE BUS BMS/EPMS Programming | 1d | 2026-07-15 A | 2026-07-15 A | QTS-1020 | 100% | 2026-08-17 | 2026-08-17 | PRM | Commissioning | DH1300 | L3 | BUS DUCT | DELETED | DH1100 | CFCI |
| DC1-CDU-L2-3030 | **DELETED** CDU-DH1200-01 L2 Checklist | 3d | 2026-07-15 A | 2026-07-16 A | QTS-1020 | 100% | 2026-07-15 | 2026-07-17 | VER | Commissioning | DH1200 | L2 | CDU | DELETED | DH1100 |  |
| DC1-CDU-L2-3040 | **DELETED** CDU-DH1200-02 L2 Checklist | 3d | 2026-07-15 A | 2026-07-16 A | QTS-1020 | 100% | 2026-07-15 | 2026-07-17 | VER | Commissioning | DH1200 | L2 | CDU | DELETED | DH1100 |  |
| DC1-CDU-L2-3050 | **DELETED** CDU-DH1200-03 L2 Checklist | 3d | 2026-07-15 A | 2026-07-16 A | QTS-1020 | 100% | 2026-07-15 | 2026-07-17 | VER | Commissioning | DH1200 | L2 | CDU | DELETED | DH1100 |  |
| DC1-CDU-L2-3060 | **DELETED** CDU-DH1200-04 L2 Checklist | 3d | 2026-07-15 A | 2026-07-16 A | QTS-1020 | 100% | 2026-07-15 | 2026-07-17 | VER | Commissioning | DH1200 | L2 | CDU | DELETED | DH1100 |  |
| DC1-CDU-L2-3070 | **DELETED** CDU-DH1200-05 L2 Checklist | 3d | 2026-07-15 A | 2026-07-16 A | QTS-1020 | 100% | 2026-07-15 | 2026-07-17 | VER | Commissioning | DH1200 | L2 | CDU | DELETED | DH1100 |  |
| DC1-CDU-L2-3080 | **DELETED** CDU-DH1200-06 L2 Checklist | 3d | 2026-07-15 A | 2026-07-16 A | QTS-1020 | 100% | 2026-07-15 | 2026-07-17 | VER | Commissioning | DH1200 | L2 | CDU | DELETED | DH1100 |  |
| DC1-CDU-L2-3090 | **DELETED** CDU-DH1200-07 L2 Checklist | 3d | 2026-07-15 A | 2026-07-16 A | QTS-1020 | 100% | 2026-07-15 | 2026-07-17 | VER | Commissioning | DH1200 | L2 | CDU | DELETED | DH1100 |  |
| DC1-CDU-L2-3100 | **DELETED** CDU-DH1200-08 L2 Checklist | 3d | 2026-07-15 A | 2026-07-16 A | QTS-1020 | 100% | 2026-07-15 | 2026-07-17 | VER | Commissioning | DH1200 | L2 | CDU | DELETED | DH1100 |  |
| DC1-CDU-L2-3110 | **DELETED** CDU-DH1200-09 L2 Checklist | 3d | 2026-07-15 A | 2026-07-16 A | QTS-1020 | 100% | 2026-07-15 | 2026-07-17 | VER | Commissioning | DH1200 | L2 | CDU | DELETED | DH1100 |  |
| DC1-CDU-L2-3120 | **DELETED** CDU-DH1200-10 L2 Checklist | 3d | 2026-07-15 A | 2026-07-16 A | QTS-1020 | 100% | 2026-07-15 | 2026-07-17 | VER | Commissioning | DH1200 | L2 | CDU | DELETED | DH1100 |  |
| DC1-CDU-L2-3130 | **DELETED** CDU-DH1200-11 L2 Checklist | 3d | 2026-07-15 A | 2026-07-16 A | QTS-1020 | 100% | 2026-07-15 | 2026-07-17 | VER | Commissioning | DH1200 | L2 | CDU | DELETED | DH1100 |  |
| DC1-CDU-L2-3140 | **DELETED** CDU-DH1200-12 L2 Checklist | 3d | 2026-07-15 A | 2026-07-16 A | QTS-1020 | 100% | 2026-07-15 | 2026-07-17 | VER | Commissioning | DH1200 | L2 | CDU | DELETED | DH1100 |  |
| DC1-CDU-L2-3150 | **DELETED** CDU-DH1200-13 L2 Checklist | 3d | 2026-07-15 A | 2026-07-16 A | QTS-1020 | 100% | 2026-07-15 | 2026-07-17 | VER | Commissioning | DH1200 | L2 | CDU | DELETED | DH1100 |  |
| DC1-CDU-L2-3160 | **DELETED** CDU-DH1200-14 L2 Checklist | 3d | 2026-07-15 A | 2026-07-16 A | QTS-1020 | 100% | 2026-07-15 | 2026-07-17 | VER | Commissioning | DH1200 | L2 | CDU | DELETED | DH1100 |  |
| DC1-CDU-L2-3170 | **DELETED** CDU-DH1200-15 L2 Checklist | 3d | 2026-07-15 A | 2026-07-16 A | QTS-1020 | 100% | 2026-07-15 | 2026-07-17 | VER | Commissioning | DH1200 | L2 | CDU | DELETED | DH1100 |  |
| DC1-CDU-L2-3180 | **DELETED** CDU-DH1200-16 L2 Checklist | 3d | 2026-07-15 A | 2026-07-16 A | QTS-1020 | 100% | 2026-07-15 | 2026-07-17 | VER | Commissioning | DH1200 | L2 | CDU | DELETED | DH1100 |  |
| DC1-CDU-L2-3190 | **DELETED** CDU-DH1200-17 L2 Checklist | 3d | 2026-07-15 A | 2026-07-16 A | QTS-1020 | 100% | 2026-07-15 | 2026-07-17 | VER | Commissioning | DH1200 | L2 | CDU | DELETED | DH1100 |  |
| DC1-CDU-L2-3200 | **DELETED** CDU-DH1200-18 L2 Checklist | 3d | 2026-07-15 A | 2026-07-16 A | QTS-1020 | 100% | 2026-07-15 | 2026-07-17 | VER | Commissioning | DH1200 | L2 | CDU | DELETED | DH1100 |  |
| DC1-CDU-L2-3510 | **DELETED** CDU-DH2300-01 L2 Checklist | 3d | 2026-07-15 A | 2026-07-15 A | QTS-1020 | 100% | 2026-07-15 | 2026-07-17 | VER | Commissioning | DH2300 | L2 | CDU | DELETED | DH1100 |  |
| DC1-CDU-L2-3520 | **DELETED** CDU-DH2300-02 L2 Checklist | 3d | 2026-07-15 A | 2026-07-15 A | QTS-1020 | 100% | 2026-07-15 | 2026-07-17 | VER | Commissioning | DH2300 | L2 | CDU | DELETED | DH1100 |  |
| DC1-CDU-L2-3530 | **DELETED** CDU-DH2300-03 L2 Checklist | 3d | 2026-07-15 A | 2026-07-15 A | QTS-1020 | 100% | 2026-07-15 | 2026-07-17 | VER | Commissioning | DH2300 | L2 | CDU | DELETED | DH1100 |  |
| DC1-CDU-L2-3540 | **DELETED** CDU-DH2300-04 L2 Checklist | 3d | 2026-07-15 A | 2026-07-15 A | QTS-1020 | 100% | 2026-07-15 | 2026-07-17 | VER | Commissioning | DH2300 | L2 | CDU | DELETED | DH1100 |  |
| DC1-CDU-L2-3550 | **DELETED** CDU-DH2300-05 L2 Checklist | 3d | 2026-07-15 A | 2026-07-15 A | QTS-1020 | 100% | 2026-07-15 | 2026-07-17 | VER | Commissioning | DH2300 | L2 | CDU | DELETED | DH1100 |  |
| DC1-CDU-L2-3560 | **DELETED** CDU-DH2300-06 L2 Checklist | 3d | 2026-07-15 A | 2026-07-15 A | QTS-1020 | 100% | 2026-07-15 | 2026-07-17 | VER | Commissioning | DH2300 | L2 | CDU | DELETED | DH1100 |  |
| DC1-CDU-L2-3570 | **DELETED** CDU-DH2300-07 L2 Checklist | 3d | 2026-07-15 A | 2026-07-15 A | QTS-1020 | 100% | 2026-07-15 | 2026-07-17 | VER | Commissioning | DH2300 | L2 | CDU | DELETED | DH1100 |  |
| DC1-CDU-L2-3580 | **DELETED** CDU-DH2300-08 L2 Checklist | 3d | 2026-07-15 A | 2026-07-15 A | QTS-1020 | 100% | 2026-07-15 | 2026-07-17 | VER | Commissioning | DH2300 | L2 | CDU | DELETED | DH1100 |  |
| DC1-CDU-L2-3590 | **DELETED** CDU-DH2300-09 L2 Checklist | 3d | 2026-07-15 A | 2026-07-15 A | QTS-1020 | 100% | 2026-07-15 | 2026-07-17 | VER | Commissioning | DH2300 | L2 | CDU | DELETED | DH1100 |  |
| DC1-CDU-L2-3600 | **DELETED** CDU-DH2300-10 L2 Checklist | 3d | 2026-07-15 A | 2026-07-15 A | QTS-1020 | 100% | 2026-07-15 | 2026-07-17 | VER | Commissioning | DH2300 | L2 | CDU | DELETED | DH1100 |  |

Notes:
- DC1-ATS-L3-CX-6635: Steps: EC Startup Report; Vendor Startup
- DC1-ATS-L3-CX-6665: Steps: EC Startup Report; Vendor Startup
- DC1-ATS-L3-CX-6695: Steps: EC Startup Report; Vendor Startup
- DC1-ATS-L3-CX-6725: Steps: EC Startup Report; Vendor Startup
- DC1-ATS-L3-CX-6755: Steps: EC Startup Report; Vendor Startup
- DC1-ATS-L3-CX-6785: Steps: EC Startup Report; Vendor Startup
- DC1-ATS-L3-CX-6815: Steps: EC Startup Report; Vendor Startup
- DC1-ATS-L3-CX-6845: Steps: EC Startup Report; Vendor Startup
- DC1-BUS-L2-1030: Steps: EC Pre-Energization Checklist; Vendor Pre-Energization Checklist; CXA Pre-Energization Inspection; PEI/Clean-Walk
- DC1-BUS-L2-1050: Steps: EC Pre-Energization Checklist; Vendor Pre-Energization Checklist; CXA Pre-Energization Inspection; PEI/Clean-Walk
- DC1-BUS-L2-1060: Steps: EC Pre-Energization Checklist; Vendor Pre-Energization Checklist; CXA Pre-Energization Inspection; PEI/Clean-Walk
- DC1-BUS-L2-1070: Steps: EC Pre-Energization Checklist; Vendor Pre-Energization Checklist; CXA Pre-Energization Inspection; PEI/Clean-Walk
- DC1-BUS-L2-1080: Steps: EC Pre-Energization Checklist; Vendor Pre-Energization Checklist; CXA Pre-Energization Inspection; PEI/Clean-Walk
- DC1-BUS-L2-1090: Steps: EC Pre-Energization Checklist; Vendor Pre-Energization Checklist; CXA Pre-Energization Inspection; PEI/Clean-Walk
- DC1-BUS-L3-CX-2190: Steps: EC Startup Report; Vendor Startup
- DC1-BUS-L3-CX-2220: Steps: EC Startup Report; Vendor Startup
- DC1-BUS-L3-CX-2250: Steps: EC Startup Report; Vendor Startup
- DC1-BUS-L3-CX-2280: Steps: EC Startup Report; Vendor Startup
- DC1-CDU-L2-3030: Steps: EC Installation Checklist; MC Installation Checklist; CC Installation Checklist; Vendor Pre-Energization Checklist; CXA Pre-Energization Inspection; PEI/Clean-Walk
- DC1-CDU-L2-3040: Steps: EC Installation Checklist; MC Installation Checklist; CC Installation Checklist; Vendor Pre-Energization Checklist; CXA Pre-Energization Inspection; PEI/Clean-Walk
- DC1-CDU-L2-3050: Steps: EC Installation Checklist; CC Installation Checklist; MC Installation Checklist; Vendor Pre-Energization Checklist; CXA Pre-Energization Inspection; PEI/Clean-Walk
- DC1-CDU-L2-3060: Steps: EC Installation Checklist; MC Installation Checklist; CC Installation Checklist; Vendor Pre-Energization Checklist; CXA Pre-Energization Inspection; PEI/Clean-Walk
- DC1-CDU-L2-3070: Steps: EC Installation Checklist; MC Installation Checklist; CC Installation Checklist; Vendor Pre-Energization Checklist; CXA Pre-Energization Inspection; PEI/Clean-Walk
- DC1-CDU-L2-3080: Steps: EC Installation Checklist; MC Installation Checklist; CC Installation Checklist; Vendor Pre-Energization Checklist; CXA Pre-Energization Inspection; PEI/Clean-Walk
- DC1-CDU-L2-3090: Steps: EC Installation Checklist; MC Installation Checklist; CC Installation Checklist; Vendor Pre-Energization Checklist; CXA Pre-Energization Inspection; PEI/Clean-Walk
- DC1-CDU-L2-3100: Steps: EC Installation Checklist; MC Installation Checklist; CC Installation Checklist; Vendor Pre-Energization Checklist; CXA Pre-Energization Inspection; PEI/Clean-Walk
- DC1-CDU-L2-3110: Steps: EC Installation Checklist; MC Installation Checklist; CC Installation Checklist; Vendor Pre-Energization Checklist; CXA Pre-Energization Inspection; PEI/Clean-Walk
- DC1-CDU-L2-3120: Steps: EC Installation Checklist; MC Installation Checklist; CC Installation Checklist; Vendor Pre-Energization Checklist; CXA Pre-Energization Inspection; PEI/Clean-Walk
- DC1-CDU-L2-3130: Steps: EC Installation Checklist; MC Installation Checklist; CC Installation Checklist; Vendor Pre-Energization Checklist; CXA Pre-Energization Inspection; PEI/Clean-Walk
- DC1-CDU-L2-3140: Steps: EC Installation Checklist; MC Installation Checklist; CC Installation Checklist; Vendor Pre-Energization Checklist; CXA Pre-Energization Inspection; PEI/Clean-Walk
- DC1-CDU-L2-3150: Steps: EC Installation Checklist; MC Installation Checklist; CC Installation Checklist; Vendor Pre-Energization Checklist; CXA Pre-Energization Inspection; PEI/Clean-Walk
- DC1-CDU-L2-3160: Steps: EC Installation Checklist; MC Installation Checklist; CC Installation Checklist; Vendor Pre-Energization Checklist; CXA Pre-Energization Inspection; PEI/Clean-Walk
- DC1-CDU-L2-3170: Steps: EC Installation Checklist; MC Installation Checklist; CC Installation Checklist; Vendor Pre-Energization Checklist; CXA Pre-Energization Inspection; PEI/Clean-Walk
- DC1-CDU-L2-3180: Steps: EC Installation Checklist; MC Installation Checklist; CC Installation Checklist; Vendor Pre-Energization Checklist; CXA Pre-Energization Inspection; PEI/Clean-Walk
- DC1-CDU-L2-3190: Steps: EC Installation Checklist; MC Installation Checklist; CC Installation Checklist; Vendor Pre-Energization Checklist; CXA Pre-Energization Inspection; PEI/Clean-Walk
- DC1-CDU-L2-3200: Steps: EC Installation Checklist; MC Installation Checklist; CC Installation Checklist; Vendor Pre-Energization Checklist; CXA Pre-Energization Inspection; PEI/Clean-Walk
- DC1-CDU-L2-3510: Steps: EC Installation Checklist; MC Installation Checklist; CC Installation Checklist; Vendor Pre-Energization Checklist; CXA Pre-Energization Inspection; PEI/Clean-Walk
- DC1-CDU-L2-3520: Steps: EC Installation Checklist; MC Installation Checklist; CC Installation Checklist; Vendor Pre-Energization Checklist; CXA Pre-Energization Inspection; PEI/Clean-Walk
- DC1-CDU-L2-3530: Steps: EC Installation Checklist; CC Installation Checklist; MC Installation Checklist; Vendor Pre-Energization Checklist; CXA Pre-Energization Inspection; PEI/Clean-Walk
- DC1-CDU-L2-3540: Steps: EC Installation Checklist; MC Installation Checklist; CC Installation Checklist; Vendor Pre-Energization Checklist; CXA Pre-Energization Inspection; PEI/Clean-Walk
- DC1-CDU-L2-3550: Steps: EC Installation Checklist; MC Installation Checklist; CC Installation Checklist; Vendor Pre-Energization Checklist; CXA Pre-Energization Inspection; PEI/Clean-Walk
- DC1-CDU-L2-3560: Steps: EC Installation Checklist; MC Installation Checklist; CC Installation Checklist; Vendor Pre-Energization Checklist; CXA Pre-Energization Inspection; PEI/Clean-Walk
- DC1-CDU-L2-3570: Steps: EC Installation Checklist; MC Installation Checklist; CC Installation Checklist; Vendor Pre-Energization Checklist; CXA Pre-Energization Inspection; PEI/Clean-Walk
- DC1-CDU-L2-3580: Steps: EC Installation Checklist; MC Installation Checklist; CC Installation Checklist; Vendor Pre-Energization Checklist; CXA Pre-Energization Inspection; PEI/Clean-Walk
- DC1-CDU-L2-3590: Steps: EC Installation Checklist; MC Installation Checklist; CC Installation Checklist; Vendor Pre-Energization Checklist; CXA Pre-Energization Inspection; PEI/Clean-Walk
- DC1-CDU-L2-3600: Steps: EC Installation Checklist; MC Installation Checklist; CC Installation Checklist; Vendor Pre-Energization Checklist; CXA Pre-Energization Inspection; PEI/Clean-Walk

| ID | Activity | Duration | Start | Finish | Predecessors | Complete | Planned start | Planned finish | Vendor Responsible Party | Layton Discipline | Location | CX Level | Equipment | DELETED | D |
| --- | --- | --- | --- | --- | --- | --- | --- | --- | --- | --- | --- | --- | --- | --- | --- |
| DC1-CDU-L2-3610 | **DELETED** CDU-DH2300-11 L2 Checklist | 3d | 2026-07-15 A | 2026-07-15 A | QTS-1020 | 100% | 2026-07-15 | 2026-07-17 | VER | Commissioning | DH2300 | L2 | CDU | DELETED | DH1100 |
| DC1-CDU-L2-3620 | **DELETED** CDU-DH2300-12 L2 Checklist | 3d | 2026-07-15 A | 2026-07-15 A | QTS-1020 | 100% | 2026-07-15 | 2026-07-17 | VER | Commissioning | DH2300 | L2 | CDU | DELETED | DH1100 |
| DC1-CDU-L2-3630 | **DELETED** CDU-DH2300-13 L2 Checklist | 3d | 2026-07-15 A | 2026-07-15 A | QTS-1020 | 100% | 2026-07-15 | 2026-07-17 | VER | Commissioning | DH2300 | L2 | CDU | DELETED | DH1100 |
| DC1-CDU-L2-3640 | **DELETED** CDU-DH2300-14 L2 Checklist | 3d | 2026-07-15 A | 2026-07-15 A | QTS-1020 | 100% | 2026-07-15 | 2026-07-17 | VER | Commissioning | DH2300 | L2 | CDU | DELETED | DH1100 |
| DC1-CDU-L2-3650 | **DELETED** CDU-DH2300-15 L2 Checklist | 3d | 2026-07-15 A | 2026-07-15 A | QTS-1020 | 100% | 2026-07-15 | 2026-07-17 | VER | Commissioning | DH2300 | L2 | CDU | DELETED | DH1100 |
| DC1-CDU-L2-3660 | **DELETED** CDU-DH2300-16 L2 Checklist | 3d | 2026-07-15 A | 2026-07-15 A | QTS-1020 | 100% | 2026-07-15 | 2026-07-17 | VER | Commissioning | DH2300 | L2 | CDU | DELETED | DH1100 |
| DC1-CDU-L2-3670 | **DELETED** CDU-DH2300-17 L2 Checklist | 3d | 2026-07-15 A | 2026-07-15 A | QTS-1020 | 100% | 2026-07-15 | 2026-07-17 | VER | Commissioning | DH2300 | L2 | CDU | DELETED | DH1100 |
| DC1-CDU-L2-3680 | **DELETED** CDU-DH2300-18 L2 Checklist | 3d | 2026-07-15 A | 2026-07-15 A | QTS-1020 | 100% | 2026-07-15 | 2026-07-17 | VER | Commissioning | DH2300 | L2 | CDU | DELETED | DH1100 |
| DC1-CDU-L2-3990 | **DELETED** CDU-DH1300-01 L2 Checklist | 3d | 2026-07-15 A | 2026-07-15 A | QTS-1020 | 100% | 2026-07-15 | 2026-07-17 | VER | Commissioning | DH1300 | L2 | CDU | DELETED | DH1100 |
| DC1-CDU-L2-4000 | **DELETED** CDU-DH1300-02 L2 Checklist | 3d | 2026-07-15 A | 2026-07-15 A | QTS-1020 | 100% | 2026-07-15 | 2026-07-17 | VER | Commissioning | DH1300 | L2 | CDU | DELETED | DH1100 |
| DC1-CDU-L2-4010 | **DELETED** CDU-DH1300-03 L2 Checklist | 3d | 2026-07-15 A | 2026-07-15 A | QTS-1020 | 100% | 2026-07-15 | 2026-07-17 | VER | Commissioning | DH1300 | L2 | CDU | DELETED | DH1100 |
| DC1-CDU-L2-4020 | **DELETED** CDU-DH1300-04 L2 Checklist | 3d | 2026-07-15 A | 2026-07-15 A | QTS-1020 | 100% | 2026-07-15 | 2026-07-17 | VER | Commissioning | DH1300 | L2 | CDU | DELETED | DH1100 |
| DC1-CDU-L2-4030 | **DELETED** CDU-DH1300-05 L2 Checklist | 3d | 2026-07-15 A | 2026-07-15 A | QTS-1020 | 100% | 2026-07-15 | 2026-07-17 | VER | Commissioning | DH1300 | L2 | CDU | DELETED | DH1100 |
| DC1-CDU-L2-4040 | **DELETED** CDU-DH1300-06 L2 Checklist | 3d | 2026-07-15 A | 2026-07-15 A | QTS-1020 | 100% | 2026-07-15 | 2026-07-17 | VER | Commissioning | DH1300 | L2 | CDU | DELETED | DH1100 |
| DC1-CDU-L2-4050 | **DELETED** CDU-DH1300-07 L2 Checklist | 3d | 2026-07-15 A | 2026-07-15 A | QTS-1020 | 100% | 2026-07-15 | 2026-07-17 | VER | Commissioning | DH1300 | L2 | CDU | DELETED | DH1100 |
| DC1-CDU-L2-4060 | **DELETED** CDU-DH1300-08 L2 Checklist | 3d | 2026-07-15 A | 2026-07-15 A | QTS-1020 | 100% | 2026-07-15 | 2026-07-17 | VER | Commissioning | DH1300 | L2 | CDU | DELETED | DH1100 |
| DC1-CDU-L2-4070 | **DELETED** CDU-DH1300-09 L2 Checklist | 3d | 2026-07-15 A | 2026-07-15 A | QTS-1020 | 100% | 2026-07-15 | 2026-07-17 | VER | Commissioning | DH1300 | L2 | CDU | DELETED | DH1100 |
| DC1-CDU-L2-4080 | **DELETED** CDU-DH1300-10 L2 Checklist | 3d | 2026-07-15 A | 2026-07-15 A | QTS-1020 | 100% | 2026-07-15 | 2026-07-17 | VER | Commissioning | DH1300 | L2 | CDU | DELETED | DH1100 |
| DC1-CDU-L2-4090 | **DELETED** CDU-DH1300-11 L2 Checklist | 3d | 2026-07-15 A | 2026-07-15 A | QTS-1020 | 100% | 2026-07-15 | 2026-07-17 | VER | Commissioning | DH1300 | L2 | CDU | DELETED | DH1100 |
| DC1-CDU-L2-4100 | **DELETED** CDU-DH1300-12 L2 Checklist | 3d | 2026-07-15 A | 2026-07-15 A | QTS-1020 | 100% | 2026-07-15 | 2026-07-17 | VER | Commissioning | DH1300 | L2 | CDU | DELETED | DH1100 |
| DC1-CDU-L2-4110 | **DELETED** CDU-DH1300-13 L2 Checklist | 3d | 2026-07-15 A | 2026-07-15 A | QTS-1020 | 100% | 2026-07-15 | 2026-07-17 | VER | Commissioning | DH1300 | L2 | CDU | DELETED | DH1100 |
| DC1-CDU-L2-4120 | **DELETED** CDU-DH1300-14 L2 Checklist | 3d | 2026-07-15 A | 2026-07-15 A | QTS-1020 | 100% | 2026-07-15 | 2026-07-17 | VER | Commissioning | DH1300 | L2 | CDU | DELETED | DH1100 |
| DC1-CDU-L2-4130 | **DELETED** CDU-DH1300-15 L2 Checklist | 3d | 2026-07-15 A | 2026-07-15 A | QTS-1020 | 100% | 2026-07-15 | 2026-07-17 | VER | Commissioning | DH1300 | L2 | CDU | DELETED | DH1100 |
| DC1-CDU-L2-4140 | **DELETED** CDU-DH1300-16 L2 Checklist | 3d | 2026-07-15 A | 2026-07-15 A | QTS-1020 | 100% | 2026-07-15 | 2026-07-17 | VER | Commissioning | DH1300 | L2 | CDU | DELETED | DH1100 |
| DC1-CDU-L2-4150 | **DELETED** CDU-DH1300-17 L2 Checklist | 3d | 2026-07-15 A | 2026-07-15 A | QTS-1020 | 100% | 2026-07-15 | 2026-07-17 | VER | Commissioning | DH1300 | L2 | CDU | DELETED | DH1100 |
| DC1-CDU-L2-4160 | **DELETED** CDU-DH1300-18 L2 Checklist | 3d | 2026-07-15 A | 2026-07-15 A | QTS-1020 | 100% | 2026-07-15 | 2026-07-17 | VER | Commissioning | DH1300 | L2 | CDU | DELETED | DH1100 |
| DC1-CDU-L3-CX-1000 | **DELETED** CDU-DH2100-01 FTE | 1d | 2026-07-15 A | 2026-07-15 A | QTS-1020 | 100% |  |  | ROS | Commissioning | DH2100 | L3 | CDU | DELETED | DH1100 |
| DC1-CDU-L3-CX-1005 | **DELETED** CDU-DH2100-01 L3 Startup | 2d | 2026-07-15 A | 2026-07-15 A | QTS-1020 | 100% | 2026-07-16 | 2026-07-17 | VER | Commissioning | DH2100 | L3 | CDU | DELETED | DH1100 |
| DC1-CDU-L3-CX-1010 | **DELETED** CDU-DH2100-01 BMS/EPMS Programming | 1d | 2026-07-15 A | 2026-07-15 A | QTS-1020 | 100% | 2026-07-20 | 2026-07-20 | PRM | Commissioning | DH2100 | L3 | CDU | DELETED | DH1100 |
| DC1-CDU-L3-CX-1015 | **DELETED** CDU-DH2100-02 FTE | 1d | 2026-07-15 A | 2026-07-15 A | QTS-1020 | 100% |  |  | ROS | Commissioning | DH2100 | L3 | CDU | DELETED | DH1100 |
| DC1-CDU-L3-CX-1020 | **DELETED** CDU-DH2100-02 L3 Startup | 2d | 2026-07-15 A | 2026-07-15 A | QTS-1020 | 100% | 2026-07-16 | 2026-07-17 | VER | Commissioning | DH2100 | L3 | CDU | DELETED | DH1100 |
| DC1-CDU-L3-CX-1025 | **DELETED** CDU-DH2100-02 BMS/EPMS Programming | 1d | 2026-07-15 A | 2026-07-15 A | QTS-1020 | 100% | 2026-07-20 | 2026-07-20 | PRM | Commissioning | DH2100 | L3 | CDU | DELETED | DH1100 |
| DC1-CDU-L3-CX-1030 | **DELETED** CDU-DH2100-03 FTE | 1d | 2026-07-15 A | 2026-07-15 A | QTS-1020 | 100% |  |  | ROS | Commissioning | DH2100 | L3 | CDU | DELETED | DH1100 |
| DC1-CDU-L3-CX-1035 | **DELETED** CDU-DH2100-03 L3 Startup | 2d | 2026-07-15 A | 2026-07-15 A | QTS-1020 | 100% | 2026-07-16 | 2026-07-17 | VER | Commissioning | DH2100 | L3 | CDU | DELETED | DH1100 |
| DC1-CDU-L3-CX-1040 | **DELETED** CDU-DH2100-03 BMS/EPMS Programming | 1d | 2026-07-15 A | 2026-07-15 A | QTS-1020 | 100% | 2026-07-20 | 2026-07-20 | PRM | Commissioning | DH2100 | L3 | CDU | DELETED | DH1100 |
| DC1-CDU-L3-CX-1045 | **DELETED** CDU-DH2100-04 FTE | 1d | 2026-07-15 A | 2026-07-15 A | QTS-1020 | 100% |  |  | ROS | Commissioning | DH2100 | L3 | CDU | DELETED | DH1100 |
| DC1-CDU-L3-CX-1050 | **DELETED** CDU-DH2100-04 L3 Startup | 2d | 2026-07-15 A | 2026-07-15 A | QTS-1020 | 100% | 2026-07-16 | 2026-07-17 | VER | Commissioning | DH2100 | L3 | CDU | DELETED | DH1100 |
| DC1-CDU-L3-CX-1055 | **DELETED** CDU-DH2100-04 BMS/EPMS Programming | 1d | 2026-07-15 A | 2026-07-15 A | QTS-1020 | 100% | 2026-07-20 | 2026-07-20 | PRM | Commissioning | DH2100 | L3 | CDU | DELETED | DH1100 |
| DC1-CDU-L3-CX-1060 | **DELETED** CDU-DH2100-05 FTE | 1d | 2026-07-15 A | 2026-07-15 A | QTS-1020 | 100% |  |  | ROS | Commissioning | DH2100 | L3 | CDU | DELETED | DH1100 |
| DC1-CDU-L3-CX-1065 | **DELETED** CDU-DH2100-05 L3 Startup | 2d | 2026-07-15 A | 2026-07-15 A | QTS-1020 | 100% | 2026-07-16 | 2026-07-17 | VER | Commissioning | DH2100 | L3 | CDU | DELETED | DH1100 |
| DC1-CDU-L3-CX-1070 | **DELETED** CDU-DH2100-05 BMS/EPMS Programming | 1d | 2026-07-15 A | 2026-07-15 A | QTS-1020 | 100% | 2026-07-20 | 2026-07-20 | PRM | Commissioning | DH2100 | L3 | CDU | DELETED | DH1100 |
| DC1-CDU-L3-CX-1075 | **DELETED** CDU-DH2100-06 FTE | 1d | 2026-07-15 A | 2026-07-15 A | QTS-1020 | 100% |  |  | ROS | Commissioning | DH2100 | L3 | CDU | DELETED | DH1100 |
| DC1-CDU-L3-CX-1080 | **DELETED** CDU-DH2100-06 L3 Startup | 2d | 2026-07-15 A | 2026-07-15 A | QTS-1020 | 100% | 2026-07-16 | 2026-07-17 | VER | Commissioning | DH2100 | L3 | CDU | DELETED | DH1100 |
| DC1-CDU-L3-CX-1085 | **DELETED** CDU-DH2100-06 BMS/EPMS Programming | 1d | 2026-07-15 A | 2026-07-15 A | QTS-1020 | 100% | 2026-07-20 | 2026-07-20 | PRM | Commissioning | DH2100 | L3 | CDU | DELETED | DH1100 |
| DC1-CDU-L3-CX-1105 | **DELETED** CDU-DH2100-07 FTE | 1d | 2026-07-15 A | 2026-07-15 A | QTS-1020 | 100% |  |  | ROS | Commissioning | DH2100 | L3 | CDU | DELETED | DH1100 |
| DC1-CDU-L3-CX-1110 | **DELETED** CDU-DH2100-07 L3 Startup | 2d | 2026-07-15 A | 2026-07-15 A | QTS-1020 | 100% | 2026-07-16 | 2026-07-17 | VER | Commissioning | DH2100 | L3 | CDU | DELETED | DH1100 |
| DC1-CDU-L3-CX-1115 | **DELETED** CDU-DH2100-07 BMS/EPMS Programming | 1d | 2026-07-15 A | 2026-07-15 A | QTS-1020 | 100% | 2026-07-20 | 2026-07-20 | PRM | Commissioning | DH2100 | L3 | CDU | DELETED | DH1100 |
| DC1-CDU-L3-CX-1120 | **DELETED** CDU-DH2100-08 FTE | 1d | 2026-07-15 A | 2026-07-15 A | QTS-1020 | 100% |  |  | ROS | Commissioning | DH2100 | L3 | CDU | DELETED | DH1100 |
| DC1-CDU-L3-CX-1125 | **DELETED** CDU-DH2100-08 L3 Startup | 2d | 2026-07-15 A | 2026-07-15 A | QTS-1020 | 100% | 2026-07-16 | 2026-07-17 | VER | Commissioning | DH2100 | L3 | CDU | DELETED | DH1100 |
| DC1-CDU-L3-CX-1130 | **DELETED** CDU-DH2100-08 BMS/EPMS Programming | 1d | 2026-07-15 A | 2026-07-15 A | QTS-1020 | 100% | 2026-07-20 | 2026-07-20 | PRM | Commissioning | DH2100 | L3 | CDU | DELETED | DH1100 |
| DC1-CDU-L3-CX-1135 | **DELETED** CDU-DH2100-09 FTE | 1d | 2026-07-15 A | 2026-07-15 A | QTS-1020 | 100% |  |  | ROS | Commissioning | DH2100 | L3 | CDU | DELETED | DH1100 |
| DC1-CDU-L3-CX-1140 | **DELETED** CDU-DH2100-09 L3 Startup | 2d | 2026-07-15 A | 2026-07-15 A | QTS-1020 | 100% | 2026-07-16 | 2026-07-17 | VER | Commissioning | DH2100 | L3 | CDU | DELETED | DH1100 |
| DC1-CDU-L3-CX-1145 | **DELETED** CDU-DH2100-09 BMS/EPMS Programming | 1d | 2026-07-15 A | 2026-07-15 A | QTS-1020 | 100% | 2026-07-20 | 2026-07-20 | PRM | Commissioning | DH2100 | L3 | CDU | DELETED | DH1100 |
| DC1-CDU-L3-CX-1150 | **DELETED** CDU-DH2100-10 FTE | 1d | 2026-07-15 A | 2026-07-15 A | QTS-1020 | 100% |  |  | ROS | Commissioning | DH2100 | L3 | CDU | DELETED | DH1100 |
| DC1-CDU-L3-CX-1155 | **DELETED** CDU-DH2100-10 L3 Startup | 2d | 2026-07-15 A | 2026-07-15 A | QTS-1020 | 100% | 2026-07-16 | 2026-07-17 | VER | Commissioning | DH2100 | L3 | CDU | DELETED | DH1100 |
| DC1-CDU-L3-CX-1160 | **DELETED** CDU-DH2100-10 BMS/EPMS Programming | 1d | 2026-07-15 A | 2026-07-15 A | QTS-1020 | 100% | 2026-07-20 | 2026-07-20 | PRM | Commissioning | DH2100 | L3 | CDU | DELETED | DH1100 |
| DC1-CDU-L3-CX-1165 | **DELETED** CDU-DH2100-11 FTE | 1d | 2026-07-15 A | 2026-07-15 A | QTS-1020 | 100% |  |  | ROS | Commissioning | DH2100 | L3 | CDU | DELETED | DH1100 |
| DC1-CDU-L3-CX-1170 | **DELETED** CDU-DH2100-11 L3 Startup | 2d | 2026-07-15 A | 2026-07-15 A | QTS-1020 | 100% | 2026-07-16 | 2026-07-17 | VER | Commissioning | DH2100 | L3 | CDU | DELETED | DH1100 |
| DC1-CDU-L3-CX-1175 | **DELETED** CDU-DH2100-11 BMS/EPMS Programming | 1d | 2026-07-15 A | 2026-07-15 A | QTS-1020 | 100% | 2026-07-20 | 2026-07-20 | PRM | Commissioning | DH2100 | L3 | CDU | DELETED | DH1100 |
| DC1-CDU-L3-CX-1180 | **DELETED** CDU-DH2100-12 FTE | 1d | 2026-07-15 A | 2026-07-15 A | QTS-1020 | 100% |  |  | ROS | Commissioning | DH2100 | L3 | CDU | DELETED | DH1100 |
| DC1-CDU-L3-CX-1185 | **DELETED** CDU-DH2100-12 L3 Startup | 2d | 2026-07-15 A | 2026-07-15 A | QTS-1020 | 100% | 2026-07-16 | 2026-07-17 | VER | Commissioning | DH2100 | L3 | CDU | DELETED | DH1100 |
| DC1-CDU-L3-CX-1190 | **DELETED** CDU-DH2100-12 BMS/EPMS Programming | 1d | 2026-07-15 A | 2026-07-15 A | QTS-1020 | 100% | 2026-07-20 | 2026-07-20 | PRM | Commissioning | DH2100 | L3 | CDU | DELETED | DH1100 |
| DC1-CDU-L3-CX-1210 | **DELETED** CDU-DH2100-13 FTE | 1d | 2026-07-15 A | 2026-07-15 A | QTS-1020 | 100% |  |  | ROS | Commissioning | DH2100 | L3 | CDU | DELETED | DH1100 |
| DC1-CDU-L3-CX-1215 | **DELETED** CDU-DH2100-13 L3 Startup | 2d | 2026-07-15 A | 2026-07-15 A | QTS-1020 | 100% | 2026-07-16 | 2026-07-17 | VER | Commissioning | DH2100 | L3 | CDU | DELETED | DH1100 |
| DC1-CDU-L3-CX-1220 | **DELETED** CDU-DH2100-13 BMS/EPMS Programming | 1d | 2026-07-15 A | 2026-07-15 A | QTS-1020 | 100% | 2026-07-20 | 2026-07-20 | PRM | Commissioning | DH2100 | L3 | CDU | DELETED | DH1100 |
| DC1-CDU-L3-CX-1225 | **DELETED** CDU-DH2100-14 FTE | 1d | 2026-07-15 A | 2026-07-15 A | QTS-1020 | 100% |  |  | ROS | Commissioning | DH2100 | L3 | CDU | DELETED | DH1100 |
| DC1-CDU-L3-CX-1230 | **DELETED** CDU-DH2100-14 L3 Startup | 2d | 2026-07-15 A | 2026-07-15 A | QTS-1020 | 100% | 2026-07-16 | 2026-07-17 | VER | Commissioning | DH2100 | L3 | CDU | DELETED | DH1100 |
| DC1-CDU-L3-CX-1235 | **DELETED** CDU-DH2100-14 BMS/EPMS Programming | 1d | 2026-07-15 A | 2026-07-15 A | QTS-1020 | 100% | 2026-07-20 | 2026-07-20 | PRM | Commissioning | DH2100 | L3 | CDU | DELETED | DH1100 |
| DC1-CDU-L3-CX-1240 | **DELETED** CDU-DH2100-15 FTE | 1d | 2026-07-15 A | 2026-07-15 A | QTS-1020 | 100% |  |  | ROS | Commissioning | DH2100 | L3 | CDU | DELETED | DH1100 |
| DC1-CDU-L3-CX-1245 | **DELETED** CDU-DH2100-15 L3 Startup | 2d | 2026-07-15 A | 2026-07-15 A | QTS-1020 | 100% | 2026-07-16 | 2026-07-17 | VER | Commissioning | DH2100 | L3 | CDU | DELETED | DH1100 |

Notes:
- DC1-CDU-L2-3610: Steps: EC Installation Checklist; MC Installation Checklist; CC Installation Checklist; Vendor Pre-Energization Checklist; CXA Pre-Energization Inspection; PEI/Clean-Walk
- DC1-CDU-L2-3620: Steps: EC Installation Checklist; MC Installation Checklist; CC Installation Checklist; Vendor Pre-Energization Checklist; CXA Pre-Energization Inspection; PEI/Clean-Walk
- DC1-CDU-L2-3630: Steps: EC Installation Checklist; MC Installation Checklist; CC Installation Checklist; Vendor Pre-Energization Checklist; CXA Pre-Energization Inspection; PEI/Clean-Walk
- DC1-CDU-L2-3640: Steps: EC Installation Checklist; MC Installation Checklist; CC Installation Checklist; Vendor Pre-Energization Checklist; CXA Pre-Energization Inspection; PEI/Clean-Walk
- DC1-CDU-L2-3650: Steps: EC Installation Checklist; MC Installation Checklist; CC Installation Checklist; Vendor Pre-Energization Checklist; CXA Pre-Energization Inspection; PEI/Clean-Walk
- DC1-CDU-L2-3660: Steps: EC Installation Checklist; MC Installation Checklist; CC Installation Checklist; Vendor Pre-Energization Checklist; CXA Pre-Energization Inspection; PEI/Clean-Walk
- DC1-CDU-L2-3670: Steps: EC Installation Checklist; MC Installation Checklist; CC Installation Checklist; Vendor Pre-Energization Checklist; CXA Pre-Energization Inspection; PEI/Clean-Walk
- DC1-CDU-L2-3680: Steps: EC Installation Checklist; MC Installation Checklist; CC Installation Checklist; Vendor Pre-Energization Checklist; CXA Pre-Energization Inspection; PEI/Clean-Walk
- DC1-CDU-L2-3990: Steps: EC Installation Checklist; MC Installation Checklist; CC Installation Checklist; Vendor Pre-Energization Checklist; CXA Pre-Energization Inspection; PEI/Clean-Walk
- DC1-CDU-L2-4000: Steps: EC Installation Checklist; MC Installation Checklist; CC Installation Checklist; Vendor Pre-Energization Checklist; CXA Pre-Energization Inspection; PEI/Clean-Walk
- DC1-CDU-L2-4010: Steps: EC Installation Checklist; CC Installation Checklist; MC Installation Checklist; Vendor Pre-Energization Checklist; CXA Pre-Energization Inspection; PEI/Clean-Walk
- DC1-CDU-L2-4020: Steps: EC Installation Checklist; MC Installation Checklist; CC Installation Checklist; Vendor Pre-Energization Checklist; CXA Pre-Energization Inspection; PEI/Clean-Walk
- DC1-CDU-L2-4030: Steps: EC Installation Checklist; MC Installation Checklist; CC Installation Checklist; Vendor Pre-Energization Checklist; CXA Pre-Energization Inspection; PEI/Clean-Walk
- DC1-CDU-L2-4040: Steps: EC Installation Checklist; MC Installation Checklist; CC Installation Checklist; Vendor Pre-Energization Checklist; CXA Pre-Energization Inspection; PEI/Clean-Walk
- DC1-CDU-L2-4050: Steps: EC Installation Checklist; MC Installation Checklist; CC Installation Checklist; Vendor Pre-Energization Checklist; CXA Pre-Energization Inspection; PEI/Clean-Walk
- DC1-CDU-L2-4060: Steps: EC Installation Checklist; MC Installation Checklist; CC Installation Checklist; Vendor Pre-Energization Checklist; CXA Pre-Energization Inspection; PEI/Clean-Walk
- DC1-CDU-L2-4070: Steps: EC Installation Checklist; MC Installation Checklist; CC Installation Checklist; Vendor Pre-Energization Checklist; CXA Pre-Energization Inspection; PEI/Clean-Walk
- DC1-CDU-L2-4080: Steps: EC Installation Checklist; MC Installation Checklist; CC Installation Checklist; Vendor Pre-Energization Checklist; CXA Pre-Energization Inspection; PEI/Clean-Walk
- DC1-CDU-L2-4090: Steps: EC Installation Checklist; MC Installation Checklist; CC Installation Checklist; Vendor Pre-Energization Checklist; CXA Pre-Energization Inspection; PEI/Clean-Walk
- DC1-CDU-L2-4100: Steps: EC Installation Checklist; MC Installation Checklist; CC Installation Checklist; Vendor Pre-Energization Checklist; CXA Pre-Energization Inspection; PEI/Clean-Walk
- DC1-CDU-L2-4110: Steps: EC Installation Checklist; MC Installation Checklist; CC Installation Checklist; Vendor Pre-Energization Checklist; CXA Pre-Energization Inspection; PEI/Clean-Walk
- DC1-CDU-L2-4120: Steps: EC Installation Checklist; MC Installation Checklist; CC Installation Checklist; Vendor Pre-Energization Checklist; CXA Pre-Energization Inspection; PEI/Clean-Walk
- DC1-CDU-L2-4130: Steps: EC Installation Checklist; MC Installation Checklist; CC Installation Checklist; Vendor Pre-Energization Checklist; CXA Pre-Energization Inspection; PEI/Clean-Walk
- DC1-CDU-L2-4140: Steps: EC Installation Checklist; MC Installation Checklist; CC Installation Checklist; Vendor Pre-Energization Checklist; CXA Pre-Energization Inspection; PEI/Clean-Walk
- DC1-CDU-L2-4150: Steps: EC Installation Checklist; MC Installation Checklist; CC Installation Checklist; Vendor Pre-Energization Checklist; CXA Pre-Energization Inspection; PEI/Clean-Walk
- DC1-CDU-L2-4160: Steps: EC Installation Checklist; MC Installation Checklist; CC Installation Checklist; Vendor Pre-Energization Checklist; CXA Pre-Energization Inspection; PEI/Clean-Walk
- DC1-CDU-L3-CX-1005: Steps: EC Startup Report; MC Installation Checklist; Vendor Startup
- DC1-CDU-L3-CX-1020: Steps: EC Startup Report; MC Installation Checklist; Vendor Startup
- DC1-CDU-L3-CX-1035: Steps: EC Startup Report; MC Installation Checklist; Vendor Startup
- DC1-CDU-L3-CX-1050: Steps: EC Startup Report; MC Installation Checklist; Vendor Startup
- DC1-CDU-L3-CX-1065: Steps: EC Startup Report; MC Installation Checklist; Vendor Startup
- DC1-CDU-L3-CX-1080: Steps: EC Startup Report; MC Installation Checklist; Vendor Startup
- DC1-CDU-L3-CX-1110: Steps: EC Startup Report; MC Installation Checklist; Vendor Startup
- DC1-CDU-L3-CX-1125: Steps: EC Startup Report; MC Installation Checklist; Vendor Startup
- DC1-CDU-L3-CX-1140: Steps: EC Startup Report; MC Installation Checklist; Vendor Startup
- DC1-CDU-L3-CX-1155: Steps: EC Startup Report; MC Installation Checklist; Vendor Startup
- DC1-CDU-L3-CX-1170: Steps: EC Startup Report; MC Installation Checklist; Vendor Startup
- DC1-CDU-L3-CX-1185: Steps: EC Startup Report; MC Installation Checklist; Vendor Startup
- DC1-CDU-L3-CX-1215: Steps: EC Startup Report; MC Installation Checklist; Vendor Startup
- DC1-CDU-L3-CX-1230: Steps: EC Startup Report; MC Installation Checklist; Vendor Startup
- DC1-CDU-L3-CX-1245: Steps: EC Startup Report; MC Installation Checklist; Vendor Startup

| ID | Activity | Duration | Start | Finish | Predecessors | Complete | Planned start | Planned finish | Vendor Responsible Party | Layton Discipline | Location | CX Level | Equipment | DELETED | D |
| --- | --- | --- | --- | --- | --- | --- | --- | --- | --- | --- | --- | --- | --- | --- | --- |
| DC1-CDU-L3-CX-1250 | **DELETED** CDU-DH2100-15 BMS/EPMS Programming | 1d | 2026-07-15 A | 2026-07-15 A | QTS-1020 | 100% | 2026-07-20 | 2026-07-20 | PRM | Commissioning | DH2100 | L3 | CDU | DELETED | DH1100 |
| DC1-CDU-L3-CX-1255 | **DELETED** CDU-DH2100-16 FTE | 1d | 2026-07-15 A | 2026-07-15 A | QTS-1020 | 100% |  |  | ROS | Commissioning | DH2100 | L3 | CDU | DELETED | DH1100 |
| DC1-CDU-L3-CX-1260 | **DELETED** CDU-DH2100-16 L3 Startup | 2d | 2026-07-15 A | 2026-07-15 A | QTS-1020 | 100% | 2026-07-16 | 2026-07-17 | VER | Commissioning | DH2100 | L3 | CDU | DELETED | DH1100 |
| DC1-CDU-L3-CX-1265 | **DELETED** CDU-DH2100-16 BMS/EPMS Programming | 1d | 2026-07-15 A | 2026-07-15 A | QTS-1020 | 100% | 2026-07-20 | 2026-07-20 | PRM | Commissioning | DH2100 | L3 | CDU | DELETED | DH1100 |
| DC1-CDU-L3-CX-1270 | **DELETED** CDU-DH2100-17 FTE | 1d | 2026-07-15 A | 2026-07-15 A | QTS-1020 | 100% |  |  | ROS | Commissioning | DH2100 | L3 | CDU | DELETED | DH1100 |
| DC1-CDU-L3-CX-1275 | **DELETED** CDU-DH2100-17 L3 Startup | 2d | 2026-07-15 A | 2026-07-15 A | QTS-1020 | 100% | 2026-07-16 | 2026-07-17 | VER | Commissioning | DH2100 | L3 | CDU | DELETED | DH1100 |
| DC1-CDU-L3-CX-1280 | **DELETED** CDU-DH2100-17 BMS/EPMS Programming | 1d | 2026-07-15 A | 2026-07-15 A | QTS-1020 | 100% | 2026-07-20 | 2026-07-20 | PRM | Commissioning | DH2100 | L3 | CDU | DELETED | DH1100 |
| DC1-CDU-L3-CX-1285 | **DELETED** CDU-DH2100-18 FTE | 1d | 2026-07-15 A | 2026-07-15 A | QTS-1020 | 100% |  |  | ROS | Commissioning | DH2100 | L3 | CDU | DELETED | DH1100 |
| DC1-CDU-L3-CX-1290 | **DELETED** CDU-DH2100-18 L3 Startup | 2d | 2026-07-15 A | 2026-07-15 A | QTS-1020 | 100% | 2026-07-16 | 2026-07-17 | VER | Commissioning | DH2100 | L3 | CDU | DELETED | DH1100 |
| DC1-CDU-L3-CX-1295 | **DELETED** CDU-DH2100-18 BMS/EPMS Programming | 1d | 2026-07-15 A | 2026-07-15 A | QTS-1020 | 100% | 2026-07-20 | 2026-07-20 | PRM | Commissioning | DH2100 | L3 | CDU | DELETED | DH1100 |
| DC1-CDU-L3-CX-5605 | **DELETED** CDU-DH2300-01 FTE | 1d | 2026-07-15 A | 2026-07-15 A | QTS-1020 | 100% | 2026-08-20 | 2026-08-20 | ROS | Commissioning | DH2300 | L3 | CDU | DELETED | DH1100 |
| DC1-CDU-L3-CX-5615 | **DELETED** CDU-DH2300-01 L3 Startup | 2d | 2026-07-15 A | 2026-07-15 A | QTS-1020 | 100% | 2026-08-21 | 2026-08-24 | VER | Commissioning | DH2300 | L3 | CDU | DELETED | DH1100 |
| DC1-CDU-L3-CX-5625 | **DELETED** CDU-DH2300-01 BMS/EPMS Programming | 1d | 2026-07-15 A | 2026-07-15 A | QTS-1020 | 100% | 2026-08-25 | 2026-08-25 | PRM | Commissioning | DH2300 | L3 | CDU | DELETED | DH1100 |
| DC1-CDU-L3-CX-5635 | **DELETED** CDU-DH2300-02 FTE | 1d | 2026-07-15 A | 2026-07-15 A | QTS-1020 | 100% | 2026-08-21 | 2026-08-21 | ROS | Commissioning | DH2300 | L3 | CDU | DELETED | DH1100 |
| DC1-CDU-L3-CX-5645 | **DELETED** CDU-DH2300-02 L3 Startup | 2d | 2026-07-15 A | 2026-07-15 A | QTS-1020 | 100% | 2026-08-24 | 2026-08-25 | VER | Commissioning | DH2300 | L3 | CDU | DELETED | DH1100 |
| DC1-CDU-L3-CX-5655 | **DELETED** CDU-DH2300-02 BMS/EPMS Programming | 1d | 2026-07-15 A | 2026-07-15 A | QTS-1020 | 100% | 2026-08-26 | 2026-08-26 | PRM | Commissioning | DH2300 | L3 | CDU | DELETED | DH1100 |
| DC1-CDU-L3-CX-5665 | **DELETED** CDU-DH2300-03 FTE | 1d | 2026-07-15 A | 2026-07-15 A | QTS-1020 | 100% | 2026-08-24 | 2026-08-24 | ROS | Commissioning | DH2300 | L3 | CDU | DELETED | DH1100 |
| DC1-CDU-L3-CX-5675 | **DELETED** CDU-DH2300-03 L3 Startup | 2d | 2026-07-15 A | 2026-07-15 A | QTS-1020 | 100% | 2026-08-25 | 2026-08-26 | VER | Commissioning | DH2300 | L3 | CDU | DELETED | DH1100 |
| DC1-CDU-L3-CX-5685 | **DELETED** CDU-DH2300-03 BMS/EPMS Programming | 1d | 2026-07-15 A | 2026-07-15 A | QTS-1020 | 100% | 2026-08-27 | 2026-08-27 | PRM | Commissioning | DH2300 | L3 | CDU | DELETED | DH1100 |
| DC1-CDU-L3-CX-5695 | **DELETED** CDU-DH2300-04 FTE | 1d | 2026-07-15 A | 2026-07-15 A | QTS-1020 | 100% | 2026-08-25 | 2026-08-25 | ROS | Commissioning | DH2300 | L3 | CDU | DELETED | DH1100 |
| DC1-CDU-L3-CX-5705 | **DELETED** CDU-DH2300-04 L3 Startup | 2d | 2026-07-15 A | 2026-07-15 A | QTS-1020 | 100% | 2026-08-26 | 2026-08-27 | VER | Commissioning | DH2300 | L3 | CDU | DELETED | DH1100 |
| DC1-CDU-L3-CX-5715 | **DELETED** CDU-DH2300-04 BMS/EPMS Programming | 1d | 2026-07-15 A | 2026-07-15 A | QTS-1020 | 100% | 2026-08-28 | 2026-08-28 | PRM | Commissioning | DH2300 | L3 | CDU | DELETED | DH1100 |
| DC1-CDU-L3-CX-5725 | **DELETED** CDU-DH2300-05 FTE | 1d | 2026-07-15 A | 2026-07-15 A | QTS-1020 | 100% | 2026-08-26 | 2026-08-26 | ROS | Commissioning | DH2300 | L3 | CDU | DELETED | DH1100 |
| DC1-CDU-L3-CX-5735 | **DELETED** CDU-DH2300-05 L3 Startup | 2d | 2026-07-15 A | 2026-07-15 A | QTS-1020 | 100% | 2026-08-27 | 2026-08-28 | VER | Commissioning | DH2300 | L3 | CDU | DELETED | DH1100 |
| DC1-CDU-L3-CX-5745 | **DELETED** CDU-DH2300-05 BMS/EPMS Programming | 1d | 2026-07-15 A | 2026-07-15 A | QTS-1020 | 100% | 2026-08-31 | 2026-08-31 | PRM | Commissioning | DH2300 | L3 | CDU | DELETED | DH1100 |
| DC1-CDU-L3-CX-5755 | **DELETED** CDU-DH2300-06 FTE | 1d | 2026-07-15 A | 2026-07-15 A | QTS-1020 | 100% | 2026-08-26 | 2026-08-26 | ROS | Commissioning | DH2300 | L3 | CDU | DELETED | DH1100 |
| DC1-CDU-L3-CX-5765 | **DELETED** CDU-DH2300-06 L3 Startup | 2d | 2026-07-15 A | 2026-07-15 A | QTS-1020 | 100% | 2026-08-27 | 2026-08-28 | VER | Commissioning | DH2300 | L3 | CDU | DELETED | DH1100 |
| DC1-CDU-L3-CX-5775 | **DELETED** CDU-DH2300-06 BMS/EPMS Programming | 1d | 2026-07-15 A | 2026-07-15 A | QTS-1020 | 100% | 2026-08-31 | 2026-08-31 | PRM | Commissioning | DH2300 | L3 | CDU | DELETED | DH1100 |
| DC1-CDU-L3-CX-5785 | **DELETED** CDU-DH2300-07 FTE | 1d | 2026-07-15 A | 2026-07-15 A | QTS-1020 | 100% | 2026-08-21 | 2026-08-21 | ROS | Commissioning | DH2300 | L3 | CDU | DELETED | DH1100 |
| DC1-CDU-L3-CX-5795 | **DELETED** CDU-DH2300-07 L3 Startup | 2d | 2026-07-15 A | 2026-07-15 A | QTS-1020 | 100% | 2026-08-24 | 2026-08-25 | VER | Commissioning | DH2300 | L3 | CDU | DELETED | DH1100 |
| DC1-CDU-L3-CX-5805 | **DELETED** CDU-DH2300-07 BMS/EPMS Programming | 1d | 2026-07-15 A | 2026-07-15 A | QTS-1020 | 100% | 2026-08-26 | 2026-08-26 | PRM | Commissioning | DH2300 | L3 | CDU | DELETED | DH1100 |
| DC1-CDU-L3-CX-5815 | **DELETED** CDU-DH2300-08 FTE | 1d | 2026-07-15 A | 2026-07-15 A | QTS-1020 | 100% | 2026-08-24 | 2026-08-24 | ROS | Commissioning | DH2300 | L3 | CDU | DELETED | DH1100 |
| DC1-CDU-L3-CX-5825 | **DELETED** CDU-DH2300-08 L3 Startup | 2d | 2026-07-15 A | 2026-07-15 A | QTS-1020 | 100% | 2026-08-25 | 2026-08-26 | VER | Commissioning | DH2300 | L3 | CDU | DELETED | DH1100 |
| DC1-CDU-L3-CX-5835 | **DELETED** CDU-DH2300-08 BMS/EPMS Programming | 1d | 2026-07-15 A | 2026-07-15 A | QTS-1020 | 100% | 2026-08-27 | 2026-08-27 | PRM | Commissioning | DH2300 | L3 | CDU | DELETED | DH1100 |
| DC1-CDU-L3-CX-5845 | **DELETED** CDU-DH2300-09 FTE | 1d | 2026-07-15 A | 2026-07-15 A | QTS-1020 | 100% | 2026-08-25 | 2026-08-25 | ROS | Commissioning | DH2300 | L3 | CDU | DELETED | DH1100 |
| DC1-CDU-L3-CX-5855 | **DELETED** CDU-DH2300-09 L3 Startup | 2d | 2026-07-15 A | 2026-07-15 A | QTS-1020 | 100% | 2026-08-26 | 2026-08-27 | VER | Commissioning | DH2300 | L3 | CDU | DELETED | DH1100 |
| DC1-CDU-L3-CX-5865 | **DELETED** CDU-DH2300-09 BMS/EPMS Programming | 1d | 2026-07-15 A | 2026-07-15 A | QTS-1020 | 100% | 2026-08-28 | 2026-08-28 | PRM | Commissioning | DH2300 | L3 | CDU | DELETED | DH1100 |
| DC1-CDU-L3-CX-5875 | **DELETED** CDU-DH2300-10 FTE | 1d | 2026-07-15 A | 2026-07-15 A | QTS-1020 | 100% | 2026-08-26 | 2026-08-26 | ROS | Commissioning | DH2300 | L3 | CDU | DELETED | DH1100 |
| DC1-CDU-L3-CX-5885 | **DELETED** CDU-DH2300-10 L3 Startup | 2d | 2026-07-15 A | 2026-07-15 A | QTS-1020 | 100% | 2026-08-27 | 2026-08-28 | VER | Commissioning | DH2300 | L3 | CDU | DELETED | DH1100 |
| DC1-CDU-L3-CX-5895 | **DELETED** CDU-DH2300-10 BMS/EPMS Programming | 1d | 2026-07-15 A | 2026-07-15 A | QTS-1020 | 100% | 2026-08-31 | 2026-08-31 | PRM | Commissioning | DH2300 | L3 | CDU | DELETED | DH1100 |
| DC1-CDU-L3-CX-5905 | **DELETED** CDU-DH2300-11 FTE | 1d | 2026-07-15 A | 2026-07-15 A | QTS-1020 | 100% | 2026-08-25 | 2026-08-25 | ROS | Commissioning | DH2300 | L3 | CDU | DELETED | DH1100 |
| DC1-CDU-L3-CX-5915 | **DELETED** CDU-DH2300-11 L3 Startup | 2d | 2026-07-15 A | 2026-07-15 A | QTS-1020 | 100% | 2026-08-26 | 2026-08-27 | VER | Commissioning | DH2300 | L3 | CDU | DELETED | DH1100 |
| DC1-CDU-L3-CX-5925 | **DELETED** CDU-DH2300-11 BMS/EPMS Programming | 1d | 2026-07-15 A | 2026-07-15 A | QTS-1020 | 100% | 2026-08-28 | 2026-08-28 | PRM | Commissioning | DH2300 | L3 | CDU | DELETED | DH1100 |
| DC1-CDU-L3-CX-5935 | **DELETED** CDU-DH2300-12 FTE | 1d | 2026-07-15 A | 2026-07-15 A | QTS-1020 | 100% | 2026-08-26 | 2026-08-26 | ROS | Commissioning | DH2300 | L3 | CDU | DELETED | DH1100 |
| DC1-CDU-L3-CX-5945 | **DELETED** CDU-DH2300-12 L3 Startup | 2d | 2026-07-15 A | 2026-07-15 A | QTS-1020 | 100% | 2026-08-27 | 2026-08-28 | VER | Commissioning | DH2300 | L3 | CDU | DELETED | DH1100 |
| DC1-CDU-L3-CX-5955 | **DELETED** CDU-DH2300-12 BMS/EPMS Programming | 1d | 2026-07-15 A | 2026-07-15 A | QTS-1020 | 100% | 2026-08-31 | 2026-08-31 | PRM | Commissioning | DH2300 | L3 | CDU | DELETED | DH1100 |
| DC1-CDU-L3-CX-5965 | **DELETED** CDU-DH2300-13 FTE | 1d | 2026-07-15 A | 2026-07-15 A | QTS-1020 | 100% | 2026-08-24 | 2026-08-24 | ROS | Commissioning | DH2300 | L3 | CDU | DELETED | DH1100 |
| DC1-CDU-L3-CX-5975 | **DELETED** CDU-DH2300-13 L3 Startup | 2d | 2026-07-15 A | 2026-07-15 A | QTS-1020 | 100% | 2026-08-25 | 2026-08-26 | VER | Commissioning | DH2300 | L3 | CDU | DELETED | DH1100 |
| DC1-CDU-L3-CX-5985 | **DELETED** CDU-DH2300-13 BMS/EPMS Programming | 1d | 2026-07-15 A | 2026-07-15 A | QTS-1020 | 100% | 2026-08-27 | 2026-08-27 | PRM | Commissioning | DH2300 | L3 | CDU | DELETED | DH1100 |
| DC1-CDU-L3-CX-5995 | **DELETED** CDU-DH2300-14 FTE | 1d | 2026-07-15 A | 2026-07-15 A | QTS-1020 | 100% | 2026-08-25 | 2026-08-25 | ROS | Commissioning | DH2300 | L3 | CDU | DELETED | DH1100 |
| DC1-CDU-L3-CX-6005 | **DELETED** CDU-DH2300-14 L3 Startup | 2d | 2026-07-15 A | 2026-07-15 A | QTS-1020 | 100% | 2026-08-26 | 2026-08-27 | VER | Commissioning | DH2300 | L3 | CDU | DELETED | DH1100 |
| DC1-CDU-L3-CX-6015 | **DELETED** CDU-DH2300-14 BMS/EPMS Programming | 1d | 2026-07-15 A | 2026-07-15 A | QTS-1020 | 100% | 2026-08-28 | 2026-08-28 | PRM | Commissioning | DH2300 | L3 | CDU | DELETED | DH1100 |
| DC1-CDU-L3-CX-6025 | **DELETED** CDU-DH2300-15 FTE | 1d | 2026-07-15 A | 2026-07-15 A | QTS-1020 | 100% | 2026-08-26 | 2026-08-26 | ROS | Commissioning | DH2300 | L3 | CDU | DELETED | DH1100 |
| DC1-CDU-L3-CX-6035 | **DELETED** CDU-DH2300-15 L3 Startup | 2d | 2026-07-15 A | 2026-07-15 A | QTS-1020 | 100% | 2026-08-27 | 2026-08-28 | VER | Commissioning | DH2300 | L3 | CDU | DELETED | DH1100 |
| DC1-CDU-L3-CX-6045 | **DELETED** CDU-DH2300-15 BMS/EPMS Programming | 1d | 2026-07-15 A | 2026-07-15 A | QTS-1020 | 100% | 2026-08-31 | 2026-08-31 | PRM | Commissioning | DH2300 | L3 | CDU | DELETED | DH1100 |
| DC1-CDU-L3-CX-6055 | **DELETED** CDU-DH2300-16 FTE | 1d | 2026-07-15 A | 2026-07-15 A | QTS-1020 | 100% | 2026-08-24 | 2026-08-24 | ROS | Commissioning | DH2300 | L3 | CDU | DELETED | DH1100 |
| DC1-CDU-L3-CX-6065 | **DELETED** CDU-DH2300-16 L3 Startup | 2d | 2026-07-15 A | 2026-07-15 A | QTS-1020 | 100% | 2026-08-25 | 2026-08-26 | VER | Commissioning | DH2300 | L3 | CDU | DELETED | DH1100 |
| DC1-CDU-L3-CX-6075 | **DELETED** CDU-DH2300-16 BMS/EPMS Programming | 1d | 2026-07-15 A | 2026-07-15 A | QTS-1020 | 100% | 2026-08-27 | 2026-08-27 | PRM | Commissioning | DH2300 | L3 | CDU | DELETED | DH1100 |
| DC1-CDU-L3-CX-6085 | **DELETED** CDU-DH2300-17 FTE | 1d | 2026-07-15 A | 2026-07-15 A | QTS-1020 | 100% | 2026-08-25 | 2026-08-25 | ROS | Commissioning | DH2300 | L3 | CDU | DELETED | DH1100 |
| DC1-CDU-L3-CX-6095 | **DELETED** CDU-DH2300-17 L3 Startup | 2d | 2026-07-15 A | 2026-07-15 A | QTS-1020 | 100% | 2026-08-26 | 2026-08-27 | VER | Commissioning | DH2300 | L3 | CDU | DELETED | DH1100 |
| DC1-CDU-L3-CX-6105 | **DELETED** CDU-DH2300-17 BMS/EPMS Programming | 1d | 2026-07-15 A | 2026-07-15 A | QTS-1020 | 100% | 2026-08-28 | 2026-08-28 | PRM | Commissioning | DH2300 | L3 | CDU | DELETED | DH1100 |
| DC1-CDU-L3-CX-6115 | **DELETED** CDU-DH2300-18 FTE | 1d | 2026-07-15 A | 2026-07-15 A | QTS-1020 | 100% | 2026-08-26 | 2026-08-26 | ROS | Commissioning | DH2300 | L3 | CDU | DELETED | DH1100 |
| DC1-CDU-L3-CX-6125 | **DELETED** CDU-DH2300-18 L3 Startup | 2d | 2026-07-15 A | 2026-07-15 A | QTS-1020 | 100% | 2026-08-27 | 2026-08-28 | VER | Commissioning | DH2300 | L3 | CDU | DELETED | DH1100 |
| DC1-CDU-L3-CX-6135 | **DELETED** CDU-DH2300-18 BMS/EPMS Programming | 1d | 2026-07-15 A | 2026-07-15 A | QTS-1020 | 100% | 2026-08-31 | 2026-08-31 | PRM | Commissioning | DH2300 | L3 | CDU | DELETED | DH1100 |
| DC1-CDU-L3-CX-7045 | **DELETED** CDU-DH1300-01 FTE | 1d | 2026-07-15 A | 2026-07-15 A | QTS-1020 | 100% | 2026-08-20 | 2026-08-20 | ROS | Commissioning | DH1300 | L3 | CDU | DELETED | DH1100 |
| DC1-CDU-L3-CX-7055 | **DELETED** CDU-DH1300-01 L3 Startup | 2d | 2026-07-15 A | 2026-07-15 A | QTS-1020 | 100% | 2026-08-21 | 2026-08-24 | VER | Commissioning | DH1300 | L3 | CDU | DELETED | DH1100 |
| DC1-CDU-L3-CX-7065 | **DELETED** CDU-DH1300-01 BMS/EPMS Programming | 1d | 2026-07-15 A | 2026-07-15 A | QTS-1020 | 100% | 2026-08-25 | 2026-08-25 | PRM | Commissioning | DH1300 | L3 | CDU | DELETED | DH1100 |
| DC1-CDU-L3-CX-7075 | **DELETED** CDU-DH1300-02 FTE | 1d | 2026-07-15 A | 2026-07-15 A | QTS-1020 | 100% | 2026-08-21 | 2026-08-21 | ROS | Commissioning | DH1300 | L3 | CDU | DELETED | DH1100 |
| DC1-CDU-L3-CX-7085 | **DELETED** CDU-DH1300-02 L3 Startup | 2d | 2026-07-15 A | 2026-07-15 A | QTS-1020 | 100% | 2026-08-24 | 2026-08-25 | VER | Commissioning | DH1300 | L3 | CDU | DELETED | DH1100 |
| DC1-CDU-L3-CX-7095 | **DELETED** CDU-DH1300-02 BMS/EPMS Programming | 1d | 2026-07-15 A | 2026-07-15 A | QTS-1020 | 100% | 2026-08-26 | 2026-08-26 | PRM | Commissioning | DH1300 | L3 | CDU | DELETED | DH1100 |

Notes:
- DC1-CDU-L3-CX-1260: Steps: EC Startup Report; MC Installation Checklist; Vendor Startup
- DC1-CDU-L3-CX-1275: Steps: EC Startup Report; MC Installation Checklist; Vendor Startup
- DC1-CDU-L3-CX-1290: Steps: EC Startup Report; MC Installation Checklist; Vendor Startup
- DC1-CDU-L3-CX-5615: Steps: EC Startup Report; MC Installation Checklist; Vendor Startup
- DC1-CDU-L3-CX-5645: Steps: EC Startup Report; MC Installation Checklist; Vendor Startup
- DC1-CDU-L3-CX-5675: Steps: EC Startup Report; MC Installation Checklist; Vendor Startup
- DC1-CDU-L3-CX-5705: Steps: EC Startup Report; MC Installation Checklist; Vendor Startup
- DC1-CDU-L3-CX-5735: Steps: EC Startup Report; MC Installation Checklist; Vendor Startup
- DC1-CDU-L3-CX-5765: Steps: EC Startup Report; MC Installation Checklist; Vendor Startup
- DC1-CDU-L3-CX-5795: Steps: EC Startup Report; MC Installation Checklist; Vendor Startup
- DC1-CDU-L3-CX-5825: Steps: EC Startup Report; MC Installation Checklist; Vendor Startup
- DC1-CDU-L3-CX-5855: Steps: EC Startup Report; MC Installation Checklist; Vendor Startup
- DC1-CDU-L3-CX-5885: Steps: EC Startup Report; MC Installation Checklist; Vendor Startup
- DC1-CDU-L3-CX-5915: Steps: EC Startup Report; MC Installation Checklist; Vendor Startup
- DC1-CDU-L3-CX-5945: Steps: EC Startup Report; MC Installation Checklist; Vendor Startup
- DC1-CDU-L3-CX-5975: Steps: EC Startup Report; MC Installation Checklist; Vendor Startup
- DC1-CDU-L3-CX-6005: Steps: EC Startup Report; MC Installation Checklist; Vendor Startup
- DC1-CDU-L3-CX-6035: Steps: EC Startup Report; MC Installation Checklist; Vendor Startup
- DC1-CDU-L3-CX-6065: Steps: EC Startup Report; MC Installation Checklist; Vendor Startup
- DC1-CDU-L3-CX-6095: Steps: EC Startup Report; MC Installation Checklist; Vendor Startup
- DC1-CDU-L3-CX-6125: Steps: EC Startup Report; MC Installation Checklist; Vendor Startup
- DC1-CDU-L3-CX-7055: Steps: EC Startup Report; MC Installation Checklist; Vendor Startup
- DC1-CDU-L3-CX-7085: Steps: EC Startup Report; MC Installation Checklist; Vendor Startup

| ID | Activity | Duration | Start | Finish | Predecessors | Complete | Planned start | Planned finish | Vendor Responsible Party | Layton Discipline | Location | CX Level | Equipment | DELETED | D |
| --- | --- | --- | --- | --- | --- | --- | --- | --- | --- | --- | --- | --- | --- | --- | --- |
| DC1-CDU-L3-CX-7105 | **DELETED** CDU-DH1300-03 FTE | 1d | 2026-07-15 A | 2026-07-15 A | QTS-1020 | 100% | 2026-08-24 | 2026-08-24 | ROS | Commissioning | DH1300 | L3 | CDU | DELETED | DH1100 |
| DC1-CDU-L3-CX-7115 | **DELETED** CDU-DH1300-03 L3 Startup | 2d | 2026-07-15 A | 2026-07-15 A | QTS-1020 | 100% | 2026-08-25 | 2026-08-26 | VER | Commissioning | DH1300 | L3 | CDU | DELETED | DH1100 |
| DC1-CDU-L3-CX-7125 | **DELETED** CDU-DH1300-03 BMS/EPMS Programming | 1d | 2026-07-15 A | 2026-07-15 A | QTS-1020 | 100% | 2026-08-27 | 2026-08-27 | PRM | Commissioning | DH1300 | L3 | CDU | DELETED | DH1100 |
| DC1-CDU-L3-CX-7135 | **DELETED** CDU-DH1300-04 FTE | 1d | 2026-07-15 A | 2026-07-15 A | QTS-1020 | 100% | 2026-08-25 | 2026-08-25 | ROS | Commissioning | DH1300 | L3 | CDU | DELETED | DH1100 |
| DC1-CDU-L3-CX-7145 | **DELETED** CDU-DH1300-04 L3 Startup | 2d | 2026-07-15 A | 2026-07-15 A | QTS-1020 | 100% | 2026-08-26 | 2026-08-27 | VER | Commissioning | DH1300 | L3 | CDU | DELETED | DH1100 |
| DC1-CDU-L3-CX-7155 | **DELETED** CDU-DH1300-04 BMS/EPMS Programming | 1d | 2026-07-15 A | 2026-07-15 A | QTS-1020 | 100% | 2026-08-28 | 2026-08-28 | PRM | Commissioning | DH1300 | L3 | CDU | DELETED | DH1100 |
| DC1-CDU-L3-CX-7165 | **DELETED** CDU-DH1300-05 FTE | 1d | 2026-07-15 A | 2026-07-15 A | QTS-1020 | 100% | 2026-08-26 | 2026-08-26 | ROS | Commissioning | DH1300 | L3 | CDU | DELETED | DH1100 |
| DC1-CDU-L3-CX-7175 | **DELETED** CDU-DH1300-05 L3 Startup | 2d | 2026-07-15 A | 2026-07-15 A | QTS-1020 | 100% | 2026-08-27 | 2026-08-28 | VER | Commissioning | DH1300 | L3 | CDU | DELETED | DH1100 |
| DC1-CDU-L3-CX-7185 | **DELETED** CDU-DH1300-05 BMS/EPMS Programming | 1d | 2026-07-15 A | 2026-07-15 A | QTS-1020 | 100% | 2026-08-31 | 2026-08-31 | PRM | Commissioning | DH1300 | L3 | CDU | DELETED | DH1100 |
| DC1-CDU-L3-CX-7195 | **DELETED** CDU-DH1300-06 FTE | 1d | 2026-07-15 A | 2026-07-15 A | QTS-1020 | 100% | 2026-08-26 | 2026-08-26 | ROS | Commissioning | DH1300 | L3 | CDU | DELETED | DH1100 |
| DC1-CDU-L3-CX-7205 | **DELETED** CDU-DH1300-06 L3 Startup | 2d | 2026-07-15 A | 2026-07-15 A | QTS-1020 | 100% | 2026-08-27 | 2026-08-28 | VER | Commissioning | DH1300 | L3 | CDU | DELETED | DH1100 |
| DC1-CDU-L3-CX-7215 | **DELETED** CDU-DH1300-06 BMS/EPMS Programming | 1d | 2026-07-15 A | 2026-07-15 A | QTS-1020 | 100% | 2026-08-31 | 2026-08-31 | PRM | Commissioning | DH1300 | L3 | CDU | DELETED | DH1100 |
| DC1-CDU-L3-CX-7225 | **DELETED** CDU-DH1300-07 FTE | 1d | 2026-07-15 A | 2026-07-15 A | QTS-1020 | 100% | 2026-08-21 | 2026-08-21 | ROS | Commissioning | DH1300 | L3 | CDU | DELETED | DH1100 |
| DC1-CDU-L3-CX-7235 | **DELETED** CDU-DH1300-07 L3 Startup | 2d | 2026-07-15 A | 2026-07-15 A | QTS-1020 | 100% | 2026-08-24 | 2026-08-25 | VER | Commissioning | DH1300 | L3 | CDU | DELETED | DH1100 |
| DC1-CDU-L3-CX-7245 | **DELETED** CDU-DH1300-07 BMS/EPMS Programming | 1d | 2026-07-15 A | 2026-07-15 A | QTS-1020 | 100% | 2026-08-26 | 2026-08-26 | PRM | Commissioning | DH1300 | L3 | CDU | DELETED | DH1100 |
| DC1-CDU-L3-CX-7255 | **DELETED** CDU-DH1300-08 FTE | 1d | 2026-07-15 A | 2026-07-15 A | QTS-1020 | 100% | 2026-08-24 | 2026-08-24 | ROS | Commissioning | DH1300 | L3 | CDU | DELETED | DH1100 |
| DC1-CDU-L3-CX-7265 | **DELETED** CDU-DH1300-08 L3 Startup | 2d | 2026-07-15 A | 2026-07-15 A | QTS-1020 | 100% | 2026-08-25 | 2026-08-26 | VER | Commissioning | DH1300 | L3 | CDU | DELETED | DH1100 |
| DC1-CDU-L3-CX-7275 | **DELETED** CDU-DH1300-08 BMS/EPMS Programming | 1d | 2026-07-15 A | 2026-07-15 A | QTS-1020 | 100% | 2026-08-27 | 2026-08-27 | PRM | Commissioning | DH1300 | L3 | CDU | DELETED | DH1100 |
| DC1-CDU-L3-CX-7285 | **DELETED** CDU-DH1300-09 FTE | 1d | 2026-07-15 A | 2026-07-15 A | QTS-1020 | 100% | 2026-08-25 | 2026-08-25 | ROS | Commissioning | DH1300 | L3 | CDU | DELETED | DH1100 |
| DC1-CDU-L3-CX-7295 | **DELETED** CDU-DH1300-09 L3 Startup | 2d | 2026-07-15 A | 2026-07-15 A | QTS-1020 | 100% | 2026-08-26 | 2026-08-27 | VER | Commissioning | DH1300 | L3 | CDU | DELETED | DH1100 |
| DC1-CDU-L3-CX-7305 | **DELETED** CDU-DH1300-09 BMS/EPMS Programming | 1d | 2026-07-15 A | 2026-07-15 A | QTS-1020 | 100% | 2026-08-28 | 2026-08-28 | PRM | Commissioning | DH1300 | L3 | CDU | DELETED | DH1100 |
| DC1-CDU-L3-CX-7315 | **DELETED** CDU-DH1300-10 FTE | 1d | 2026-07-15 A | 2026-07-15 A | QTS-1020 | 100% | 2026-08-26 | 2026-08-26 | ROS | Commissioning | DH1300 | L3 | CDU | DELETED | DH1100 |
| DC1-CDU-L3-CX-7325 | **DELETED** CDU-DH1300-10 L3 Startup | 2d | 2026-07-15 A | 2026-07-15 A | QTS-1020 | 100% | 2026-08-27 | 2026-08-28 | VER | Commissioning | DH1300 | L3 | CDU | DELETED | DH1100 |
| DC1-CDU-L3-CX-7335 | **DELETED** CDU-DH1300-10 BMS/EPMS Programming | 1d | 2026-07-15 A | 2026-07-15 A | QTS-1020 | 100% | 2026-08-31 | 2026-08-31 | PRM | Commissioning | DH1300 | L3 | CDU | DELETED | DH1100 |
| DC1-CDU-L3-CX-7345 | **DELETED** CDU-DH1300-11 FTE | 1d | 2026-07-15 A | 2026-07-15 A | QTS-1020 | 100% | 2026-08-25 | 2026-08-25 | ROS | Commissioning | DH1300 | L3 | CDU | DELETED | DH1100 |
| DC1-CDU-L3-CX-7355 | **DELETED** CDU-DH1300-11 L3 Startup | 2d | 2026-07-15 A | 2026-07-15 A | QTS-1020 | 100% | 2026-08-26 | 2026-08-27 | VER | Commissioning | DH1300 | L3 | CDU | DELETED | DH1100 |
| DC1-CDU-L3-CX-7365 | **DELETED** CDU-DH1300-11 BMS/EPMS Programming | 1d | 2026-07-15 A | 2026-07-15 A | QTS-1020 | 100% | 2026-08-28 | 2026-08-28 | PRM | Commissioning | DH1300 | L3 | CDU | DELETED | DH1100 |
| DC1-CDU-L3-CX-7375 | **DELETED** CDU-DH1300-12 FTE | 1d | 2026-07-15 A | 2026-07-15 A | QTS-1020 | 100% | 2026-08-26 | 2026-08-26 | ROS | Commissioning | DH1300 | L3 | CDU | DELETED | DH1100 |
| DC1-CDU-L3-CX-7385 | **DELETED** CDU-DH1300-12 L3 Startup | 2d | 2026-07-15 A | 2026-07-15 A | QTS-1020 | 100% | 2026-08-27 | 2026-08-28 | VER | Commissioning | DH1300 | L3 | CDU | DELETED | DH1100 |
| DC1-CDU-L3-CX-7395 | **DELETED** CDU-DH1300-12 BMS/EPMS Programming | 1d | 2026-07-15 A | 2026-07-15 A | QTS-1020 | 100% | 2026-08-31 | 2026-08-31 | PRM | Commissioning | DH1300 | L3 | CDU | DELETED | DH1100 |
| DC1-CDU-L3-CX-7405 | **DELETED** CDU-DH1300-13 FTE | 1d | 2026-07-15 A | 2026-07-15 A | QTS-1020 | 100% | 2026-08-24 | 2026-08-24 | ROS | Commissioning | DH1300 | L3 | CDU | DELETED | DH1100 |
| DC1-CDU-L3-CX-7415 | **DELETED** CDU-DH1300-13 L3 Startup | 2d | 2026-07-15 A | 2026-07-15 A | QTS-1020 | 100% | 2026-08-25 | 2026-08-26 | VER | Commissioning | DH1300 | L3 | CDU | DELETED | DH1100 |
| DC1-CDU-L3-CX-7425 | **DELETED** CDU-DH1300-13 BMS/EPMS Programming | 1d | 2026-07-15 A | 2026-07-15 A | QTS-1020 | 100% | 2026-08-27 | 2026-08-27 | PRM | Commissioning | DH1300 | L3 | CDU | DELETED | DH1100 |
| DC1-CDU-L3-CX-7435 | **DELETED** CDU-DH1300-14 FTE | 1d | 2026-07-15 A | 2026-07-15 A | QTS-1020 | 100% | 2026-08-25 | 2026-08-25 | ROS | Commissioning | DH1300 | L3 | CDU | DELETED | DH1100 |
| DC1-CDU-L3-CX-7445 | **DELETED** CDU-DH1300-14 L3 Startup | 2d | 2026-07-15 A | 2026-07-15 A | QTS-1020 | 100% | 2026-08-26 | 2026-08-27 | VER | Commissioning | DH1300 | L3 | CDU | DELETED | DH1100 |
| DC1-CDU-L3-CX-7455 | **DELETED** CDU-DH1300-14 BMS/EPMS Programming | 1d | 2026-07-15 A | 2026-07-15 A | QTS-1020 | 100% | 2026-08-28 | 2026-08-28 | PRM | Commissioning | DH1300 | L3 | CDU | DELETED | DH1100 |
| DC1-CDU-L3-CX-7465 | **DELETED** CDU-DH1300-15 FTE | 1d | 2026-07-15 A | 2026-07-15 A | QTS-1020 | 100% | 2026-08-26 | 2026-08-26 | ROS | Commissioning | DH1300 | L3 | CDU | DELETED | DH1100 |
| DC1-CDU-L3-CX-7475 | **DELETED** CDU-DH1300-15 L3 Startup | 2d | 2026-07-15 A | 2026-07-15 A | QTS-1020 | 100% | 2026-08-27 | 2026-08-28 | VER | Commissioning | DH1300 | L3 | CDU | DELETED | DH1100 |
| DC1-CDU-L3-CX-7485 | **DELETED** CDU-DH1300-15 BMS/EPMS Programming | 1d | 2026-07-15 A | 2026-07-15 A | QTS-1020 | 100% | 2026-08-31 | 2026-08-31 | PRM | Commissioning | DH1300 | L3 | CDU | DELETED | DH1100 |
| DC1-CDU-L3-CX-7495 | **DELETED** CDU-DH1300-16 FTE | 1d | 2026-07-15 A | 2026-07-15 A | QTS-1020 | 100% | 2026-08-24 | 2026-08-24 | ROS | Commissioning | DH1300 | L3 | CDU | DELETED | DH1100 |
| DC1-CDU-L3-CX-7505 | **DELETED** CDU-DH1300-16 L3 Startup | 2d | 2026-07-15 A | 2026-07-15 A | QTS-1020 | 100% | 2026-08-25 | 2026-08-26 | VER | Commissioning | DH1300 | L3 | CDU | DELETED | DH1100 |
| DC1-CDU-L3-CX-7515 | **DELETED** CDU-DH1300-16 BMS/EPMS Programming | 1d | 2026-07-15 A | 2026-07-15 A | QTS-1020 | 100% | 2026-08-27 | 2026-08-27 | PRM | Commissioning | DH1300 | L3 | CDU | DELETED | DH1100 |
| DC1-CDU-L3-CX-7525 | **DELETED** CDU-DH1300-17 FTE | 1d | 2026-07-15 A | 2026-07-15 A | QTS-1020 | 100% | 2026-08-25 | 2026-08-25 | ROS | Commissioning | DH1300 | L3 | CDU | DELETED | DH1100 |
| DC1-CDU-L3-CX-7535 | **DELETED** CDU-DH1300-17 L3 Startup | 2d | 2026-07-15 A | 2026-07-15 A | QTS-1020 | 100% | 2026-08-26 | 2026-08-27 | VER | Commissioning | DH1300 | L3 | CDU | DELETED | DH1100 |
| DC1-CDU-L3-CX-7545 | **DELETED** CDU-DH1300-17 BMS/EPMS Programming | 1d | 2026-07-15 A | 2026-07-15 A | QTS-1020 | 100% | 2026-08-28 | 2026-08-28 | PRM | Commissioning | DH1300 | L3 | CDU | DELETED | DH1100 |
| DC1-CDU-L3-CX-7555 | **DELETED** CDU-DH1300-18 FTE | 1d | 2026-07-15 A | 2026-07-15 A | QTS-1020 | 100% | 2026-08-26 | 2026-08-26 | ROS | Commissioning | DH1300 | L3 | CDU | DELETED | DH1100 |
| DC1-CDU-L3-CX-7565 | **DELETED** CDU-DH1300-18 L3 Startup | 2d | 2026-07-15 A | 2026-07-15 A | QTS-1020 | 100% | 2026-08-27 | 2026-08-28 | VER | Commissioning | DH1300 | L3 | CDU | DELETED | DH1100 |
| DC1-CDU-L3-CX-7575 | **DELETED** CDU-DH1300-18 BMS/EPMS Programming | 1d | 2026-07-15 A | 2026-07-15 A | QTS-1020 | 100% | 2026-08-31 | 2026-08-31 | PRM | Commissioning | DH1300 | L3 | CDU | DELETED | DH1100 |
| DC1-CHLR-L2-1140 | **DELETED** DH1200 CHLR-1RT40-A12 L2 Checklist | 2d | 2026-07-15 A | 2026-07-16 A | QTS-1020 | 100% | 2026-07-13 | 2026-07-14 | TAS | Commissioning | DH1200 | L2 | CHILLER | DELETED | DH1100 |
| DC1-CHLR-L2-1150 | **DELETED** DH1200 CHLR-1RT40-B12 L2 Checklist | 2d | 2026-07-15 A | 2026-07-16 A | QTS-1020 | 100% | 2026-07-13 | 2026-07-14 | TAS | Commissioning | DH1200 | L2 | CHILLER | DELETED | DH1100 |
| DC1-CHLR-L2-1160 | **DELETED** DH1200 CHLR-1RT40-C12 L2 Checklist | 2d | 2026-07-15 A | 2026-07-16 A | QTS-1020 | 100% | 2026-07-13 | 2026-07-14 | TAS | Commissioning | DH1200 | L2 | CHILLER | DELETED | DH1100 |
| DC1-CHLR-L2-1170 | **DELETED** DH1200 CHLR-1RT40-D12 L2 Checklist | 2d | 2026-07-15 A | 2026-07-16 A | QTS-1020 | 100% | 2026-07-13 | 2026-07-14 | TAS | Commissioning | DH1200 | L2 | CHILLER | DELETED | DH1100 |
| DC1-CHLR-L2-1180 | **DELETED** DH1200 CHLR-1RT40-E12 L2 Checklist | 2d | 2026-07-15 A | 2026-07-16 A | QTS-1020 | 100% | 2026-07-13 | 2026-07-14 | TAS | Commissioning | DH1200 | L2 | CHILLER | DELETED | DH1100 |
| DC1-CHLR-L2-1190 | **DELETED** DH1200 CHLR-1RT40-F12 L2 Checklist | 2d | 2026-07-15 A | 2026-07-16 A | QTS-1020 | 100% | 2026-07-13 | 2026-07-14 | TAS | Commissioning | DH1200 | L2 | CHILLER | DELETED | DH1100 |
| DC1-CHLR-L2-1200 | **DELETED** DH1200 CHLR-1RT40-R12 L2 Checklist | 2d | 2026-07-15 A | 2026-07-16 A | QTS-1020 | 100% | 2026-07-13 | 2026-07-14 | TAS | Commissioning | DH1200 | L2 | CHILLER | DELETED | DH1100 |
| DC1-CHLR-L2-1210 | **DELETED** DH2300 CHLR-1RT40-A23 L2 Checklist | 3d | 2026-07-15 A | 2026-07-15 A | QTS-1020 | 100% | 2026-07-28 | 2026-07-30 | TAS | Commissioning | DH2300 | L2 | CHILLER | DELETED | DH1100 |
| DC1-CHLR-L2-1220 | **DELETED** DH2300 CHLR-1RT40-B23 L2 Checklist | 3d | 2026-07-15 A | 2026-07-15 A | QTS-1020 | 100% | 2026-07-31 | 2026-08-04 | TAS | Commissioning | DH2300 | L2 | CHILLER | DELETED | DH1100 |
| DC1-CHLR-L2-1230 | **DELETED** DH2300 CHLR-1RT40-C23 L2 Checklist | 3d | 2026-07-15 A | 2026-07-15 A | QTS-1020 | 100% | 2026-08-05 | 2026-08-07 | TAS | Commissioning | DH2300 | L2 | CHILLER | DELETED | DH1100 |
| DC1-CHLR-L2-1240 | **DELETED** DH2300 CHLR-1RT40-D23 L2 Checklist | 3d | 2026-07-15 A | 2026-07-15 A | QTS-1020 | 100% | 2026-07-28 | 2026-07-30 | TAS | Commissioning | DH2300 | L2 | CHILLER | DELETED | DH1100 |
| DC1-CHLR-L2-1250 | **DELETED** DH2300 CHLR-1RT40-E23 L2 Checklist | 3d | 2026-07-15 A | 2026-07-15 A | QTS-1020 | 100% | 2026-07-31 | 2026-08-04 | TAS | Commissioning | DH2300 | L2 | CHILLER | DELETED | DH1100 |
| DC1-CHLR-L2-1260 | **DELETED** DH2300 CHLR-1RT40-F23 L2 Checklist | 3d | 2026-07-15 A | 2026-07-15 A | QTS-1020 | 100% | 2026-08-05 | 2026-08-07 | TAS | Commissioning | DH2300 | L2 | CHILLER | DELETED | DH1100 |
| DC1-CHLR-L2-1270 | **DELETED** DH2300 CHLR-1RT40-R23 L2 Checklist | 3d | 2026-07-15 A | 2026-07-15 A | QTS-1020 | 100% | 2026-08-10 | 2026-08-12 | TAS | Commissioning | DH2300 | L2 | CHILLER | DELETED | DH1100 |
| DC1-CHLR-L2-1280 | **DELETED** **DELETED** DH1300 CHLR-1RT40-A13 L2 Checklist | 3d | 2026-07-15 A | 2026-07-15 A | QTS-1020 | 100% | 2026-07-28 | 2026-07-30 | TAS | Commissioning | DH1300 | L2 | CHILLER | DELETED | DH1100 |
| DC1-CHLR-L2-1290 | **DELETED** **DELETED** DH1300 CHLR-1RT40-B13 L2 Checklist | 3d | 2026-07-15 A | 2026-07-15 A | DC1-CHLR-L2-1280, QTS-1020 | 100% | 2026-07-31 | 2026-08-04 | TAS | Commissioning | DH1300 | L2 | CHILLER | DELETED | DH1100 |
| DC1-CHLR-L2-1300 | **DELETED** **DELETED** DH1300 CHLR-1RT40-C13 L2 Checklist | 3d | 2026-07-15 A | 2026-07-15 A | DC1-CHLR-L2-1290, QTS-1020 | 100% | 2026-08-05 | 2026-08-07 | TAS | Commissioning | DH1300 | L2 | CHILLER | DELETED | DH1100 |
| DC1-CHLR-L2-1310 | **DELETED** **DELETED** DH1300 CHLR-1RT40-D13 L2 Checklist | 3d | 2026-07-15 A | 2026-07-15 A | QTS-1020 | 100% | 2026-07-28 | 2026-07-30 | TAS | Commissioning | DH1300 | L2 | CHILLER | DELETED | DH1100 |
| DC1-CHLR-L2-1320 | **DELETED** **DELETED** DH1300 CHLR-1RT40-E13 L2 Checklist | 3d | 2026-07-15 A | 2026-07-15 A | DC1-CHLR-L2-1310, QTS-1020 | 100% | 2026-07-31 | 2026-08-04 | TAS | Commissioning | DH1300 | L2 | CHILLER | DELETED | DH1100 |
| DC1-CHLR-L2-1330 | **DELETED** **DELETED** DH1300 CHLR-1RT40-F13 L2 Checklist | 3d | 2026-07-15 A | 2026-07-15 A | DC1-CHLR-L2-1320, QTS-1020 | 100% | 2026-08-05 | 2026-08-07 | TAS | Commissioning | DH1300 | L2 | CHILLER | DELETED | DH1100 |
| DC1-CHLR-L2-1340 | **DELETED** **DELETED** DH1300 CHLR-1RT40-R13 L2 Checklist | 3d | 2026-07-15 A | 2026-07-15 A | DC1-CHLR-L2-1330, QTS-1020 | 100% | 2026-08-10 | 2026-08-12 | TAS | Commissioning | DH1300 | L2 | CHILLER | DELETED | DH1100 |
| DC1-CHLR-L3-Cx-2770 | **DELETED** DC1-CHLR-1RT40-A23 FTE | 1d | 2026-07-15 A | 2026-07-15 A | QTS-1020 | 100% | 2026-07-31 | 2026-07-31 | ROS | Commissioning | DH2300 | L3 | CHILLER | DELETED | DH1100 |

Notes:
- DC1-CDU-L3-CX-7115: Steps: EC Startup Report; MC Installation Checklist; Vendor Startup
- DC1-CDU-L3-CX-7145: Steps: EC Startup Report; MC Installation Checklist; Vendor Startup
- DC1-CDU-L3-CX-7175: Steps: EC Startup Report; MC Installation Checklist; Vendor Startup
- DC1-CDU-L3-CX-7205: Steps: EC Startup Report; MC Installation Checklist; Vendor Startup
- DC1-CDU-L3-CX-7235: Steps: EC Startup Report; MC Installation Checklist; Vendor Startup
- DC1-CDU-L3-CX-7265: Steps: EC Startup Report; MC Installation Checklist; Vendor Startup
- DC1-CDU-L3-CX-7295: Steps: EC Startup Report; MC Installation Checklist; Vendor Startup
- DC1-CDU-L3-CX-7325: Steps: EC Startup Report; MC Installation Checklist; Vendor Startup
- DC1-CDU-L3-CX-7355: Steps: EC Startup Report; MC Installation Checklist; Vendor Startup
- DC1-CDU-L3-CX-7385: Steps: EC Startup Report; MC Installation Checklist; Vendor Startup
- DC1-CDU-L3-CX-7415: Steps: EC Startup Report; MC Installation Checklist; Vendor Startup
- DC1-CDU-L3-CX-7445: Steps: EC Startup Report; MC Installation Checklist; Vendor Startup
- DC1-CDU-L3-CX-7475: Steps: EC Startup Report; MC Installation Checklist; Vendor Startup
- DC1-CDU-L3-CX-7505: Steps: EC Startup Report; MC Installation Checklist; Vendor Startup
- DC1-CDU-L3-CX-7535: Steps: EC Startup Report; MC Installation Checklist; Vendor Startup
- DC1-CDU-L3-CX-7565: Steps: EC Startup Report; MC Installation Checklist; Vendor Startup
- DC1-CHLR-L2-1140: Steps: EC Installation Checklist (done); MC Installation Checklist; CC Installation Checklist (done); Vendor Pre-Energization Checklist (done); CXA Pre-Energization Inspection; PEI/Clean-Walk
- DC1-CHLR-L2-1150: Steps: EC Installation Checklist (done); MC Installation Checklist; CC Installation Checklist (done); Vendor Pre-Energization Checklist (done); CXA Pre-Energization Inspection; PEI/Clean-Walk
- DC1-CHLR-L2-1160: Steps: EC Installation Checklist (done); MC Installation Checklist; CC Installation Checklist (done); Vendor Pre-Energization Checklist (done); CXA Pre-Energization Inspection; PEI/Clean-Walk
- DC1-CHLR-L2-1170: Steps: EC Installation Checklist (done); MC Installation Checklist; CC Installation Checklist (done); Vendor Pre-Energization Checklist (done); CXA Pre-Energization Inspection; PEI/Clean-Walk
- DC1-CHLR-L2-1180: Steps: EC Installation Checklist (done); MC Installation Checklist; CC Installation Checklist (done); Vendor Pre-Energization Checklist (done); CXA Pre-Energization Inspection; PEI/Clean-Walk
- DC1-CHLR-L2-1190: Steps: EC Installation Checklist (done); MC Installation Checklist; CC Installation Checklist (done); Vendor Pre-Energization Checklist (done); CXA Pre-Energization Inspection; PEI/Clean-Walk
- DC1-CHLR-L2-1200: Steps: EC Installation Checklist (done); MC Installation Checklist; CC Installation Checklist (done); Vendor Pre-Energization Checklist; CXA Pre-Energization Inspection; PEI/Clean-Walk
- DC1-CHLR-L2-1210: Steps: EC Installation Checklist; MC Installation Checklist; CC Installation Checklist; Vendor Pre-Energization Checklist; CXA Pre-Energization Inspection; PEI/Clean-Walk
- DC1-CHLR-L2-1220: Steps: EC Installation Checklist; MC Installation Checklist; CC Installation Checklist; Vendor Pre-Energization Checklist; CXA Pre-Energization Inspection; PEI/Clean-Walk
- DC1-CHLR-L2-1230: Steps: EC Installation Checklist; MC Installation Checklist; CC Installation Checklist; Vendor Pre-Energization Checklist; CXA Pre-Energization Inspection; PEI/Clean-Walk
- DC1-CHLR-L2-1240: Steps: EC Installation Checklist; MC Installation Checklist; CC Installation Checklist; Vendor Pre-Energization Checklist; CXA Pre-Energization Inspection; PEI/Clean-Walk
- DC1-CHLR-L2-1250: Steps: EC Installation Checklist; MC Installation Checklist; CC Installation Checklist; Vendor Pre-Energization Checklist; CXA Pre-Energization Inspection; PEI/Clean-Walk
- DC1-CHLR-L2-1260: Steps: EC Installation Checklist; MC Installation Checklist; CC Installation Checklist; Vendor Pre-Energization Checklist; CXA Pre-Energization Inspection; PEI/Clean-Walk
- DC1-CHLR-L2-1270: Steps: EC Installation Checklist; MC Installation Checklist; CC Installation Checklist; Vendor Pre-Energization Checklist; CXA Pre-Energization Inspection; PEI/Clean-Walk
- DC1-CHLR-L2-1280: Steps: EC Installation Checklist; MC Installation Checklist; CC Installation Checklist; Vendor Pre-Energization Checklist; CXA Pre-Energization Inspection; PEI/Clean-Walk
- DC1-CHLR-L2-1290: Steps: EC Installation Checklist; MC Installation Checklist; CC Installation Checklist; Vendor Pre-Energization Checklist; CXA Pre-Energization Inspection; PEI/Clean-Walk
- DC1-CHLR-L2-1300: Steps: EC Installation Checklist; MC Installation Checklist; CC Installation Checklist; Vendor Pre-Energization Checklist; CXA Pre-Energization Inspection; PEI/Clean-Walk
- DC1-CHLR-L2-1310: Steps: EC Installation Checklist; MC Installation Checklist; CC Installation Checklist; Vendor Pre-Energization Checklist; CXA Pre-Energization Inspection; PEI/Clean-Walk
- DC1-CHLR-L2-1320: Steps: EC Installation Checklist; MC Installation Checklist; CC Installation Checklist; Vendor Pre-Energization Checklist; CXA Pre-Energization Inspection; PEI/Clean-Walk
- DC1-CHLR-L2-1330: Steps: EC Installation Checklist; MC Installation Checklist; CC Installation Checklist; Vendor Pre-Energization Checklist; CXA Pre-Energization Inspection; PEI/Clean-Walk
- DC1-CHLR-L2-1340: Steps: EC Installation Checklist; MC Installation Checklist; CC Installation Checklist; Vendor Pre-Energization Checklist; CXA Pre-Energization Inspection; PEI/Clean-Walk

| ID | Activity | Duration | Start | Finish | Predecessors | Complete | Planned start | Planned finish | Vendor Responsible Party | Layton Discipline | Location | CX Level | Equipment | DELETED | D | Notes |
| --- | --- | --- | --- | --- | --- | --- | --- | --- | --- | --- | --- | --- | --- | --- | --- | --- |
| DC1-CHLR-L3-Cx-2780 | **DELETED** DC1-CHLR-1RT40-A23 L3 Startup | 2d | 2026-07-15 A | 2026-07-15 A | QTS-1020 | 100% | 2026-08-05 | 2026-08-06 | TAS | Commissioning | DH2300 | L3 | CHILLER | DELETED | DH1100 |  |
| DC1-CHLR-L3-Cx-2790 | **DELETED** DC1-CHLR-1RT40-A23 BMS/EPMS Programming | 1d | 2026-07-15 A | 2026-07-15 A | QTS-1020 | 100% | 2026-08-07 | 2026-08-07 | PRM | Commissioning | DH2300 | L3 | CHILLER | DELETED | DH1100 |  |
| DC1-CHLR-L3-Cx-2800 | **DELETED** DC1-CHLR-1RT40-B23 FTE | 1d | 2026-07-15 A | 2026-07-15 A | QTS-1020 | 100% | 2026-08-11 | 2026-08-11 | ROS | Commissioning | DH2300 | L3 | CHILLER | DELETED | DH1100 |  |
| DC1-CHLR-L3-Cx-2810 | **DELETED** DC1-CHLR-1RT40-B23 L3 Startup | 2d | 2026-07-15 A | 2026-07-15 A | QTS-1020 | 100% | 2026-08-14 | 2026-08-17 | TAS | Commissioning | DH2300 | L3 | CHILLER | DELETED | DH1100 |  |
| DC1-CHLR-L3-Cx-2820 | **DELETED** DC1-CHLR-1RT40-B23 BMS/EPMS Programming | 1d | 2026-07-15 A | 2026-07-15 A | QTS-1020 | 100% | 2026-08-18 | 2026-08-18 | PRM | Commissioning | DH2300 | L3 | CHILLER | DELETED | DH1100 |  |
| DC1-CHLR-L3-Cx-2830 | **DELETED** DC1-CHLR-1RT40-C23 FTE | 1d | 2026-07-15 A | 2026-07-15 A | QTS-1020 | 100% | 2026-08-11 | 2026-08-11 | ROS | Commissioning | DH2300 | L3 | CHILLER | DELETED | DH1100 |  |
| DC1-CHLR-L3-Cx-2840 | **DELETED** DC1-CHLR-1RT40-C23 L3 Startup | 2d | 2026-07-15 A | 2026-07-15 A | QTS-1020 | 100% | 2026-08-14 | 2026-08-17 | TAS | Commissioning | DH2300 | L3 | CHILLER | DELETED | DH1100 |  |
| DC1-CHLR-L3-Cx-2850 | **DELETED** DC1-CHLR-1RT40-C23 BMS/EPMS Programming | 1d | 2026-07-15 A | 2026-07-15 A | QTS-1020 | 100% | 2026-08-18 | 2026-08-18 | PRM | Commissioning | DH2300 | L3 | CHILLER | DELETED | DH1100 |  |
| DC1-CHLR-L3-Cx-2860 | **DELETED** DC1-CHLR-1RT40-D23 FTE | 1d | 2026-07-15 A | 2026-07-15 A | QTS-1020 | 100% | 2026-08-11 | 2026-08-11 | ROS | Commissioning | DH2300 | L3 | CHILLER | DELETED | DH1100 |  |
| DC1-CHLR-L3-Cx-2870 | **DELETED** DC1-CHLR-1RT40-D23 L3 Startup | 2d | 2026-07-15 A | 2026-07-15 A | QTS-1020 | 100% | 2026-08-14 | 2026-08-17 | TAS | Commissioning | DH2300 | L3 | CHILLER | DELETED | DH1100 |  |
| DC1-CHLR-L3-Cx-2880 | **DELETED** DC1-CHLR-1RT40-D23 BMS/EPMS Programming | 1d | 2026-07-15 A | 2026-07-15 A | QTS-1020 | 100% | 2026-08-18 | 2026-08-18 | PRM | Commissioning | DH2300 | L3 | CHILLER | DELETED | DH1100 |  |
| DC1-CHLR-L3-Cx-2890 | **DELETED** DC1-CHLR-1RT40-E23 FTE | 1d | 2026-07-15 A | 2026-07-15 A | QTS-1020 | 100% | 2026-08-11 | 2026-08-11 | ROS | Commissioning | DH2300 | L3 | CHILLER | DELETED | DH1100 |  |
| DC1-CHLR-L3-Cx-2900 | **DELETED** DC1-CHLR-1RT40-E23 L3 Startup | 2d | 2026-07-15 A | 2026-07-15 A | QTS-1020 | 100% | 2026-08-14 | 2026-08-17 | TAS | Commissioning | DH2300 | L3 | CHILLER | DELETED | DH1100 |  |
| DC1-CHLR-L3-Cx-2910 | **DELETED** DC1-CHLR-1RT40-E23 BMS/EPMS Programming | 1d | 2026-07-15 A | 2026-07-15 A | QTS-1020 | 100% | 2026-08-18 | 2026-08-18 | PRM | Commissioning | DH2300 | L3 | CHILLER | DELETED | DH1100 |  |
| DC1-CHLR-L3-Cx-2920 | **DELETED** DC1-CHLR-1RT40-F23 FTE | 1d | 2026-07-15 A | 2026-07-15 A | QTS-1020 | 100% | 2026-08-11 | 2026-08-11 | ROS | Commissioning | DH2300 | L3 | CHILLER | DELETED | DH1100 |  |
| DC1-CHLR-L3-Cx-2930 | **DELETED** DC1-CHLR-1RT40-F23 L3 Startup | 2d | 2026-07-15 A | 2026-07-15 A | QTS-1020 | 100% | 2026-08-14 | 2026-08-17 | TAS | Commissioning | DH2300 | L3 | CHILLER | DELETED | DH1100 |  |
| DC1-CHLR-L3-Cx-2940 | **DELETED** DC1-CHLR-1RT40-F23 BMS/EPMS Programming | 1d | 2026-07-15 A | 2026-07-15 A | QTS-1020 | 100% | 2026-08-18 | 2026-08-18 | PRM | Commissioning | DH2300 | L3 | CHILLER | DELETED | DH1100 |  |
| DC1-CHLR-L3-Cx-2950 | **DELETED** DC1-CHLR-1RT40-R23 FTE | 1d | 2026-07-15 A | 2026-07-15 A | QTS-1020 | 100% | 2026-08-13 | 2026-08-13 | ROS | Commissioning | DH2300 | L3 | CHILLER | DELETED | DH1100 |  |
| DC1-CHLR-L3-Cx-2960 | **DELETED** DC1-CHLR-1RT40-R23 L3 Startup | 2d | 2026-07-15 A | 2026-07-15 A | QTS-1020 | 100% | 2026-08-18 | 2026-08-19 | TAS | Commissioning | DH2300 | L3 | CHILLER | DELETED | DH1100 |  |
| DC1-CHLR-L3-Cx-2970 | **DELETED** DC1-CHLR-1RT40-R23 BMS/EPMS Programming | 1d | 2026-07-15 A | 2026-07-15 A | QTS-1020 | 100% | 2026-08-20 | 2026-08-20 | PRM | Commissioning | DH2300 | L3 | CHILLER | DELETED | DH1100 |  |
| DC1-CHLR-L3-Cx-2980 | **DELETED** DC1-CHLR-1RT40-A23 Heat Up | 2d | 2026-07-15 A | 2026-07-15 A | QTS-1020 | 100% | 2026-08-03 | 2026-08-04 | LAY | Commissioning | DH2300 | L3 | CHILLER | DELETED | DH1100 |  |
| DC1-CHLR-L3-Cx-2990 | **DELETED** DC1-CHLR-1RT40-B23 Heat Up | 2d | 2026-07-15 A | 2026-07-15 A | QTS-1020 | 100% | 2026-08-12 | 2026-08-13 | LAY | Commissioning | DH2300 | L3 | CHILLER | DELETED | DH1100 |  |
| DC1-CHLR-L3-Cx-3000 | **DELETED** DC1-CHLR-1RT40-C23 Heat Up | 2d | 2026-07-15 A | 2026-07-15 A | QTS-1020 | 100% | 2026-08-12 | 2026-08-13 | LAY | Commissioning | DH2300 | L3 | CHILLER | DELETED | DH1100 |  |
| DC1-CHLR-L3-Cx-3010 | **DELETED** DC1-CHLR-1RT40-D23 Heat Up | 2d | 2026-07-15 A | 2026-07-15 A | QTS-1020 | 100% | 2026-08-12 | 2026-08-13 | LAY | Commissioning | DH2300 | L3 | CHILLER | DELETED | DH1100 |  |
| DC1-CHLR-L3-Cx-3020 | **DELETED** DC1-CHLR-1RT40-E23 Heat Up | 2d | 2026-07-15 A | 2026-07-15 A | QTS-1020 | 100% | 2026-08-12 | 2026-08-13 | LAY | Commissioning | DH2300 | L3 | CHILLER | DELETED | DH1100 |  |
| DC1-CHLR-L3-Cx-3030 | **DELETED** DC1-CHLR-1RT40-F23 Heat Up | 2d | 2026-07-15 A | 2026-07-15 A | QTS-1020 | 100% | 2026-08-12 | 2026-08-13 | LAY | Commissioning | DH2300 | L3 | CHILLER | DELETED | DH1100 |  |
| DC1-CHLR-L3-Cx-3040 | **DELETED** DC1-CHLR-1RT40-R23 Heat Up | 2d | 2026-07-15 A | 2026-07-15 A | QTS-1020 | 100% | 2026-08-14 | 2026-08-17 | LAY | Commissioning | DH2300 | L3 | CHILLER | DELETED | DH1100 |  |
| DC1-CHLR-L3-Cx-3050 | **DELETED** DC1-CHLR-1RT40-A13 FTE | 1d | 2026-07-15 A | 2026-07-15 A | DC1-CHLR-L2-1280, DC1-SWD-L3-CX-2840 SS, QTS-1020 | 100% | 2026-08-11 | 2026-08-11 | ROS | Commissioning | DH1300 | L3 | CHILLER | DELETED | DH1100 |  |
| DC1-CHLR-L3-Cx-3060 | **DELETED** DC1-CHLR-1RT40-A13 L3 Startup | 2d | 2026-07-15 A | 2026-07-15 A | QTS-1020 | 100% | 2026-08-14 | 2026-08-17 | TAS | Commissioning | DH1300 | L3 | CHILLER | DELETED | DH1100 |  |
| DC1-CHLR-L3-Cx-3070 | **DELETED** DC1-CHLR-1RT40-A13 BMS/EPMS Programming | 1d | 2026-07-15 A | 2026-07-15 A | DC1-CHLR-L3-Cx-3060, QTS-1020 | 100% | 2026-08-18 | 2026-08-18 | PRM | Commissioning | DH1300 | L3 | CHILLER | DELETED | DH1100 |  |
| DC1-CHLR-L3-Cx-3080 | **DELETED** DC1-CHLR-1RT40-B13 FTE | 1d | 2026-07-15 A | 2026-07-15 A | DC1-CHLR-L2-1290, DC1-SWD-L3-CX-2870 SS, QTS-1020 | 100% | 2026-08-11 | 2026-08-11 | ROS | Commissioning | DH1300 | L3 | CHILLER | DELETED | DH1100 |  |
| DC1-CHLR-L3-Cx-3090 | **DELETED** DC1-CHLR-1RT40-B13 L3 Startup | 2d | 2026-07-15 A | 2026-07-15 A | QTS-1020 | 100% | 2026-08-14 | 2026-08-17 | TAS | Commissioning | DH1300 | L3 | CHILLER | DELETED | DH1100 |  |
| DC1-CHLR-L3-Cx-3100 | **DELETED** DC1-CHLR-1RT40-B13 BMS/EPMS Programming | 1d | 2026-07-15 A | 2026-07-15 A | DC1-CHLR-L3-Cx-3090, QTS-1020 | 100% | 2026-08-18 | 2026-08-18 | PRM | Commissioning | DH1300 | L3 | CHILLER | DELETED | DH1100 |  |
| DC1-CHLR-L3-Cx-3110 | **DELETED** DC1-CHLR-1RT40-C13 FTE | 1d | 2026-07-15 A | 2026-07-15 A | DC1-CHLR-L2-1300, DC1-SWD-L3-CX-2900 SS, QTS-1020 | 100% | 2026-08-11 | 2026-08-11 | ROS | Commissioning | DH1300 | L3 | CHILLER | DELETED | DH1100 |  |
| DC1-CHLR-L3-Cx-3120 | **DELETED** DC1-CHLR-1RT40-C13 L3 Startup | 2d | 2026-07-15 A | 2026-07-15 A | QTS-1020 | 100% | 2026-08-14 | 2026-08-17 | TAS | Commissioning | DH1300 | L3 | CHILLER | DELETED | DH1100 |  |
| DC1-CHLR-L3-Cx-3130 | **DELETED** DC1-CHLR-1RT40-C13 BMS/EPMS Programming | 1d | 2026-07-15 A | 2026-07-15 A | DC1-CHLR-L3-Cx-3120, QTS-1020 | 100% | 2026-08-18 | 2026-08-18 | PRM | Commissioning | DH1300 | L3 | CHILLER | DELETED | DH1100 |  |
| DC1-CHLR-L3-Cx-3140 | **DELETED** DC1-CHLR-1RT40-D13 FTE | 1d | 2026-07-15 A | 2026-07-15 A | DC1-CHLR-L2-1310, DC1-SWD-L3-CX-2930 SS, QTS-1020 | 100% | 2026-08-11 | 2026-08-11 | ROS | Commissioning | DH1300 | L3 | CHILLER | DELETED | DH1100 |  |
| DC1-CHLR-L3-Cx-3150 | **DELETED** DC1-CHLR-1RT40-D13 L3 Startup | 2d | 2026-07-15 A | 2026-07-15 A | QTS-1020 | 100% | 2026-08-14 | 2026-08-17 | TAS | Commissioning | DH1300 | L3 | CHILLER | DELETED | DH1100 |  |
| DC1-CHLR-L3-Cx-3160 | **DELETED** DC1-CHLR-1RT40-D13 BMS/EPMS Programming | 1d | 2026-07-15 A | 2026-07-15 A | DC1-CHLR-L3-Cx-3150, QTS-1020 | 100% | 2026-08-18 | 2026-08-18 | PRM | Commissioning | DH1300 | L3 | CHILLER | DELETED | DH1100 |  |
| DC1-CHLR-L3-Cx-3170 | **DELETED** DC1-CHLR-1RT40-E13 FTE | 1d | 2026-07-15 A | 2026-07-15 A | DC1-CHLR-L2-1320, DC1-SWD-L3-CX-2960 SS, QTS-1020 | 100% | 2026-08-11 | 2026-08-11 | ROS | Commissioning | DH1300 | L3 | CHILLER | DELETED | DH1100 |  |
| DC1-CHLR-L3-Cx-3180 | **DELETED** DC1-CHLR-1RT40-E13 L3 Startup | 2d | 2026-07-15 A | 2026-07-15 A | QTS-1020 | 100% | 2026-08-14 | 2026-08-17 | TAS | Commissioning | DH1300 | L3 | CHILLER | DELETED | DH1100 |  |
| DC1-CHLR-L3-Cx-3190 | **DELETED** DC1-CHLR-1RT40-E13 BMS/EPMS Programming | 1d | 2026-07-15 A | 2026-07-15 A | DC1-CHLR-L3-Cx-3180, QTS-1020 | 100% | 2026-08-18 | 2026-08-18 | PRM | Commissioning | DH1300 | L3 | CHILLER | DELETED | DH1100 |  |
| DC1-CHLR-L3-Cx-3200 | **DELETED** DC1-CHLR-1RT40-F13 FTE | 1d | 2026-07-15 A | 2026-07-15 A | DC1-CHLR-L2-1330, DC1-SWD-L3-CX-2990 SS, QTS-1020 | 100% | 2026-08-11 | 2026-08-11 | ROS | Commissioning | DH1300 | L3 | CHILLER | DELETED | DH1100 |  |
| DC1-CHLR-L3-Cx-3210 | **DELETED** DC1-CHLR-1RT40-F13 L3 Startup | 2d | 2026-07-15 A | 2026-07-15 A | QTS-1020 | 100% | 2026-08-14 | 2026-08-17 | TAS | Commissioning | DH1300 | L3 | CHILLER | DELETED | DH1100 |  |
| DC1-CHLR-L3-Cx-3220 | **DELETED** DC1-CHLR-1RT40-F13 BMS/EPMS Programming | 1d | 2026-07-15 A | 2026-07-15 A | DC1-CHLR-L3-Cx-3210, QTS-1020 | 100% | 2026-08-18 | 2026-08-18 | PRM | Commissioning | DH1300 | L3 | CHILLER | DELETED | DH1100 |  |
| DC1-CHLR-L3-Cx-3230 | **DELETED** DC1-CHLR-1RT40-R13 FTE | 1d | 2026-07-15 A | 2026-07-15 A | DC1-CHLR-L2-1340, DC1-SWD-L3-CX-3020 SS, QTS-1020 | 100% | 2026-08-13 | 2026-08-13 | ROS | Commissioning | DH1300 | L3 | CHILLER | DELETED | DH1100 |  |
| DC1-CHLR-L3-Cx-3240 | **DELETED** DC1-CHLR-1RT40-R13 L3 Startup | 2d | 2026-07-15 A | 2026-07-15 A | QTS-1020 | 100% | 2026-08-18 | 2026-08-19 | TAS | Commissioning | DH1300 | L3 | CHILLER | DELETED | DH1100 |  |
| DC1-CHLR-L3-Cx-3250 | **DELETED** DC1-CHLR-1RT40-R13 BMS/EPMS Programming | 1d | 2026-07-15 A | 2026-07-15 A | DC1-CHLR-L3-Cx-3240, QTS-1020 | 100% | 2026-08-20 | 2026-08-20 | PRM | Commissioning | DH1300 | L3 | CHILLER | DELETED | DH1100 |  |
| DC1-CHLR-L3-Cx-3260 | **DELETED** DC1-CHLR-1RT40-A13 Heat Up | 2d | 2026-07-15 A | 2026-07-15 A | QTS-1020 | 100% | 2026-08-12 | 2026-08-13 | LAY | Commissioning | DH1300 | L3 | CHILLER | DELETED | DH1100 |  |
| DC1-CHLR-L3-Cx-3270 | **DELETED** DC1-CHLR-1RT40-B13 Heat Up | 2d | 2026-07-15 A | 2026-07-15 A | QTS-1020 | 100% | 2026-08-12 | 2026-08-13 | LAY | Commissioning | DH1300 | L3 | CHILLER | DELETED | DH1100 |  |
| DC1-CHLR-L3-Cx-3280 | **DELETED** DC1-CHLR-1RT40-C13 Heat Up | 2d | 2026-07-15 A | 2026-07-15 A | QTS-1020 | 100% | 2026-08-12 | 2026-08-13 | LAY | Commissioning | DH1300 | L3 | CHILLER | DELETED | DH1100 |  |
| DC1-CHLR-L3-Cx-3290 | **DELETED** DC1-CHLR-1RT40-D13 Heat Up | 2d | 2026-07-15 A | 2026-07-15 A | QTS-1020 | 100% | 2026-08-12 | 2026-08-13 | LAY | Commissioning | DH1300 | L3 | CHILLER | DELETED | DH1100 |  |
| DC1-CHLR-L3-Cx-3300 | **DELETED** DC1-CHLR-1RT40-E13 Heat Up | 2d | 2026-07-15 A | 2026-07-15 A | QTS-1020 | 100% | 2026-08-12 | 2026-08-13 | LAY | Commissioning | DH1300 | L3 | CHILLER | DELETED | DH1100 |  |
| DC1-CHLR-L3-Cx-3310 | **DELETED** DC1-CHLR-1RT40-F13 Heat Up | 2d | 2026-07-15 A | 2026-07-15 A | QTS-1020 | 100% | 2026-08-12 | 2026-08-13 | LAY | Commissioning | DH1300 | L3 | CHILLER | DELETED | DH1100 |  |
| DC1-CHLR-L3-Cx-3320 | **DELETED** DC1-CHLR-1RT40-R13 Heat Up | 2d | 2026-07-15 A | 2026-07-15 A | QTS-1020 | 100% | 2026-08-14 | 2026-08-17 | LAY | Commissioning | DH1300 | L3 | CHILLER | DELETED | DH1100 |  |
| DC1-CHWP-L2-Cx-2140 | **DELETED** DH1200 CHWP-1RT40-A12 L2 Checklist | 2d | 2026-07-15 A | 2026-07-16 A | QTS-1020 | 100% | 2026-07-13 | 2026-07-14 | LAY | Commissioning | DH1200 | L2 | CHWP | DELETED | DH1100 | CFCI |
| DC1-CHWP-L2-Cx-2150 | **DELETED** DH1200 CHWP-1RT40-B12 L2 Checklist | 2d | 2026-07-15 A | 2026-07-16 A | QTS-1020 | 100% | 2026-07-13 | 2026-07-14 | LAY | Commissioning | DH1200 | L2 | CHWP | DELETED | DH1100 | CFCI |
| DC1-CHWP-L2-Cx-2160 | **DELETED** DH1200 CHWP-1RT40-C12 L2 Checklist | 2d | 2026-07-15 A | 2026-07-16 A | QTS-1020 | 100% | 2026-07-13 | 2026-07-14 | LAY | Commissioning | DH1200 | L2 | CHWP | DELETED | DH1100 | CFCI |
| DC1-CHWP-L2-Cx-2170 | **DELETED** DH1200 CHWP-1RT40-D12 L2 Checklist | 2d | 2026-07-15 A | 2026-07-16 A | QTS-1020 | 100% | 2026-07-13 | 2026-07-14 | LAY | Commissioning | DH1200 | L2 | CHWP | DELETED | DH1100 | CFCI |
| DC1-CHWP-L2-Cx-2180 | **DELETED** DH1200 CHWP-1RT40-E12 L2 Checklist | 2d | 2026-07-15 A | 2026-07-16 A | QTS-1020 | 100% | 2026-07-13 | 2026-07-14 | LAY | Commissioning | DH1200 | L2 | CHWP | DELETED | DH1100 | CFCI |
| DC1-CHWP-L2-Cx-2190 | **DELETED** DH1200 CHWP-1RT40-F12 L2 Checklist | 2d | 2026-07-15 A | 2026-07-16 A | QTS-1020 | 100% | 2026-07-13 | 2026-07-14 | LAY | Commissioning | DH1200 | L2 | CHWP | DELETED | DH1100 | CFCI |
| DC1-CHWP-L2-Cx-2200 | **DELETED** DH1200 CHWP-1RT40-R12 L2 Checklist | 2d | 2026-07-15 A | 2026-07-16 A | QTS-1020 | 100% | 2026-07-13 | 2026-07-14 | LAY | Commissioning | DH1200 | L2 | CHWP | DELETED | DH1100 | CFCI |
| DC1-CHWP-L2-Cx-2210 | **DELETED** DH2300 CHWP-1RT40-A23 L2 Checklist | 3d | 2026-07-15 A | 2026-07-15 A | QTS-1020 | 100% | 2026-07-27 | 2026-07-29 | LAY | Commissioning | DH2300 | L2 | CHWP | DELETED | DH1100 | CFCI |
| DC1-CHWP-L2-Cx-2220 | **DELETED** DH2300 CHWP-1RT40-B23 L2 Checklist | 3d | 2026-07-15 A | 2026-07-15 A | QTS-1020 | 100% | 2026-07-30 | 2026-08-03 | LAY | Commissioning | DH2300 | L2 | CHWP | DELETED | DH1100 | CFCI |
| DC1-CHWP-L2-Cx-2230 | **DELETED** DH2300 CHWP-1RT40-C23 L2 Checklist | 3d | 2026-07-15 A | 2026-07-15 A | QTS-1020 | 100% | 2026-08-04 | 2026-08-06 | LAY | Commissioning | DH2300 | L2 | CHWP | DELETED | DH1100 | CFCI |
| DC1-CHWP-L2-Cx-2240 | **DELETED** DH2300 CHWP-1RT40-D23 L2 Checklist | 3d | 2026-07-15 A | 2026-07-15 A | QTS-1020 | 100% | 2026-07-27 | 2026-07-29 | LAY | Commissioning | DH2300 | L2 | CHWP | DELETED | DH1100 | CFCI |
| DC1-CHWP-L2-Cx-2250 | **DELETED** DH2300 CHWP-1RT40-E23 L2 Checklist | 3d | 2026-07-15 A | 2026-07-15 A | QTS-1020 | 100% | 2026-07-30 | 2026-08-03 | LAY | Commissioning | DH2300 | L2 | CHWP | DELETED | DH1100 | CFCI |
| DC1-CHWP-L2-Cx-2260 | **DELETED** DH2300 CHWP-1RT40-F23 L2 Checklist | 3d | 2026-07-15 A | 2026-07-15 A | QTS-1020 | 100% | 2026-08-04 | 2026-08-06 | LAY | Commissioning | DH2300 | L2 | CHWP | DELETED | DH1100 | CFCI |
| DC1-CHWP-L2-Cx-2270 | **DELETED** DH2300 CHWP-1RT40-R23 L2 Checklist | 3d | 2026-07-15 A | 2026-07-15 A | QTS-1020 | 100% | 2026-08-07 | 2026-08-11 | LAY | Commissioning | DH2300 | L2 | CHWP | DELETED | DH1100 | CFCI |
| DC1-CHWP-L2-Cx-2280 | **DELETED** **DELETED** DH1300 CHWP-1RT40-A13 L2 Checklist | 3d | 2026-07-15 A | 2026-07-15 A | QTS-1020 | 100% | 2026-07-27 | 2026-07-29 | LAY | Commissioning | DH1300 | L2 | CHWP | DELETED | DH1100 | CFCI |

Notes:
- DC1-CHLR-L3-Cx-2780: Steps: EC Startup Report; MC Startup Report; Vendor Startup
- DC1-CHLR-L3-Cx-2810: Steps: EC Startup Report; MC Startup Report; Vendor Startup
- DC1-CHLR-L3-Cx-2840: Steps: EC Startup Report; MC Startup Report; Vendor Startup
- DC1-CHLR-L3-Cx-2870: Steps: EC Startup Report; MC Startup Report; Vendor Startup
- DC1-CHLR-L3-Cx-2900: Steps: EC Startup Report; MC Startup Report; Vendor Startup
- DC1-CHLR-L3-Cx-2930: Steps: EC Startup Report; MC Startup Report; Vendor Startup
- DC1-CHLR-L3-Cx-2960: Steps: EC Startup Report; MC Startup Report; Vendor Startup
- DC1-CHLR-L3-Cx-3060: Steps: EC Startup Report; MC Startup Report; Vendor Startup
- DC1-CHLR-L3-Cx-3090: Steps: EC Startup Report; MC Startup Report; Vendor Startup
- DC1-CHLR-L3-Cx-3120: Steps: EC Startup Report; MC Startup Report; Vendor Startup
- DC1-CHLR-L3-Cx-3150: Steps: EC Startup Report; MC Startup Report; Vendor Startup
- DC1-CHLR-L3-Cx-3180: Steps: EC Startup Report; MC Startup Report; Vendor Startup
- DC1-CHLR-L3-Cx-3210: Steps: EC Startup Report; MC Startup Report; Vendor Startup
- DC1-CHLR-L3-Cx-3240: Steps: EC Startup Report; MC Startup Report; Vendor Startup
- DC1-CHWP-L2-Cx-2140: Steps: EC Installation Checklist (done); MC Installation Checklist; CC Installation Checklist (done); Vendor Pre-Energization Checklist (done); CXA Pre-Energization Inspection; PEI/Clean-Walk
- DC1-CHWP-L2-Cx-2150: Steps: EC Installation Checklist (done); MC Installation Checklist; CC Installation Checklist (done); Vendor Pre-Energization Checklist (done); CXA Pre-Energization Inspection; PEI/Clean-Walk
- DC1-CHWP-L2-Cx-2160: Steps: EC Installation Checklist (done); MC Installation Checklist; CC Installation Checklist (done); Vendor Pre-Energization Checklist (done); CXA Pre-Energization Inspection; PEI/Clean-Walk
- DC1-CHWP-L2-Cx-2170: Steps: EC Installation Checklist (done); MC Installation Checklist; CC Installation Checklist (done); Vendor Pre-Energization Checklist (done); CXA Pre-Energization Inspection; PEI/Clean-Walk
- DC1-CHWP-L2-Cx-2180: Steps: EC Installation Checklist (done); MC Installation Checklist; CC Installation Checklist (done); Vendor Pre-Energization Checklist (done); CXA Pre-Energization Inspection; PEI/Clean-Walk
- DC1-CHWP-L2-Cx-2190: Steps: EC Installation Checklist (done); MC Installation Checklist; CC Installation Checklist (done); Vendor Pre-Energization Checklist (done); CXA Pre-Energization Inspection; PEI/Clean-Walk
- DC1-CHWP-L2-Cx-2200: Steps: EC Installation Checklist (done); MC Installation Checklist; CC Installation Checklist (done); Vendor Pre-Energization Checklist (done); CXA Pre-Energization Inspection; PEI/Clean-Walk
- DC1-CHWP-L2-Cx-2210: Steps: EC Installation Checklist; MC Installation Checklist; CC Installation Checklist; Vendor Pre-Energization Checklist; CXA Pre-Energization Inspection; PEI/Clean-Walk
- DC1-CHWP-L2-Cx-2220: Steps: EC Installation Checklist; MC Installation Checklist; CC Installation Checklist; Vendor Pre-Energization Checklist; CXA Pre-Energization Inspection; PEI/Clean-Walk
- DC1-CHWP-L2-Cx-2230: Steps: EC Installation Checklist; MC Installation Checklist; CC Installation Checklist; Vendor Pre-Energization Checklist; CXA Pre-Energization Inspection; PEI/Clean-Walk
- DC1-CHWP-L2-Cx-2240: Steps: EC Installation Checklist; MC Installation Checklist; CC Installation Checklist; Vendor Pre-Energization Checklist; CXA Pre-Energization Inspection; PEI/Clean-Walk
- DC1-CHWP-L2-Cx-2250: Steps: EC Installation Checklist; MC Installation Checklist; CC Installation Checklist; Vendor Pre-Energization Checklist; CXA Pre-Energization Inspection; PEI/Clean-Walk
- DC1-CHWP-L2-Cx-2260: Steps: EC Installation Checklist; MC Installation Checklist; CC Installation Checklist; Vendor Pre-Energization Checklist; CXA Pre-Energization Inspection; PEI/Clean-Walk
- DC1-CHWP-L2-Cx-2270: Steps: EC Installation Checklist; MC Installation Checklist; CC Installation Checklist; Vendor Pre-Energization Checklist; CXA Pre-Energization Inspection; PEI/Clean-Walk
- DC1-CHWP-L2-Cx-2280: Steps: EC Installation Checklist; MC Installation Checklist; CC Installation Checklist; Vendor Pre-Energization Checklist; CXA Pre-Energization Inspection; PEI/Clean-Walk

| ID | Activity | Duration | Start | Finish | Predecessors | Complete | Planned start | Planned finish | Notes | Vendor Responsible Party | Layton Discipline | Location | CX Level | Equipment | DELETED | D |
| --- | --- | --- | --- | --- | --- | --- | --- | --- | --- | --- | --- | --- | --- | --- | --- | --- |
| DC1-CHWP-L2-Cx-2290 | **DELETED** **DELETED** DH1300 CHWP-1RT40-B13 L2 Checklist | 3d | 2026-07-15 A | 2026-07-15 A | QTS-1020 | 100% | 2026-07-30 | 2026-08-03 | CFCI | LAY | Commissioning | DH1300 | L2 | CHWP | DELETED | DH1100 |
| DC1-CHWP-L2-Cx-2300 | **DELETED** **DELETED** DH1300 CHWP-1RT40-C13 L2 Checklist | 3d | 2026-07-15 A | 2026-07-15 A | QTS-1020 | 100% | 2026-08-04 | 2026-08-06 | CFCI | LAY | Commissioning | DH1300 | L2 | CHWP | DELETED | DH1100 |
| DC1-CHWP-L2-Cx-2310 | **DELETED** **DELETED** DH1300 CHWP-1RT40-D13 L2 Checklist | 3d | 2026-07-15 A | 2026-07-15 A | QTS-1020 | 100% | 2026-08-07 | 2026-08-11 | CFCI | LAY | Commissioning | DH1300 | L2 | CHWP | DELETED | DH1100 |
| DC1-CHWP-L2-Cx-2320 | **DELETED** **DELETED** DH1300 CHWP-1RT40-E13 L2 Checklist | 3d | 2026-07-15 A | 2026-07-15 A | QTS-1020 | 100% | 2026-08-12 | 2026-08-14 | CFCI | LAY | Commissioning | DH1300 | L2 | CHWP | DELETED | DH1100 |
| DC1-CHWP-L2-Cx-2330 | **DELETED** **DELETED** DH1300 CHWP-1RT40-F13 L2 Checklist | 3d | 2026-07-15 A | 2026-07-15 A | QTS-1020 | 100% | 2026-08-17 | 2026-08-19 | CFCI | LAY | Commissioning | DH1300 | L2 | CHWP | DELETED | DH1100 |
| DC1-CHWP-L2-Cx-2340 | **DELETED** **DELETED** DH1300 CHWP-1RT40-R13 L2 Checklist | 3d | 2026-07-15 A | 2026-07-15 A | QTS-1020 | 100% | 2026-08-20 | 2026-08-24 | CFCI | LAY | Commissioning | DH1300 | L2 | CHWP | DELETED | DH1100 |
| DC1-CHWP-L3-Cx-2630 | **DELETED** DC1-CHWP-1RT40-A23 FTE | 1d | 2026-07-15 A | 2026-07-15 A | QTS-1020 | 100% | 2026-08-17 | 2026-08-17 | CFCI | ROS | Commissioning | DH2300 | L3 | CHWP | DELETED | DH1100 |
| DC1-CHWP-L3-Cx-2640 | **DELETED** DC1-CHWP1RT40-A23 L3 Startup | 2d | 2026-07-15 A | 2026-07-15 A | QTS-1020 | 100% | 2026-08-18 | 2026-08-19 | CFCI | LAY | Commissioning | DH2300 | L3 | CHWP | DELETED | DH1100 |
| DC1-CHWP-L3-Cx-2650 | **DELETED** DC1-CHWP-1RT40-A23 BMS/EPMS Programming | 1d | 2026-07-15 A | 2026-07-15 A | QTS-1020 | 100% | 2026-08-20 | 2026-08-20 | CFCI | PRM | Commissioning | DH2300 | L3 | CHWP | DELETED | DH1100 |
| DC1-CHWP-L3-Cx-2660 | **DELETED** DC1-CHWP-1RT40-B23 FTE | 1d | 2026-07-15 A | 2026-07-15 A | QTS-1020 | 100% | 2026-08-18 | 2026-08-18 | CFCI | ROS | Commissioning | DH2300 | L3 | CHWP | DELETED | DH1100 |
| DC1-CHWP-L3-Cx-2670 | **DELETED** DC1-CHWP-1RT40-B23 L3 Startup | 2d | 2026-07-15 A | 2026-07-15 A | QTS-1020 | 100% | 2026-08-19 | 2026-08-20 | CFCI | LAY | Commissioning | DH2300 | L3 | CHWP | DELETED | DH1100 |
| DC1-CHWP-L3-Cx-2680 | **DELETED** DC1-CHWP-1RT40-B23 BMS/EPMS Programming | 1d | 2026-07-15 A | 2026-07-15 A | QTS-1020 | 100% | 2026-08-21 | 2026-08-21 | CFCI | PRM | Commissioning | DH2300 | L3 | CHWP | DELETED | DH1100 |
| DC1-CHWP-L3-Cx-2690 | **DELETED** DC1-CHWP-1RT40-C23 FTE | 1d | 2026-07-15 A | 2026-07-15 A | QTS-1020 | 100% | 2026-08-19 | 2026-08-19 | CFCI | ROS | Commissioning | DH2300 | L3 | CHWP | DELETED | DH1100 |
| DC1-CHWP-L3-Cx-2700 | **DELETED** DC1-CHWP-1RT40-C23 L3 Startup | 2d | 2026-07-15 A | 2026-07-15 A | QTS-1020 | 100% | 2026-08-20 | 2026-08-21 | CFCI | LAY | Commissioning | DH2300 | L3 | CHWP | DELETED | DH1100 |
| DC1-CHWP-L3-Cx-2710 | **DELETED** DC1-CHWP-1RT40-C23 BMS/EPMS Programming | 1d | 2026-07-15 A | 2026-07-15 A | QTS-1020 | 100% | 2026-08-24 | 2026-08-24 | CFCI | PRM | Commissioning | DH2300 | L3 | CHWP | DELETED | DH1100 |
| DC1-CHWP-L3-Cx-2720 | **DELETED** DC1-CHWP-1RT40-D23 FTE | 1d | 2026-07-15 A | 2026-07-15 A | QTS-1020 | 100% | 2026-08-20 | 2026-08-20 | CFCI | ROS | Commissioning | DH2300 | L3 | CHWP | DELETED | DH1100 |
| DC1-CHWP-L3-Cx-2730 | **DELETED** DC1-CHWP-1RT40-D23 L3 Startup | 2d | 2026-07-15 A | 2026-07-15 A | QTS-1020 | 100% | 2026-08-21 | 2026-08-24 | CFCI | LAY | Commissioning | DH2300 | L3 | CHWP | DELETED | DH1100 |
| DC1-CHWP-L3-Cx-2740 | **DELETED** DC1-CHWP-1RT40-D23 BMS/EPMS Programming | 1d | 2026-07-15 A | 2026-07-15 A | QTS-1020 | 100% | 2026-08-25 | 2026-08-25 | CFCI | PRM | Commissioning | DH2300 | L3 | CHWP | DELETED | DH1100 |
| DC1-CHWP-L3-Cx-2750 | **DELETED** DC1-CHWP-1RT40-E23 FTE | 1d | 2026-07-15 A | 2026-07-15 A | QTS-1020 | 100% | 2026-08-21 | 2026-08-21 | CFCI | ROS | Commissioning | DH2300 | L3 | CHWP | DELETED | DH1100 |
| DC1-CHWP-L3-Cx-2760 | **DELETED** DC1-CHWP-1RT40-E23 L3 Startup | 2d | 2026-07-15 A | 2026-07-15 A | QTS-1020 | 100% | 2026-08-24 | 2026-08-25 | CFCI | LAY | Commissioning | DH2300 | L3 | CHWP | DELETED | DH1100 |
| DC1-CHWP-L3-Cx-2770 | **DELETED** DC1-CHWP-1RT40-E23 BMS/EPMS Programming | 1d | 2026-07-15 A | 2026-07-15 A | QTS-1020 | 100% | 2026-08-26 | 2026-08-26 | CFCI | PRM | Commissioning | DH2300 | L3 | CHWP | DELETED | DH1100 |
| DC1-CHWP-L3-Cx-2780 | **DELETED** DC1-CHWP-1RT40-F23 FTE | 1d | 2026-07-15 A | 2026-07-15 A | QTS-1020 | 100% | 2026-08-24 | 2026-08-24 | CFCI | ROS | Commissioning | DH2300 | L3 | CHWP | DELETED | DH1100 |
| DC1-CHWP-L3-Cx-2790 | **DELETED** DC1-CHWP-1RT40-F23 L3 Startup | 2d | 2026-07-15 A | 2026-07-15 A | QTS-1020 | 100% | 2026-08-25 | 2026-08-26 | CFCI | LAY | Commissioning | DH2300 | L3 | CHWP | DELETED | DH1100 |
| DC1-CHWP-L3-Cx-2800 | **DELETED** DC1-CHWP-1RT40-F23 BMS/EPMS Programming | 1d | 2026-07-15 A | 2026-07-15 A | QTS-1020 | 100% | 2026-08-27 | 2026-08-27 | CFCI | PRM | Commissioning | DH2300 | L3 | CHWP | DELETED | DH1100 |
| DC1-CHWP-L3-Cx-2810 | **DELETED** DC1-CHWP-1RT40-R23 FTE | 1d | 2026-07-15 A | 2026-07-15 A | QTS-1020 | 100% | 2026-08-25 | 2026-08-25 | CFCI | ROS | Commissioning | DH2300 | L3 | CHWP | DELETED | DH1100 |
| DC1-CHWP-L3-Cx-2820 | **DELETED** DC1-CHWP-1RT40-R23 L3 Startup | 2d | 2026-07-15 A | 2026-07-15 A | QTS-1020 | 100% | 2026-08-26 | 2026-08-27 | CFCI | LAY | Commissioning | DH2300 | L3 | CHWP | DELETED | DH1100 |
| DC1-CHWP-L3-Cx-2830 | **DELETED** DC1-CHWP-1RT40-R23 BMS/EPMS Programming | 1d | 2026-07-15 A | 2026-07-15 A | QTS-1020 | 100% | 2026-08-28 | 2026-08-28 | CFCI | PRM | Commissioning | DH2300 | L3 | CHWP | DELETED | DH1100 |
| DC1-CHWP-L3-Cx-2840 | **DELETED** DC1-CHWP-1RT40-A13 FTE | 1d | 2026-07-15 A | 2026-07-15 A | QTS-1020 | 100% | 2026-08-17 | 2026-08-17 | CFCI | ROS | Commissioning | DH1300 | L3 | CHWP | DELETED | DH1100 |
| DC1-CHWP-L3-Cx-2850 | **DELETED** DC1-CHWP1RT40-A13 L3 Startup | 2d | 2026-07-15 A | 2026-07-15 A | QTS-1020 | 100% | 2026-08-18 | 2026-08-19 | CFCI | LAY | Commissioning | DH1300 | L3 | CHWP | DELETED | DH1100 |
| DC1-CHWP-L3-Cx-2860 | **DELETED** DC1-CHWP-1RT40-A13 BMS/EPMS Programming | 1d | 2026-07-15 A | 2026-07-15 A | QTS-1020 | 100% | 2026-08-20 | 2026-08-20 | CFCI | PRM | Commissioning | DH1300 | L3 | CHWP | DELETED | DH1100 |
| DC1-CHWP-L3-Cx-2870 | **DELETED** DC1-CHWP-1RT40-B13 FTE | 1d | 2026-07-15 A | 2026-07-15 A | QTS-1020 | 100% | 2026-08-18 | 2026-08-18 | CFCI | ROS | Commissioning | DH1300 | L3 | CHWP | DELETED | DH1100 |
| DC1-CHWP-L3-Cx-2880 | **DELETED** DC1-CHWP-1RT40-B13 L3 Startup | 2d | 2026-07-15 A | 2026-07-15 A | QTS-1020 | 100% | 2026-08-19 | 2026-08-20 | CFCI | LAY | Commissioning | DH1300 | L3 | CHWP | DELETED | DH1100 |
| DC1-CHWP-L3-Cx-2890 | **DELETED** DC1-CHWP-1RT40-B13 BMS/EPMS Programming | 1d | 2026-07-15 A | 2026-07-15 A | QTS-1020 | 100% | 2026-08-21 | 2026-08-21 | CFCI | PRM | Commissioning | DH1300 | L3 | CHWP | DELETED | DH1100 |
| DC1-CHWP-L3-Cx-2900 | **DELETED** DC1-CHWP-1RT40-C13 FTE | 1d | 2026-07-15 A | 2026-07-15 A | QTS-1020 | 100% | 2026-08-19 | 2026-08-19 | CFCI | ROS | Commissioning | DH1300 | L3 | CHWP | DELETED | DH1100 |
| DC1-CHWP-L3-Cx-2910 | **DELETED** DC1-CHWP-1RT40-C13 L3 Startup | 2d | 2026-07-15 A | 2026-07-15 A | QTS-1020 | 100% | 2026-08-20 | 2026-08-21 | CFCI | LAY | Commissioning | DH1300 | L3 | CHWP | DELETED | DH1100 |
| DC1-CHWP-L3-Cx-2920 | **DELETED** DC1-CHWP-1RT40-C13 BMS/EPMS Programming | 1d | 2026-07-15 A | 2026-07-15 A | QTS-1020 | 100% | 2026-08-24 | 2026-08-24 | CFCI | PRM | Commissioning | DH1300 | L3 | CHWP | DELETED | DH1100 |
| DC1-CHWP-L3-Cx-2930 | **DELETED** DC1-CHWP-1RT40-D13 FTE | 1d | 2026-07-15 A | 2026-07-15 A | QTS-1020 | 100% | 2026-08-20 | 2026-08-20 | CFCI | ROS | Commissioning | DH1300 | L3 | CHWP | DELETED | DH1100 |
| DC1-CHWP-L3-Cx-2940 | **DELETED** DC1-CHWP-1RT40-D13 L3 Startup | 2d | 2026-07-15 A | 2026-07-15 A | QTS-1020 | 100% | 2026-08-21 | 2026-08-24 | CFCI | LAY | Commissioning | DH1300 | L3 | CHWP | DELETED | DH1100 |
| DC1-CHWP-L3-Cx-2950 | **DELETED** DC1-CHWP-1RT40-D13 BMS/EPMS Programming | 1d | 2026-07-15 A | 2026-07-15 A | QTS-1020 | 100% | 2026-08-25 | 2026-08-25 | CFCI | PRM | Commissioning | DH1300 | L3 | CHWP | DELETED | DH1100 |
| DC1-CHWP-L3-Cx-2960 | **DELETED** DC1-CHWP-1RT40-E13 FTE | 1d | 2026-07-15 A | 2026-07-15 A | QTS-1020 | 100% | 2026-08-21 | 2026-08-21 | CFCI | ROS | Commissioning | DH1300 | L3 | CHWP | DELETED | DH1100 |
| DC1-CHWP-L3-Cx-2970 | **DELETED** DC1-CHWP-1RT40-E13 L3 Startup | 2d | 2026-07-15 A | 2026-07-15 A | QTS-1020 | 100% | 2026-08-24 | 2026-08-25 | CFCI | LAY | Commissioning | DH1300 | L3 | CHWP | DELETED | DH1100 |
| DC1-CHWP-L3-Cx-2980 | **DELETED** DC1-CHWP-1RT40-E13 BMS/EPMS Programming | 1d | 2026-07-15 A | 2026-07-15 A | QTS-1020 | 100% | 2026-08-26 | 2026-08-26 | CFCI | PRM | Commissioning | DH1300 | L3 | CHWP | DELETED | DH1100 |
| DC1-CHWP-L3-Cx-2990 | **DELETED** DC1-CHWP-1RT40-F13 FTE | 1d | 2026-07-15 A | 2026-07-15 A | QTS-1020 | 100% | 2026-08-24 | 2026-08-24 | CFCI | ROS | Commissioning | DH1300 | L3 | CHWP | DELETED | DH1100 |
| DC1-CHWP-L3-Cx-3000 | **DELETED** DC1-CHWP-1RT40-F13 L3 Startup | 2d | 2026-07-15 A | 2026-07-15 A | QTS-1020 | 100% | 2026-08-25 | 2026-08-26 | CFCI | LAY | Commissioning | DH1300 | L3 | CHWP | DELETED | DH1100 |
| DC1-CHWP-L3-Cx-3010 | **DELETED** DC1-CHWP-1RT40-F13 BMS/EPMS Programming | 1d | 2026-07-15 A | 2026-07-15 A | QTS-1020 | 100% | 2026-08-27 | 2026-08-27 | CFCI | PRM | Commissioning | DH1300 | L3 | CHWP | DELETED | DH1100 |
| DC1-CHWP-L3-Cx-3020 | **DELETED** DC1-CHWP-1RT40-R13 FTE | 1d | 2026-07-15 A | 2026-07-15 A | QTS-1020 | 100% | 2026-08-25 | 2026-08-25 | CFCI | ROS | Commissioning | DH1300 | L3 | CHWP | DELETED | DH1100 |
| DC1-CHWP-L3-Cx-3030 | **DELETED** DC1-CHWP-1RT40-R13 L3 Startup | 2d | 2026-07-15 A | 2026-07-15 A | QTS-1020 | 100% | 2026-08-26 | 2026-08-27 | CFCI | LAY | Commissioning | DH1300 | L3 | CHWP | DELETED | DH1100 |
| DC1-CHWP-L3-Cx-3040 | **DELETED** DC1-CHWP-1RT40-R13 BMS/EPMS Programming | 1d | 2026-07-15 A | 2026-07-15 A | QTS-1020 | 100% | 2026-08-28 | 2026-08-28 | CFCI | PRM | Commissioning | DH1300 | L3 | CHWP | DELETED | DH1100 |
| DC1-COD-L2-2720 | **DELETED** DH1200 COD-A12-01 L2 Checklist | 3d | 2026-07-15 A | 2026-07-16 A | QTS-1020 | 100% | 2026-07-15 | 2026-07-17 |  | SIE | Commissioning | DH1200 | L2 | COD | DELETED | DH1100 |
| DC1-COD-L2-2730 | **DELETED** DH1200 COD-A12-02 L2 Checklist | 3d | 2026-07-15 A | 2026-07-16 A | QTS-1020 | 100% | 2026-07-15 | 2026-07-17 |  | SIE | Commissioning | DH1200 | L2 | COD | DELETED | DH1100 |
| DC1-COD-L2-2740 | **DELETED** DH1200 COD-A12-03 L2 Checklist | 3d | 2026-07-15 A | 2026-07-16 A | QTS-1020 | 100% | 2026-07-15 | 2026-07-17 |  | SIE | Commissioning | DH1200 | L2 | COD | DELETED | DH1100 |
| DC1-COD-L2-2750 | **DELETED** DH1200 COD-A12-04 L2 Checklist | 3d | 2026-07-15 A | 2026-07-16 A | QTS-1020 | 100% | 2026-07-15 | 2026-07-17 |  | SIE | Commissioning | DH1200 | L2 | COD | DELETED | DH1100 |
| DC1-COD-L2-2760 | **DELETED** DH1200 COD-A12-05 L2 Checklist | 3d | 2026-07-15 A | 2026-07-16 A | QTS-1020 | 100% | 2026-07-15 | 2026-07-17 |  | SIE | Commissioning | DH1200 | L2 | COD | DELETED | DH1100 |
| DC1-COD-L2-2770 | **DELETED** DH1200 COD-A12-06 L2 Checklist | 3d | 2026-07-15 A | 2026-07-16 A | QTS-1020 | 100% | 2026-07-15 | 2026-07-17 |  | SIE | Commissioning | DH1200 | L2 | COD | DELETED | DH1100 |
| DC1-COD-L2-2780 | **DELETED** DH1200 COD-B12-01 L2 Checklist | 3d | 2026-07-15 A | 2026-07-16 A | QTS-1020 | 100% | 2026-07-15 | 2026-07-17 |  | SIE | Commissioning | DH1200 | L2 | COD | DELETED | DH1100 |
| DC1-COD-L2-2790 | **DELETED** DH1200 COD-B12-02 L2 Checklist | 3d | 2026-07-15 A | 2026-07-16 A | QTS-1020 | 100% | 2026-07-15 | 2026-07-17 |  | SIE | Commissioning | DH1200 | L2 | COD | DELETED | DH1100 |
| DC1-COD-L2-2800 | **DELETED** DH1200 COD-B12-03 L2 Checklist | 3d | 2026-07-15 A | 2026-07-16 A | QTS-1020 | 100% | 2026-07-15 | 2026-07-17 |  | SIE | Commissioning | DH1200 | L2 | COD | DELETED | DH1100 |
| DC1-COD-L2-2810 | **DELETED** DH1200 COD-B12-04 L2 Checklist | 3d | 2026-07-15 A | 2026-07-16 A | QTS-1020 | 100% | 2026-07-15 | 2026-07-17 |  | SIE | Commissioning | DH1200 | L2 | COD | DELETED | DH1100 |
| DC1-COD-L2-2820 | **DELETED** DH1200 COD-B12-05 L2 Checklist | 3d | 2026-07-15 A | 2026-07-16 A | QTS-1020 | 100% | 2026-07-15 | 2026-07-17 |  | SIE | Commissioning | DH1200 | L2 | COD | DELETED | DH1100 |
| DC1-COD-L2-2830 | **DELETED** DH1200 COD-B12-06 L2 Checklist | 3d | 2026-07-15 A | 2026-07-16 A | QTS-1020 | 100% | 2026-07-15 | 2026-07-17 |  | SIE | Commissioning | DH1200 | L2 | COD | DELETED | DH1100 |
| DC1-COD-L2-2840 | **DELETED** DH1200 COD-C12-01 L2 Checklist | 3d | 2026-07-15 A | 2026-07-16 A | QTS-1020 | 100% | 2026-07-15 | 2026-07-17 |  | SIE | Commissioning | DH1200 | L2 | COD | DELETED | DH1100 |
| DC1-COD-L2-2850 | **DELETED** DH1200 COD-C12-02 L2 Checklist | 3d | 2026-07-15 A | 2026-07-16 A | QTS-1020 | 100% | 2026-07-15 | 2026-07-17 |  | SIE | Commissioning | DH1200 | L2 | COD | DELETED | DH1100 |
| DC1-COD-L2-2860 | **DELETED** DH1200 COD-C12-03 L2 Checklist | 3d | 2026-07-15 A | 2026-07-16 A | QTS-1020 | 100% | 2026-07-15 | 2026-07-17 |  | SIE | Commissioning | DH1200 | L2 | COD | DELETED | DH1100 |
| DC1-COD-L2-2870 | **DELETED** DH1200 COD-C12-04 L2 Checklist | 3d | 2026-07-15 A | 2026-07-16 A | QTS-1020 | 100% | 2026-07-15 | 2026-07-17 |  | SIE | Commissioning | DH1200 | L2 | COD | DELETED | DH1100 |
| DC1-COD-L2-2880 | **DELETED** DH1200 COD-C12-05 L2 Checklist | 3d | 2026-07-15 A | 2026-07-16 A | QTS-1020 | 100% | 2026-07-15 | 2026-07-17 |  | SIE | Commissioning | DH1200 | L2 | COD | DELETED | DH1100 |
| DC1-COD-L2-2890 | **DELETED** DH1200 COD-C12-06 L2 Checklist | 3d | 2026-07-15 A | 2026-07-16 A | QTS-1020 | 100% | 2026-07-15 | 2026-07-17 |  | SIE | Commissioning | DH1200 | L2 | COD | DELETED | DH1100 |
| DC1-COD-L2-2900 | **DELETED** DH1200 COD-D12-01 L2 Checklist | 3d | 2026-07-15 A | 2026-07-16 A | QTS-1020 | 100% | 2026-07-15 | 2026-07-17 |  | SIE | Commissioning | DH1200 | L2 | COD | DELETED | DH1100 |
| DC1-COD-L2-2910 | **DELETED** DH1200 COD-D12-02 L2 Checklist | 3d | 2026-07-15 A | 2026-07-16 A | QTS-1020 | 100% | 2026-07-15 | 2026-07-17 |  | SIE | Commissioning | DH1200 | L2 | COD | DELETED | DH1100 |
| DC1-COD-L2-2920 | **DELETED** DH1200 COD-D12-03 L2 Checklist | 3d | 2026-07-15 A | 2026-07-16 A | QTS-1020 | 100% | 2026-07-15 | 2026-07-17 |  | SIE | Commissioning | DH1200 | L2 | COD | DELETED | DH1100 |
| DC1-COD-L2-2930 | **DELETED** DH1200 COD-D12-04 L2 Checklist | 3d | 2026-07-15 A | 2026-07-16 A | QTS-1020 | 100% | 2026-07-15 | 2026-07-17 |  | SIE | Commissioning | DH1200 | L2 | COD | DELETED | DH1100 |

Notes:
- DC1-CHWP-L2-Cx-2290: Steps: EC Installation Checklist; MC Installation Checklist; CC Installation Checklist; Vendor Pre-Energization Checklist; CXA Pre-Energization Inspection; PEI/Clean-Walk
- DC1-CHWP-L2-Cx-2300: Steps: EC Installation Checklist; MC Installation Checklist; CC Installation Checklist; Vendor Pre-Energization Checklist; CXA Pre-Energization Inspection; PEI/Clean-Walk
- DC1-CHWP-L2-Cx-2310: Steps: EC Installation Checklist; MC Installation Checklist; CC Installation Checklist; Vendor Pre-Energization Checklist; CXA Pre-Energization Inspection; PEI/Clean-Walk
- DC1-CHWP-L2-Cx-2320: Steps: EC Installation Checklist; MC Installation Checklist; CC Installation Checklist; Vendor Pre-Energization Checklist; CXA Pre-Energization Inspection; PEI/Clean-Walk
- DC1-CHWP-L2-Cx-2330: Steps: EC Installation Checklist; MC Installation Checklist; CC Installation Checklist; Vendor Pre-Energization Checklist; CXA Pre-Energization Inspection; PEI/Clean-Walk
- DC1-CHWP-L2-Cx-2340: Steps: EC Installation Checklist; MC Installation Checklist; CC Installation Checklist; Vendor Pre-Energization Checklist; CXA Pre-Energization Inspection; PEI/Clean-Walk
- DC1-CHWP-L3-Cx-2640: Steps: EC Startup Report; MC Startup Report; Vendor Startup
- DC1-CHWP-L3-Cx-2670: Steps: EC Startup Report; MC Startup Report; Vendor Startup
- DC1-CHWP-L3-Cx-2700: Steps: EC Startup Report; MC Startup Report; Vendor Startup
- DC1-CHWP-L3-Cx-2730: Steps: EC Startup Report; MC Startup Report; Vendor Startup
- DC1-CHWP-L3-Cx-2760: Steps: EC Startup Report; MC Startup Report; Vendor Startup
- DC1-CHWP-L3-Cx-2790: Steps: EC Startup Report; MC Startup Report; Vendor Startup
- DC1-CHWP-L3-Cx-2820: Steps: EC Startup Report; MC Startup Report; Vendor Startup
- DC1-CHWP-L3-Cx-2850: Steps: EC Startup Report; MC Startup Report; Vendor Startup
- DC1-CHWP-L3-Cx-2880: Steps: EC Startup Report; MC Startup Report; Vendor Startup
- DC1-CHWP-L3-Cx-2910: Steps: EC Startup Report; MC Startup Report; Vendor Startup
- DC1-CHWP-L3-Cx-2940: Steps: EC Startup Report; MC Startup Report; Vendor Startup
- DC1-CHWP-L3-Cx-2970: Steps: EC Startup Report; MC Startup Report; Vendor Startup
- DC1-CHWP-L3-Cx-3000: Steps: EC Startup Report; MC Startup Report; Vendor Startup
- DC1-CHWP-L3-Cx-3030: Steps: EC Startup Report; MC Startup Report; Vendor Startup
- DC1-COD-L2-2720: Steps: EC Installation Checklist; CC Installation Checklist; Vendor Pre-Energization Checklist (done); CXA Pre-Energization Inspection; PEI/Clean-Walk
- DC1-COD-L2-2730: Steps: EC Installation Checklist; CC Installation Checklist; Vendor Pre-Energization Checklist (done); CXA Pre-Energization Inspection; PEI/Clean-Walk
- DC1-COD-L2-2740: Steps: EC Installation Checklist; CC Installation Checklist; Vendor Pre-Energization Checklist (done); CXA Pre-Energization Inspection; PEI/Clean-Walk
- DC1-COD-L2-2750: Steps: EC Installation Checklist; CC Installation Checklist; Vendor Pre-Energization Checklist (done); CXA Pre-Energization Inspection; PEI/Clean-Walk
- DC1-COD-L2-2760: Steps: EC Installation Checklist; CC Installation Checklist; Vendor Pre-Energization Checklist (done); CXA Pre-Energization Inspection; PEI/Clean-Walk
- DC1-COD-L2-2770: Steps: EC Installation Checklist; CC Installation Checklist; Vendor Pre-Energization Checklist (done); CXA Pre-Energization Inspection; PEI/Clean-Walk
- DC1-COD-L2-2780: Steps: EC Installation Checklist; CC Installation Checklist; Vendor Pre-Energization Checklist (done); CXA Pre-Energization Inspection; PEI/Clean-Walk
- DC1-COD-L2-2790: Steps: EC Installation Checklist; CC Installation Checklist; Vendor Pre-Energization Checklist (done); CXA Pre-Energization Inspection; PEI/Clean-Walk
- DC1-COD-L2-2800: Steps: EC Installation Checklist; CC Installation Checklist; Vendor Pre-Energization Checklist (done); CXA Pre-Energization Inspection; PEI/Clean-Walk
- DC1-COD-L2-2810: Steps: EC Installation Checklist; CC Installation Checklist; Vendor Pre-Energization Checklist (done); CXA Pre-Energization Inspection; PEI/Clean-Walk
- DC1-COD-L2-2820: Steps: EC Installation Checklist; CC Installation Checklist; Vendor Pre-Energization Checklist (done); CXA Pre-Energization Inspection; PEI/Clean-Walk
- DC1-COD-L2-2830: Steps: EC Installation Checklist; CC Installation Checklist; Vendor Pre-Energization Checklist (done); CXA Pre-Energization Inspection; PEI/Clean-Walk
- DC1-COD-L2-2840: Steps: EC Installation Checklist; CC Installation Checklist; Vendor Pre-Energization Checklist (done); CXA Pre-Energization Inspection; PEI/Clean-Walk
- DC1-COD-L2-2850: Steps: EC Installation Checklist; CC Installation Checklist; Vendor Pre-Energization Checklist (done); CXA Pre-Energization Inspection; PEI/Clean-Walk
- DC1-COD-L2-2860: Steps: EC Installation Checklist; CC Installation Checklist; Vendor Pre-Energization Checklist (done); CXA Pre-Energization Inspection; PEI/Clean-Walk
- DC1-COD-L2-2870: Steps: EC Installation Checklist; CC Installation Checklist; Vendor Pre-Energization Checklist (done); CXA Pre-Energization Inspection; PEI/Clean-Walk
- DC1-COD-L2-2880: Steps: EC Installation Checklist; CC Installation Checklist; Vendor Pre-Energization Checklist (done); CXA Pre-Energization Inspection; PEI/Clean-Walk
- DC1-COD-L2-2890: Steps: EC Installation Checklist; CC Installation Checklist; Vendor Pre-Energization Checklist (done); CXA Pre-Energization Inspection; PEI/Clean-Walk
- DC1-COD-L2-2900: Steps: EC Installation Checklist; CC Installation Checklist; Vendor Pre-Energization Checklist (done); CXA Pre-Energization Inspection; PEI/Clean-Walk
- DC1-COD-L2-2910: Steps: EC Installation Checklist; CC Installation Checklist; Vendor Pre-Energization Checklist (done); CXA Pre-Energization Inspection; PEI/Clean-Walk
- DC1-COD-L2-2920: Steps: EC Installation Checklist; CC Installation Checklist; Vendor Pre-Energization Checklist (done); CXA Pre-Energization Inspection; PEI/Clean-Walk
- DC1-COD-L2-2930: Steps: EC Installation Checklist; CC Installation Checklist; Vendor Pre-Energization Checklist (done); CXA Pre-Energization Inspection; PEI/Clean-Walk

| ID | Activity | Duration | Start | Finish | Predecessors | Complete | Planned start | Planned finish | Vendor Responsible Party | Layton Discipline | Location | CX Level | Equipment | DELETED | D |
| --- | --- | --- | --- | --- | --- | --- | --- | --- | --- | --- | --- | --- | --- | --- | --- |
| DC1-COD-L2-2940 | **DELETED** DH1200 COD-D12-05 L2 Checklist | 3d | 2026-07-15 A | 2026-07-16 A | QTS-1020 | 100% | 2026-07-15 | 2026-07-17 | SIE | Commissioning | DH1200 | L2 | COD | DELETED | DH1100 |
| DC1-COD-L2-2950 | **DELETED** DH1200 COD-D12-06 L2 Checklist | 3d | 2026-07-15 A | 2026-07-16 A | QTS-1020 | 100% | 2026-07-15 | 2026-07-17 | SIE | Commissioning | DH1200 | L2 | COD | DELETED | DH1100 |
| DC1-COD-L2-2960 | **DELETED** DH1200 COD-E12-01 L2 Checklist | 3d | 2026-07-15 A | 2026-07-16 A | QTS-1020 | 100% | 2026-07-15 | 2026-07-17 | SIE | Commissioning | DH1200 | L2 | COD | DELETED | DH1100 |
| DC1-COD-L2-2970 | **DELETED** DH1200 COD-E12-02 L2 Checklist | 3d | 2026-07-15 A | 2026-07-16 A | QTS-1020 | 100% | 2026-07-15 | 2026-07-17 | SIE | Commissioning | DH1200 | L2 | COD | DELETED | DH1100 |
| DC1-COD-L2-2980 | **DELETED** DH1200 COD-E12-03 L2 Checklist | 3d | 2026-07-15 A | 2026-07-16 A | QTS-1020 | 100% | 2026-07-15 | 2026-07-17 | SIE | Commissioning | DH1200 | L2 | COD | DELETED | DH1100 |
| DC1-COD-L2-2990 | **DELETED** DH1200 COD-E12-04 L2 Checklist | 3d | 2026-07-15 A | 2026-07-16 A | QTS-1020 | 100% | 2026-07-15 | 2026-07-17 | SIE | Commissioning | DH1200 | L2 | COD | DELETED | DH1100 |
| DC1-COD-L2-3000 | **DELETED** DH1200 COD-E12-05 L2 Checklist | 3d | 2026-07-15 A | 2026-07-16 A | QTS-1020 | 100% | 2026-07-15 | 2026-07-17 | SIE | Commissioning | DH1200 | L2 | COD | DELETED | DH1100 |
| DC1-COD-L2-3010 | **DELETED** DH1200 COD-E12-06 L2 Checklist | 3d | 2026-07-15 A | 2026-07-16 A | QTS-1020 | 100% | 2026-07-15 | 2026-07-17 | SIE | Commissioning | DH1200 | L2 | COD | DELETED | DH1100 |
| DC1-COD-L2-3020 | **DELETED** DH1200 COD-F12-01 L2 Checklist | 3d | 2026-07-15 A | 2026-07-16 A | QTS-1020 | 100% | 2026-07-15 | 2026-07-17 | SIE | Commissioning | DH1200 | L2 | COD | DELETED | DH1100 |
| DC1-COD-L2-3030 | **DELETED** DH1200 COD-F12-02 L2 Checklist | 3d | 2026-07-15 A | 2026-07-16 A | QTS-1020 | 100% | 2026-07-15 | 2026-07-17 | SIE | Commissioning | DH1200 | L2 | COD | DELETED | DH1100 |
| DC1-COD-L2-3040 | **DELETED** DH1200 COD-F12-03 L2 Checklist | 3d | 2026-07-15 A | 2026-07-16 A | QTS-1020 | 100% | 2026-07-15 | 2026-07-17 | SIE | Commissioning | DH1200 | L2 | COD | DELETED | DH1100 |
| DC1-COD-L2-3050 | **DELETED** DH1200 COD-F12-04 L2 Checklist | 3d | 2026-07-15 A | 2026-07-16 A | QTS-1020 | 100% | 2026-07-15 | 2026-07-17 | SIE | Commissioning | DH1200 | L2 | COD | DELETED | DH1100 |
| DC1-COD-L2-3060 | **DELETED** DH1200 COD-F12-05 L2 Checklist | 3d | 2026-07-15 A | 2026-07-16 A | QTS-1020 | 100% | 2026-07-15 | 2026-07-17 | SIE | Commissioning | DH1200 | L2 | COD | DELETED | DH1100 |
| DC1-COD-L2-3070 | **DELETED** DH1200 COD-F12-06 L2 Checklist | 3d | 2026-07-15 A | 2026-07-16 A | QTS-1020 | 100% | 2026-07-15 | 2026-07-17 | SIE | Commissioning | DH1200 | L2 | COD | DELETED | DH1100 |
| DC1-COD-L2-3080 | **DELETED** DH2300 COD-A23-01 L2 Checklist | 3d | 2026-07-15 A | 2026-07-15 A | QTS-1020 | 100% | 2026-07-15 | 2026-07-17 | SIE | Commissioning | DH2300 | L2 | COD | DELETED | DH1100 |
| DC1-COD-L2-3090 | **DELETED** DH2300 COD-A23-02 L2 Checklist | 3d | 2026-07-15 A | 2026-07-15 A | QTS-1020 | 100% | 2026-07-15 | 2026-07-17 | SIE | Commissioning | DH2300 | L2 | COD | DELETED | DH1100 |
| DC1-COD-L2-3100 | **DELETED** DH2300 COD-A23-03 L2 Checklist | 3d | 2026-07-15 A | 2026-07-15 A | QTS-1020 | 100% | 2026-07-15 | 2026-07-17 | SIE | Commissioning | DH2300 | L2 | COD | DELETED | DH1100 |
| DC1-COD-L2-3110 | **DELETED** DH2300 COD-A23-04 L2 Checklist | 3d | 2026-07-15 A | 2026-07-15 A | QTS-1020 | 100% | 2026-07-15 | 2026-07-17 | SIE | Commissioning | DH2300 | L2 | COD | DELETED | DH1100 |
| DC1-COD-L2-3120 | **DELETED** DH2300 COD-A23-05 L2 Checklist | 3d | 2026-07-15 A | 2026-07-15 A | QTS-1020 | 100% | 2026-07-15 | 2026-07-17 | SIE | Commissioning | DH2300 | L2 | COD | DELETED | DH1100 |
| DC1-COD-L2-3130 | **DELETED** DH2300 COD-A23-06 L2 Checklist | 3d | 2026-07-15 A | 2026-07-15 A | QTS-1020 | 100% | 2026-07-15 | 2026-07-17 | SIE | Commissioning | DH2300 | L2 | COD | DELETED | DH1100 |
| DC1-COD-L2-3140 | **DELETED** DH2300 COD-B23-01 L2 Checklist | 3d | 2026-07-15 A | 2026-07-15 A | QTS-1020 | 100% | 2026-07-15 | 2026-07-17 | SIE | Commissioning | DH2300 | L2 | COD | DELETED | DH1100 |
| DC1-COD-L2-3150 | **DELETED** DH2300 COD-B23-02 L2 Checklist | 3d | 2026-07-15 A | 2026-07-15 A | QTS-1020 | 100% | 2026-07-15 | 2026-07-17 | SIE | Commissioning | DH2300 | L2 | COD | DELETED | DH1100 |
| DC1-COD-L2-3160 | **DELETED** DH2300 COD-B23-03 L2 Checklist | 3d | 2026-07-15 A | 2026-07-15 A | QTS-1020 | 100% | 2026-07-15 | 2026-07-17 | SIE | Commissioning | DH2300 | L2 | COD | DELETED | DH1100 |
| DC1-COD-L2-3170 | **DELETED** DH2300 COD-B23-04 L2 Checklist | 3d | 2026-07-15 A | 2026-07-15 A | QTS-1020 | 100% | 2026-07-15 | 2026-07-17 | SIE | Commissioning | DH2300 | L2 | COD | DELETED | DH1100 |
| DC1-COD-L2-3180 | **DELETED** DH2300 COD-B23-05 L2 Checklist | 3d | 2026-07-15 A | 2026-07-15 A | QTS-1020 | 100% | 2026-07-15 | 2026-07-17 | SIE | Commissioning | DH2300 | L2 | COD | DELETED | DH1100 |
| DC1-COD-L2-3190 | **DELETED** DH2300 COD-B23-06 L2 Checklist | 3d | 2026-07-15 A | 2026-07-15 A | QTS-1020 | 100% | 2026-07-15 | 2026-07-17 | SIE | Commissioning | DH2300 | L2 | COD | DELETED | DH1100 |
| DC1-COD-L2-3200 | **DELETED** DH2300 COD-C23-01 L2 Checklist | 3d | 2026-07-15 A | 2026-07-15 A | QTS-1020 | 100% | 2026-07-15 | 2026-07-17 | SIE | Commissioning | DH2300 | L2 | COD | DELETED | DH1100 |
| DC1-COD-L2-3210 | **DELETED** DH2300 COD-C23-02 L2 Checklist | 3d | 2026-07-15 A | 2026-07-15 A | QTS-1020 | 100% | 2026-07-15 | 2026-07-17 | SIE | Commissioning | DH2300 | L2 | COD | DELETED | DH1100 |
| DC1-COD-L2-3220 | **DELETED** DH2300 COD-C23-03 L2 Checklist | 3d | 2026-07-15 A | 2026-07-15 A | QTS-1020 | 100% | 2026-07-15 | 2026-07-17 | SIE | Commissioning | DH2300 | L2 | COD | DELETED | DH1100 |
| DC1-COD-L2-3230 | **DELETED** DH2300 COD-C23-04 L2 Checklist | 3d | 2026-07-15 A | 2026-07-15 A | QTS-1020 | 100% | 2026-07-15 | 2026-07-17 | SIE | Commissioning | DH2300 | L2 | COD | DELETED | DH1100 |
| DC1-COD-L2-3240 | **DELETED** DH2300 COD-C23-05 L2 Checklist | 3d | 2026-07-15 A | 2026-07-15 A | QTS-1020 | 100% | 2026-07-15 | 2026-07-17 | SIE | Commissioning | DH2300 | L2 | COD | DELETED | DH1100 |
| DC1-COD-L2-3250 | **DELETED** DH2300 COD-C23-06 L2 Checklist | 3d | 2026-07-15 A | 2026-07-15 A | QTS-1020 | 100% | 2026-07-15 | 2026-07-17 | SIE | Commissioning | DH2300 | L2 | COD | DELETED | DH1100 |
| DC1-COD-L2-3260 | **DELETED** DH2300 COD-D23-01 L2 Checklist | 3d | 2026-07-15 A | 2026-07-15 A | QTS-1020 | 100% | 2026-07-15 | 2026-07-17 | SIE | Commissioning | DH2300 | L2 | COD | DELETED | DH1100 |
| DC1-COD-L2-3270 | **DELETED** DH2300 COD-D23-02 L2 Checklist | 3d | 2026-07-15 A | 2026-07-15 A | QTS-1020 | 100% | 2026-07-15 | 2026-07-17 | SIE | Commissioning | DH2300 | L2 | COD | DELETED | DH1100 |
| DC1-COD-L2-3280 | **DELETED** DH2300 COD-D23-03 L2 Checklist | 3d | 2026-07-15 A | 2026-07-15 A | QTS-1020 | 100% | 2026-07-15 | 2026-07-17 | SIE | Commissioning | DH2300 | L2 | COD | DELETED | DH1100 |
| DC1-COD-L2-3290 | **DELETED** DH2300 COD-D23-04 L2 Checklist | 3d | 2026-07-15 A | 2026-07-15 A | QTS-1020 | 100% | 2026-07-15 | 2026-07-17 | SIE | Commissioning | DH2300 | L2 | COD | DELETED | DH1100 |
| DC1-COD-L2-3300 | **DELETED** DH2300 COD-D23-05 L2 Checklist | 3d | 2026-07-15 A | 2026-07-15 A | QTS-1020 | 100% | 2026-07-15 | 2026-07-17 | SIE | Commissioning | DH2300 | L2 | COD | DELETED | DH1100 |
| DC1-COD-L2-3310 | **DELETED** DH2300 COD-D23-06 L2 Checklist | 3d | 2026-07-15 A | 2026-07-15 A | QTS-1020 | 100% | 2026-07-15 | 2026-07-17 | SIE | Commissioning | DH2300 | L2 | COD | DELETED | DH1100 |
| DC1-COD-L2-3320 | **DELETED** DH2300 COD-E23-01 L2 Checklist | 3d | 2026-07-15 A | 2026-07-15 A | QTS-1020 | 100% | 2026-07-15 | 2026-07-17 | SIE | Commissioning | DH2300 | L2 | COD | DELETED | DH1100 |
| DC1-COD-L2-3330 | **DELETED** DH2300 COD-E23-02 L2 Checklist | 3d | 2026-07-15 A | 2026-07-15 A | QTS-1020 | 100% | 2026-07-15 | 2026-07-17 | SIE | Commissioning | DH2300 | L2 | COD | DELETED | DH1100 |
| DC1-COD-L2-3340 | **DELETED** DH2300 COD-E23-03 L2 Checklist | 3d | 2026-07-15 A | 2026-07-15 A | QTS-1020 | 100% | 2026-07-15 | 2026-07-17 | SIE | Commissioning | DH2300 | L2 | COD | DELETED | DH1100 |
| DC1-COD-L2-3350 | **DELETED** DH2300 COD-E23-04 L2 Checklist | 3d | 2026-07-15 A | 2026-07-15 A | QTS-1020 | 100% | 2026-07-15 | 2026-07-17 | SIE | Commissioning | DH2300 | L2 | COD | DELETED | DH1100 |
| DC1-COD-L2-3360 | **DELETED** DH2300 COD-E23-05 L2 Checklist | 3d | 2026-07-15 A | 2026-07-15 A | QTS-1020 | 100% | 2026-07-15 | 2026-07-17 | SIE | Commissioning | DH2300 | L2 | COD | DELETED | DH1100 |
| DC1-COD-L2-3370 | **DELETED** DH2300 COD-E23-06 L2 Checklist | 3d | 2026-07-15 A | 2026-07-15 A | QTS-1020 | 100% | 2026-07-15 | 2026-07-17 | SIE | Commissioning | DH2300 | L2 | COD | DELETED | DH1100 |
| DC1-COD-L2-3380 | **DELETED** DH2300 COD-F23-01 L2 Checklist | 3d | 2026-07-15 A | 2026-07-15 A | QTS-1020 | 100% | 2026-07-15 | 2026-07-17 | SIE | Commissioning | DH2300 | L2 | COD | DELETED | DH1100 |
| DC1-COD-L2-3390 | **DELETED** DH2300 COD-F23-02 L2 Checklist | 3d | 2026-07-15 A | 2026-07-15 A | QTS-1020 | 100% | 2026-07-15 | 2026-07-17 | SIE | Commissioning | DH2300 | L2 | COD | DELETED | DH1100 |
| DC1-COD-L2-3400 | **DELETED** DH2300 COD-F23-03 L2 Checklist | 3d | 2026-07-15 A | 2026-07-15 A | QTS-1020 | 100% | 2026-07-15 | 2026-07-17 | SIE | Commissioning | DH2300 | L2 | COD | DELETED | DH1100 |
| DC1-COD-L2-3410 | **DELETED** DH2300 COD-F23-04 L2 Checklist | 3d | 2026-07-15 A | 2026-07-15 A | QTS-1020 | 100% | 2026-07-15 | 2026-07-17 | SIE | Commissioning | DH2300 | L2 | COD | DELETED | DH1100 |
| DC1-COD-L2-3420 | **DELETED** DH2300 COD-F23-05 L2 Checklist | 3d | 2026-07-15 A | 2026-07-15 A | QTS-1020 | 100% | 2026-07-15 | 2026-07-17 | SIE | Commissioning | DH2300 | L2 | COD | DELETED | DH1100 |
| DC1-COD-L2-3430 | **DELETED** DH2300 COD-F23-06 L2 Checklist | 3d | 2026-07-15 A | 2026-07-15 A | QTS-1020 | 100% | 2026-07-15 | 2026-07-17 | SIE | Commissioning | DH2300 | L2 | COD | DELETED | DH1100 |
| DC1-COD-L2-3440 | **DELETED** DH1300 COD-A13-01 L2 Checklist | 3d | 2026-07-15 A | 2026-07-15 A | QTS-1020 | 100% | 2026-07-15 | 2026-07-17 | SIE | Commissioning | DH1300 | L2 | COD | DELETED | DH1100 |
| DC1-COD-L2-3450 | **DELETED** DH1300 COD-A13-02 L2 Checklist | 3d | 2026-07-15 A | 2026-07-15 A | QTS-1020 | 100% | 2026-07-15 | 2026-07-17 | SIE | Commissioning | DH1300 | L2 | COD | DELETED | DH1100 |
| DC1-COD-L2-3460 | **DELETED** DH1300 COD-A13-03 L2 Checklist | 3d | 2026-07-15 A | 2026-07-15 A | QTS-1020 | 100% | 2026-07-15 | 2026-07-17 | SIE | Commissioning | DH1300 | L2 | COD | DELETED | DH1100 |
| DC1-COD-L2-3470 | **DELETED** DH1300 COD-A13-04 L2 Checklist | 3d | 2026-07-15 A | 2026-07-15 A | QTS-1020 | 100% | 2026-07-15 | 2026-07-17 | SIE | Commissioning | DH1300 | L2 | COD | DELETED | DH1100 |
| DC1-COD-L2-3480 | **DELETED** DH1300 COD-A13-05 L2 Checklist | 3d | 2026-07-15 A | 2026-07-15 A | QTS-1020 | 100% | 2026-07-15 | 2026-07-17 | SIE | Commissioning | DH1300 | L2 | COD | DELETED | DH1100 |
| DC1-COD-L2-3490 | **DELETED** DH1300 COD-A13-06 L2 Checklist | 3d | 2026-07-15 A | 2026-07-15 A | QTS-1020 | 100% | 2026-07-15 | 2026-07-17 | SIE | Commissioning | DH1300 | L2 | COD | DELETED | DH1100 |
| DC1-COD-L2-3500 | **DELETED** DH1300 COD-B13-01 L2 Checklist | 3d | 2026-07-15 A | 2026-07-15 A | QTS-1020 | 100% | 2026-07-15 | 2026-07-17 | SIE | Commissioning | DH1300 | L2 | COD | DELETED | DH1100 |
| DC1-COD-L2-3510 | **DELETED** DH1300 COD-B13-02 L2 Checklist | 3d | 2026-07-15 A | 2026-07-15 A | QTS-1020 | 100% | 2026-07-15 | 2026-07-17 | SIE | Commissioning | DH1300 | L2 | COD | DELETED | DH1100 |
| DC1-COD-L2-3520 | **DELETED** DH1300 COD-B13-03 L2 Checklist | 3d | 2026-07-15 A | 2026-07-15 A | DC1-COD-L2-3460, QTS-1020 | 100% | 2026-07-20 | 2026-07-22 | SIE | Commissioning | DH1300 | L2 | COD | DELETED | DH1100 |
| DC1-COD-L2-3530 | **DELETED** DH1300 COD-B13-04 L2 Checklist | 3d | 2026-07-15 A | 2026-07-15 A | QTS-1020 | 100% | 2026-07-15 | 2026-07-17 | SIE | Commissioning | DH1300 | L2 | COD | DELETED | DH1100 |
| DC1-COD-L2-3540 | **DELETED** DH1300 COD-B13-05 L2 Checklist | 3d | 2026-07-15 A | 2026-07-15 A | QTS-1020 | 100% | 2026-07-15 | 2026-07-17 | SIE | Commissioning | DH1300 | L2 | COD | DELETED | DH1100 |
| DC1-COD-L2-3550 | **DELETED** DH1300 COD-B13-06 L2 Checklist | 3d | 2026-07-15 A | 2026-07-15 A | QTS-1020 | 100% | 2026-07-15 | 2026-07-17 | SIE | Commissioning | DH1300 | L2 | COD | DELETED | DH1100 |
| DC1-COD-L2-3560 | **DELETED** DH1300 COD-C13-01 L2 Checklist | 3d | 2026-07-15 A | 2026-07-15 A | QTS-1020 | 100% | 2026-07-15 | 2026-07-17 | SIE | Commissioning | DH1300 | L2 | COD | DELETED | DH1100 |
| DC1-COD-L2-3570 | **DELETED** DH1300 COD-C13-02 L2 Checklist | 3d | 2026-07-15 A | 2026-07-15 A | QTS-1020 | 100% | 2026-07-15 | 2026-07-17 | SIE | Commissioning | DH1300 | L2 | COD | DELETED | DH1100 |
| DC1-COD-L2-3580 | **DELETED** DH1300 COD-C13-03 L2 Checklist | 3d | 2026-07-15 A | 2026-07-15 A | QTS-1020 | 100% | 2026-07-15 | 2026-07-17 | SIE | Commissioning | DH1300 | L2 | COD | DELETED | DH1100 |
| DC1-COD-L2-3590 | **DELETED** DH1300 COD-C13-04 L2 Checklist | 3d | 2026-07-15 A | 2026-07-15 A | QTS-1020 | 100% | 2026-07-15 | 2026-07-17 | SIE | Commissioning | DH1300 | L2 | COD | DELETED | DH1100 |
| DC1-COD-L2-3600 | **DELETED** DH1300 COD-C13-05 L2 Checklist | 3d | 2026-07-15 A | 2026-07-15 A | QTS-1020 | 100% | 2026-07-15 | 2026-07-17 | SIE | Commissioning | DH1300 | L2 | COD | DELETED | DH1100 |
| DC1-COD-L2-3610 | **DELETED** DH1300 COD-C13-06 L2 Checklist | 3d | 2026-07-15 A | 2026-07-15 A | QTS-1020 | 100% | 2026-07-15 | 2026-07-17 | SIE | Commissioning | DH1300 | L2 | COD | DELETED | DH1100 |
| DC1-COD-L2-3620 | **DELETED** DH1300 COD-D13-01 L2 Checklist | 3d | 2026-07-15 A | 2026-07-15 A | QTS-1020 | 100% | 2026-07-15 | 2026-07-17 | SIE | Commissioning | DH1300 | L2 | COD | DELETED | DH1100 |
| DC1-COD-L2-3630 | **DELETED** DH1300 COD-D13-02 L2 Checklist | 3d | 2026-07-15 A | 2026-07-15 A | QTS-1020 | 100% | 2026-07-15 | 2026-07-17 | SIE | Commissioning | DH1300 | L2 | COD | DELETED | DH1100 |

Notes:
- DC1-COD-L2-2940: Steps: EC Installation Checklist; CC Installation Checklist; Vendor Pre-Energization Checklist (done); CXA Pre-Energization Inspection; PEI/Clean-Walk
- DC1-COD-L2-2950: Steps: EC Installation Checklist; CC Installation Checklist; Vendor Pre-Energization Checklist (done); CXA Pre-Energization Inspection; PEI/Clean-Walk
- DC1-COD-L2-2960: Steps: EC Installation Checklist; CC Installation Checklist; Vendor Pre-Energization Checklist (done); CXA Pre-Energization Inspection; PEI/Clean-Walk
- DC1-COD-L2-2970: Steps: EC Installation Checklist; CC Installation Checklist; Vendor Pre-Energization Checklist (done); CXA Pre-Energization Inspection; PEI/Clean-Walk
- DC1-COD-L2-2980: Steps: EC Installation Checklist; CC Installation Checklist; Vendor Pre-Energization Checklist (done); CXA Pre-Energization Inspection; PEI/Clean-Walk
- DC1-COD-L2-2990: Steps: EC Installation Checklist; CC Installation Checklist; Vendor Pre-Energization Checklist (done); CXA Pre-Energization Inspection; PEI/Clean-Walk
- DC1-COD-L2-3000: Steps: EC Installation Checklist; CC Installation Checklist; Vendor Pre-Energization Checklist (done); CXA Pre-Energization Inspection; PEI/Clean-Walk
- DC1-COD-L2-3010: Steps: EC Installation Checklist; CC Installation Checklist; Vendor Pre-Energization Checklist (done); CXA Pre-Energization Inspection; PEI/Clean-Walk
- DC1-COD-L2-3020: Steps: EC Installation Checklist; CC Installation Checklist; Vendor Pre-Energization Checklist (done); CXA Pre-Energization Inspection; PEI/Clean-Walk
- DC1-COD-L2-3030: Steps: EC Installation Checklist; CC Installation Checklist; Vendor Pre-Energization Checklist (done); CXA Pre-Energization Inspection; PEI/Clean-Walk
- DC1-COD-L2-3040: Steps: EC Installation Checklist; CC Installation Checklist; Vendor Pre-Energization Checklist (done); CXA Pre-Energization Inspection; PEI/Clean-Walk
- DC1-COD-L2-3050: Steps: EC Installation Checklist; CC Installation Checklist; Vendor Pre-Energization Checklist (done); CXA Pre-Energization Inspection; PEI/Clean-Walk
- DC1-COD-L2-3060: Steps: EC Installation Checklist; CC Installation Checklist; Vendor Pre-Energization Checklist (done); CXA Pre-Energization Inspection; PEI/Clean-Walk
- DC1-COD-L2-3070: Steps: EC Installation Checklist; CC Installation Checklist; Vendor Pre-Energization Checklist (done); CXA Pre-Energization Inspection; PEI/Clean-Walk
- DC1-COD-L2-3080: Steps: EC Installation Checklist; CC Installation Checklist; Vendor Pre-Energization Checklist; CXA Pre-Energization Inspection; PEI/Clean-Walk
- DC1-COD-L2-3090: Steps: EC Installation Checklist; CC Installation Checklist; Vendor Pre-Energization Checklist; CXA Pre-Energization Inspection; PEI/Clean-Walk
- DC1-COD-L2-3100: Steps: EC Installation Checklist; CC Installation Checklist; Vendor Pre-Energization Checklist; CXA Pre-Energization Inspection; PEI/Clean-Walk
- DC1-COD-L2-3110: Steps: EC Installation Checklist; CC Installation Checklist; Vendor Pre-Energization Checklist; CXA Pre-Energization Inspection; PEI/Clean-Walk
- DC1-COD-L2-3120: Steps: EC Installation Checklist; CC Installation Checklist; Vendor Pre-Energization Checklist; CXA Pre-Energization Inspection; PEI/Clean-Walk
- DC1-COD-L2-3130: Steps: EC Installation Checklist; CC Installation Checklist; Vendor Pre-Energization Checklist; CXA Pre-Energization Inspection; PEI/Clean-Walk
- DC1-COD-L2-3140: Steps: EC Installation Checklist; CC Installation Checklist; Vendor Pre-Energization Checklist; CXA Pre-Energization Inspection; PEI/Clean-Walk
- DC1-COD-L2-3150: Steps: EC Installation Checklist; CC Installation Checklist; Vendor Pre-Energization Checklist; CXA Pre-Energization Inspection; PEI/Clean-Walk
- DC1-COD-L2-3160: Steps: EC Installation Checklist; CC Installation Checklist; Vendor Pre-Energization Checklist; CXA Pre-Energization Inspection; PEI/Clean-Walk
- DC1-COD-L2-3170: Steps: EC Installation Checklist; CC Installation Checklist; Vendor Pre-Energization Checklist; CXA Pre-Energization Inspection; PEI/Clean-Walk
- DC1-COD-L2-3180: Steps: EC Installation Checklist; CC Installation Checklist; Vendor Pre-Energization Checklist; CXA Pre-Energization Inspection; PEI/Clean-Walk
- DC1-COD-L2-3190: Steps: EC Installation Checklist; CC Installation Checklist; Vendor Pre-Energization Checklist; CXA Pre-Energization Inspection; PEI/Clean-Walk
- DC1-COD-L2-3200: Steps: EC Installation Checklist; CC Installation Checklist; Vendor Pre-Energization Checklist; CXA Pre-Energization Inspection; PEI/Clean-Walk
- DC1-COD-L2-3210: Steps: EC Installation Checklist; CC Installation Checklist; Vendor Pre-Energization Checklist; CXA Pre-Energization Inspection; PEI/Clean-Walk
- DC1-COD-L2-3220: Steps: EC Installation Checklist; CC Installation Checklist; Vendor Pre-Energization Checklist; CXA Pre-Energization Inspection; PEI/Clean-Walk
- DC1-COD-L2-3230: Steps: EC Installation Checklist; CC Installation Checklist; Vendor Pre-Energization Checklist; CXA Pre-Energization Inspection; PEI/Clean-Walk
- DC1-COD-L2-3240: Steps: EC Installation Checklist; CC Installation Checklist; Vendor Pre-Energization Checklist; CXA Pre-Energization Inspection; PEI/Clean-Walk
- DC1-COD-L2-3250: Steps: EC Installation Checklist; CC Installation Checklist; Vendor Pre-Energization Checklist; CXA Pre-Energization Inspection; PEI/Clean-Walk
- DC1-COD-L2-3260: Steps: EC Installation Checklist; CC Installation Checklist; Vendor Pre-Energization Checklist; CXA Pre-Energization Inspection; PEI/Clean-Walk
- DC1-COD-L2-3270: Steps: EC Installation Checklist; CC Installation Checklist; Vendor Pre-Energization Checklist; CXA Pre-Energization Inspection; PEI/Clean-Walk
- DC1-COD-L2-3280: Steps: EC Installation Checklist; CC Installation Checklist; Vendor Pre-Energization Checklist; CXA Pre-Energization Inspection; PEI/Clean-Walk
- DC1-COD-L2-3290: Steps: EC Installation Checklist; CC Installation Checklist; Vendor Pre-Energization Checklist; CXA Pre-Energization Inspection; PEI/Clean-Walk
- DC1-COD-L2-3300: Steps: EC Installation Checklist; CC Installation Checklist; Vendor Pre-Energization Checklist; CXA Pre-Energization Inspection; PEI/Clean-Walk
- DC1-COD-L2-3310: Steps: EC Installation Checklist; CC Installation Checklist; Vendor Pre-Energization Checklist; CXA Pre-Energization Inspection; PEI/Clean-Walk
- DC1-COD-L2-3320: Steps: EC Installation Checklist; CC Installation Checklist; Vendor Pre-Energization Checklist; CXA Pre-Energization Inspection; PEI/Clean-Walk
- DC1-COD-L2-3330: Steps: EC Installation Checklist; CC Installation Checklist; Vendor Pre-Energization Checklist; CXA Pre-Energization Inspection; PEI/Clean-Walk
- DC1-COD-L2-3340: Steps: EC Installation Checklist; CC Installation Checklist; Vendor Pre-Energization Checklist; CXA Pre-Energization Inspection; PEI/Clean-Walk
- DC1-COD-L2-3350: Steps: EC Installation Checklist; CC Installation Checklist; Vendor Pre-Energization Checklist; CXA Pre-Energization Inspection; PEI/Clean-Walk
- DC1-COD-L2-3360: Steps: EC Installation Checklist; CC Installation Checklist; Vendor Pre-Energization Checklist; CXA Pre-Energization Inspection; PEI/Clean-Walk
- DC1-COD-L2-3370: Steps: EC Installation Checklist; CC Installation Checklist; Vendor Pre-Energization Checklist; CXA Pre-Energization Inspection; PEI/Clean-Walk
- DC1-COD-L2-3380: Steps: EC Installation Checklist; CC Installation Checklist; Vendor Pre-Energization Checklist; CXA Pre-Energization Inspection; PEI/Clean-Walk
- DC1-COD-L2-3390: Steps: EC Installation Checklist; CC Installation Checklist; Vendor Pre-Energization Checklist; CXA Pre-Energization Inspection; PEI/Clean-Walk
- DC1-COD-L2-3400: Steps: EC Installation Checklist; CC Installation Checklist; Vendor Pre-Energization Checklist; CXA Pre-Energization Inspection; PEI/Clean-Walk
- DC1-COD-L2-3410: Steps: EC Installation Checklist; CC Installation Checklist; Vendor Pre-Energization Checklist; CXA Pre-Energization Inspection; PEI/Clean-Walk
- DC1-COD-L2-3420: Steps: EC Installation Checklist; CC Installation Checklist; Vendor Pre-Energization Checklist; CXA Pre-Energization Inspection; PEI/Clean-Walk
- DC1-COD-L2-3430: Steps: EC Installation Checklist; CC Installation Checklist; Vendor Pre-Energization Checklist; CXA Pre-Energization Inspection; PEI/Clean-Walk
- DC1-COD-L2-3440: Steps: EC Installation Checklist; CC Installation Checklist; Vendor Pre-Energization Checklist; CXA Pre-Energization Inspection; PEI/Clean-Walk
- DC1-COD-L2-3450: Steps: EC Installation Checklist; CC Installation Checklist; Vendor Pre-Energization Checklist; CXA Pre-Energization Inspection; PEI/Clean-Walk
- DC1-COD-L2-3460: Steps: EC Installation Checklist; CC Installation Checklist; Vendor Pre-Energization Checklist; CXA Pre-Energization Inspection; PEI/Clean-Walk
- DC1-COD-L2-3470: Steps: EC Installation Checklist; CC Installation Checklist; Vendor Pre-Energization Checklist; CXA Pre-Energization Inspection; PEI/Clean-Walk
- DC1-COD-L2-3480: Steps: EC Installation Checklist; CC Installation Checklist; Vendor Pre-Energization Checklist; CXA Pre-Energization Inspection; PEI/Clean-Walk
- DC1-COD-L2-3490: Steps: EC Installation Checklist; CC Installation Checklist; Vendor Pre-Energization Checklist; CXA Pre-Energization Inspection; PEI/Clean-Walk
- DC1-COD-L2-3500: Steps: EC Installation Checklist; CC Installation Checklist; Vendor Pre-Energization Checklist; CXA Pre-Energization Inspection; PEI/Clean-Walk
- DC1-COD-L2-3510: Steps: EC Installation Checklist; CC Installation Checklist; Vendor Pre-Energization Checklist; CXA Pre-Energization Inspection; PEI/Clean-Walk
- DC1-COD-L2-3520: Steps: EC Installation Checklist; CC Installation Checklist; Vendor Pre-Energization Checklist; CXA Pre-Energization Inspection; PEI/Clean-Walk
- DC1-COD-L2-3530: Steps: EC Installation Checklist; CC Installation Checklist; Vendor Pre-Energization Checklist; CXA Pre-Energization Inspection; PEI/Clean-Walk
- DC1-COD-L2-3540: Steps: EC Installation Checklist; CC Installation Checklist; Vendor Pre-Energization Checklist; CXA Pre-Energization Inspection; PEI/Clean-Walk
- DC1-COD-L2-3550: Steps: EC Installation Checklist; CC Installation Checklist; Vendor Pre-Energization Checklist; CXA Pre-Energization Inspection; PEI/Clean-Walk
- DC1-COD-L2-3560: Steps: EC Installation Checklist; CC Installation Checklist; Vendor Pre-Energization Checklist; CXA Pre-Energization Inspection; PEI/Clean-Walk
- DC1-COD-L2-3570: Steps: EC Installation Checklist; CC Installation Checklist; Vendor Pre-Energization Checklist; CXA Pre-Energization Inspection; PEI/Clean-Walk
- DC1-COD-L2-3580: Steps: EC Installation Checklist; CC Installation Checklist; Vendor Pre-Energization Checklist; CXA Pre-Energization Inspection; PEI/Clean-Walk
- DC1-COD-L2-3590: Steps: EC Installation Checklist; CC Installation Checklist; Vendor Pre-Energization Checklist; CXA Pre-Energization Inspection; PEI/Clean-Walk
- DC1-COD-L2-3600: Steps: EC Installation Checklist; CC Installation Checklist; Vendor Pre-Energization Checklist; CXA Pre-Energization Inspection; PEI/Clean-Walk
- DC1-COD-L2-3610: Steps: EC Installation Checklist; CC Installation Checklist; Vendor Pre-Energization Checklist; CXA Pre-Energization Inspection; PEI/Clean-Walk
- DC1-COD-L2-3620: Steps: EC Installation Checklist; CC Installation Checklist; Vendor Pre-Energization Checklist; CXA Pre-Energization Inspection; PEI/Clean-Walk
- DC1-COD-L2-3630: Steps: EC Installation Checklist; CC Installation Checklist; Vendor Pre-Energization Checklist; CXA Pre-Energization Inspection; PEI/Clean-Walk

| ID | Activity | Duration | Start | Finish | Predecessors | Complete | Planned start | Planned finish | Vendor Responsible Party | Layton Discipline | Location | CX Level | Equipment | DELETED | D |
| --- | --- | --- | --- | --- | --- | --- | --- | --- | --- | --- | --- | --- | --- | --- | --- |
| DC1-COD-L2-3640 | **DELETED** DH1300 COD-D13-03 L2 Checklist | 3d | 2026-07-15 A | 2026-07-15 A | QTS-1020 | 100% | 2026-07-15 | 2026-07-17 | SIE | Commissioning | DH1300 | L2 | COD | DELETED | DH1100 |
| DC1-COD-L2-3650 | **DELETED** DH1300 COD-D13-04 L2 Checklist | 3d | 2026-07-15 A | 2026-07-15 A | QTS-1020 | 100% | 2026-07-15 | 2026-07-17 | SIE | Commissioning | DH1300 | L2 | COD | DELETED | DH1100 |
| DC1-COD-L2-3660 | **DELETED** DH1300 COD-D13-05 L2 Checklist | 3d | 2026-07-15 A | 2026-07-15 A | QTS-1020 | 100% | 2026-07-15 | 2026-07-17 | SIE | Commissioning | DH1300 | L2 | COD | DELETED | DH1100 |
| DC1-COD-L2-3670 | **DELETED** DH1300 COD-D13-06 L2 Checklist | 3d | 2026-07-15 A | 2026-07-15 A | QTS-1020 | 100% | 2026-07-15 | 2026-07-17 | SIE | Commissioning | DH1300 | L2 | COD | DELETED | DH1100 |
| DC1-COD-L2-3680 | **DELETED** DH1300 COD-E13-01 L2 Checklist | 3d | 2026-07-15 A | 2026-07-15 A | QTS-1020 | 100% | 2026-07-15 | 2026-07-17 | SIE | Commissioning | DH1300 | L2 | COD | DELETED | DH1100 |
| DC1-COD-L2-3690 | **DELETED** DH1300 COD-E13-02 L2 Checklist | 3d | 2026-07-15 A | 2026-07-15 A | QTS-1020 | 100% | 2026-07-15 | 2026-07-17 | SIE | Commissioning | DH1300 | L2 | COD | DELETED | DH1100 |
| DC1-COD-L2-3700 | **DELETED** DH1300 COD-E13-03 L2 Checklist | 3d | 2026-07-15 A | 2026-07-15 A | QTS-1020 | 100% | 2026-07-15 | 2026-07-17 | SIE | Commissioning | DH1300 | L2 | COD | DELETED | DH1100 |
| DC1-COD-L2-3710 | **DELETED** DH1300 COD-E13-04 L2 Checklist | 3d | 2026-07-15 A | 2026-07-15 A | QTS-1020 | 100% | 2026-07-15 | 2026-07-17 | SIE | Commissioning | DH1300 | L2 | COD | DELETED | DH1100 |
| DC1-COD-L2-3720 | **DELETED** DH1300 COD-E13-05 L2 Checklist | 3d | 2026-07-15 A | 2026-07-15 A | QTS-1020 | 100% | 2026-07-15 | 2026-07-17 | SIE | Commissioning | DH1300 | L2 | COD | DELETED | DH1100 |
| DC1-COD-L2-3730 | **DELETED** DH1300 COD-E13-06 L2 Checklist | 3d | 2026-07-15 A | 2026-07-15 A | QTS-1020 | 100% | 2026-07-15 | 2026-07-17 | SIE | Commissioning | DH1300 | L2 | COD | DELETED | DH1100 |
| DC1-COD-L2-3740 | **DELETED** DH1300 COD-F13-01 L2 Checklist | 3d | 2026-07-15 A | 2026-07-15 A | QTS-1020 | 100% | 2026-07-15 | 2026-07-17 | SIE | Commissioning | DH1300 | L2 | COD | DELETED | DH1100 |
| DC1-COD-L2-3750 | **DELETED** DH1300 COD-F13-02 L2 Checklist | 3d | 2026-07-15 A | 2026-07-15 A | QTS-1020 | 100% | 2026-07-15 | 2026-07-17 | SIE | Commissioning | DH1300 | L2 | COD | DELETED | DH1100 |
| DC1-COD-L2-3760 | **DELETED** DH1300 COD-F13-03 L2 Checklist | 3d | 2026-07-15 A | 2026-07-15 A | QTS-1020 | 100% | 2026-07-15 | 2026-07-17 | SIE | Commissioning | DH1300 | L2 | COD | DELETED | DH1100 |
| DC1-COD-L2-3770 | **DELETED** DH1300 COD-F13-04 L2 Checklist | 3d | 2026-07-15 A | 2026-07-15 A | QTS-1020 | 100% | 2026-07-15 | 2026-07-17 | SIE | Commissioning | DH1300 | L2 | COD | DELETED | DH1100 |
| DC1-COD-L2-3780 | **DELETED** DH1300 COD-F13-05 L2 Checklist | 3d | 2026-07-15 A | 2026-07-15 A | QTS-1020 | 100% | 2026-07-15 | 2026-07-17 | SIE | Commissioning | DH1300 | L2 | COD | DELETED | DH1100 |
| DC1-COD-L2-3790 | **DELETED** DH1300 COD-F13-06 L2 Checklist | 3d | 2026-07-15 A | 2026-07-15 A | QTS-1020 | 100% | 2026-07-15 | 2026-07-17 | SIE | Commissioning | DH1300 | L2 | COD | DELETED | DH1100 |
| DC1-COD-L3-CX-4705 | **DELETED** DC1-COD-A23-01 FTE | 1d | 2026-07-15 A | 2026-07-15 A | QTS-1020 | 100% | 2026-08-12 | 2026-08-12 | ROS | Commissioning | DH2300 | L3 | COD | DELETED | DH1100 |
| DC1-COD-L3-CX-4715 | **DELETED** DC1-COD-A23-01 L3 Startup | 2d | 2026-07-15 A | 2026-07-15 A | QTS-1020 | 100% | 2026-08-13 | 2026-08-14 | SIE | Commissioning | DH2300 | L3 | COD | DELETED | DH1100 |
| DC1-COD-L3-CX-4725 | **DELETED** DC1-COD-A23-01 BMS/EPMS Programming | 1d | 2026-07-15 A | 2026-07-15 A | QTS-1020 | 100% | 2026-08-17 | 2026-08-17 | PRM | Commissioning | DH2300 | L3 | COD | DELETED | DH1100 |
| DC1-COD-L3-CX-4735 | **DELETED** DC1-COD-A23-02 FTE | 1d | 2026-07-15 A | 2026-07-15 A | QTS-1020 | 100% | 2026-08-13 | 2026-08-13 | ROS | Commissioning | DH2300 | L3 | COD | DELETED | DH1100 |
| DC1-COD-L3-CX-4745 | **DELETED** DC1-COD-A23-02 L3 Startup | 2d | 2026-07-15 A | 2026-07-15 A | QTS-1020 | 100% | 2026-08-14 | 2026-08-17 | SIE | Commissioning | DH2300 | L3 | COD | DELETED | DH1100 |
| DC1-COD-L3-CX-4755 | **DELETED** DC1-COD-A23-02 BMS/EPMS Programming | 1d | 2026-07-15 A | 2026-07-15 A | QTS-1020 | 100% | 2026-08-18 | 2026-08-18 | PRM | Commissioning | DH2300 | L3 | COD | DELETED | DH1100 |
| DC1-COD-L3-CX-4765 | **DELETED** DC1-COD-A23-03 FTE | 1d | 2026-07-15 A | 2026-07-15 A | QTS-1020 | 100% | 2026-08-12 | 2026-08-12 | ROS | Commissioning | DH2300 | L3 | COD | DELETED | DH1100 |
| DC1-COD-L3-CX-4775 | **DELETED** DC1-COD-A23-03 L3 Startup | 2d | 2026-07-15 A | 2026-07-15 A | QTS-1020 | 100% | 2026-08-13 | 2026-08-14 | SIE | Commissioning | DH2300 | L3 | COD | DELETED | DH1100 |
| DC1-COD-L3-CX-4785 | **DELETED** DC1-COD-A23-03 BMS/EPMS Programming | 1d | 2026-07-15 A | 2026-07-15 A | QTS-1020 | 100% | 2026-08-17 | 2026-08-17 | PRM | Commissioning | DH2300 | L3 | COD | DELETED | DH1100 |
| DC1-COD-L3-CX-4795 | **DELETED** DC1-COD-A23-04 FTE | 1d | 2026-07-15 A | 2026-07-15 A | QTS-1020 | 100% | 2026-08-13 | 2026-08-13 | ROS | Commissioning | DH2300 | L3 | COD | DELETED | DH1100 |
| DC1-COD-L3-CX-4805 | **DELETED** DC1-COD-A23-04 L3 Startup | 2d | 2026-07-15 A | 2026-07-15 A | QTS-1020 | 100% | 2026-08-14 | 2026-08-17 | SIE | Commissioning | DH2300 | L3 | COD | DELETED | DH1100 |
| DC1-COD-L3-CX-4815 | **DELETED** DC1-COD-A23-04 BMS/EPMS Programming | 1d | 2026-07-15 A | 2026-07-15 A | QTS-1020 | 100% | 2026-08-18 | 2026-08-18 | PRM | Commissioning | DH2300 | L3 | COD | DELETED | DH1100 |
| DC1-COD-L3-CX-4825 | **DELETED** DC1-COD-A23-05 FTE | 1d | 2026-07-15 A | 2026-07-15 A | QTS-1020 | 100% | 2026-08-12 | 2026-08-12 | ROS | Commissioning | DH2300 | L3 | COD | DELETED | DH1100 |
| DC1-COD-L3-CX-4835 | **DELETED** DC1-COD-A23-05 L3 Startup | 2d | 2026-07-15 A | 2026-07-15 A | QTS-1020 | 100% | 2026-08-13 | 2026-08-14 | SIE | Commissioning | DH2300 | L3 | COD | DELETED | DH1100 |
| DC1-COD-L3-CX-4845 | **DELETED** DC1-COD-A23-05 BMS/EPMS Programming | 1d | 2026-07-15 A | 2026-07-15 A | QTS-1020 | 100% | 2026-08-17 | 2026-08-17 | PRM | Commissioning | DH2300 | L3 | COD | DELETED | DH1100 |
| DC1-COD-L3-CX-4855 | **DELETED** DC1-COD-A23-06 FTE | 1d | 2026-07-15 A | 2026-07-15 A | QTS-1020 | 100% | 2026-08-13 | 2026-08-13 | ROS | Commissioning | DH2300 | L3 | COD | DELETED | DH1100 |
| DC1-COD-L3-CX-4865 | **DELETED** DC1-COD-A23-06 L3 Startup | 2d | 2026-07-15 A | 2026-07-15 A | QTS-1020 | 100% | 2026-08-14 | 2026-08-17 | SIE | Commissioning | DH2300 | L3 | COD | DELETED | DH1100 |
| DC1-COD-L3-CX-4875 | **DELETED** DC1-COD-A23-06 BMS/EPMS Programming | 1d | 2026-07-15 A | 2026-07-15 A | QTS-1020 | 100% | 2026-08-18 | 2026-08-18 | PRM | Commissioning | DH2300 | L3 | COD | DELETED | DH1100 |
| DC1-COD-L3-CX-4885 | **DELETED** DC1-COD-B23-01 FTE | 1d | 2026-07-15 A | 2026-07-15 A | QTS-1020 | 100% | 2026-08-12 | 2026-08-12 | ROS | Commissioning | DH2300 | L3 | COD | DELETED | DH1100 |
| DC1-COD-L3-CX-4895 | **DELETED** DC1-COD-B23-01 L3 Startup | 2d | 2026-07-15 A | 2026-07-15 A | QTS-1020 | 100% | 2026-08-13 | 2026-08-14 | SIE | Commissioning | DH2300 | L3 | COD | DELETED | DH1100 |
| DC1-COD-L3-CX-4905 | **DELETED** DC1-COD-B23-01 BMS/EPMS Programming | 1d | 2026-07-15 A | 2026-07-15 A | QTS-1020 | 100% | 2026-08-17 | 2026-08-17 | PRM | Commissioning | DH2300 | L3 | COD | DELETED | DH1100 |
| DC1-COD-L3-CX-4915 | **DELETED** DC1-COD-B23-02 FTE | 1d | 2026-07-15 A | 2026-07-15 A | QTS-1020 | 100% | 2026-08-14 | 2026-08-14 | ROS | Commissioning | DH2300 | L3 | COD | DELETED | DH1100 |
| DC1-COD-L3-CX-4925 | **DELETED** DC1-COD-B23-02 L3 Startup | 2d | 2026-07-15 A | 2026-07-15 A | QTS-1020 | 100% | 2026-08-17 | 2026-08-18 | SIE | Commissioning | DH2300 | L3 | COD | DELETED | DH1100 |
| DC1-COD-L3-CX-4935 | **DELETED** DC1-COD-B23-02 BMS/EPMS Programming | 1d | 2026-07-15 A | 2026-07-15 A | QTS-1020 | 100% | 2026-08-19 | 2026-08-19 | PRM | Commissioning | DH2300 | L3 | COD | DELETED | DH1100 |
| DC1-COD-L3-CX-4945 | **DELETED** DC1-COD-B23-03 FTE | 1d | 2026-07-15 A | 2026-07-15 A | QTS-1020 | 100% | 2026-08-12 | 2026-08-12 | ROS | Commissioning | DH2300 | L3 | COD | DELETED | DH1100 |
| DC1-COD-L3-CX-4955 | **DELETED** DC1-COD-B23-03 L3 Startup | 2d | 2026-07-15 A | 2026-07-15 A | QTS-1020 | 100% | 2026-08-13 | 2026-08-14 | SIE | Commissioning | DH2300 | L3 | COD | DELETED | DH1100 |
| DC1-COD-L3-CX-4965 | **DELETED** DC1-COD-B23-03 BMS/EPMS Programming | 1d | 2026-07-15 A | 2026-07-15 A | QTS-1020 | 100% | 2026-08-17 | 2026-08-17 | PRM | Commissioning | DH2300 | L3 | COD | DELETED | DH1100 |
| DC1-COD-L3-CX-4975 | **DELETED** DC1-COD-B23-04 FTE | 1d | 2026-07-15 A | 2026-07-15 A | QTS-1020 | 100% | 2026-08-14 | 2026-08-14 | ROS | Commissioning | DH2300 | L3 | COD | DELETED | DH1100 |
| DC1-COD-L3-CX-4985 | **DELETED** DC1-COD-B23-04 L3 Startup | 2d | 2026-07-15 A | 2026-07-15 A | QTS-1020 | 100% | 2026-08-17 | 2026-08-18 | SIE | Commissioning | DH2300 | L3 | COD | DELETED | DH1100 |
| DC1-COD-L3-CX-4995 | **DELETED** DC1-COD-B23-04 BMS/EPMS Programming | 1d | 2026-07-15 A | 2026-07-15 A | QTS-1020 | 100% | 2026-08-19 | 2026-08-19 | PRM | Commissioning | DH2300 | L3 | COD | DELETED | DH1100 |
| DC1-COD-L3-CX-5005 | **DELETED** DC1-COD-B23-05 FTE | 1d | 2026-07-15 A | 2026-07-15 A | QTS-1020 | 100% | 2026-08-12 | 2026-08-12 | ROS | Commissioning | DH2300 | L3 | COD | DELETED | DH1100 |
| DC1-COD-L3-CX-5015 | **DELETED** DC1-COD-B23-05 L3 Startup | 2d | 2026-07-15 A | 2026-07-15 A | QTS-1020 | 100% | 2026-08-13 | 2026-08-14 | SIE | Commissioning | DH2300 | L3 | COD | DELETED | DH1100 |
| DC1-COD-L3-CX-5025 | **DELETED** DC1-COD-B23-05 BMS/EPMS Programming | 1d | 2026-07-15 A | 2026-07-15 A | QTS-1020 | 100% | 2026-08-17 | 2026-08-17 | PRM | Commissioning | DH2300 | L3 | COD | DELETED | DH1100 |
| DC1-COD-L3-CX-5035 | **DELETED** DC1-COD-B23-06 FTE | 1d | 2026-07-15 A | 2026-07-15 A | QTS-1020 | 100% | 2026-08-14 | 2026-08-14 | ROS | Commissioning | DH2300 | L3 | COD | DELETED | DH1100 |
| DC1-COD-L3-CX-5045 | **DELETED** DC1-COD-B23-06 L3 Startup | 2d | 2026-07-15 A | 2026-07-15 A | QTS-1020 | 100% | 2026-08-17 | 2026-08-18 | SIE | Commissioning | DH2300 | L3 | COD | DELETED | DH1100 |
| DC1-COD-L3-CX-5055 | **DELETED** DC1-COD-B23-06 BMS/EPMS Programming | 1d | 2026-07-15 A | 2026-07-15 A | QTS-1020 | 100% | 2026-08-19 | 2026-08-19 | PRM | Commissioning | DH2300 | L3 | COD | DELETED | DH1100 |
| DC1-COD-L3-CX-5065 | **DELETED** DC1-COD-C23-01 FTE | 1d | 2026-07-15 A | 2026-07-15 A | QTS-1020 | 100% | 2026-08-12 | 2026-08-12 | ROS | Commissioning | DH2300 | L3 | COD | DELETED | DH1100 |
| DC1-COD-L3-CX-5075 | **DELETED** DC1-COD-C23-01 L3 Startup | 2d | 2026-07-15 A | 2026-07-15 A | QTS-1020 | 100% | 2026-08-13 | 2026-08-14 | SIE | Commissioning | DH2300 | L3 | COD | DELETED | DH1100 |
| DC1-COD-L3-CX-5085 | **DELETED** DC1-COD-C23-01 BMS/EPMS Programming | 1d | 2026-07-15 A | 2026-07-15 A | QTS-1020 | 100% | 2026-08-17 | 2026-08-17 | PRM | Commissioning | DH2300 | L3 | COD | DELETED | DH1100 |
| DC1-COD-L3-CX-5095 | **DELETED** DC1-COD-C23-02 FTE | 1d | 2026-07-15 A | 2026-07-15 A | QTS-1020 | 100% | 2026-08-14 | 2026-08-14 | ROS | Commissioning | DH2300 | L3 | COD | DELETED | DH1100 |
| DC1-COD-L3-CX-5105 | **DELETED** DC1-COD-C23-02 L3 Startup | 2d | 2026-07-15 A | 2026-07-15 A | QTS-1020 | 100% | 2026-08-17 | 2026-08-18 | SIE | Commissioning | DH2300 | L3 | COD | DELETED | DH1100 |
| DC1-COD-L3-CX-5115 | **DELETED** DC1-COD-C23-02 BMS/EPMS Programming | 1d | 2026-07-15 A | 2026-07-15 A | QTS-1020 | 100% | 2026-08-19 | 2026-08-19 | PRM | Commissioning | DH2300 | L3 | COD | DELETED | DH1100 |
| DC1-COD-L3-CX-5125 | **DELETED** DC1-COD-C23-03 FTE | 1d | 2026-07-15 A | 2026-07-15 A | QTS-1020 | 100% | 2026-08-12 | 2026-08-12 | ROS | Commissioning | DH2300 | L3 | COD | DELETED | DH1100 |
| DC1-COD-L3-CX-5135 | **DELETED** DC1-COD-C23-03 L3 Startup | 2d | 2026-07-15 A | 2026-07-15 A | QTS-1020 | 100% | 2026-08-13 | 2026-08-14 | SIE | Commissioning | DH2300 | L3 | COD | DELETED | DH1100 |
| DC1-COD-L3-CX-5145 | **DELETED** DC1-COD-C23-03 BMS/EPMS Programming | 1d | 2026-07-15 A | 2026-07-15 A | QTS-1020 | 100% | 2026-08-17 | 2026-08-17 | PRM | Commissioning | DH2300 | L3 | COD | DELETED | DH1100 |
| DC1-COD-L3-CX-5155 | **DELETED** DC1-COD-C23-04 FTE | 1d | 2026-07-15 A | 2026-07-15 A | QTS-1020 | 100% | 2026-08-14 | 2026-08-14 | ROS | Commissioning | DH2300 | L3 | COD | DELETED | DH1100 |
| DC1-COD-L3-CX-5165 | **DELETED** DC1-COD-C23-04 L3 Startup | 2d | 2026-07-15 A | 2026-07-15 A | QTS-1020 | 100% | 2026-08-17 | 2026-08-18 | SIE | Commissioning | DH2300 | L3 | COD | DELETED | DH1100 |
| DC1-COD-L3-CX-5175 | **DELETED** DC1-COD-C23-04 BMS/EPMS Programming | 1d | 2026-07-15 A | 2026-07-15 A | QTS-1020 | 100% | 2026-08-19 | 2026-08-19 | PRM | Commissioning | DH2300 | L3 | COD | DELETED | DH1100 |
| DC1-COD-L3-CX-5185 | **DELETED** DC1-COD-C23-05 FTE | 1d | 2026-07-15 A | 2026-07-15 A | QTS-1020 | 100% | 2026-08-12 | 2026-08-12 | ROS | Commissioning | DH2300 | L3 | COD | DELETED | DH1100 |
| DC1-COD-L3-CX-5195 | **DELETED** DC1-COD-C23-05 L3 Startup | 2d | 2026-07-15 A | 2026-07-15 A | QTS-1020 | 100% | 2026-08-13 | 2026-08-14 | SIE | Commissioning | DH2300 | L3 | COD | DELETED | DH1100 |
| DC1-COD-L3-CX-5205 | **DELETED** DC1-COD-C23-05 BMS/EPMS Programming | 1d | 2026-07-15 A | 2026-07-15 A | QTS-1020 | 100% | 2026-08-17 | 2026-08-17 | PRM | Commissioning | DH2300 | L3 | COD | DELETED | DH1100 |
| DC1-COD-L3-CX-5215 | **DELETED** DC1-COD-C23-06 FTE | 1d | 2026-07-15 A | 2026-07-15 A | QTS-1020 | 100% | 2026-08-14 | 2026-08-14 | ROS | Commissioning | DH2300 | L3 | COD | DELETED | DH1100 |
| DC1-COD-L3-CX-5225 | **DELETED** DC1-COD-C23-06 L3 Startup | 2d | 2026-07-15 A | 2026-07-15 A | QTS-1020 | 100% | 2026-08-17 | 2026-08-18 | SIE | Commissioning | DH2300 | L3 | COD | DELETED | DH1100 |
| DC1-COD-L3-CX-5235 | **DELETED** DC1-COD-C23-06 BMS/EPMS Programming | 1d | 2026-07-15 A | 2026-07-15 A | QTS-1020 | 100% | 2026-08-19 | 2026-08-19 | PRM | Commissioning | DH2300 | L3 | COD | DELETED | DH1100 |

Notes:
- DC1-COD-L2-3640: Steps: EC Installation Checklist; CC Installation Checklist; Vendor Pre-Energization Checklist; CXA Pre-Energization Inspection; PEI/Clean-Walk
- DC1-COD-L2-3650: Steps: EC Installation Checklist; CC Installation Checklist; Vendor Pre-Energization Checklist; CXA Pre-Energization Inspection; PEI/Clean-Walk
- DC1-COD-L2-3660: Steps: EC Installation Checklist; CC Installation Checklist; Vendor Pre-Energization Checklist; CXA Pre-Energization Inspection; PEI/Clean-Walk
- DC1-COD-L2-3670: Steps: EC Installation Checklist; CC Installation Checklist; Vendor Pre-Energization Checklist; CXA Pre-Energization Inspection; PEI/Clean-Walk
- DC1-COD-L2-3680: Steps: EC Installation Checklist; CC Installation Checklist; Vendor Pre-Energization Checklist; CXA Pre-Energization Inspection; PEI/Clean-Walk
- DC1-COD-L2-3690: Steps: EC Installation Checklist; CC Installation Checklist; Vendor Pre-Energization Checklist; CXA Pre-Energization Inspection; PEI/Clean-Walk
- DC1-COD-L2-3700: Steps: EC Installation Checklist; CC Installation Checklist; Vendor Pre-Energization Checklist; CXA Pre-Energization Inspection; PEI/Clean-Walk
- DC1-COD-L2-3710: Steps: EC Installation Checklist; CC Installation Checklist; Vendor Pre-Energization Checklist; CXA Pre-Energization Inspection; PEI/Clean-Walk
- DC1-COD-L2-3720: Steps: EC Installation Checklist; CC Installation Checklist; Vendor Pre-Energization Checklist; CXA Pre-Energization Inspection; PEI/Clean-Walk
- DC1-COD-L2-3730: Steps: EC Installation Checklist; CC Installation Checklist; Vendor Pre-Energization Checklist; CXA Pre-Energization Inspection; PEI/Clean-Walk
- DC1-COD-L2-3740: Steps: EC Installation Checklist; CC Installation Checklist; Vendor Pre-Energization Checklist; CXA Pre-Energization Inspection; PEI/Clean-Walk
- DC1-COD-L2-3750: Steps: EC Installation Checklist; CC Installation Checklist; Vendor Pre-Energization Checklist; CXA Pre-Energization Inspection; PEI/Clean-Walk
- DC1-COD-L2-3760: Steps: EC Installation Checklist; CC Installation Checklist; Vendor Pre-Energization Checklist; CXA Pre-Energization Inspection; PEI/Clean-Walk
- DC1-COD-L2-3770: Steps: EC Installation Checklist; CC Installation Checklist; Vendor Pre-Energization Checklist; CXA Pre-Energization Inspection; PEI/Clean-Walk
- DC1-COD-L2-3780: Steps: EC Installation Checklist; CC Installation Checklist; Vendor Pre-Energization Checklist; CXA Pre-Energization Inspection; PEI/Clean-Walk
- DC1-COD-L2-3790: Steps: EC Installation Checklist; CC Installation Checklist; Vendor Pre-Energization Checklist; CXA Pre-Energization Inspection; PEI/Clean-Walk
- DC1-COD-L3-CX-4715: Steps: EC Startup Report; Vendor Startup
- DC1-COD-L3-CX-4745: Steps: EC Startup Report; Vendor Startup
- DC1-COD-L3-CX-4775: Steps: EC Startup Report; Vendor Startup
- DC1-COD-L3-CX-4805: Steps: EC Startup Report; Vendor Startup
- DC1-COD-L3-CX-4835: Steps: EC Startup Report; Vendor Startup
- DC1-COD-L3-CX-4865: Steps: EC Startup Report; Vendor Startup
- DC1-COD-L3-CX-4895: Steps: EC Startup Report; Vendor Startup
- DC1-COD-L3-CX-4925: Steps: EC Startup Report; Vendor Startup
- DC1-COD-L3-CX-4955: Steps: EC Startup Report; Vendor Startup
- DC1-COD-L3-CX-4985: Steps: EC Startup Report; Vendor Startup
- DC1-COD-L3-CX-5015: Steps: EC Startup Report; Vendor Startup
- DC1-COD-L3-CX-5045: Steps: EC Startup Report; Vendor Startup
- DC1-COD-L3-CX-5075: Steps: EC Startup Report; Vendor Startup
- DC1-COD-L3-CX-5105: Steps: EC Startup Report; Vendor Startup
- DC1-COD-L3-CX-5135: Steps: EC Startup Report; Vendor Startup
- DC1-COD-L3-CX-5165: Steps: EC Startup Report; Vendor Startup
- DC1-COD-L3-CX-5195: Steps: EC Startup Report; Vendor Startup
- DC1-COD-L3-CX-5225: Steps: EC Startup Report; Vendor Startup

| ID | Activity | Duration | Start | Finish | Predecessors | Complete | Planned start | Planned finish | Vendor Responsible Party | Layton Discipline | Location | CX Level | Equipment | DELETED | D |
| --- | --- | --- | --- | --- | --- | --- | --- | --- | --- | --- | --- | --- | --- | --- | --- |
| DC1-COD-L3-CX-5245 | **DELETED** DC1-COD-D23-01 FTE | 1d | 2026-07-15 A | 2026-07-15 A | QTS-1020 | 100% | 2026-08-12 | 2026-08-12 | ROS | Commissioning | DH2300 | L3 | COD | DELETED | DH1100 |
| DC1-COD-L3-CX-5255 | **DELETED** DC1-COD-D23-01 L3 Startup | 2d | 2026-07-15 A | 2026-07-15 A | QTS-1020 | 100% | 2026-08-13 | 2026-08-14 | SIE | Commissioning | DH2300 | L3 | COD | DELETED | DH1100 |
| DC1-COD-L3-CX-5265 | **DELETED** DC1-COD-D23-01 BMS/EPMS Programming | 1d | 2026-07-15 A | 2026-07-15 A | QTS-1020 | 100% | 2026-08-17 | 2026-08-17 | PRM | Commissioning | DH2300 | L3 | COD | DELETED | DH1100 |
| DC1-COD-L3-CX-5275 | **DELETED** DC1-COD-D23-02 FTE | 1d | 2026-07-15 A | 2026-07-15 A | QTS-1020 | 100% | 2026-08-14 | 2026-08-14 | ROS | Commissioning | DH2300 | L3 | COD | DELETED | DH1100 |
| DC1-COD-L3-CX-5285 | **DELETED** DC1-COD-D23-02 L3 Startup | 2d | 2026-07-15 A | 2026-07-15 A | QTS-1020 | 100% | 2026-08-17 | 2026-08-18 | SIE | Commissioning | DH2300 | L3 | COD | DELETED | DH1100 |
| DC1-COD-L3-CX-5295 | **DELETED** DC1-COD-D23-02 BMS/EPMS Programming | 1d | 2026-07-15 A | 2026-07-15 A | QTS-1020 | 100% | 2026-08-19 | 2026-08-19 | PRM | Commissioning | DH2300 | L3 | COD | DELETED | DH1100 |
| DC1-COD-L3-CX-5305 | **DELETED** DC1-COD-D23-03 FTE | 1d | 2026-07-15 A | 2026-07-15 A | QTS-1020 | 100% | 2026-08-12 | 2026-08-12 | ROS | Commissioning | DH2300 | L3 | COD | DELETED | DH1100 |
| DC1-COD-L3-CX-5315 | **DELETED** DC1-COD-D23-03 L3 Startup | 2d | 2026-07-15 A | 2026-07-15 A | QTS-1020 | 100% | 2026-08-13 | 2026-08-14 | SIE | Commissioning | DH2300 | L3 | COD | DELETED | DH1100 |
| DC1-COD-L3-CX-5325 | **DELETED** DC1-COD-D23-03 BMS/EPMS Programming | 1d | 2026-07-15 A | 2026-07-15 A | QTS-1020 | 100% | 2026-08-17 | 2026-08-17 | PRM | Commissioning | DH2300 | L3 | COD | DELETED | DH1100 |
| DC1-COD-L3-CX-5335 | **DELETED** DC1-COD-D23-04 FTE | 1d | 2026-07-15 A | 2026-07-15 A | QTS-1020 | 100% | 2026-08-14 | 2026-08-14 | ROS | Commissioning | DH2300 | L3 | COD | DELETED | DH1100 |
| DC1-COD-L3-CX-5345 | **DELETED** DC1-COD-D23-04 L3 Startup | 2d | 2026-07-15 A | 2026-07-15 A | QTS-1020 | 100% | 2026-08-17 | 2026-08-18 | SIE | Commissioning | DH2300 | L3 | COD | DELETED | DH1100 |
| DC1-COD-L3-CX-5355 | **DELETED** DC1-COD-D23-04 BMS/EPMS Programming | 1d | 2026-07-15 A | 2026-07-15 A | QTS-1020 | 100% | 2026-08-19 | 2026-08-19 | PRM | Commissioning | DH2300 | L3 | COD | DELETED | DH1100 |
| DC1-COD-L3-CX-5365 | **DELETED** DC1-COD-D23-05 FTE | 1d | 2026-07-15 A | 2026-07-15 A | QTS-1020 | 100% | 2026-08-12 | 2026-08-12 | ROS | Commissioning | DH2300 | L3 | COD | DELETED | DH1100 |
| DC1-COD-L3-CX-5375 | **DELETED** DC1-COD-D23-05 L3 Startup | 2d | 2026-07-15 A | 2026-07-15 A | QTS-1020 | 100% | 2026-08-13 | 2026-08-14 | SIE | Commissioning | DH2300 | L3 | COD | DELETED | DH1100 |
| DC1-COD-L3-CX-5385 | **DELETED** DC1-COD-D23-05 BMS/EPMS Programming | 1d | 2026-07-15 A | 2026-07-15 A | QTS-1020 | 100% | 2026-08-17 | 2026-08-17 | PRM | Commissioning | DH2300 | L3 | COD | DELETED | DH1100 |
| DC1-COD-L3-CX-5395 | **DELETED** DC1-COD-D23-06 FTE | 1d | 2026-07-15 A | 2026-07-15 A | QTS-1020 | 100% | 2026-08-14 | 2026-08-14 | ROS | Commissioning | DH2300 | L3 | COD | DELETED | DH1100 |
| DC1-COD-L3-CX-5405 | **DELETED** DC1-COD-D23-06 L3 Startup | 2d | 2026-07-15 A | 2026-07-15 A | QTS-1020 | 100% | 2026-08-17 | 2026-08-18 | SIE | Commissioning | DH2300 | L3 | COD | DELETED | DH1100 |
| DC1-COD-L3-CX-5415 | **DELETED** DC1-COD-D23-06 BMS/EPMS Programming | 1d | 2026-07-15 A | 2026-07-15 A | QTS-1020 | 100% | 2026-08-19 | 2026-08-19 | PRM | Commissioning | DH2300 | L3 | COD | DELETED | DH1100 |
| DC1-COD-L3-CX-5425 | **DELETED** DC1-COD-E23-01 FTE | 1d | 2026-07-15 A | 2026-07-15 A | QTS-1020 | 100% | 2026-08-12 | 2026-08-12 | ROS | Commissioning | DH2300 | L3 | COD | DELETED | DH1100 |
| DC1-COD-L3-CX-5435 | **DELETED** DC1-COD-E23-01 L3 Startup | 2d | 2026-07-15 A | 2026-07-15 A | QTS-1020 | 100% | 2026-08-13 | 2026-08-14 | SIE | Commissioning | DH2300 | L3 | COD | DELETED | DH1100 |
| DC1-COD-L3-CX-5445 | **DELETED** DC1-COD-E23-01 BMS/EPMS Programming | 1d | 2026-07-15 A | 2026-07-15 A | QTS-1020 | 100% | 2026-08-17 | 2026-08-17 | PRM | Commissioning | DH2300 | L3 | COD | DELETED | DH1100 |
| DC1-COD-L3-CX-5455 | **DELETED** DC1-COD-E23-02 FTE | 1d | 2026-07-15 A | 2026-07-15 A | QTS-1020 | 100% | 2026-08-14 | 2026-08-14 | ROS | Commissioning | DH2300 | L3 | COD | DELETED | DH1100 |
| DC1-COD-L3-CX-5465 | **DELETED** DC1-COD-E23-02 L3 Startup | 2d | 2026-07-15 A | 2026-07-15 A | QTS-1020 | 100% | 2026-08-17 | 2026-08-18 | SIE | Commissioning | DH2300 | L3 | COD | DELETED | DH1100 |
| DC1-COD-L3-CX-5475 | **DELETED** DC1-COD-E23-02 BMS/EPMS Programming | 1d | 2026-07-15 A | 2026-07-15 A | QTS-1020 | 100% | 2026-08-19 | 2026-08-19 | PRM | Commissioning | DH2300 | L3 | COD | DELETED | DH1100 |
| DC1-COD-L3-CX-5485 | **DELETED** DC1-COD-E23-03 FTE | 1d | 2026-07-15 A | 2026-07-15 A | QTS-1020 | 100% | 2026-08-12 | 2026-08-12 | ROS | Commissioning | DH2300 | L3 | COD | DELETED | DH1100 |
| DC1-COD-L3-CX-5495 | **DELETED** DC1-COD-E23-03 L3 Startup | 2d | 2026-07-15 A | 2026-07-15 A | QTS-1020 | 100% | 2026-08-13 | 2026-08-14 | SIE | Commissioning | DH2300 | L3 | COD | DELETED | DH1100 |
| DC1-COD-L3-CX-5505 | **DELETED** DC1-COD-E23-03 BMS/EPMS Programming | 1d | 2026-07-15 A | 2026-07-15 A | QTS-1020 | 100% | 2026-08-17 | 2026-08-17 | PRM | Commissioning | DH2300 | L3 | COD | DELETED | DH1100 |
| DC1-COD-L3-CX-5515 | **DELETED** DC1-COD-E23-04 FTE | 1d | 2026-07-15 A | 2026-07-15 A | QTS-1020 | 100% | 2026-08-14 | 2026-08-14 | ROS | Commissioning | DH2300 | L3 | COD | DELETED | DH1100 |
| DC1-COD-L3-CX-5525 | **DELETED** DC1-COD-E23-04 L3 Startup | 2d | 2026-07-15 A | 2026-07-15 A | QTS-1020 | 100% | 2026-08-17 | 2026-08-18 | SIE | Commissioning | DH2300 | L3 | COD | DELETED | DH1100 |
| DC1-COD-L3-CX-5535 | **DELETED** DC1-COD-E23-04 BMS/EPMS Programming | 1d | 2026-07-15 A | 2026-07-15 A | QTS-1020 | 100% | 2026-08-19 | 2026-08-19 | PRM | Commissioning | DH2300 | L3 | COD | DELETED | DH1100 |
| DC1-COD-L3-CX-5545 | **DELETED** DC1-COD-E23-05 FTE | 1d | 2026-07-15 A | 2026-07-15 A | QTS-1020 | 100% | 2026-08-12 | 2026-08-12 | ROS | Commissioning | DH2300 | L3 | COD | DELETED | DH1100 |
| DC1-COD-L3-CX-5555 | **DELETED** DC1-COD-E23-05 L3 Startup | 2d | 2026-07-15 A | 2026-07-15 A | QTS-1020 | 100% | 2026-08-13 | 2026-08-14 | SIE | Commissioning | DH2300 | L3 | COD | DELETED | DH1100 |
| DC1-COD-L3-CX-5565 | **DELETED** DC1-COD-E23-05 BMS/EPMS Programming | 1d | 2026-07-15 A | 2026-07-15 A | QTS-1020 | 100% | 2026-08-17 | 2026-08-17 | PRM | Commissioning | DH2300 | L3 | COD | DELETED | DH1100 |
| DC1-COD-L3-CX-5575 | **DELETED** DC1-COD-E23-06 FTE | 1d | 2026-07-15 A | 2026-07-15 A | QTS-1020 | 100% | 2026-08-14 | 2026-08-14 | ROS | Commissioning | DH2300 | L3 | COD | DELETED | DH1100 |
| DC1-COD-L3-CX-5585 | **DELETED** DC1-COD-E23-06 L3 Startup | 2d | 2026-07-15 A | 2026-07-15 A | QTS-1020 | 100% | 2026-08-17 | 2026-08-18 | SIE | Commissioning | DH2300 | L3 | COD | DELETED | DH1100 |
| DC1-COD-L3-CX-5595 | **DELETED** DC1-COD-E23-06 BMS/EPMS Programming | 1d | 2026-07-15 A | 2026-07-15 A | QTS-1020 | 100% | 2026-08-19 | 2026-08-19 | PRM | Commissioning | DH2300 | L3 | COD | DELETED | DH1100 |
| DC1-COD-L3-CX-5605 | **DELETED** DC1-COD-F23-01 FTE | 1d | 2026-07-15 A | 2026-07-15 A | QTS-1020 | 100% | 2026-08-12 | 2026-08-12 | ROS | Commissioning | DH2300 | L3 | COD | DELETED | DH1100 |
| DC1-COD-L3-CX-5615 | **DELETED** DC1-COD-F23-01 L3 Startup | 2d | 2026-07-15 A | 2026-07-15 A | QTS-1020 | 100% | 2026-08-13 | 2026-08-14 | SIE | Commissioning | DH2300 | L3 | COD | DELETED | DH1100 |
| DC1-COD-L3-CX-5625 | **DELETED** DC1-COD-F23-01 BMS/EPMS Programming | 1d | 2026-07-15 A | 2026-07-15 A | QTS-1020 | 100% | 2026-08-17 | 2026-08-17 | PRM | Commissioning | DH2300 | L3 | COD | DELETED | DH1100 |
| DC1-COD-L3-CX-5635 | **DELETED** DC1-COD-F23-02 FTE | 1d | 2026-07-15 A | 2026-07-15 A | QTS-1020 | 100% | 2026-08-14 | 2026-08-14 | ROS | Commissioning | DH2300 | L3 | COD | DELETED | DH1100 |
| DC1-COD-L3-CX-5645 | **DELETED** DC1-COD-F23-02 L3 Startup | 2d | 2026-07-15 A | 2026-07-15 A | QTS-1020 | 100% | 2026-08-17 | 2026-08-18 | SIE | Commissioning | DH2300 | L3 | COD | DELETED | DH1100 |
| DC1-COD-L3-CX-5655 | **DELETED** DC1-COD-F23-02 BMS/EPMS Programming | 1d | 2026-07-15 A | 2026-07-15 A | QTS-1020 | 100% | 2026-08-19 | 2026-08-19 | PRM | Commissioning | DH2300 | L3 | COD | DELETED | DH1100 |
| DC1-COD-L3-CX-5665 | **DELETED** DC1-COD-F23-03 FTE | 1d | 2026-07-15 A | 2026-07-15 A | QTS-1020 | 100% | 2026-08-12 | 2026-08-12 | ROS | Commissioning | DH2300 | L3 | COD | DELETED | DH1100 |
| DC1-COD-L3-CX-5675 | **DELETED** DC1-COD-F23-03 L3 Startup | 2d | 2026-07-15 A | 2026-07-15 A | QTS-1020 | 100% | 2026-08-13 | 2026-08-14 | SIE | Commissioning | DH2300 | L3 | COD | DELETED | DH1100 |
| DC1-COD-L3-CX-5685 | **DELETED** DC1-COD-F23-03 BMS/EPMS Programming | 1d | 2026-07-15 A | 2026-07-15 A | QTS-1020 | 100% | 2026-08-17 | 2026-08-17 | PRM | Commissioning | DH2300 | L3 | COD | DELETED | DH1100 |
| DC1-COD-L3-CX-5695 | **DELETED** DC1-COD-F23-04 FTE | 1d | 2026-07-15 A | 2026-07-15 A | QTS-1020 | 100% | 2026-08-14 | 2026-08-14 | ROS | Commissioning | DH2300 | L3 | COD | DELETED | DH1100 |
| DC1-COD-L3-CX-5705 | **DELETED** DC1-COD-F23-04 L3 Startup | 2d | 2026-07-15 A | 2026-07-15 A | QTS-1020 | 100% | 2026-08-17 | 2026-08-18 | SIE | Commissioning | DH2300 | L3 | COD | DELETED | DH1100 |
| DC1-COD-L3-CX-5715 | **DELETED** DC1-COD-F23-04 BMS/EPMS Programming | 1d | 2026-07-15 A | 2026-07-15 A | QTS-1020 | 100% | 2026-08-19 | 2026-08-19 | PRM | Commissioning | DH2300 | L3 | COD | DELETED | DH1100 |
| DC1-COD-L3-CX-5725 | **DELETED** DC1-COD-F23-05 FTE | 1d | 2026-07-15 A | 2026-07-15 A | QTS-1020 | 100% | 2026-08-12 | 2026-08-12 | ROS | Commissioning | DH2300 | L3 | COD | DELETED | DH1100 |
| DC1-COD-L3-CX-5735 | **DELETED** DC1-COD-F23-05 L3 Startup | 2d | 2026-07-15 A | 2026-07-15 A | QTS-1020 | 100% | 2026-08-13 | 2026-08-14 | SIE | Commissioning | DH2300 | L3 | COD | DELETED | DH1100 |
| DC1-COD-L3-CX-5745 | **DELETED** DC1-COD-F23-05 BMS/EPMS Programming | 1d | 2026-07-15 A | 2026-07-15 A | QTS-1020 | 100% | 2026-08-17 | 2026-08-17 | PRM | Commissioning | DH2300 | L3 | COD | DELETED | DH1100 |
| DC1-COD-L3-CX-5755 | **DELETED** DC1-COD-F23-06 FTE | 1d | 2026-07-15 A | 2026-07-15 A | QTS-1020 | 100% | 2026-08-14 | 2026-08-14 | ROS | Commissioning | DH2300 | L3 | COD | DELETED | DH1100 |
| DC1-COD-L3-CX-5765 | **DELETED** DC1-COD-F23-06 L3 Startup | 2d | 2026-07-15 A | 2026-07-15 A | QTS-1020 | 100% | 2026-08-17 | 2026-08-18 | SIE | Commissioning | DH2300 | L3 | COD | DELETED | DH1100 |
| DC1-COD-L3-CX-5775 | **DELETED** DC1-COD-F23-06 BMS/EPMS Programming | 1d | 2026-07-15 A | 2026-07-15 A | QTS-1020 | 100% | 2026-08-19 | 2026-08-19 | PRM | Commissioning | DH2300 | L3 | COD | DELETED | DH1100 |
| DC1-COD-L3-CX-5785 | **DELETED** DC1-COD-A13-01 FTE | 1d | 2026-07-15 A | 2026-07-15 A | DC1-COD-L2-3440, QTS-1020 | 100% | 2026-08-12 | 2026-08-12 | ROS | Commissioning | DH1300 | L3 | COD | DELETED | DH1100 |
| DC1-COD-L3-CX-5795 | **DELETED** DC1-COD-A13-01 L3 Startup | 2d | 2026-07-15 A | 2026-07-15 A | DC1-COD-L3-CX-5785, QTS-1020 | 100% | 2026-08-13 | 2026-08-14 | SIE | Commissioning | DH1300 | L3 | COD | DELETED | DH1100 |
| DC1-COD-L3-CX-5805 | **DELETED** DC1-COD-A13-01 BMS/EPMS Programming | 1d | 2026-07-15 A | 2026-07-15 A | DC1-COD-L3-CX-5795, QTS-1020 | 100% | 2026-08-17 | 2026-08-17 | PRM | Commissioning | DH1300 | L3 | COD | DELETED | DH1100 |
| DC1-COD-L3-CX-5815 | **DELETED** DC1-COD-A13-02 FTE | 1d | 2026-07-15 A | 2026-07-15 A | DC1-ATS-L3-CX-5815, DC1-COD-L2-3450, QTS-1020 | 100% | 2026-08-13 | 2026-08-13 | ROS | Commissioning | DH1300 | L3 | COD | DELETED | DH1100 |
| DC1-COD-L3-CX-5825 | **DELETED** DC1-COD-A13-02 L3 Startup | 2d | 2026-07-15 A | 2026-07-15 A | DC1-COD-L3-CX-5815, QTS-1020 | 100% | 2026-08-14 | 2026-08-17 | SIE | Commissioning | DH1300 | L3 | COD | DELETED | DH1100 |
| DC1-COD-L3-CX-5835 | **DELETED** DC1-COD-A13-02 BMS/EPMS Programming | 1d | 2026-07-15 A | 2026-07-15 A | DC1-COD-L3-CX-5825, QTS-1020 | 100% | 2026-08-18 | 2026-08-18 | PRM | Commissioning | DH1300 | L3 | COD | DELETED | DH1100 |
| DC1-COD-L3-CX-5845 | **DELETED** DC1-COD-A13-03 FTE | 1d | 2026-07-15 A | 2026-07-15 A | DC1-ATS-L3-CX-5845, DC1-COD-L2-3460, QTS-1020 | 100% | 2026-08-12 | 2026-08-12 | ROS | Commissioning | DH1300 | L3 | COD | DELETED | DH1100 |
| DC1-COD-L3-CX-5855 | **DELETED** DC1-COD-A13-03 L3 Startup | 2d | 2026-07-15 A | 2026-07-15 A | DC1-COD-L3-CX-5845, QTS-1020 | 100% | 2026-08-13 | 2026-08-14 | SIE | Commissioning | DH1300 | L3 | COD | DELETED | DH1100 |
| DC1-COD-L3-CX-5865 | **DELETED** DC1-COD-A13-03 BMS/EPMS Programming | 1d | 2026-07-15 A | 2026-07-15 A | DC1-COD-L3-CX-5855, QTS-1020 | 100% | 2026-08-17 | 2026-08-17 | PRM | Commissioning | DH1300 | L3 | COD | DELETED | DH1100 |
| DC1-COD-L3-CX-5875 | **DELETED** DC1-COD-A13-04 FTE | 1d | 2026-07-15 A | 2026-07-15 A | DC1-ATS-L3-CX-5875, DC1-COD-L2-3470, QTS-1020 | 100% | 2026-08-13 | 2026-08-13 | ROS | Commissioning | DH1300 | L3 | COD | DELETED | DH1100 |
| DC1-COD-L3-CX-5885 | **DELETED** DC1-COD-A13-04 L3 Startup | 2d | 2026-07-15 A | 2026-07-15 A | DC1-COD-L3-CX-5875, QTS-1020 | 100% | 2026-08-14 | 2026-08-17 | SIE | Commissioning | DH1300 | L3 | COD | DELETED | DH1100 |
| DC1-COD-L3-CX-5895 | **DELETED** DC1-COD-A13-04 BMS/EPMS Programming | 1d | 2026-07-15 A | 2026-07-15 A | DC1-COD-L3-CX-5885, QTS-1020 | 100% | 2026-08-18 | 2026-08-18 | PRM | Commissioning | DH1300 | L3 | COD | DELETED | DH1100 |
| DC1-COD-L3-CX-5905 | **DELETED** DC1-COD-A13-05 FTE | 1d | 2026-07-15 A | 2026-07-15 A | DC1-ATS-L3-CX-5905, DC1-COD-L2-3480, QTS-1020 | 100% | 2026-08-12 | 2026-08-12 | ROS | Commissioning | DH1300 | L3 | COD | DELETED | DH1100 |
| DC1-COD-L3-CX-5915 | **DELETED** DC1-COD-A13-05 L3 Startup | 2d | 2026-07-15 A | 2026-07-15 A | DC1-COD-L3-CX-5905, QTS-1020 | 100% | 2026-08-13 | 2026-08-14 | SIE | Commissioning | DH1300 | L3 | COD | DELETED | DH1100 |
| DC1-COD-L3-CX-5925 | **DELETED** DC1-COD-A13-05 BMS/EPMS Programming | 1d | 2026-07-15 A | 2026-07-15 A | DC1-COD-L3-CX-5915, QTS-1020 | 100% | 2026-08-17 | 2026-08-17 | PRM | Commissioning | DH1300 | L3 | COD | DELETED | DH1100 |
| DC1-COD-L3-CX-5935 | **DELETED** DC1-COD-A13-06 FTE | 1d | 2026-07-15 A | 2026-07-15 A | DC1-ATS-L3-CX-5935, DC1-COD-L2-3490, QTS-1020 | 100% | 2026-08-13 | 2026-08-13 | ROS | Commissioning | DH1300 | L3 | COD | DELETED | DH1100 |

Notes:
- DC1-COD-L3-CX-5255: Steps: EC Startup Report; Vendor Startup
- DC1-COD-L3-CX-5285: Steps: EC Startup Report; Vendor Startup
- DC1-COD-L3-CX-5315: Steps: EC Startup Report; Vendor Startup
- DC1-COD-L3-CX-5345: Steps: EC Startup Report; Vendor Startup
- DC1-COD-L3-CX-5375: Steps: EC Startup Report; Vendor Startup
- DC1-COD-L3-CX-5405: Steps: EC Startup Report; Vendor Startup
- DC1-COD-L3-CX-5435: Steps: EC Startup Report; Vendor Startup
- DC1-COD-L3-CX-5465: Steps: EC Startup Report; Vendor Startup
- DC1-COD-L3-CX-5495: Steps: EC Startup Report; Vendor Startup
- DC1-COD-L3-CX-5525: Steps: EC Startup Report; Vendor Startup
- DC1-COD-L3-CX-5555: Steps: EC Startup Report; Vendor Startup
- DC1-COD-L3-CX-5585: Steps: EC Startup Report; Vendor Startup
- DC1-COD-L3-CX-5615: Steps: EC Startup Report; Vendor Startup
- DC1-COD-L3-CX-5645: Steps: EC Startup Report; Vendor Startup
- DC1-COD-L3-CX-5675: Steps: EC Startup Report; Vendor Startup
- DC1-COD-L3-CX-5705: Steps: EC Startup Report; Vendor Startup
- DC1-COD-L3-CX-5735: Steps: EC Startup Report; Vendor Startup
- DC1-COD-L3-CX-5765: Steps: EC Startup Report; Vendor Startup
- DC1-COD-L3-CX-5795: Steps: EC Startup Report; Vendor Startup
- DC1-COD-L3-CX-5825: Steps: EC Startup Report; Vendor Startup
- DC1-COD-L3-CX-5855: Steps: EC Startup Report; Vendor Startup
- DC1-COD-L3-CX-5885: Steps: EC Startup Report; Vendor Startup
- DC1-COD-L3-CX-5915: Steps: EC Startup Report; Vendor Startup

| ID | Activity | Duration | Start | Finish | Predecessors | Complete | Planned start | Planned finish | Vendor Responsible Party | Layton Discipline | Location | CX Level | Equipment | DELETED | D |
| --- | --- | --- | --- | --- | --- | --- | --- | --- | --- | --- | --- | --- | --- | --- | --- |
| DC1-COD-L3-CX-5945 | **DELETED** DC1-COD-A13-06 L3 Startup | 2d | 2026-07-15 A | 2026-07-15 A | DC1-COD-L3-CX-5935, QTS-1020 | 100% | 2026-08-14 | 2026-08-17 | SIE | Commissioning | DH1300 | L3 | COD | DELETED | DH1100 |
| DC1-COD-L3-CX-5955 | **DELETED** DC1-COD-A13-06 BMS/EPMS Programming | 1d | 2026-07-15 A | 2026-07-15 A | DC1-COD-L3-CX-5945, QTS-1020 | 100% | 2026-08-18 | 2026-08-18 | PRM | Commissioning | DH1300 | L3 | COD | DELETED | DH1100 |
| DC1-COD-L3-CX-5965 | **DELETED** DC1-COD-B13-01 FTE | 1d | 2026-07-15 A | 2026-07-15 A | DC1-ATS-L3-CX-5965, DC1-COD-L2-3500, QTS-1020 | 100% | 2026-08-12 | 2026-08-12 | ROS | Commissioning | DH1300 | L3 | COD | DELETED | DH1100 |
| DC1-COD-L3-CX-5975 | **DELETED** DC1-COD-B13-01 L3 Startup | 2d | 2026-07-15 A | 2026-07-15 A | DC1-COD-L3-CX-5965, QTS-1020 | 100% | 2026-08-13 | 2026-08-14 | SIE | Commissioning | DH1300 | L3 | COD | DELETED | DH1100 |
| DC1-COD-L3-CX-5985 | **DELETED** DC1-COD-B13-01 BMS/EPMS Programming | 1d | 2026-07-15 A | 2026-07-15 A | DC1-COD-L3-CX-5975, QTS-1020 | 100% | 2026-08-17 | 2026-08-17 | PRM | Commissioning | DH1300 | L3 | COD | DELETED | DH1100 |
| DC1-COD-L3-CX-5995 | **DELETED** DC1-COD-B13-02 FTE | 1d | 2026-07-15 A | 2026-07-15 A | DC1-ATS-L3-CX-5995, DC1-COD-L2-3510, QTS-1020 | 100% | 2026-08-14 | 2026-08-14 | ROS | Commissioning | DH1300 | L3 | COD | DELETED | DH1100 |
| DC1-COD-L3-CX-6005 | **DELETED** DC1-COD-B13-02 L3 Startup | 2d | 2026-07-15 A | 2026-07-15 A | DC1-COD-L3-CX-5995, QTS-1020 | 100% | 2026-08-17 | 2026-08-18 | SIE | Commissioning | DH1300 | L3 | COD | DELETED | DH1100 |
| DC1-COD-L3-CX-6015 | **DELETED** DC1-COD-B13-02 BMS/EPMS Programming | 1d | 2026-07-15 A | 2026-07-15 A | DC1-COD-L3-CX-6005, QTS-1020 | 100% | 2026-08-19 | 2026-08-19 | PRM | Commissioning | DH1300 | L3 | COD | DELETED | DH1100 |
| DC1-COD-L3-CX-6025 | **DELETED** DC1-COD-B13-03 FTE | 1d | 2026-07-15 A | 2026-07-15 A | DC1-ATS-L3-CX-6025, DC1-COD-L2-3520, QTS-1020 | 100% | 2026-08-12 | 2026-08-12 | ROS | Commissioning | DH1300 | L3 | COD | DELETED | DH1100 |
| DC1-COD-L3-CX-6035 | **DELETED** DC1-COD-B13-03 L3 Startup | 2d | 2026-07-15 A | 2026-07-15 A | DC1-COD-L3-CX-6025, QTS-1020 | 100% | 2026-08-13 | 2026-08-14 | SIE | Commissioning | DH1300 | L3 | COD | DELETED | DH1100 |
| DC1-COD-L3-CX-6045 | **DELETED** DC1-COD-B13-03 BMS/EPMS Programming | 1d | 2026-07-15 A | 2026-07-15 A | DC1-COD-L3-CX-6035, QTS-1020 | 100% | 2026-08-17 | 2026-08-17 | PRM | Commissioning | DH1300 | L3 | COD | DELETED | DH1100 |
| DC1-COD-L3-CX-6055 | **DELETED** DC1-COD-B13-04 FTE | 1d | 2026-07-15 A | 2026-07-15 A | DC1-ATS-L3-CX-6055, DC1-COD-L2-3530, QTS-1020 | 100% | 2026-08-14 | 2026-08-14 | ROS | Commissioning | DH1300 | L3 | COD | DELETED | DH1100 |
| DC1-COD-L3-CX-6065 | **DELETED** DC1-COD-B13-04 L3 Startup | 2d | 2026-07-15 A | 2026-07-15 A | DC1-COD-L3-CX-6055, QTS-1020 | 100% | 2026-08-17 | 2026-08-18 | SIE | Commissioning | DH1300 | L3 | COD | DELETED | DH1100 |
| DC1-COD-L3-CX-6075 | **DELETED** DC1-COD-B13-04 BMS/EPMS Programming | 1d | 2026-07-15 A | 2026-07-15 A | DC1-COD-L3-CX-6065, QTS-1020 | 100% | 2026-08-19 | 2026-08-19 | PRM | Commissioning | DH1300 | L3 | COD | DELETED | DH1100 |
| DC1-COD-L3-CX-6085 | **DELETED** DC1-COD-B13-05 FTE | 1d | 2026-07-15 A | 2026-07-15 A | DC1-ATS-L3-CX-6085, DC1-COD-L2-3540, QTS-1020 | 100% | 2026-08-12 | 2026-08-12 | ROS | Commissioning | DH1300 | L3 | COD | DELETED | DH1100 |
| DC1-COD-L3-CX-6095 | **DELETED** DC1-COD-B13-05 L3 Startup | 2d | 2026-07-15 A | 2026-07-15 A | QTS-1020 | 100% | 2026-08-13 | 2026-08-14 | SIE | Commissioning | DH1300 | L3 | COD | DELETED | DH1100 |
| DC1-COD-L3-CX-6105 | **DELETED** DC1-COD-B13-05 BMS/EPMS Programming | 1d | 2026-07-15 A | 2026-07-15 A | QTS-1020 | 100% | 2026-08-17 | 2026-08-17 | PRM | Commissioning | DH1300 | L3 | COD | DELETED | DH1100 |
| DC1-COD-L3-CX-6115 | **DELETED** DC1-COD-B13-06 FTE | 1d | 2026-07-15 A | 2026-07-15 A | DC1-ATS-L3-CX-6115, DC1-COD-L2-3550, QTS-1020 | 100% | 2026-08-14 | 2026-08-14 | ROS | Commissioning | DH1300 | L3 | COD | DELETED | DH1100 |
| DC1-COD-L3-CX-6125 | **DELETED** DC1-COD-B13-06 L3 Startup | 2d | 2026-07-15 A | 2026-07-15 A | DC1-COD-L3-CX-6115, QTS-1020 | 100% | 2026-08-17 | 2026-08-18 | SIE | Commissioning | DH1300 | L3 | COD | DELETED | DH1100 |
| DC1-COD-L3-CX-6135 | **DELETED** DC1-COD-B13-06 BMS/EPMS Programming | 1d | 2026-07-15 A | 2026-07-15 A | DC1-COD-L3-CX-6125, QTS-1020 | 100% | 2026-08-19 | 2026-08-19 | PRM | Commissioning | DH1300 | L3 | COD | DELETED | DH1100 |
| DC1-COD-L3-CX-6145 | **DELETED** DC1-COD-C13-01 FTE | 1d | 2026-07-15 A | 2026-07-15 A | DC1-ATS-L3-CX-6145, DC1-COD-L2-3560, QTS-1020 | 100% | 2026-08-12 | 2026-08-12 | ROS | Commissioning | DH1300 | L3 | COD | DELETED | DH1100 |
| DC1-COD-L3-CX-6155 | **DELETED** DC1-COD-C13-01 L3 Startup | 2d | 2026-07-15 A | 2026-07-15 A | DC1-COD-L3-CX-6145, QTS-1020 | 100% | 2026-08-13 | 2026-08-14 | SIE | Commissioning | DH1300 | L3 | COD | DELETED | DH1100 |
| DC1-COD-L3-CX-6165 | **DELETED** DC1-COD-C13-01 BMS/EPMS Programming | 1d | 2026-07-15 A | 2026-07-15 A | DC1-COD-L3-CX-6155, QTS-1020 | 100% | 2026-08-17 | 2026-08-17 | PRM | Commissioning | DH1300 | L3 | COD | DELETED | DH1100 |
| DC1-COD-L3-CX-6175 | **DELETED** DC1-COD-C13-02 FTE | 1d | 2026-07-15 A | 2026-07-15 A | DC1-ATS-L3-CX-6175, DC1-COD-L2-3570, QTS-1020 | 100% | 2026-08-14 | 2026-08-14 | ROS | Commissioning | DH1300 | L3 | COD | DELETED | DH1100 |
| DC1-COD-L3-CX-6185 | **DELETED** DC1-COD-C13-02 L3 Startup | 2d | 2026-07-15 A | 2026-07-15 A | DC1-COD-L3-CX-6175, QTS-1020 | 100% | 2026-08-17 | 2026-08-18 | SIE | Commissioning | DH1300 | L3 | COD | DELETED | DH1100 |
| DC1-COD-L3-CX-6195 | **DELETED** DC1-COD-C13-02 BMS/EPMS Programming | 1d | 2026-07-15 A | 2026-07-15 A | DC1-COD-L3-CX-6185, QTS-1020 | 100% | 2026-08-19 | 2026-08-19 | PRM | Commissioning | DH1300 | L3 | COD | DELETED | DH1100 |
| DC1-COD-L3-CX-6205 | **DELETED** DC1-COD-C13-03 FTE | 1d | 2026-07-15 A | 2026-07-15 A | DC1-ATS-L3-CX-6205, DC1-COD-L2-3580, QTS-1020 | 100% | 2026-08-12 | 2026-08-12 | ROS | Commissioning | DH1300 | L3 | COD | DELETED | DH1100 |
| DC1-COD-L3-CX-6215 | **DELETED** DC1-COD-C13-03 L3 Startup | 2d | 2026-07-15 A | 2026-07-15 A | DC1-COD-L3-CX-6205, QTS-1020 | 100% | 2026-08-13 | 2026-08-14 | SIE | Commissioning | DH1300 | L3 | COD | DELETED | DH1100 |
| DC1-COD-L3-CX-6225 | **DELETED** DC1-COD-C13-03 BMS/EPMS Programming | 1d | 2026-07-15 A | 2026-07-15 A | DC1-COD-L3-CX-6215, QTS-1020 | 100% | 2026-08-17 | 2026-08-17 | PRM | Commissioning | DH1300 | L3 | COD | DELETED | DH1100 |
| DC1-COD-L3-CX-6235 | **DELETED** DC1-COD-C13-04 FTE | 1d | 2026-07-15 A | 2026-07-15 A | DC1-ATS-L3-CX-6235, DC1-COD-L2-3590, QTS-1020 | 100% | 2026-08-14 | 2026-08-14 | ROS | Commissioning | DH1300 | L3 | COD | DELETED | DH1100 |
| DC1-COD-L3-CX-6245 | **DELETED** DC1-COD-C13-04 L3 Startup | 2d | 2026-07-15 A | 2026-07-15 A | DC1-COD-L3-CX-6235, QTS-1020 | 100% | 2026-08-17 | 2026-08-18 | SIE | Commissioning | DH1300 | L3 | COD | DELETED | DH1100 |
| DC1-COD-L3-CX-6255 | **DELETED** DC1-COD-C13-04 BMS/EPMS Programming | 1d | 2026-07-15 A | 2026-07-15 A | DC1-COD-L3-CX-6245, QTS-1020 | 100% | 2026-08-19 | 2026-08-19 | PRM | Commissioning | DH1300 | L3 | COD | DELETED | DH1100 |
| DC1-COD-L3-CX-6265 | **DELETED** DC1-COD-C13-05 FTE | 1d | 2026-07-15 A | 2026-07-15 A | DC1-ATS-L3-CX-6265, DC1-COD-L2-3600, QTS-1020 | 100% | 2026-08-12 | 2026-08-12 | ROS | Commissioning | DH1300 | L3 | COD | DELETED | DH1100 |
| DC1-COD-L3-CX-6275 | **DELETED** DC1-COD-C13-05 L3 Startup | 2d | 2026-07-15 A | 2026-07-15 A | DC1-COD-L3-CX-6265, QTS-1020 | 100% | 2026-08-13 | 2026-08-14 | SIE | Commissioning | DH1300 | L3 | COD | DELETED | DH1100 |
| DC1-COD-L3-CX-6285 | **DELETED** DC1-COD-C13-05 BMS/EPMS Programming | 1d | 2026-07-15 A | 2026-07-15 A | DC1-COD-L3-CX-6275, QTS-1020 | 100% | 2026-08-17 | 2026-08-17 | PRM | Commissioning | DH1300 | L3 | COD | DELETED | DH1100 |
| DC1-COD-L3-CX-6295 | **DELETED** DC1-COD-C13-06 FTE | 1d | 2026-07-15 A | 2026-07-15 A | DC1-ATS-L3-CX-6295, DC1-COD-L2-3610, QTS-1020 | 100% | 2026-08-14 | 2026-08-14 | ROS | Commissioning | DH1300 | L3 | COD | DELETED | DH1100 |
| DC1-COD-L3-CX-6305 | **DELETED** DC1-COD-C13-06 L3 Startup | 2d | 2026-07-15 A | 2026-07-15 A | DC1-COD-L3-CX-6295, QTS-1020 | 100% | 2026-08-17 | 2026-08-18 | SIE | Commissioning | DH1300 | L3 | COD | DELETED | DH1100 |
| DC1-COD-L3-CX-6315 | **DELETED** DC1-COD-C13-06 BMS/EPMS Programming | 1d | 2026-07-15 A | 2026-07-15 A | DC1-COD-L3-CX-6305, QTS-1020 | 100% | 2026-08-19 | 2026-08-19 | PRM | Commissioning | DH1300 | L3 | COD | DELETED | DH1100 |
| DC1-COD-L3-CX-6325 | **DELETED** DC1-COD-D13-01 FTE | 1d | 2026-07-15 A | 2026-07-15 A | DC1-ATS-L3-CX-6325, DC1-COD-L2-3620, QTS-1020 | 100% | 2026-08-12 | 2026-08-12 | ROS | Commissioning | DH1300 | L3 | COD | DELETED | DH1100 |
| DC1-COD-L3-CX-6335 | **DELETED** DC1-COD-D13-01 L3 Startup | 2d | 2026-07-15 A | 2026-07-15 A | DC1-COD-L3-CX-6325, QTS-1020 | 100% | 2026-08-13 | 2026-08-14 | SIE | Commissioning | DH1300 | L3 | COD | DELETED | DH1100 |
| DC1-COD-L3-CX-6345 | **DELETED** DC1-COD-D13-01 BMS/EPMS Programming | 1d | 2026-07-15 A | 2026-07-15 A | DC1-COD-L3-CX-6335, QTS-1020 | 100% | 2026-08-17 | 2026-08-17 | PRM | Commissioning | DH1300 | L3 | COD | DELETED | DH1100 |
| DC1-COD-L3-CX-6355 | **DELETED** DC1-COD-D13-02 FTE | 1d | 2026-07-15 A | 2026-07-15 A | DC1-ATS-L3-CX-6355, DC1-COD-L2-3630, QTS-1020 | 100% | 2026-08-14 | 2026-08-14 | ROS | Commissioning | DH1300 | L3 | COD | DELETED | DH1100 |
| DC1-COD-L3-CX-6365 | **DELETED** DC1-COD-D13-02 L3 Startup | 2d | 2026-07-15 A | 2026-07-15 A | DC1-COD-L3-CX-6355, QTS-1020 | 100% | 2026-08-17 | 2026-08-18 | SIE | Commissioning | DH1300 | L3 | COD | DELETED | DH1100 |
| DC1-COD-L3-CX-6375 | **DELETED** DC1-COD-D13-02 BMS/EPMS Programming | 1d | 2026-07-15 A | 2026-07-15 A | DC1-COD-L3-CX-6365, QTS-1020 | 100% | 2026-08-19 | 2026-08-19 | PRM | Commissioning | DH1300 | L3 | COD | DELETED | DH1100 |
| DC1-COD-L3-CX-6385 | **DELETED** DC1-COD-D13-03 FTE | 1d | 2026-07-15 A | 2026-07-15 A | DC1-ATS-L3-CX-6385, DC1-COD-L2-3640, QTS-1020 | 100% | 2026-08-12 | 2026-08-12 | ROS | Commissioning | DH1300 | L3 | COD | DELETED | DH1100 |
| DC1-COD-L3-CX-6395 | **DELETED** DC1-COD-D13-03 L3 Startup | 2d | 2026-07-15 A | 2026-07-15 A | DC1-COD-L3-CX-6385, QTS-1020 | 100% | 2026-08-13 | 2026-08-14 | SIE | Commissioning | DH1300 | L3 | COD | DELETED | DH1100 |
| DC1-COD-L3-CX-6405 | **DELETED** DC1-COD-D13-03 BMS/EPMS Programming | 1d | 2026-07-15 A | 2026-07-15 A | DC1-COD-L3-CX-6395, QTS-1020 | 100% | 2026-08-17 | 2026-08-17 | PRM | Commissioning | DH1300 | L3 | COD | DELETED | DH1100 |
| DC1-COD-L3-CX-6415 | **DELETED** DC1-COD-D13-04 FTE | 1d | 2026-07-15 A | 2026-07-15 A | DC1-ATS-L3-CX-6415, DC1-COD-L2-3650, QTS-1020 | 100% | 2026-08-14 | 2026-08-14 | ROS | Commissioning | DH1300 | L3 | COD | DELETED | DH1100 |
| DC1-COD-L3-CX-6425 | **DELETED** DC1-COD-D13-04 L3 Startup | 2d | 2026-07-15 A | 2026-07-15 A | DC1-COD-L3-CX-6415, QTS-1020 | 100% | 2026-08-17 | 2026-08-18 | SIE | Commissioning | DH1300 | L3 | COD | DELETED | DH1100 |
| DC1-COD-L3-CX-6435 | **DELETED** DC1-COD-D13-04 BMS/EPMS Programming | 1d | 2026-07-15 A | 2026-07-15 A | DC1-COD-L3-CX-6425, QTS-1020 | 100% | 2026-08-19 | 2026-08-19 | PRM | Commissioning | DH1300 | L3 | COD | DELETED | DH1100 |
| DC1-COD-L3-CX-6445 | **DELETED** DC1-COD-D13-05 FTE | 1d | 2026-07-15 A | 2026-07-15 A | DC1-ATS-L3-CX-6445, DC1-COD-L2-3660, QTS-1020 | 100% | 2026-08-12 | 2026-08-12 | ROS | Commissioning | DH1300 | L3 | COD | DELETED | DH1100 |
| DC1-COD-L3-CX-6455 | **DELETED** DC1-COD-D13-05 L3 Startup | 2d | 2026-07-15 A | 2026-07-15 A | DC1-COD-L3-CX-6445, QTS-1020 | 100% | 2026-08-13 | 2026-08-14 | SIE | Commissioning | DH1300 | L3 | COD | DELETED | DH1100 |
| DC1-COD-L3-CX-6465 | **DELETED** DC1-COD-D13-05 BMS/EPMS Programming | 1d | 2026-07-15 A | 2026-07-15 A | DC1-COD-L3-CX-6455, QTS-1020 | 100% | 2026-08-17 | 2026-08-17 | PRM | Commissioning | DH1300 | L3 | COD | DELETED | DH1100 |
| DC1-COD-L3-CX-6475 | **DELETED** DC1-COD-D13-06 FTE | 1d | 2026-07-15 A | 2026-07-15 A | DC1-ATS-L3-CX-6475, DC1-COD-L2-3670, QTS-1020 | 100% | 2026-08-14 | 2026-08-14 | ROS | Commissioning | DH1300 | L3 | COD | DELETED | DH1100 |
| DC1-COD-L3-CX-6485 | **DELETED** DC1-COD-D13-06 L3 Startup | 2d | 2026-07-15 A | 2026-07-15 A | DC1-COD-L3-CX-6475, QTS-1020 | 100% | 2026-08-17 | 2026-08-18 | SIE | Commissioning | DH1300 | L3 | COD | DELETED | DH1100 |
| DC1-COD-L3-CX-6495 | **DELETED** DC1-COD-D13-06 BMS/EPMS Programming | 1d | 2026-07-15 A | 2026-07-15 A | DC1-COD-L3-CX-6485, QTS-1020 | 100% | 2026-08-19 | 2026-08-19 | PRM | Commissioning | DH1300 | L3 | COD | DELETED | DH1100 |
| DC1-COD-L3-CX-6505 | **DELETED** DC1-COD-E13-01 FTE | 1d | 2026-07-15 A | 2026-07-15 A | DC1-ATS-L3-CX-6505, DC1-COD-L2-3680, QTS-1020 | 100% | 2026-08-12 | 2026-08-12 | ROS | Commissioning | DH1300 | L3 | COD | DELETED | DH1100 |
| DC1-COD-L3-CX-6515 | **DELETED** DC1-COD-E13-01 L3 Startup | 2d | 2026-07-15 A | 2026-07-15 A | DC1-COD-L3-CX-6505, QTS-1020 | 100% | 2026-08-13 | 2026-08-14 | SIE | Commissioning | DH1300 | L3 | COD | DELETED | DH1100 |
| DC1-COD-L3-CX-6525 | **DELETED** DC1-COD-E13-01 BMS/EPMS Programming | 1d | 2026-07-15 A | 2026-07-15 A | DC1-COD-L3-CX-6515, QTS-1020 | 100% | 2026-08-17 | 2026-08-17 | PRM | Commissioning | DH1300 | L3 | COD | DELETED | DH1100 |
| DC1-COD-L3-CX-6535 | **DELETED** DC1-COD-E13-02 FTE | 1d | 2026-07-15 A | 2026-07-15 A | DC1-ATS-L3-CX-6535, DC1-COD-L2-3690, QTS-1020 | 100% | 2026-08-14 | 2026-08-14 | ROS | Commissioning | DH1300 | L3 | COD | DELETED | DH1100 |
| DC1-COD-L3-CX-6545 | **DELETED** DC1-COD-E13-02 L3 Startup | 2d | 2026-07-15 A | 2026-07-15 A | DC1-COD-L3-CX-6535, QTS-1020 | 100% | 2026-08-17 | 2026-08-18 | SIE | Commissioning | DH1300 | L3 | COD | DELETED | DH1100 |
| DC1-COD-L3-CX-6555 | **DELETED** DC1-COD-E13-02 BMS/EPMS Programming | 1d | 2026-07-15 A | 2026-07-15 A | DC1-COD-L3-CX-6545, QTS-1020 | 100% | 2026-08-19 | 2026-08-19 | PRM | Commissioning | DH1300 | L3 | COD | DELETED | DH1100 |
| DC1-COD-L3-CX-6565 | **DELETED** DC1-COD-E13-03 FTE | 1d | 2026-07-15 A | 2026-07-15 A | DC1-ATS-L3-CX-6565, DC1-COD-L2-3700, QTS-1020 | 100% | 2026-08-12 | 2026-08-12 | ROS | Commissioning | DH1300 | L3 | COD | DELETED | DH1100 |
| DC1-COD-L3-CX-6575 | **DELETED** DC1-COD-E13-03 L3 Startup | 2d | 2026-07-15 A | 2026-07-15 A | DC1-COD-L3-CX-6565, QTS-1020 | 100% | 2026-08-13 | 2026-08-14 | SIE | Commissioning | DH1300 | L3 | COD | DELETED | DH1100 |
| DC1-COD-L3-CX-6585 | **DELETED** DC1-COD-E13-03 BMS/EPMS Programming | 1d | 2026-07-15 A | 2026-07-15 A | DC1-COD-L3-CX-6575, QTS-1020 | 100% | 2026-08-17 | 2026-08-17 | PRM | Commissioning | DH1300 | L3 | COD | DELETED | DH1100 |
| DC1-COD-L3-CX-6595 | **DELETED** DC1-COD-E13-04 FTE | 1d | 2026-07-15 A | 2026-07-15 A | DC1-ATS-L3-CX-6595, DC1-COD-L2-3710, QTS-1020 | 100% | 2026-08-14 | 2026-08-14 | ROS | Commissioning | DH1300 | L3 | COD | DELETED | DH1100 |
| DC1-COD-L3-CX-6605 | **DELETED** DC1-COD-E13-04 L3 Startup | 2d | 2026-07-15 A | 2026-07-15 A | DC1-COD-L3-CX-6595, QTS-1020 | 100% | 2026-08-17 | 2026-08-18 | SIE | Commissioning | DH1300 | L3 | COD | DELETED | DH1100 |
| DC1-COD-L3-CX-6615 | **DELETED** DC1-COD-E13-04 BMS/EPMS Programming | 1d | 2026-07-15 A | 2026-07-15 A | DC1-COD-L3-CX-6605, QTS-1020 | 100% | 2026-08-19 | 2026-08-19 | PRM | Commissioning | DH1300 | L3 | COD | DELETED | DH1100 |
| DC1-COD-L3-CX-6625 | **DELETED** DC1-COD-E13-05 FTE | 1d | 2026-07-15 A | 2026-07-15 A | DC1-ATS-L3-CX-6625, DC1-COD-L2-3720, QTS-1020 | 100% | 2026-08-12 | 2026-08-12 | ROS | Commissioning | DH1300 | L3 | COD | DELETED | DH1100 |
| DC1-COD-L3-CX-6635 | **DELETED** DC1-COD-E13-05 L3 Startup | 2d | 2026-07-15 A | 2026-07-15 A | DC1-COD-L3-CX-6625, QTS-1020 | 100% | 2026-08-13 | 2026-08-14 | SIE | Commissioning | DH1300 | L3 | COD | DELETED | DH1100 |

Notes:
- DC1-COD-L3-CX-5945: Steps: EC Startup Report; Vendor Startup
- DC1-COD-L3-CX-5975: Steps: EC Startup Report; Vendor Startup
- DC1-COD-L3-CX-6005: Steps: EC Startup Report; Vendor Startup
- DC1-COD-L3-CX-6035: Steps: EC Startup Report; Vendor Startup
- DC1-COD-L3-CX-6065: Steps: EC Startup Report; Vendor Startup
- DC1-COD-L3-CX-6095: Steps: EC Startup Report; Vendor Startup
- DC1-COD-L3-CX-6125: Steps: EC Startup Report; Vendor Startup
- DC1-COD-L3-CX-6155: Steps: EC Startup Report; Vendor Startup
- DC1-COD-L3-CX-6185: Steps: EC Startup Report; Vendor Startup
- DC1-COD-L3-CX-6215: Steps: EC Startup Report; Vendor Startup
- DC1-COD-L3-CX-6245: Steps: EC Startup Report; Vendor Startup
- DC1-COD-L3-CX-6275: Steps: EC Startup Report; Vendor Startup
- DC1-COD-L3-CX-6305: Steps: EC Startup Report; Vendor Startup
- DC1-COD-L3-CX-6335: Steps: EC Startup Report; Vendor Startup
- DC1-COD-L3-CX-6365: Steps: EC Startup Report; Vendor Startup
- DC1-COD-L3-CX-6395: Steps: EC Startup Report; Vendor Startup
- DC1-COD-L3-CX-6425: Steps: EC Startup Report; Vendor Startup
- DC1-COD-L3-CX-6455: Steps: EC Startup Report; Vendor Startup
- DC1-COD-L3-CX-6485: Steps: EC Startup Report; Vendor Startup
- DC1-COD-L3-CX-6515: Steps: EC Startup Report; Vendor Startup
- DC1-COD-L3-CX-6545: Steps: EC Startup Report; Vendor Startup
- DC1-COD-L3-CX-6575: Steps: EC Startup Report; Vendor Startup
- DC1-COD-L3-CX-6605: Steps: EC Startup Report; Vendor Startup
- DC1-COD-L3-CX-6635: Steps: EC Startup Report; Vendor Startup

| ID | Activity | Duration | Start | Finish | Predecessors | Complete | Planned start | Planned finish | Vendor Responsible Party | Layton Discipline | Location | CX Level | Equipment | DELETED | D |
| --- | --- | --- | --- | --- | --- | --- | --- | --- | --- | --- | --- | --- | --- | --- | --- |
| DC1-COD-L3-CX-6645 | **DELETED** DC1-COD-E13-05 BMS/EPMS Programming | 1d | 2026-07-15 A | 2026-07-15 A | DC1-COD-L3-CX-6635, QTS-1020 | 100% | 2026-08-17 | 2026-08-17 | PRM | Commissioning | DH1300 | L3 | COD | DELETED | DH1100 |
| DC1-COD-L3-CX-6655 | **DELETED** DC1-COD-E13-06 FTE | 1d | 2026-07-15 A | 2026-07-15 A | DC1-ATS-L3-CX-6655, DC1-COD-L2-3730, QTS-1020 | 100% | 2026-08-14 | 2026-08-14 | ROS | Commissioning | DH1300 | L3 | COD | DELETED | DH1100 |
| DC1-COD-L3-CX-6665 | **DELETED** DC1-COD-E13-06 L3 Startup | 2d | 2026-07-15 A | 2026-07-15 A | DC1-COD-L3-CX-6655, QTS-1020 | 100% | 2026-08-17 | 2026-08-18 | SIE | Commissioning | DH1300 | L3 | COD | DELETED | DH1100 |
| DC1-COD-L3-CX-6675 | **DELETED** DC1-COD-E13-06 BMS/EPMS Programming | 1d | 2026-07-15 A | 2026-07-15 A | DC1-COD-L3-CX-6665, QTS-1020 | 100% | 2026-08-19 | 2026-08-19 | PRM | Commissioning | DH1300 | L3 | COD | DELETED | DH1100 |
| DC1-COD-L3-CX-6685 | **DELETED** DC1-COD-F13-01 FTE | 1d | 2026-07-15 A | 2026-07-15 A | DC1-ATS-L3-CX-6685, DC1-COD-L2-3740, QTS-1020 | 100% | 2026-08-12 | 2026-08-12 | ROS | Commissioning | DH1300 | L3 | COD | DELETED | DH1100 |
| DC1-COD-L3-CX-6695 | **DELETED** DC1-COD-F13-01 L3 Startup | 2d | 2026-07-15 A | 2026-07-15 A | DC1-COD-L3-CX-6685, QTS-1020 | 100% | 2026-08-13 | 2026-08-14 | SIE | Commissioning | DH1300 | L3 | COD | DELETED | DH1100 |
| DC1-COD-L3-CX-6705 | **DELETED** DC1-COD-F13-01 BMS/EPMS Programming | 1d | 2026-07-15 A | 2026-07-15 A | DC1-COD-L3-CX-6695, QTS-1020 | 100% | 2026-08-17 | 2026-08-17 | PRM | Commissioning | DH1300 | L3 | COD | DELETED | DH1100 |
| DC1-COD-L3-CX-6715 | **DELETED** DC1-COD-F13-02 FTE | 1d | 2026-07-15 A | 2026-07-15 A | DC1-ATS-L3-CX-6715, DC1-COD-L2-3750, QTS-1020 | 100% | 2026-08-14 | 2026-08-14 | ROS | Commissioning | DH1300 | L3 | COD | DELETED | DH1100 |
| DC1-COD-L3-CX-6725 | **DELETED** DC1-COD-F13-02 L3 Startup | 2d | 2026-07-15 A | 2026-07-15 A | DC1-COD-L3-CX-6715, QTS-1020 | 100% | 2026-08-17 | 2026-08-18 | SIE | Commissioning | DH1300 | L3 | COD | DELETED | DH1100 |
| DC1-COD-L3-CX-6735 | **DELETED** DC1-COD-F13-02 BMS/EPMS Programming | 1d | 2026-07-15 A | 2026-07-15 A | DC1-COD-L3-CX-6725, QTS-1020 | 100% | 2026-08-19 | 2026-08-19 | PRM | Commissioning | DH1300 | L3 | COD | DELETED | DH1100 |
| DC1-COD-L3-CX-6745 | **DELETED** DC1-COD-F13-03 FTE | 1d | 2026-07-15 A | 2026-07-15 A | DC1-ATS-L3-CX-6745, DC1-COD-L2-3760, QTS-1020 | 100% | 2026-08-12 | 2026-08-12 | ROS | Commissioning | DH1300 | L3 | COD | DELETED | DH1100 |
| DC1-COD-L3-CX-6755 | **DELETED** DC1-COD-F13-03 L3 Startup | 2d | 2026-07-15 A | 2026-07-15 A | DC1-COD-L3-CX-6745, QTS-1020 | 100% | 2026-08-13 | 2026-08-14 | SIE | Commissioning | DH1300 | L3 | COD | DELETED | DH1100 |
| DC1-COD-L3-CX-6765 | **DELETED** DC1-COD-F13-03 BMS/EPMS Programming | 1d | 2026-07-15 A | 2026-07-15 A | DC1-COD-L3-CX-6755, QTS-1020 | 100% | 2026-08-17 | 2026-08-17 | PRM | Commissioning | DH1300 | L3 | COD | DELETED | DH1100 |
| DC1-COD-L3-CX-6775 | **DELETED** DC1-COD-F13-04 FTE | 1d | 2026-07-15 A | 2026-07-15 A | DC1-ATS-L3-CX-6775, DC1-COD-L2-3770, QTS-1020 | 100% | 2026-08-14 | 2026-08-14 | ROS | Commissioning | DH1300 | L3 | COD | DELETED | DH1100 |
| DC1-COD-L3-CX-6785 | **DELETED** DC1-COD-F13-04 L3 Startup | 2d | 2026-07-15 A | 2026-07-15 A | DC1-COD-L3-CX-6775, QTS-1020 | 100% | 2026-08-17 | 2026-08-18 | SIE | Commissioning | DH1300 | L3 | COD | DELETED | DH1100 |
| DC1-COD-L3-CX-6795 | **DELETED** DC1-COD-F13-04 BMS/EPMS Programming | 1d | 2026-07-15 A | 2026-07-15 A | DC1-COD-L3-CX-6785, QTS-1020 | 100% | 2026-08-19 | 2026-08-19 | PRM | Commissioning | DH1300 | L3 | COD | DELETED | DH1100 |
| DC1-COD-L3-CX-6805 | **DELETED** DC1-COD-F13-05 FTE | 1d | 2026-07-15 A | 2026-07-15 A | DC1-ATS-L3-CX-6805, DC1-COD-L2-3780, QTS-1020 | 100% | 2026-08-12 | 2026-08-12 | ROS | Commissioning | DH1300 | L3 | COD | DELETED | DH1100 |
| DC1-COD-L3-CX-6815 | **DELETED** DC1-COD-F13-05 L3 Startup | 2d | 2026-07-15 A | 2026-07-15 A | DC1-COD-L3-CX-6805, QTS-1020 | 100% | 2026-08-13 | 2026-08-14 | SIE | Commissioning | DH1300 | L3 | COD | DELETED | DH1100 |
| DC1-COD-L3-CX-6825 | **DELETED** DC1-COD-F13-05 BMS/EPMS Programming | 1d | 2026-07-15 A | 2026-07-15 A | DC1-COD-L3-CX-6815, QTS-1020 | 100% | 2026-08-17 | 2026-08-17 | PRM | Commissioning | DH1300 | L3 | COD | DELETED | DH1100 |
| DC1-COD-L3-CX-6835 | **DELETED** DC1-COD-F13-06 FTE | 1d | 2026-07-15 A | 2026-07-15 A | DC1-ATS-L3-CX-6835, DC1-COD-L2-3790, QTS-1020 | 100% | 2026-08-14 | 2026-08-14 | ROS | Commissioning | DH1300 | L3 | COD | DELETED | DH1100 |
| DC1-COD-L3-CX-6845 | **DELETED** DC1-COD-F13-06 L3 Startup | 2d | 2026-07-15 A | 2026-07-15 A | DC1-COD-L3-CX-6835, QTS-1020 | 100% | 2026-08-17 | 2026-08-18 | SIE | Commissioning | DH1300 | L3 | COD | DELETED | DH1100 |
| DC1-COD-L3-CX-6855 | **DELETED** DC1-COD-F13-06 BMS/EPMS Programming | 1d | 2026-07-15 A | 2026-07-15 A | DC1-COD-L3-CX-6845, QTS-1020 | 100% | 2026-08-19 | 2026-08-19 | PRM | Commissioning | DH1300 | L3 | COD | DELETED | DH1100 |
| DC1-CRAH-L2-2640 | **DELETED** DH1200 CRAH-DH-01 L2 Checklist | 4d | 2026-07-15 A | 2026-07-16 A | QTS-1020 | 100% | 2026-07-15 | 2026-07-20 | UMAS | Commissioning | DH1200 | L2 | DH CRAH | DELETED | DH1100 |
| DC1-CRAH-L2-2650 | **DELETED** DH1200 CRAH-DH-02 L2 Checklist | 4d | 2026-07-15 A | 2026-07-16 A | QTS-1020 | 100% | 2026-07-15 | 2026-07-20 | UMAS | Commissioning | DH1200 | L2 | DH CRAH | DELETED | DH1100 |
| DC1-CRAH-L2-2660 | **DELETED** DH1200 CRAH-DH-03 L2 Checklist | 4d | 2026-07-15 A | 2026-07-16 A | QTS-1020 | 100% | 2026-07-15 | 2026-07-20 | UMAS | Commissioning | DH1200 | L2 | DH CRAH | DELETED | DH1100 |
| DC1-CRAH-L2-2670 | **DELETED** DH1200 CRAH-DH-04 L2 Checklist | 4d | 2026-07-15 A | 2026-07-16 A | QTS-1020 | 100% | 2026-07-15 | 2026-07-20 | UMAS | Commissioning | DH1200 | L2 | DH CRAH | DELETED | DH1100 |
| DC1-CRAH-L2-2680 | **DELETED** DH1200 CRAH-DH-05 L2 Checklist | 4d | 2026-07-15 A | 2026-07-16 A | QTS-1020 | 100% | 2026-07-15 | 2026-07-20 | UMAS | Commissioning | DH1200 | L2 | DH CRAH | DELETED | DH1100 |
| DC1-CRAH-L2-2690 | **DELETED** DH1200 CRAH-DH-06 L2 Checklist | 4d | 2026-07-15 A | 2026-07-16 A | QTS-1020 | 100% | 2026-07-15 | 2026-07-20 | UMAS | Commissioning | DH1200 | L2 | DH CRAH | DELETED | DH1100 |
| DC1-CRAH-L2-2700 | **DELETED** DH1200 CRAH-DH-07 L2 Checklist | 4d | 2026-07-15 A | 2026-07-16 A | QTS-1020 | 100% | 2026-07-15 | 2026-07-20 | UMAS | Commissioning | DH1200 | L2 | DH CRAH | DELETED | DH1100 |
| DC1-CRAH-L2-2710 | **DELETED** DH1200 CRAH-DH-08 L2 Checklist | 4d | 2026-07-15 A | 2026-07-16 A | QTS-1020 | 100% | 2026-07-15 | 2026-07-20 | UMAS | Commissioning | DH1200 | L2 | DH CRAH | DELETED | DH1100 |
| DC1-CRAH-L2-2720 | **DELETED** DH1200 CRAH-DH-09 L2 Checklist | 4d | 2026-07-15 A | 2026-07-16 A | QTS-1020 | 100% | 2026-07-15 | 2026-07-20 | UMAS | Commissioning | DH1200 | L2 | DH CRAH | DELETED | DH1100 |
| DC1-CRAH-L2-2730 | **DELETED** DH1200 CRAH-DH-10 L2 Checklist | 4d | 2026-07-15 A | 2026-07-16 A | QTS-1020 | 100% | 2026-07-15 | 2026-07-20 | UMAS | Commissioning | DH1200 | L2 | DH CRAH | DELETED | DH1100 |
| DC1-CRAH-L2-2740 | **DELETED** DH1200 CRAH-DH-11 L2 Checklist | 4d | 2026-07-15 A | 2026-07-16 A | QTS-1020 | 100% | 2026-07-15 | 2026-07-20 | UMAS | Commissioning | DH1200 | L2 | DH CRAH | DELETED | DH1100 |
| DC1-CRAH-L2-2750 | **DELETED** DH1200 CRAH-DH-12 L2 Checklist | 4d | 2026-07-15 A | 2026-07-16 A | QTS-1020 | 100% | 2026-07-15 | 2026-07-20 | UMAS | Commissioning | DH1200 | L2 | DH CRAH | DELETED | DH1100 |
| DC1-CRAH-L2-2760 | **DELETED** DH1200 CRAH-DH-13 L2 Checklist | 4d | 2026-07-15 A | 2026-07-16 A | QTS-1020 | 100% | 2026-07-15 | 2026-07-20 | UMAS | Commissioning | DH1200 | L2 | DH CRAH | DELETED | DH1100 |
| DC1-CRAH-L2-2770 | **DELETED** DH1200 CRAH-DH-14 L2 Checklist | 3d | 2026-07-15 A | 2026-07-16 A | QTS-1020 | 100% | 2026-07-15 | 2026-07-17 | UMAS | Commissioning | DH1200 | L2 | DH CRAH | DELETED | DH1100 |
| DC1-CRAH-L2-2780 | **DELETED** DH1200 CRAH-DH-15 L2 Checklist | 3d | 2026-07-15 A | 2026-07-16 A | QTS-1020 | 100% | 2026-07-16 | 2026-07-20 | UMAS | Commissioning | DH1200 | L2 | DH CRAH | DELETED | DH1100 |
| DC1-CRAH-L2-2790 | **DELETED** DH1200 CRAH-DH-16 L2 Checklist | 3d | 2026-07-15 A | 2026-07-16 A | QTS-1020 | 100% | 2026-07-16 | 2026-07-20 | UMAS | Commissioning | DH1200 | L2 | DH CRAH | DELETED | DH1100 |
| DC1-CRAH-L2-2800 | **DELETED** DH1200 CRAH-DH-17 L2 Checklist | 3d | 2026-07-15 A | 2026-07-16 A | QTS-1020 | 100% | 2026-07-16 | 2026-07-20 | UMAS | Commissioning | DH1200 | L2 | DH CRAH | DELETED | DH1100 |
| DC1-CRAH-L2-2810 | **DELETED** DH1200 CRAH-DH-18 L2 Checklist | 3d | 2026-07-15 A | 2026-07-16 A | QTS-1020 | 100% | 2026-07-16 | 2026-07-20 | UMAS | Commissioning | DH1200 | L2 | DH CRAH | DELETED | DH1100 |
| DC1-CRAH-L2-2820 | **DELETED** DH1200 CRAH-DH-19 L2 Checklist | 3d | 2026-07-15 A | 2026-07-16 A | QTS-1020 | 100% | 2026-07-16 | 2026-07-20 | UMAS | Commissioning | DH1200 | L2 | DH CRAH | DELETED | DH1100 |
| DC1-CRAH-L2-2830 | **DELETED** DH1200 CRAH-DH-20 L2 Checklist | 3d | 2026-07-15 A | 2026-07-16 A | QTS-1020 | 100% | 2026-07-16 | 2026-07-20 | UMAS | Commissioning | DH1200 | L2 | DH CRAH | DELETED | DH1100 |
| DC1-CRAH-L2-2840 | **DELETED** DH1200 CRAH-DH-21 L2 Checklist | 3d | 2026-07-15 A | 2026-07-16 A | QTS-1020 | 100% | 2026-07-16 | 2026-07-20 | UMAS | Commissioning | DH1200 | L2 | DH CRAH | DELETED | DH1100 |
| DC1-CRAH-L2-2850 | **DELETED** DH1200 CRAH-DH-22 L2 Checklist | 3d | 2026-07-15 A | 2026-07-16 A | QTS-1020 | 100% | 2026-07-16 | 2026-07-20 | UMAS | Commissioning | DH1200 | L2 | DH CRAH | DELETED | DH1100 |
| DC1-CRAH-L2-2860 | **DELETED** DH1200 CRAH-DH-23 L2 Checklist | 3d | 2026-07-15 A | 2026-07-16 A | QTS-1020 | 100% | 2026-07-16 | 2026-07-20 | UMAS | Commissioning | DH1200 | L2 | DH CRAH | DELETED | DH1100 |
| DC1-CRAH-L2-2870 | **DELETED** DH1200 CRAH-DH-24 L2 Checklist | 3d | 2026-07-15 A | 2026-07-16 A | QTS-1020 | 100% | 2026-07-16 | 2026-07-20 | UMAS | Commissioning | DH1200 | L2 | DH CRAH | DELETED | DH1100 |
| DC1-CRAH-L2-2880 | **DELETED** DH1200 CRAH-DH-25 L2 Checklist | 3d | 2026-07-15 A | 2026-07-16 A | QTS-1020 | 100% | 2026-07-16 | 2026-07-20 | UMAS | Commissioning | DH1200 | L2 | DH CRAH | DELETED | DH1100 |
| DC1-CRAH-L2-2890 | **DELETED** DH1200 CRAH-DH-26 L2 Checklist | 3d | 2026-07-15 A | 2026-07-16 A | QTS-1020 | 100% | 2026-07-16 | 2026-07-20 | UMAS | Commissioning | DH1200 | L2 | DH CRAH | DELETED | DH1100 |
| DC1-CRAH-L2-2900 | **DELETED** DH1200 CRAH-DH-27 L2 Checklist | 3d | 2026-07-15 A | 2026-07-16 A | QTS-1020 | 100% | 2026-07-16 | 2026-07-20 | UMAS | Commissioning | DH1200 | L2 | DH CRAH | DELETED | DH1100 |
| DC1-CRAH-L2-2910 | **DELETED** DH1200 CRAH-DH-28 L2 Checklist | 3d | 2026-07-15 A | 2026-07-16 A | QTS-1020 | 100% | 2026-07-16 | 2026-07-20 | UMAS | Commissioning | DH1200 | L2 | DH CRAH | DELETED | DH1100 |
| DC1-CRAH-L2-2920 | **DELETED** DH1200 CRAH-EG1202-01 L2 Checklist | 3d | 2026-07-15 A | 2026-07-16 A | QTS-1020 | 100% | 2026-07-16 | 2026-07-20 | VER | Commissioning | DH1200 | L2 | EG CRAH | DELETED | DH1100 |
| DC1-CRAH-L2-2930 | **DELETED** DH1200 CRAH-EG1202-02 L2 Checklist | 3d | 2026-07-15 A | 2026-07-16 A | QTS-1020 | 100% | 2026-07-16 | 2026-07-20 | VER | Commissioning | DH1200 | L2 | EG CRAH | DELETED | DH1100 |
| DC1-CRAH-L2-2940 | **DELETED** DH1200 CRAH-EG1202-03 L2 Checklist | 3d | 2026-07-15 A | 2026-07-16 A | QTS-1020 | 100% | 2026-07-16 | 2026-07-20 | VER | Commissioning | DH1200 | L2 | EG CRAH | DELETED | DH1100 |
| DC1-CRAH-L2-2950 | **DELETED** DH1200 CRAH-EG1202-04 L2 Checklist | 3d | 2026-07-15 A | 2026-07-16 A | QTS-1020 | 100% | 2026-07-16 | 2026-07-20 | VER | Commissioning | DH1200 | L2 | EG CRAH | DELETED | DH1100 |
| DC1-CRAH-L2-2960 | **DELETED** DH2300 CRAH-DH-01 L2 Checklist | 3d | 2026-07-15 A | 2026-07-15 A | QTS-1020 | 100% | 2026-07-15 | 2026-07-17 | UMAS | Commissioning | DH2300 | L2 | DH CRAH | DELETED | DH1100 |
| DC1-CRAH-L2-2970 | **DELETED** DH2300 CRAH-DH-02 L2 Checklist | 3d | 2026-07-15 A | 2026-07-15 A | QTS-1020 | 100% | 2026-07-15 | 2026-07-17 | UMAS | Commissioning | DH2300 | L2 | DH CRAH | DELETED | DH1100 |
| DC1-CRAH-L2-2980 | **DELETED** DH2300 CRAH-DH-03 L2 Checklist | 3d | 2026-07-15 A | 2026-07-15 A | QTS-1020 | 100% | 2026-07-15 | 2026-07-17 | UMAS | Commissioning | DH2300 | L2 | DH CRAH | DELETED | DH1100 |
| DC1-CRAH-L2-2990 | **DELETED** DH2300 CRAH-DH-04 L2 Checklist | 3d | 2026-07-15 A | 2026-07-15 A | QTS-1020 | 100% | 2026-07-15 | 2026-07-17 | UMAS | Commissioning | DH2300 | L2 | DH CRAH | DELETED | DH1100 |
| DC1-CRAH-L2-3000 | **DELETED** DH2300 CRAH-DH-05 L2 Checklist | 3d | 2026-07-15 A | 2026-07-15 A | QTS-1020 | 100% | 2026-07-15 | 2026-07-17 | UMAS | Commissioning | DH2300 | L2 | DH CRAH | DELETED | DH1100 |
| DC1-CRAH-L2-3010 | **DELETED** DH2300 CRAH-DH-06 L2 Checklist | 3d | 2026-07-15 A | 2026-07-15 A | QTS-1020 | 100% | 2026-07-15 | 2026-07-17 | UMAS | Commissioning | DH2300 | L2 | DH CRAH | DELETED | DH1100 |
| DC1-CRAH-L2-3020 | **DELETED** DH2300 CRAH-DH-07 L2 Checklist | 3d | 2026-07-15 A | 2026-07-15 A | QTS-1020 | 100% | 2026-07-15 | 2026-07-17 | UMAS | Commissioning | DH2300 | L2 | DH CRAH | DELETED | DH1100 |
| DC1-CRAH-L2-3030 | **DELETED** DH2300 CRAH-DH-08 L2 Checklist | 3d | 2026-07-15 A | 2026-07-15 A | QTS-1020 | 100% | 2026-07-15 | 2026-07-17 | UMAS | Commissioning | DH2300 | L2 | DH CRAH | DELETED | DH1100 |
| DC1-CRAH-L2-3040 | **DELETED** DH2300 CRAH-DH-09 L2 Checklist | 3d | 2026-07-15 A | 2026-07-15 A | QTS-1020 | 100% | 2026-07-15 | 2026-07-17 | UMAS | Commissioning | DH2300 | L2 | DH CRAH | DELETED | DH1100 |
| DC1-CRAH-L2-3050 | **DELETED** DH2300 CRAH-DH-10 L2 Checklist | 3d | 2026-07-15 A | 2026-07-15 A | QTS-1020 | 100% | 2026-07-15 | 2026-07-17 | UMAS | Commissioning | DH2300 | L2 | DH CRAH | DELETED | DH1100 |
| DC1-CRAH-L2-3060 | **DELETED** DH2300 CRAH-DH-11 L2 Checklist | 3d | 2026-07-15 A | 2026-07-15 A | QTS-1020 | 100% | 2026-07-15 | 2026-07-17 | UMAS | Commissioning | DH2300 | L2 | DH CRAH | DELETED | DH1100 |
| DC1-CRAH-L2-3070 | **DELETED** DH2300 CRAH-DH-12 L2 Checklist | 3d | 2026-07-15 A | 2026-07-15 A | QTS-1020 | 100% | 2026-07-15 | 2026-07-17 | UMAS | Commissioning | DH2300 | L2 | DH CRAH | DELETED | DH1100 |
| DC1-CRAH-L2-3080 | **DELETED** DH2300 CRAH-DH-13 L2 Checklist | 3d | 2026-07-15 A | 2026-07-15 A | QTS-1020 | 100% | 2026-07-15 | 2026-07-17 | UMAS | Commissioning | DH2300 | L2 | DH CRAH | DELETED | DH1100 |
| DC1-CRAH-L2-3090 | **DELETED** DH2300 CRAH-DH-14 L2 Checklist | 3d | 2026-07-15 A | 2026-07-15 A | QTS-1020 | 100% | 2026-07-15 | 2026-07-17 | UMAS | Commissioning | DH2300 | L2 | DH CRAH | DELETED | DH1100 |
| DC1-CRAH-L2-3100 | **DELETED** DH2300 CRAH-DH-15 L2 Checklist | 3d | 2026-07-15 A | 2026-07-15 A | QTS-1020 | 100% | 2026-07-15 | 2026-07-17 | UMAS | Commissioning | DH2300 | L2 | DH CRAH | DELETED | DH1100 |
| DC1-CRAH-L2-3110 | **DELETED** DH2300 CRAH-DH-16 L2 Checklist | 3d | 2026-07-15 A | 2026-07-15 A | QTS-1020 | 100% | 2026-07-15 | 2026-07-17 | UMAS | Commissioning | DH2300 | L2 | DH CRAH | DELETED | DH1100 |

Notes:
- DC1-COD-L3-CX-6665: Steps: EC Startup Report; Vendor Startup
- DC1-COD-L3-CX-6695: Steps: EC Startup Report; Vendor Startup
- DC1-COD-L3-CX-6725: Steps: EC Startup Report; Vendor Startup
- DC1-COD-L3-CX-6755: Steps: EC Startup Report; Vendor Startup
- DC1-COD-L3-CX-6785: Steps: EC Startup Report; Vendor Startup
- DC1-COD-L3-CX-6815: Steps: EC Startup Report; Vendor Startup
- DC1-COD-L3-CX-6845: Steps: EC Startup Report; Vendor Startup
- DC1-CRAH-L2-2640: Steps: EC Installation Checklist (done); MC Installation Checklist; CC Installation Checklist; Vendor Pre-Energization Checklist; CXA Pre-Energization Inspection; PEI/Clean-Walk
- DC1-CRAH-L2-2650: Steps: EC Installation Checklist; MC Installation Checklist; CC Installation Checklist; Vendor Pre-Energization Checklist (done); CXA Pre-Energization Inspection; PEI/Clean-Walk
- DC1-CRAH-L2-2660: Steps: EC Installation Checklist; MC Installation Checklist; CC Installation Checklist; Vendor Pre-Energization Checklist (done); CXA Pre-Energization Inspection; PEI/Clean-Walk
- DC1-CRAH-L2-2670: Steps: EC Installation Checklist; MC Installation Checklist; CC Installation Checklist; Vendor Pre-Energization Checklist (done); CXA Pre-Energization Inspection; PEI/Clean-Walk
- DC1-CRAH-L2-2680: Steps: EC Installation Checklist; MC Installation Checklist; CC Installation Checklist; Vendor Pre-Energization Checklist (done); CXA Pre-Energization Inspection; PEI/Clean-Walk
- DC1-CRAH-L2-2690: Steps: EC Installation Checklist; MC Installation Checklist; CC Installation Checklist; Vendor Pre-Energization Checklist (done); CXA Pre-Energization Inspection; PEI/Clean-Walk
- DC1-CRAH-L2-2700: Steps: EC Installation Checklist; MC Installation Checklist; CC Installation Checklist; Vendor Pre-Energization Checklist (done); CXA Pre-Energization Inspection; PEI/Clean-Walk
- DC1-CRAH-L2-2710: Steps: EC Installation Checklist; MC Installation Checklist; CC Installation Checklist; Vendor Pre-Energization Checklist (done); CXA Pre-Energization Inspection; PEI/Clean-Walk
- DC1-CRAH-L2-2720: Steps: EC Installation Checklist; MC Installation Checklist; CC Installation Checklist; Vendor Pre-Energization Checklist (done); CXA Pre-Energization Inspection; PEI/Clean-Walk
- DC1-CRAH-L2-2730: Steps: EC Installation Checklist; MC Installation Checklist; CC Installation Checklist; Vendor Pre-Energization Checklist (done); CXA Pre-Energization Inspection; PEI/Clean-Walk
- DC1-CRAH-L2-2740: Steps: EC Installation Checklist; MC Installation Checklist; CC Installation Checklist; Vendor Pre-Energization Checklist (done); CXA Pre-Energization Inspection; PEI/Clean-Walk
- DC1-CRAH-L2-2750: Steps: EC Installation Checklist; MC Installation Checklist; CC Installation Checklist; Vendor Pre-Energization Checklist (done); CXA Pre-Energization Inspection; PEI/Clean-Walk
- DC1-CRAH-L2-2760: Steps: EC Installation Checklist; MC Installation Checklist; CC Installation Checklist; Vendor Pre-Energization Checklist (done); CXA Pre-Energization Inspection; PEI/Clean-Walk
- DC1-CRAH-L2-2770: Steps: EC Installation Checklist; MC Installation Checklist; CC Installation Checklist; Vendor Pre-Energization Checklist (done); CXA Pre-Energization Inspection; PEI/Clean-Walk
- DC1-CRAH-L2-2780: Steps: EC Installation Checklist; MC Installation Checklist; CC Installation Checklist; Vendor Pre-Energization Checklist (done); CXA Pre-Energization Inspection; PEI/Clean-Walk
- DC1-CRAH-L2-2790: Steps: EC Installation Checklist; MC Installation Checklist; CC Installation Checklist; Vendor Pre-Energization Checklist (done); CXA Pre-Energization Inspection; PEI/Clean-Walk
- DC1-CRAH-L2-2800: Steps: EC Installation Checklist; MC Installation Checklist; CC Installation Checklist; Vendor Pre-Energization Checklist (done); CXA Pre-Energization Inspection; PEI/Clean-Walk
- DC1-CRAH-L2-2810: Steps: EC Installation Checklist; MC Installation Checklist; CC Installation Checklist; Vendor Pre-Energization Checklist (done); CXA Pre-Energization Inspection; PEI/Clean-Walk
- DC1-CRAH-L2-2820: Steps: EC Installation Checklist; MC Installation Checklist; CC Installation Checklist; Vendor Pre-Energization Checklist (done); CXA Pre-Energization Inspection; PEI/Clean-Walk
- DC1-CRAH-L2-2830: Steps: EC Installation Checklist; MC Installation Checklist; CC Installation Checklist; Vendor Pre-Energization Checklist (done); CXA Pre-Energization Inspection; PEI/Clean-Walk
- DC1-CRAH-L2-2840: Steps: EC Installation Checklist; MC Installation Checklist; CC Installation Checklist; Vendor Pre-Energization Checklist (done); CXA Pre-Energization Inspection; PEI/Clean-Walk
- DC1-CRAH-L2-2850: Steps: EC Installation Checklist; MC Installation Checklist; CC Installation Checklist; Vendor Pre-Energization Checklist (done); CXA Pre-Energization Inspection; PEI/Clean-Walk
- DC1-CRAH-L2-2860: Steps: EC Installation Checklist; MC Installation Checklist; CC Installation Checklist; Vendor Pre-Energization Checklist (done); CXA Pre-Energization Inspection; PEI/Clean-Walk
- DC1-CRAH-L2-2870: Steps: EC Installation Checklist; MC Installation Checklist; CC Installation Checklist; Vendor Pre-Energization Checklist (done); CXA Pre-Energization Inspection; PEI/Clean-Walk
- DC1-CRAH-L2-2880: Steps: EC Installation Checklist; MC Installation Checklist; CC Installation Checklist; Vendor Pre-Energization Checklist (done); CXA Pre-Energization Inspection; PEI/Clean-Walk
- DC1-CRAH-L2-2890: Steps: EC Installation Checklist; MC Installation Checklist; CC Installation Checklist; Vendor Pre-Energization Checklist (done); CXA Pre-Energization Inspection; PEI/Clean-Walk
- DC1-CRAH-L2-2900: Steps: EC Installation Checklist; MC Installation Checklist; CC Installation Checklist; Vendor Pre-Energization Checklist (done); CXA Pre-Energization Inspection; PEI/Clean-Walk
- DC1-CRAH-L2-2910: Steps: EC Installation Checklist; MC Installation Checklist; CC Installation Checklist; Vendor Pre-Energization Checklist (done); CXA Pre-Energization Inspection; PEI/Clean-Walk
- DC1-CRAH-L2-2920: Steps: EC Installation Checklist; MC Installation Checklist; CC Installation Checklist; Vendor Pre-Energization Checklist; CXA Pre-Energization Inspection; PEI/Clean-Walk
- DC1-CRAH-L2-2930: Steps: EC Installation Checklist; MC Installation Checklist; CC Installation Checklist; Vendor Pre-Energization Checklist; CXA Pre-Energization Inspection; PEI/Clean-Walk
- DC1-CRAH-L2-2940: Steps: EC Installation Checklist; MC Installation Checklist; CC Installation Checklist; Vendor Pre-Energization Checklist; CXA Pre-Energization Inspection; PEI/Clean-Walk
- DC1-CRAH-L2-2950: Steps: EC Installation Checklist; MC Installation Checklist; CC Installation Checklist; Vendor Pre-Energization Checklist; CXA Pre-Energization Inspection; PEI/Clean-Walk
- DC1-CRAH-L2-2960: Steps: EC Installation Checklist; MC Installation Checklist; CC Installation Checklist; Vendor Pre-Energization Checklist; CXA Pre-Energization Inspection; PEI/Clean-Walk
- DC1-CRAH-L2-2970: Steps: EC Installation Checklist; MC Installation Checklist; CC Installation Checklist; Vendor Pre-Energization Checklist; CXA Pre-Energization Inspection; PEI/Clean-Walk
- DC1-CRAH-L2-2980: Steps: EC Installation Checklist; MC Installation Checklist; CC Installation Checklist; Vendor Pre-Energization Checklist; CXA Pre-Energization Inspection; PEI/Clean-Walk
- DC1-CRAH-L2-2990: Steps: EC Installation Checklist; MC Installation Checklist; CC Installation Checklist; Vendor Pre-Energization Checklist; CXA Pre-Energization Inspection; PEI/Clean-Walk
- DC1-CRAH-L2-3000: Steps: EC Installation Checklist; MC Installation Checklist; CC Installation Checklist; Vendor Pre-Energization Checklist; CXA Pre-Energization Inspection; PEI/Clean-Walk
- DC1-CRAH-L2-3010: Steps: EC Installation Checklist; MC Installation Checklist; CC Installation Checklist; Vendor Pre-Energization Checklist; CXA Pre-Energization Inspection; PEI/Clean-Walk
- DC1-CRAH-L2-3020: Steps: EC Installation Checklist; MC Installation Checklist; CC Installation Checklist; Vendor Pre-Energization Checklist; CXA Pre-Energization Inspection; PEI/Clean-Walk
- DC1-CRAH-L2-3030: Steps: EC Installation Checklist; MC Installation Checklist; CC Installation Checklist; Vendor Pre-Energization Checklist; CXA Pre-Energization Inspection; PEI/Clean-Walk
- DC1-CRAH-L2-3040: Steps: EC Installation Checklist; MC Installation Checklist; CC Installation Checklist; Vendor Pre-Energization Checklist; CXA Pre-Energization Inspection; PEI/Clean-Walk
- DC1-CRAH-L2-3050: Steps: EC Installation Checklist; MC Installation Checklist; CC Installation Checklist; Vendor Pre-Energization Checklist; CXA Pre-Energization Inspection; PEI/Clean-Walk
- DC1-CRAH-L2-3060: Steps: EC Installation Checklist; MC Installation Checklist; CC Installation Checklist; Vendor Pre-Energization Checklist; CXA Pre-Energization Inspection; PEI/Clean-Walk
- DC1-CRAH-L2-3070: Steps: EC Installation Checklist; MC Installation Checklist; CC Installation Checklist; Vendor Pre-Energization Checklist; CXA Pre-Energization Inspection; PEI/Clean-Walk
- DC1-CRAH-L2-3080: Steps: EC Installation Checklist; MC Installation Checklist; CC Installation Checklist; Vendor Pre-Energization Checklist; CXA Pre-Energization Inspection; PEI/Clean-Walk
- DC1-CRAH-L2-3090: Steps: EC Installation Checklist; MC Installation Checklist; CC Installation Checklist; Vendor Pre-Energization Checklist; CXA Pre-Energization Inspection; PEI/Clean-Walk
- DC1-CRAH-L2-3100: Steps: EC Installation Checklist; MC Installation Checklist; CC Installation Checklist; Vendor Pre-Energization Checklist; CXA Pre-Energization Inspection; PEI/Clean-Walk
- DC1-CRAH-L2-3110: Steps: EC Installation Checklist; MC Installation Checklist; CC Installation Checklist; Vendor Pre-Energization Checklist; CXA Pre-Energization Inspection; PEI/Clean-Walk

| ID | Activity | Duration | Start | Finish | Predecessors | Complete | Planned start | Planned finish | Vendor Responsible Party | Layton Discipline | Location | CX Level | Equipment | DELETED | D |
| --- | --- | --- | --- | --- | --- | --- | --- | --- | --- | --- | --- | --- | --- | --- | --- |
| DC1-CRAH-L2-3120 | **DELETED** DH2300 CRAH-DH-17 L2 Checklist | 3d | 2026-07-15 A | 2026-07-15 A | QTS-1020 | 100% | 2026-07-15 | 2026-07-17 | UMAS | Commissioning | DH2300 | L2 | DH CRAH | DELETED | DH1100 |
| DC1-CRAH-L2-3130 | **DELETED** DH2300 CRAH-DH-18 L2 Checklist | 3d | 2026-07-15 A | 2026-07-15 A | QTS-1020 | 100% | 2026-07-15 | 2026-07-17 | UMAS | Commissioning | DH2300 | L2 | DH CRAH | DELETED | DH1100 |
| DC1-CRAH-L2-3140 | **DELETED** DH2300 CRAH-DH-19 L2 Checklist | 3d | 2026-07-15 A | 2026-07-15 A | QTS-1020 | 100% | 2026-07-15 | 2026-07-17 | UMAS | Commissioning | DH2300 | L2 | DH CRAH | DELETED | DH1100 |
| DC1-CRAH-L2-3150 | **DELETED** DH2300 CRAH-DH-20 L2 Checklist | 3d | 2026-07-15 A | 2026-07-15 A | QTS-1020 | 100% | 2026-07-15 | 2026-07-17 | UMAS | Commissioning | DH2300 | L2 | DH CRAH | DELETED | DH1100 |
| DC1-CRAH-L2-3160 | **DELETED** DH2300 CRAH-DH-21 L2 Checklist | 3d | 2026-07-15 A | 2026-07-15 A | QTS-1020 | 100% | 2026-07-15 | 2026-07-17 | UMAS | Commissioning | DH2300 | L2 | DH CRAH | DELETED | DH1100 |
| DC1-CRAH-L2-3170 | **DELETED** DH2300 CRAH-DH-22 L2 Checklist | 3d | 2026-07-15 A | 2026-07-15 A | QTS-1020 | 100% | 2026-07-15 | 2026-07-17 | UMAS | Commissioning | DH2300 | L2 | DH CRAH | DELETED | DH1100 |
| DC1-CRAH-L2-3180 | **DELETED** DH2300 CRAH-DH-23 L2 Checklist | 3d | 2026-07-15 A | 2026-07-15 A | QTS-1020 | 100% | 2026-07-15 | 2026-07-17 | UMAS | Commissioning | DH2300 | L2 | DH CRAH | DELETED | DH1100 |
| DC1-CRAH-L2-3190 | **DELETED** DH2300 CRAH-DH-24 L2 Checklist | 3d | 2026-07-15 A | 2026-07-15 A | QTS-1020 | 100% | 2026-07-15 | 2026-07-17 | UMAS | Commissioning | DH2300 | L2 | DH CRAH | DELETED | DH1100 |
| DC1-CRAH-L2-3200 | **DELETED** DH2300 CRAH-DH-25 L2 Checklist | 3d | 2026-07-15 A | 2026-07-15 A | QTS-1020 | 100% | 2026-07-15 | 2026-07-17 | UMAS | Commissioning | DH2300 | L2 | DH CRAH | DELETED | DH1100 |
| DC1-CRAH-L2-3210 | **DELETED** DH2300 CRAH-DH-26 L2 Checklist | 3d | 2026-07-15 A | 2026-07-15 A | QTS-1020 | 100% | 2026-07-15 | 2026-07-17 | UMAS | Commissioning | DH2300 | L2 | DH CRAH | DELETED | DH1100 |
| DC1-CRAH-L2-3220 | **DELETED** DH2300 CRAH-DH-27 L2 Checklist | 3d | 2026-07-15 A | 2026-07-15 A | QTS-1020 | 100% | 2026-07-15 | 2026-07-17 | UMAS | Commissioning | DH2300 | L2 | DH CRAH | DELETED | DH1100 |
| DC1-CRAH-L2-3230 | **DELETED** DH2300 CRAH-DH-28 L2 Checklist | 3d | 2026-07-15 A | 2026-07-15 A | QTS-1020 | 100% | 2026-07-15 | 2026-07-17 | UMAS | Commissioning | DH2300 | L2 | DH CRAH | DELETED | DH1100 |
| DC1-CRAH-L2-3240 | **DELETED** DH2300 CRAH-EG2302-01 L2 Checklist | 3d | 2026-07-15 A | 2026-07-15 A | QTS-1020 | 100% | 2026-07-15 | 2026-07-17 | VER | Commissioning | DH2300 | L2 | EG CRAH | DELETED | DH1100 |
| DC1-CRAH-L2-3250 | **DELETED** DH2300 CRAH-EG2302-02 L2 Checklist | 3d | 2026-07-15 A | 2026-07-15 A | QTS-1020 | 100% | 2026-07-15 | 2026-07-17 | VER | Commissioning | DH2300 | L2 | EG CRAH | DELETED | DH1100 |
| DC1-CRAH-L2-3260 | **DELETED** DH2300 CRAH-EG2302-03 L2 Checklist | 3d | 2026-07-15 A | 2026-07-15 A | QTS-1020 | 100% | 2026-07-15 | 2026-07-17 | VER | Commissioning | DH2300 | L2 | EG CRAH | DELETED | DH1100 |
| DC1-CRAH-L2-3270 | **DELETED** DH2300 CRAH-EG2302-04 L2 Checklist | 3d | 2026-07-15 A | 2026-07-15 A | QTS-1020 | 100% | 2026-07-15 | 2026-07-17 | VER | Commissioning | DH2300 | L2 | EG CRAH | DELETED | DH1100 |
| DC1-CRAH-L2-3280 | **DELETED** DH1300 CRAH-DH-01 L2 Checklist | 3d | 2026-07-15 A | 2026-07-15 A | QTS-1020 | 100% | 2026-07-15 | 2026-07-17 | UMAS | Commissioning | DH1300 | L2 | DH CRAH | DELETED | DH1100 |
| DC1-CRAH-L2-3290 | **DELETED** DH1300 CRAH-DH-02 L2 Checklist | 3d | 2026-07-15 A | 2026-07-15 A | QTS-1020 | 100% | 2026-07-15 | 2026-07-17 | UMAS | Commissioning | DH1300 | L2 | DH CRAH | DELETED | DH1100 |
| DC1-CRAH-L2-3300 | **DELETED** DH1300 CRAH-DH-03 L2 Checklist | 3d | 2026-07-15 A | 2026-07-15 A | QTS-1020 | 100% | 2026-07-15 | 2026-07-17 | UMAS | Commissioning | DH1300 | L2 | DH CRAH | DELETED | DH1100 |
| DC1-CRAH-L2-3310 | **DELETED** DH1300 CRAH-DH-04 L2 Checklist | 3d | 2026-07-15 A | 2026-07-15 A | QTS-1020 | 100% | 2026-07-15 | 2026-07-17 | UMAS | Commissioning | DH1300 | L2 | DH CRAH | DELETED | DH1100 |
| DC1-CRAH-L2-3320 | **DELETED** DH1300 CRAH-DH-05 L2 Checklist | 3d | 2026-07-15 A | 2026-07-15 A | QTS-1020 | 100% | 2026-07-15 | 2026-07-17 | UMAS | Commissioning | DH1300 | L2 | DH CRAH | DELETED | DH1100 |
| DC1-CRAH-L2-3330 | **DELETED** DH1300 CRAH-DH-06 L2 Checklist | 3d | 2026-07-15 A | 2026-07-15 A | QTS-1020 | 100% | 2026-07-15 | 2026-07-17 | UMAS | Commissioning | DH1300 | L2 | DH CRAH | DELETED | DH1100 |
| DC1-CRAH-L2-3340 | **DELETED** DH1300 CRAH-DH-07 L2 Checklist | 3d | 2026-07-15 A | 2026-07-15 A | QTS-1020 | 100% | 2026-07-15 | 2026-07-17 | UMAS | Commissioning | DH1300 | L2 | DH CRAH | DELETED | DH1100 |
| DC1-CRAH-L2-3350 | **DELETED** DH1300 CRAH-DH-08 L2 Checklist | 3d | 2026-07-15 A | 2026-07-15 A | QTS-1020 | 100% | 2026-07-15 | 2026-07-17 | UMAS | Commissioning | DH1300 | L2 | DH CRAH | DELETED | DH1100 |
| DC1-CRAH-L2-3360 | **DELETED** DH1300 CRAH-DH-09 L2 Checklist | 3d | 2026-07-15 A | 2026-07-15 A | QTS-1020 | 100% | 2026-07-15 | 2026-07-17 | UMAS | Commissioning | DH1300 | L2 | DH CRAH | DELETED | DH1100 |
| DC1-CRAH-L2-3370 | **DELETED** DH1300 CRAH-DH-10 L2 Checklist | 3d | 2026-07-15 A | 2026-07-15 A | QTS-1020 | 100% | 2026-07-15 | 2026-07-17 | UMAS | Commissioning | DH1300 | L2 | DH CRAH | DELETED | DH1100 |
| DC1-CRAH-L2-3380 | **DELETED** DH1300 CRAH-DH-11 L2 Checklist | 3d | 2026-07-15 A | 2026-07-15 A | QTS-1020 | 100% | 2026-07-15 | 2026-07-17 | UMAS | Commissioning | DH1300 | L2 | DH CRAH | DELETED | DH1100 |
| DC1-CRAH-L2-3390 | **DELETED** DH1300 CRAH-DH-12 L2 Checklist | 3d | 2026-07-15 A | 2026-07-15 A | QTS-1020 | 100% | 2026-07-15 | 2026-07-17 | UMAS | Commissioning | DH1300 | L2 | DH CRAH | DELETED | DH1100 |
| DC1-CRAH-L2-3400 | **DELETED** DH1300 CRAH-DH-13 L2 Checklist | 3d | 2026-07-15 A | 2026-07-15 A | QTS-1020 | 100% | 2026-07-15 | 2026-07-17 | UMAS | Commissioning | DH1300 | L2 | DH CRAH | DELETED | DH1100 |
| DC1-CRAH-L2-3410 | **DELETED** DH1300 CRAH-DH-14 L2 Checklist | 3d | 2026-07-15 A | 2026-07-15 A | QTS-1020 | 100% | 2026-07-15 | 2026-07-17 | UMAS | Commissioning | DH1300 | L2 | DH CRAH | DELETED | DH1100 |
| DC1-CRAH-L2-3420 | **DELETED** DH1300 CRAH-DH-15 L2 Checklist | 3d | 2026-07-15 A | 2026-07-15 A | QTS-1020 | 100% | 2026-07-15 | 2026-07-17 | UMAS | Commissioning | DH1300 | L2 | DH CRAH | DELETED | DH1100 |
| DC1-CRAH-L2-3430 | **DELETED** DH1300 CRAH-DH-16 L2 Checklist | 3d | 2026-07-15 A | 2026-07-15 A | QTS-1020 | 100% | 2026-07-15 | 2026-07-17 | UMAS | Commissioning | DH1300 | L2 | DH CRAH | DELETED | DH1100 |
| DC1-CRAH-L2-3440 | **DELETED** DH1300 CRAH-DH-17 L2 Checklist | 3d | 2026-07-15 A | 2026-07-15 A | QTS-1020 | 100% | 2026-07-15 | 2026-07-17 | UMAS | Commissioning | DH1300 | L2 | DH CRAH | DELETED | DH1100 |
| DC1-CRAH-L2-3450 | **DELETED** DH1300 CRAH-DH-18 L2 Checklist | 3d | 2026-07-15 A | 2026-07-15 A | QTS-1020 | 100% | 2026-07-15 | 2026-07-17 | UMAS | Commissioning | DH1300 | L2 | DH CRAH | DELETED | DH1100 |
| DC1-CRAH-L2-3460 | **DELETED** DH1300 CRAH-DH-19 L2 Checklist | 3d | 2026-07-15 A | 2026-07-15 A | QTS-1020 | 100% | 2026-07-15 | 2026-07-17 | UMAS | Commissioning | DH1300 | L2 | DH CRAH | DELETED | DH1100 |
| DC1-CRAH-L2-3470 | **DELETED** DH1300 CRAH-DH-20 L2 Checklist | 3d | 2026-07-15 A | 2026-07-15 A | QTS-1020 | 100% | 2026-07-15 | 2026-07-17 | UMAS | Commissioning | DH1300 | L2 | DH CRAH | DELETED | DH1100 |
| DC1-CRAH-L2-3480 | **DELETED** DH1300 CRAH-DH-21 L2 Checklist | 3d | 2026-07-15 A | 2026-07-15 A | QTS-1020 | 100% | 2026-07-15 | 2026-07-17 | UMAS | Commissioning | DH1300 | L2 | DH CRAH | DELETED | DH1100 |
| DC1-CRAH-L2-3490 | **DELETED** DH1300 CRAH-DH-22 L2 Checklist | 3d | 2026-07-15 A | 2026-07-15 A | QTS-1020 | 100% | 2026-07-15 | 2026-07-17 | UMAS | Commissioning | DH1300 | L2 | DH CRAH | DELETED | DH1100 |
| DC1-CRAH-L2-3500 | **DELETED** DH1300 CRAH-DH-23 L2 Checklist | 3d | 2026-07-15 A | 2026-07-15 A | QTS-1020 | 100% | 2026-07-15 | 2026-07-17 | UMAS | Commissioning | DH1300 | L2 | DH CRAH | DELETED | DH1100 |
| DC1-CRAH-L2-3510 | **DELETED** DH1300 CRAH-DH-24 L2 Checklist | 3d | 2026-07-15 A | 2026-07-15 A | QTS-1020 | 100% | 2026-07-15 | 2026-07-17 | UMAS | Commissioning | DH1300 | L2 | DH CRAH | DELETED | DH1100 |
| DC1-CRAH-L2-3520 | **DELETED** DH1300 CRAH-DH-25 L2 Checklist | 3d | 2026-07-15 A | 2026-07-15 A | QTS-1020 | 100% | 2026-07-15 | 2026-07-17 | UMAS | Commissioning | DH1300 | L2 | DH CRAH | DELETED | DH1100 |
| DC1-CRAH-L2-3530 | **DELETED** DH1300 CRAH-DH-26 L2 Checklist | 3d | 2026-07-15 A | 2026-07-15 A | QTS-1020 | 100% | 2026-07-15 | 2026-07-17 | UMAS | Commissioning | DH1300 | L2 | DH CRAH | DELETED | DH1100 |
| DC1-CRAH-L2-3540 | **DELETED** DH1300 CRAH-DH-27 L2 Checklist | 3d | 2026-07-15 A | 2026-07-15 A | QTS-1020 | 100% | 2026-07-15 | 2026-07-17 | UMAS | Commissioning | DH1300 | L2 | DH CRAH | DELETED | DH1100 |
| DC1-CRAH-L2-3550 | **DELETED** DH1300 CRAH-DH-28 L2 Checklist | 3d | 2026-07-15 A | 2026-07-15 A | QTS-1020 | 100% | 2026-07-15 | 2026-07-17 | UMAS | Commissioning | DH1300 | L2 | DH CRAH | DELETED | DH1100 |
| DC1-CRAH-L2-3560 | **DELETED** DH1300 CRAH-EG1302-01 L2 Checklist | 3d | 2026-07-15 A | 2026-07-15 A | QTS-1020 | 100% | 2026-07-15 | 2026-07-17 | VER | Commissioning | DH1300 | L2 | EG CRAH | DELETED | DH1100 |
| DC1-CRAH-L2-3570 | **DELETED** DH1300 CRAH-EG1302-02 L2 Checklist | 3d | 2026-07-15 A | 2026-07-15 A | QTS-1020 | 100% | 2026-07-15 | 2026-07-17 | VER | Commissioning | DH1300 | L2 | EG CRAH | DELETED | DH1100 |
| DC1-CRAH-L2-3580 | **DELETED** DH1300 CRAH-EG1302-03 L2 Checklist | 3d | 2026-07-15 A | 2026-07-15 A | QTS-1020 | 100% | 2026-07-15 | 2026-07-17 | VER | Commissioning | DH1300 | L2 | EG CRAH | DELETED | DH1100 |
| DC1-CRAH-L2-3590 | **DELETED** DH1300 CRAH-EG1302-04 L2 Checklist | 3d | 2026-07-15 A | 2026-07-15 A | QTS-1020 | 100% | 2026-07-15 | 2026-07-17 | VER | Commissioning | DH1300 | L2 | EG CRAH | DELETED | DH1100 |
| DC1-CRAH-L2-3600 | **DELETED** DH2100 CDU SCP L2 Checklist | 3d | 2026-07-15 A | 2026-07-15 A | QTS-1020 | 100% | 2026-07-15 | 2026-07-17 | VER | Commissioning | DH2100 | L2 | EG CRAH | DELETED | DH1100 |
| DC1-CRAH-L3-Cx-4880 | **DELETED** DC1-DH2300-CRAH-DH-01 FTE | 1d | 2026-07-15 A | 2026-07-15 A | QTS-1020 | 100% | 2026-08-13 | 2026-08-13 | ROS | Commissioning | DH2300 | L3 | DH CRAH | DELETED | DH1100 |
| DC1-CRAH-L3-Cx-4890 | **DELETED** DC1-DH2300-CRAH-DH-01 L3 Startup | 2d | 2026-07-15 A | 2026-07-15 A | QTS-1020 | 100% | 2026-08-14 | 2026-08-17 | UMAS | Commissioning | DH2300 | L3 | DH CRAH | DELETED | DH1100 |
| DC1-CRAH-L3-Cx-4900 | **DELETED** DC1-DH2300-CRAH-DH-01 BMS/EPMS Programming | 1d | 2026-07-15 A | 2026-07-15 A | QTS-1020 | 100% | 2026-08-18 | 2026-08-18 | PRM | Commissioning | DH2300 | L3 | DH CRAH | DELETED | DH1100 |
| DC1-CRAH-L3-Cx-4910 | **DELETED** DC1-DH2300-CRAH-DH-02 FTE | 1d | 2026-07-15 A | 2026-07-15 A | QTS-1020 | 100% | 2026-08-12 | 2026-08-12 | ROS | Commissioning | DH2300 | L3 | DH CRAH | DELETED | DH1100 |
| DC1-CRAH-L3-Cx-4920 | **DELETED** DC1-DH2300-CRAH-DH-02 L3 Startup | 2d | 2026-07-15 A | 2026-07-15 A | QTS-1020 | 100% | 2026-08-13 | 2026-08-14 | UMAS | Commissioning | DH2300 | L3 | DH CRAH | DELETED | DH1100 |
| DC1-CRAH-L3-Cx-4930 | **DELETED** DC1-DH2300-CRAH-DH-02 BMS/EPMS Programming | 1d | 2026-07-15 A | 2026-07-15 A | QTS-1020 | 100% | 2026-08-17 | 2026-08-17 | PRM | Commissioning | DH2300 | L3 | DH CRAH | DELETED | DH1100 |
| DC1-CRAH-L3-Cx-4940 | **DELETED** DC1-DH2300-CRAH-DH-03 FTE | 1d | 2026-07-15 A | 2026-07-15 A | QTS-1020 | 100% | 2026-08-12 | 2026-08-12 | ROS | Commissioning | DH2300 | L3 | DH CRAH | DELETED | DH1100 |
| DC1-CRAH-L3-Cx-4950 | **DELETED** DC1-DH2300-CRAH-DH-03 L3 Startup | 2d | 2026-07-15 A | 2026-07-15 A | QTS-1020 | 100% | 2026-08-13 | 2026-08-14 | UMAS | Commissioning | DH2300 | L3 | DH CRAH | DELETED | DH1100 |
| DC1-CRAH-L3-Cx-4960 | **DELETED** DC1-DH2300-CRAH-DH-03 BMS/EPMS Programming | 1d | 2026-07-15 A | 2026-07-15 A | QTS-1020 | 100% | 2026-08-17 | 2026-08-17 | PRM | Commissioning | DH2300 | L3 | DH CRAH | DELETED | DH1100 |
| DC1-CRAH-L3-Cx-4970 | **DELETED** DC1-DH2300-CRAH-DH-04 FTE | 1d | 2026-07-15 A | 2026-07-15 A | QTS-1020 | 100% | 2026-08-12 | 2026-08-12 | ROS | Commissioning | DH2300 | L3 | DH CRAH | DELETED | DH1100 |
| DC1-CRAH-L3-Cx-4980 | **DELETED** DC1-DH2300-CRAH-DH-04 L3 Startup | 2d | 2026-07-15 A | 2026-07-15 A | QTS-1020 | 100% | 2026-08-13 | 2026-08-14 | UMAS | Commissioning | DH2300 | L3 | DH CRAH | DELETED | DH1100 |
| DC1-CRAH-L3-Cx-4990 | **DELETED** DC1-DH2300-CRAH-DH-04 BMS/EPMS Programming | 1d | 2026-07-15 A | 2026-07-15 A | QTS-1020 | 100% | 2026-08-17 | 2026-08-17 | PRM | Commissioning | DH2300 | L3 | DH CRAH | DELETED | DH1100 |
| DC1-CRAH-L3-Cx-5000 | **DELETED** DC1-DH2300-CRAH-DH-05 FTE | 1d | 2026-07-15 A | 2026-07-15 A | QTS-1020 | 100% | 2026-08-12 | 2026-08-12 | ROS | Commissioning | DH2300 | L3 | DH CRAH | DELETED | DH1100 |
| DC1-CRAH-L3-Cx-5010 | **DELETED** DC1-DH2300-CRAH-DH-05 L3 Startup | 2d | 2026-07-15 A | 2026-07-15 A | QTS-1020 | 100% | 2026-08-13 | 2026-08-14 | UMAS | Commissioning | DH2300 | L3 | DH CRAH | DELETED | DH1100 |
| DC1-CRAH-L3-Cx-5020 | **DELETED** DC1-DH2300-CRAH-DH-05 BMS/EPMS Programming | 1d | 2026-07-15 A | 2026-07-15 A | QTS-1020 | 100% | 2026-08-17 | 2026-08-17 | PRM | Commissioning | DH2300 | L3 | DH CRAH | DELETED | DH1100 |
| DC1-CRAH-L3-Cx-5030 | **DELETED** DC1-DH2300-CRAH-DH-06 FTE | 1d | 2026-07-15 A | 2026-07-15 A | QTS-1020 | 100% | 2026-08-12 | 2026-08-12 | ROS | Commissioning | DH2300 | L3 | DH CRAH | DELETED | DH1100 |
| DC1-CRAH-L3-Cx-5040 | **DELETED** DC1-DH2300-CRAH-DH-06 L3 Startup | 2d | 2026-07-15 A | 2026-07-15 A | QTS-1020 | 100% | 2026-08-13 | 2026-08-14 | UMAS | Commissioning | DH2300 | L3 | DH CRAH | DELETED | DH1100 |
| DC1-CRAH-L3-Cx-5050 | **DELETED** DC1-DH2300-CRAH-DH-06 BMS/EPMS Programming | 1d | 2026-07-15 A | 2026-07-15 A | QTS-1020 | 100% | 2026-08-17 | 2026-08-17 | PRM | Commissioning | DH2300 | L3 | DH CRAH | DELETED | DH1100 |
| DC1-CRAH-L3-Cx-5060 | **DELETED** DC1-DH2300-CRAH-DH-07 FTE | 1d | 2026-07-15 A | 2026-07-15 A | QTS-1020 | 100% | 2026-08-12 | 2026-08-12 | ROS | Commissioning | DH2300 | L3 | DH CRAH | DELETED | DH1100 |
| DC1-CRAH-L3-Cx-5070 | **DELETED** DC1-DH2300-CRAH-DH-07 L3 Startup | 2d | 2026-07-15 A | 2026-07-15 A | QTS-1020 | 100% | 2026-08-13 | 2026-08-14 | UMAS | Commissioning | DH2300 | L3 | DH CRAH | DELETED | DH1100 |
| DC1-CRAH-L3-Cx-5080 | **DELETED** DC1-DH2300-CRAH-DH-07 BMS/EPMS Programming | 1d | 2026-07-15 A | 2026-07-15 A | QTS-1020 | 100% | 2026-08-17 | 2026-08-17 | PRM | Commissioning | DH2300 | L3 | DH CRAH | DELETED | DH1100 |

Notes:
- DC1-CRAH-L2-3120: Steps: EC Installation Checklist; MC Installation Checklist; CC Installation Checklist; Vendor Pre-Energization Checklist; CXA Pre-Energization Inspection; PEI/Clean-Walk
- DC1-CRAH-L2-3130: Steps: EC Installation Checklist; MC Installation Checklist; CC Installation Checklist; Vendor Pre-Energization Checklist; CXA Pre-Energization Inspection; PEI/Clean-Walk
- DC1-CRAH-L2-3140: Steps: EC Installation Checklist; MC Installation Checklist; CC Installation Checklist; Vendor Pre-Energization Checklist; CXA Pre-Energization Inspection; PEI/Clean-Walk
- DC1-CRAH-L2-3150: Steps: EC Installation Checklist; MC Installation Checklist; CC Installation Checklist; Vendor Pre-Energization Checklist; CXA Pre-Energization Inspection; PEI/Clean-Walk
- DC1-CRAH-L2-3160: Steps: EC Installation Checklist; MC Installation Checklist; CC Installation Checklist; Vendor Pre-Energization Checklist; CXA Pre-Energization Inspection; PEI/Clean-Walk
- DC1-CRAH-L2-3170: Steps: EC Installation Checklist; MC Installation Checklist; CC Installation Checklist; Vendor Pre-Energization Checklist; CXA Pre-Energization Inspection; PEI/Clean-Walk
- DC1-CRAH-L2-3180: Steps: EC Installation Checklist; MC Installation Checklist; CC Installation Checklist; Vendor Pre-Energization Checklist; CXA Pre-Energization Inspection; PEI/Clean-Walk
- DC1-CRAH-L2-3190: Steps: EC Installation Checklist; MC Installation Checklist; CC Installation Checklist; Vendor Pre-Energization Checklist; CXA Pre-Energization Inspection; PEI/Clean-Walk
- DC1-CRAH-L2-3200: Steps: EC Installation Checklist; MC Installation Checklist; CC Installation Checklist; Vendor Pre-Energization Checklist; CXA Pre-Energization Inspection; PEI/Clean-Walk
- DC1-CRAH-L2-3210: Steps: EC Installation Checklist; MC Installation Checklist; CC Installation Checklist; Vendor Pre-Energization Checklist; CXA Pre-Energization Inspection; PEI/Clean-Walk
- DC1-CRAH-L2-3220: Steps: EC Installation Checklist; MC Installation Checklist; CC Installation Checklist; Vendor Pre-Energization Checklist; CXA Pre-Energization Inspection; PEI/Clean-Walk
- DC1-CRAH-L2-3230: Steps: EC Installation Checklist; MC Installation Checklist; CC Installation Checklist; Vendor Pre-Energization Checklist; CXA Pre-Energization Inspection; PEI/Clean-Walk
- DC1-CRAH-L2-3240: Steps: EC Installation Checklist; MC Installation Checklist; CC Installation Checklist; Vendor Pre-Energization Checklist; CXA Pre-Energization Inspection; PEI/Clean-Walk
- DC1-CRAH-L2-3250: Steps: EC Installation Checklist; MC Installation Checklist; CC Installation Checklist; Vendor Pre-Energization Checklist; CXA Pre-Energization Inspection; PEI/Clean-Walk
- DC1-CRAH-L2-3260: Steps: EC Installation Checklist; MC Installation Checklist; CC Installation Checklist; Vendor Pre-Energization Checklist; CXA Pre-Energization Inspection; PEI/Clean-Walk
- DC1-CRAH-L2-3270: Steps: EC Installation Checklist; MC Installation Checklist; CC Installation Checklist; Vendor Pre-Energization Checklist; CXA Pre-Energization Inspection; PEI/Clean-Walk
- DC1-CRAH-L2-3280: Steps: EC Installation Checklist; MC Installation Checklist; CC Installation Checklist; Vendor Pre-Energization Checklist; CXA Pre-Energization Inspection; PEI/Clean-Walk
- DC1-CRAH-L2-3290: Steps: EC Installation Checklist; MC Installation Checklist; CC Installation Checklist; Vendor Pre-Energization Checklist; CXA Pre-Energization Inspection; PEI/Clean-Walk
- DC1-CRAH-L2-3300: Steps: EC Installation Checklist; MC Installation Checklist; CC Installation Checklist; Vendor Pre-Energization Checklist; CXA Pre-Energization Inspection; PEI/Clean-Walk
- DC1-CRAH-L2-3310: Steps: EC Installation Checklist; MC Installation Checklist; CC Installation Checklist; Vendor Pre-Energization Checklist; CXA Pre-Energization Inspection; PEI/Clean-Walk
- DC1-CRAH-L2-3320: Steps: EC Installation Checklist; MC Installation Checklist; CC Installation Checklist; Vendor Pre-Energization Checklist; CXA Pre-Energization Inspection; PEI/Clean-Walk
- DC1-CRAH-L2-3330: Steps: EC Installation Checklist; MC Installation Checklist; CC Installation Checklist; Vendor Pre-Energization Checklist; CXA Pre-Energization Inspection; PEI/Clean-Walk
- DC1-CRAH-L2-3340: Steps: EC Installation Checklist; MC Installation Checklist; CC Installation Checklist; Vendor Pre-Energization Checklist; CXA Pre-Energization Inspection; PEI/Clean-Walk
- DC1-CRAH-L2-3350: Steps: EC Installation Checklist; MC Installation Checklist; CC Installation Checklist; Vendor Pre-Energization Checklist; CXA Pre-Energization Inspection; PEI/Clean-Walk
- DC1-CRAH-L2-3360: Steps: EC Installation Checklist; MC Installation Checklist; CC Installation Checklist; Vendor Pre-Energization Checklist; CXA Pre-Energization Inspection; PEI/Clean-Walk
- DC1-CRAH-L2-3370: Steps: EC Installation Checklist; MC Installation Checklist; CC Installation Checklist; Vendor Pre-Energization Checklist; CXA Pre-Energization Inspection; PEI/Clean-Walk
- DC1-CRAH-L2-3380: Steps: EC Installation Checklist; MC Installation Checklist; CC Installation Checklist; Vendor Pre-Energization Checklist; CXA Pre-Energization Inspection; PEI/Clean-Walk
- DC1-CRAH-L2-3390: Steps: EC Installation Checklist; MC Installation Checklist; CC Installation Checklist; Vendor Pre-Energization Checklist; CXA Pre-Energization Inspection; PEI/Clean-Walk
- DC1-CRAH-L2-3400: Steps: EC Installation Checklist; MC Installation Checklist; CC Installation Checklist; Vendor Pre-Energization Checklist; CXA Pre-Energization Inspection; PEI/Clean-Walk
- DC1-CRAH-L2-3410: Steps: EC Installation Checklist; MC Installation Checklist; CC Installation Checklist; Vendor Pre-Energization Checklist; CXA Pre-Energization Inspection; PEI/Clean-Walk
- DC1-CRAH-L2-3420: Steps: EC Installation Checklist; MC Installation Checklist; CC Installation Checklist; Vendor Pre-Energization Checklist; CXA Pre-Energization Inspection; PEI/Clean-Walk
- DC1-CRAH-L2-3430: Steps: EC Installation Checklist; MC Installation Checklist; CC Installation Checklist; Vendor Pre-Energization Checklist; CXA Pre-Energization Inspection; PEI/Clean-Walk
- DC1-CRAH-L2-3440: Steps: EC Installation Checklist; MC Installation Checklist; CC Installation Checklist; Vendor Pre-Energization Checklist; CXA Pre-Energization Inspection; PEI/Clean-Walk
- DC1-CRAH-L2-3450: Steps: EC Installation Checklist; MC Installation Checklist; CC Installation Checklist; Vendor Pre-Energization Checklist; CXA Pre-Energization Inspection; PEI/Clean-Walk
- DC1-CRAH-L2-3460: Steps: EC Installation Checklist; MC Installation Checklist; CC Installation Checklist; Vendor Pre-Energization Checklist; CXA Pre-Energization Inspection; PEI/Clean-Walk
- DC1-CRAH-L2-3470: Steps: EC Installation Checklist; MC Installation Checklist; CC Installation Checklist; Vendor Pre-Energization Checklist; CXA Pre-Energization Inspection; PEI/Clean-Walk
- DC1-CRAH-L2-3480: Steps: EC Installation Checklist; MC Installation Checklist; CC Installation Checklist; Vendor Pre-Energization Checklist; CXA Pre-Energization Inspection; PEI/Clean-Walk
- DC1-CRAH-L2-3490: Steps: EC Installation Checklist; MC Installation Checklist; CC Installation Checklist; Vendor Pre-Energization Checklist; CXA Pre-Energization Inspection; PEI/Clean-Walk
- DC1-CRAH-L2-3500: Steps: EC Installation Checklist; MC Installation Checklist; CC Installation Checklist; Vendor Pre-Energization Checklist; CXA Pre-Energization Inspection; PEI/Clean-Walk
- DC1-CRAH-L2-3510: Steps: EC Installation Checklist; MC Installation Checklist; CC Installation Checklist; Vendor Pre-Energization Checklist; CXA Pre-Energization Inspection; PEI/Clean-Walk
- DC1-CRAH-L2-3520: Steps: EC Installation Checklist; MC Installation Checklist; CC Installation Checklist; Vendor Pre-Energization Checklist; CXA Pre-Energization Inspection; PEI/Clean-Walk
- DC1-CRAH-L2-3530: Steps: EC Installation Checklist; MC Installation Checklist; CC Installation Checklist; Vendor Pre-Energization Checklist; CXA Pre-Energization Inspection; PEI/Clean-Walk
- DC1-CRAH-L2-3540: Steps: EC Installation Checklist; MC Installation Checklist; CC Installation Checklist; Vendor Pre-Energization Checklist; CXA Pre-Energization Inspection; PEI/Clean-Walk
- DC1-CRAH-L2-3550: Steps: EC Installation Checklist; MC Installation Checklist; CC Installation Checklist; Vendor Pre-Energization Checklist; CXA Pre-Energization Inspection; PEI/Clean-Walk
- DC1-CRAH-L2-3560: Steps: EC Installation Checklist; MC Installation Checklist; CC Installation Checklist; Vendor Pre-Energization Checklist; CXA Pre-Energization Inspection; PEI/Clean-Walk
- DC1-CRAH-L2-3570: Steps: EC Installation Checklist; MC Installation Checklist; CC Installation Checklist; Vendor Pre-Energization Checklist; CXA Pre-Energization Inspection; PEI/Clean-Walk
- DC1-CRAH-L2-3580: Steps: EC Installation Checklist; MC Installation Checklist; CC Installation Checklist; Vendor Pre-Energization Checklist; CXA Pre-Energization Inspection; PEI/Clean-Walk
- DC1-CRAH-L2-3590: Steps: EC Installation Checklist; MC Installation Checklist; CC Installation Checklist; Vendor Pre-Energization Checklist; CXA Pre-Energization Inspection; PEI/Clean-Walk
- DC1-CRAH-L2-3600: Steps: EC Installation Checklist; CC Installation Checklist; Vendor Pre-Energization Checklist; CXA Pre-Energization Inspection; PEI/Clean-Walk
- DC1-CRAH-L3-Cx-4890: Steps: EC Startup Checklist; MC Startup Checklist; Vendor Startup
- DC1-CRAH-L3-Cx-4920: Steps: EC Startup Checklist; MC Startup Checklist; Vendor Startup
- DC1-CRAH-L3-Cx-4950: Steps: EC Startup Checklist; MC Startup Checklist; Vendor Startup
- DC1-CRAH-L3-Cx-4980: Steps: EC Startup Checklist; MC Startup Checklist; Vendor Startup
- DC1-CRAH-L3-Cx-5010: Steps: EC Startup Checklist; MC Startup Checklist; Vendor Startup
- DC1-CRAH-L3-Cx-5040: Steps: EC Startup Checklist; MC Startup Checklist; Vendor Startup
- DC1-CRAH-L3-Cx-5070: Steps: EC Startup Checklist; MC Startup Checklist; Vendor Startup

| ID | Activity | Duration | Start | Finish | Predecessors | Complete | Planned start | Planned finish | Vendor Responsible Party | Layton Discipline | Location | CX Level | Equipment | DELETED | D |
| --- | --- | --- | --- | --- | --- | --- | --- | --- | --- | --- | --- | --- | --- | --- | --- |
| DC1-CRAH-L3-Cx-5090 | **DELETED** DC1-DH2300-CRAH-DH-08 FTE | 1d | 2026-07-15 A | 2026-07-15 A | QTS-1020 | 100% | 2026-08-12 | 2026-08-12 | ROS | Commissioning | DH2300 | L3 | DH CRAH | DELETED | DH1100 |
| DC1-CRAH-L3-Cx-5100 | **DELETED** DC1-DH2300-CRAH-DH-08 L3 Startup | 2d | 2026-07-15 A | 2026-07-15 A | QTS-1020 | 100% | 2026-08-13 | 2026-08-14 | UMAS | Commissioning | DH2300 | L3 | DH CRAH | DELETED | DH1100 |
| DC1-CRAH-L3-Cx-5110 | **DELETED** DC1-DH2300-CRAH-DH-08 BMS/EPMS Programming | 1d | 2026-07-15 A | 2026-07-15 A | QTS-1020 | 100% | 2026-08-17 | 2026-08-17 | PRM | Commissioning | DH2300 | L3 | DH CRAH | DELETED | DH1100 |
| DC1-CRAH-L3-Cx-5120 | **DELETED** DC1-DH2300-CRAH-DH-09 FTE | 1d | 2026-07-15 A | 2026-07-15 A | QTS-1020 | 100% | 2026-08-12 | 2026-08-12 | ROS | Commissioning | DH2300 | L3 | DH CRAH | DELETED | DH1100 |
| DC1-CRAH-L3-Cx-5130 | **DELETED** DC1-DH2300-CRAH-DH-09 L3 Startup | 2d | 2026-07-15 A | 2026-07-15 A | QTS-1020 | 100% | 2026-08-13 | 2026-08-14 | UMAS | Commissioning | DH2300 | L3 | DH CRAH | DELETED | DH1100 |
| DC1-CRAH-L3-Cx-5140 | **DELETED** DC1-DH2300-CRAH-DH-09 BMS/EPMS Programming | 1d | 2026-07-15 A | 2026-07-15 A | QTS-1020 | 100% | 2026-08-17 | 2026-08-17 | PRM | Commissioning | DH2300 | L3 | DH CRAH | DELETED | DH1100 |
| DC1-CRAH-L3-Cx-5150 | **DELETED** DC1-DH2300-CRAH-DH-10 FTE | 1d | 2026-07-15 A | 2026-07-15 A | QTS-1020 | 100% | 2026-08-12 | 2026-08-12 | ROS | Commissioning | DH2300 | L3 | DH CRAH | DELETED | DH1100 |
| DC1-CRAH-L3-Cx-5160 | **DELETED** DC1-DH2300-CRAH-DH-10 L3 Startup | 2d | 2026-07-15 A | 2026-07-15 A | QTS-1020 | 100% | 2026-08-13 | 2026-08-14 | UMAS | Commissioning | DH2300 | L3 | DH CRAH | DELETED | DH1100 |
| DC1-CRAH-L3-Cx-5170 | **DELETED** DC1-DH2300-CRAH-DH-10 BMS/EPMS Programming | 1d | 2026-07-15 A | 2026-07-15 A | QTS-1020 | 100% | 2026-08-17 | 2026-08-17 | PRM | Commissioning | DH2300 | L3 | DH CRAH | DELETED | DH1100 |
| DC1-CRAH-L3-Cx-5180 | **DELETED** DC1-DH2300-CRAH-DH-11 FTE | 1d | 2026-07-15 A | 2026-07-15 A | QTS-1020 | 100% | 2026-08-12 | 2026-08-12 | ROS | Commissioning | DH2300 | L3 | DH CRAH | DELETED | DH1100 |
| DC1-CRAH-L3-Cx-5190 | **DELETED** DC1-DH2300-CRAH-DH-11 L3 Startup | 2d | 2026-07-15 A | 2026-07-15 A | QTS-1020 | 100% | 2026-08-13 | 2026-08-14 | UMAS | Commissioning | DH2300 | L3 | DH CRAH | DELETED | DH1100 |
| DC1-CRAH-L3-Cx-5200 | **DELETED** DC1-DH2300-CRAH-DH-11 BMS/EPMS Programming | 1d | 2026-07-15 A | 2026-07-15 A | QTS-1020 | 100% | 2026-08-17 | 2026-08-17 | PRM | Commissioning | DH2300 | L3 | DH CRAH | DELETED | DH1100 |
| DC1-CRAH-L3-Cx-5210 | **DELETED** DC1-DH2300-CRAH-DH-12 FTE | 1d | 2026-07-15 A | 2026-07-15 A | QTS-1020 | 100% | 2026-08-12 | 2026-08-12 | ROS | Commissioning | DH2300 | L3 | DH CRAH | DELETED | DH1100 |
| DC1-CRAH-L3-Cx-5220 | **DELETED** DC1-DH2300-CRAH-DH-12 L3 Startup | 2d | 2026-07-15 A | 2026-07-15 A | QTS-1020 | 100% | 2026-08-13 | 2026-08-14 | UMAS | Commissioning | DH2300 | L3 | DH CRAH | DELETED | DH1100 |
| DC1-CRAH-L3-Cx-5230 | **DELETED** DC1-DH2300-CRAH-DH-12 BMS/EPMS Programming | 1d | 2026-07-15 A | 2026-07-15 A | QTS-1020 | 100% | 2026-08-17 | 2026-08-17 | PRM | Commissioning | DH2300 | L3 | DH CRAH | DELETED | DH1100 |
| DC1-CRAH-L3-Cx-5240 | **DELETED** DC1-DH2300-CRAH-DH-13 FTE | 1d | 2026-07-15 A | 2026-07-15 A | QTS-1020 | 100% | 2026-08-12 | 2026-08-12 | ROS | Commissioning | DH2300 | L3 | DH CRAH | DELETED | DH1100 |
| DC1-CRAH-L3-Cx-5250 | **DELETED** DC1-DH2300-CRAH-DH-13 L3 Startup | 2d | 2026-07-15 A | 2026-07-15 A | QTS-1020 | 100% | 2026-08-13 | 2026-08-14 | UMAS | Commissioning | DH2300 | L3 | DH CRAH | DELETED | DH1100 |
| DC1-CRAH-L3-Cx-5260 | **DELETED** DC1-DH2300-CRAH-DH-13 BMS/EPMS Programming | 1d | 2026-07-15 A | 2026-07-15 A | QTS-1020 | 100% | 2026-08-17 | 2026-08-17 | PRM | Commissioning | DH2300 | L3 | DH CRAH | DELETED | DH1100 |
| DC1-CRAH-L3-Cx-5270 | **DELETED** DC1-DH2300-CRAH-DH-14 FTE | 1d | 2026-07-15 A | 2026-07-15 A | QTS-1020 | 100% | 2026-08-12 | 2026-08-12 | ROS | Commissioning | DH2300 | L3 | DH CRAH | DELETED | DH1100 |
| DC1-CRAH-L3-Cx-5280 | **DELETED** DC1-DH2300-CRAH-DH-14 L3 Startup | 2d | 2026-07-15 A | 2026-07-15 A | QTS-1020 | 100% | 2026-08-13 | 2026-08-14 | UMAS | Commissioning | DH2300 | L3 | DH CRAH | DELETED | DH1100 |
| DC1-CRAH-L3-Cx-5290 | **DELETED** DC1-DH2300-CRAH-DH-14 BMS/EPMS Programming | 1d | 2026-07-15 A | 2026-07-15 A | QTS-1020 | 100% | 2026-08-17 | 2026-08-17 | PRM | Commissioning | DH2300 | L3 | DH CRAH | DELETED | DH1100 |
| DC1-CRAH-L3-Cx-5300 | **DELETED** DC1-DH2300-CRAH-DH-15 FTE | 1d | 2026-07-15 A | 2026-07-15 A | QTS-1020 | 100% | 2026-08-12 | 2026-08-12 | ROS | Commissioning | DH2300 | L3 | DH CRAH | DELETED | DH1100 |
| DC1-CRAH-L3-Cx-5310 | **DELETED** DC1-DH2300-CRAH-DH-15 L3 Startup | 2d | 2026-07-15 A | 2026-07-15 A | QTS-1020 | 100% | 2026-08-13 | 2026-08-14 | UMAS | Commissioning | DH2300 | L3 | DH CRAH | DELETED | DH1100 |
| DC1-CRAH-L3-Cx-5320 | **DELETED** DC1-DH2300-CRAH-DH-15 BMS/EPMS Programming | 1d | 2026-07-15 A | 2026-07-15 A | QTS-1020 | 100% | 2026-08-17 | 2026-08-17 | PRM | Commissioning | DH2300 | L3 | DH CRAH | DELETED | DH1100 |
| DC1-CRAH-L3-Cx-5330 | **DELETED** DC1-DH2300-CRAH-DH-16 FTE | 1d | 2026-07-15 A | 2026-07-15 A | QTS-1020 | 100% | 2026-08-12 | 2026-08-12 | ROS | Commissioning | DH2300 | L3 | DH CRAH | DELETED | DH1100 |
| DC1-CRAH-L3-Cx-5340 | **DELETED** DC1-DH2300-CRAH-DH-16 L3 Startup | 2d | 2026-07-15 A | 2026-07-15 A | QTS-1020 | 100% | 2026-08-13 | 2026-08-14 | UMAS | Commissioning | DH2300 | L3 | DH CRAH | DELETED | DH1100 |
| DC1-CRAH-L3-Cx-5350 | **DELETED** DC1-DH2300-CRAH-DH-16 BMS/EPMS Programming | 1d | 2026-07-15 A | 2026-07-15 A | QTS-1020 | 100% | 2026-08-17 | 2026-08-17 | PRM | Commissioning | DH2300 | L3 | DH CRAH | DELETED | DH1100 |
| DC1-CRAH-L3-Cx-5360 | **DELETED** DC1-DH2300-CRAH-DH-17 FTE | 1d | 2026-07-15 A | 2026-07-15 A | QTS-1020 | 100% | 2026-08-12 | 2026-08-12 | ROS | Commissioning | DH2300 | L3 | DH CRAH | DELETED | DH1100 |
| DC1-CRAH-L3-Cx-5370 | **DELETED** DC1-DH2300-CRAH-DH-17 L3 Startup | 2d | 2026-07-15 A | 2026-07-15 A | QTS-1020 | 100% | 2026-08-13 | 2026-08-14 | UMAS | Commissioning | DH2300 | L3 | DH CRAH | DELETED | DH1100 |
| DC1-CRAH-L3-Cx-5380 | **DELETED** DC1-DH2300-CRAH-DH-17 BMS/EPMS Programming | 1d | 2026-07-15 A | 2026-07-15 A | QTS-1020 | 100% | 2026-08-17 | 2026-08-17 | PRM | Commissioning | DH2300 | L3 | DH CRAH | DELETED | DH1100 |
| DC1-CRAH-L3-Cx-5390 | **DELETED** DC1-DH2300-CRAH-DH-18 FTE | 1d | 2026-07-15 A | 2026-07-15 A | QTS-1020 | 100% | 2026-08-12 | 2026-08-12 | ROS | Commissioning | DH2300 | L3 | DH CRAH | DELETED | DH1100 |
| DC1-CRAH-L3-Cx-5400 | **DELETED** DC1-DH2300-CRAH-DH-18 L3 Startup | 2d | 2026-07-15 A | 2026-07-15 A | QTS-1020 | 100% | 2026-08-13 | 2026-08-14 | UMAS | Commissioning | DH2300 | L3 | DH CRAH | DELETED | DH1100 |
| DC1-CRAH-L3-Cx-5410 | **DELETED** DC1-DH2300-CRAH-DH-18 BMS/EPMS Programming | 1d | 2026-07-15 A | 2026-07-15 A | QTS-1020 | 100% | 2026-08-17 | 2026-08-17 | PRM | Commissioning | DH2300 | L3 | DH CRAH | DELETED | DH1100 |
| DC1-CRAH-L3-Cx-5420 | **DELETED** DC1-DH2300-CRAH-DH-19 FTE | 1d | 2026-07-15 A | 2026-07-15 A | QTS-1020 | 100% | 2026-08-12 | 2026-08-12 | ROS | Commissioning | DH2300 | L3 | DH CRAH | DELETED | DH1100 |
| DC1-CRAH-L3-Cx-5430 | **DELETED** DC1-DH2300-CRAH-DH-19 L3 Startup | 2d | 2026-07-15 A | 2026-07-15 A | QTS-1020 | 100% | 2026-08-13 | 2026-08-14 | UMAS | Commissioning | DH2300 | L3 | DH CRAH | DELETED | DH1100 |
| DC1-CRAH-L3-Cx-5440 | **DELETED** DC1-DH2300-CRAH-DH-19 BMS/EPMS Programming | 1d | 2026-07-15 A | 2026-07-15 A | QTS-1020 | 100% | 2026-08-17 | 2026-08-17 | PRM | Commissioning | DH2300 | L3 | DH CRAH | DELETED | DH1100 |
| DC1-CRAH-L3-Cx-5450 | **DELETED** DC1-DH2300-CRAH-DH-20 FTE | 1d | 2026-07-15 A | 2026-07-15 A | QTS-1020 | 100% | 2026-08-12 | 2026-08-12 | ROS | Commissioning | DH2300 | L3 | DH CRAH | DELETED | DH1100 |
| DC1-CRAH-L3-Cx-5460 | **DELETED** DC1-DH2300-CRAH-DH-20 L3 Startup | 2d | 2026-07-15 A | 2026-07-15 A | QTS-1020 | 100% | 2026-08-13 | 2026-08-14 | UMAS | Commissioning | DH2300 | L3 | DH CRAH | DELETED | DH1100 |
| DC1-CRAH-L3-Cx-5470 | **DELETED** DC1-DH2300-CRAH-DH-20 BMS/EPMS Programming | 1d | 2026-07-15 A | 2026-07-15 A | QTS-1020 | 100% | 2026-08-17 | 2026-08-17 | PRM | Commissioning | DH2300 | L3 | DH CRAH | DELETED | DH1100 |
| DC1-CRAH-L3-Cx-5480 | **DELETED** DC1-DH2300-CRAH-DH-21 FTE | 1d | 2026-07-15 A | 2026-07-15 A | QTS-1020 | 100% | 2026-08-12 | 2026-08-12 | ROS | Commissioning | DH2300 | L3 | DH CRAH | DELETED | DH1100 |
| DC1-CRAH-L3-Cx-5490 | **DELETED** DC1-DH2300-CRAH-DH-21 L3 Startup | 2d | 2026-07-15 A | 2026-07-15 A | QTS-1020 | 100% | 2026-08-13 | 2026-08-14 | UMAS | Commissioning | DH2300 | L3 | DH CRAH | DELETED | DH1100 |
| DC1-CRAH-L3-Cx-5500 | **DELETED** DC1-DH2300-CRAH-DH-21 BMS/EPMS Programming | 1d | 2026-07-15 A | 2026-07-15 A | QTS-1020 | 100% | 2026-08-17 | 2026-08-17 | PRM | Commissioning | DH2300 | L3 | DH CRAH | DELETED | DH1100 |
| DC1-CRAH-L3-Cx-5510 | **DELETED** DC1-DH2300-CRAH-DH-22 FTE | 1d | 2026-07-15 A | 2026-07-15 A | QTS-1020 | 100% | 2026-08-12 | 2026-08-12 | ROS | Commissioning | DH2300 | L3 | DH CRAH | DELETED | DH1100 |
| DC1-CRAH-L3-Cx-5520 | **DELETED** DC1-DH2300-CRAH-DH-22 L3 Startup | 2d | 2026-07-15 A | 2026-07-15 A | QTS-1020 | 100% | 2026-08-13 | 2026-08-14 | UMAS | Commissioning | DH2300 | L3 | DH CRAH | DELETED | DH1100 |
| DC1-CRAH-L3-Cx-5530 | **DELETED** DC1-DH2300-CRAH-DH-22 BMS/EPMS Programming | 1d | 2026-07-15 A | 2026-07-15 A | QTS-1020 | 100% | 2026-08-17 | 2026-08-17 | PRM | Commissioning | DH2300 | L3 | DH CRAH | DELETED | DH1100 |
| DC1-CRAH-L3-Cx-5540 | **DELETED** DC1-DH2300-CRAH-DH-23 FTE | 1d | 2026-07-15 A | 2026-07-15 A | QTS-1020 | 100% | 2026-08-12 | 2026-08-12 | ROS | Commissioning | DH2300 | L3 | DH CRAH | DELETED | DH1100 |
| DC1-CRAH-L3-Cx-5550 | **DELETED** DC1-DH2300-CRAH-DH-23 L3 Startup | 2d | 2026-07-15 A | 2026-07-15 A | QTS-1020 | 100% | 2026-08-13 | 2026-08-14 | UMAS | Commissioning | DH2300 | L3 | DH CRAH | DELETED | DH1100 |
| DC1-CRAH-L3-Cx-5560 | **DELETED** DC1-DH2300-CRAH-DH-23 BMS/EPMS Programming | 1d | 2026-07-15 A | 2026-07-15 A | QTS-1020 | 100% | 2026-08-17 | 2026-08-17 | PRM | Commissioning | DH2300 | L3 | DH CRAH | DELETED | DH1100 |
| DC1-CRAH-L3-Cx-5570 | **DELETED** DC1-DH2300-CRAH-DH-24 FTE | 1d | 2026-07-15 A | 2026-07-15 A | QTS-1020 | 100% | 2026-08-12 | 2026-08-12 | ROS | Commissioning | DH2300 | L3 | DH CRAH | DELETED | DH1100 |
| DC1-CRAH-L3-Cx-5580 | **DELETED** DC1-DH2300-CRAH-DH-24 L3 Startup | 2d | 2026-07-15 A | 2026-07-15 A | QTS-1020 | 100% | 2026-08-13 | 2026-08-14 | UMAS | Commissioning | DH2300 | L3 | DH CRAH | DELETED | DH1100 |
| DC1-CRAH-L3-Cx-5590 | **DELETED** DC1-DH2300-CRAH-DH-24 BMS/EPMS Programming | 1d | 2026-07-15 A | 2026-07-15 A | QTS-1020 | 100% | 2026-08-17 | 2026-08-17 | PRM | Commissioning | DH2300 | L3 | DH CRAH | DELETED | DH1100 |
| DC1-CRAH-L3-Cx-5600 | **DELETED** DC1-DH2300-CRAH-DH-25 FTE | 1d | 2026-07-15 A | 2026-07-15 A | QTS-1020 | 100% | 2026-08-12 | 2026-08-12 | ROS | Commissioning | DH2300 | L3 | DH CRAH | DELETED | DH1100 |
| DC1-CRAH-L3-Cx-5610 | **DELETED** DC1-DH2300-CRAH-DH-25 L3 Startup | 2d | 2026-07-15 A | 2026-07-15 A | QTS-1020 | 100% | 2026-08-13 | 2026-08-14 | UMAS | Commissioning | DH2300 | L3 | DH CRAH | DELETED | DH1100 |
| DC1-CRAH-L3-Cx-5620 | **DELETED** DC1-DH2300-CRAH-DH-25 BMS/EPMS Programming | 1d | 2026-07-15 A | 2026-07-15 A | QTS-1020 | 100% | 2026-08-17 | 2026-08-17 | PRM | Commissioning | DH2300 | L3 | DH CRAH | DELETED | DH1100 |
| DC1-CRAH-L3-Cx-5630 | **DELETED** DC1-DH2300-CRAH-DH-26 FTE | 1d | 2026-07-15 A | 2026-07-15 A | QTS-1020 | 100% | 2026-08-12 | 2026-08-12 | ROS | Commissioning | DH2300 | L3 | DH CRAH | DELETED | DH1100 |
| DC1-CRAH-L3-Cx-5640 | **DELETED** DC1-DH2300-CRAH-DH-26 L3 Startup | 2d | 2026-07-15 A | 2026-07-15 A | QTS-1020 | 100% | 2026-08-13 | 2026-08-14 | UMAS | Commissioning | DH2300 | L3 | DH CRAH | DELETED | DH1100 |
| DC1-CRAH-L3-Cx-5650 | **DELETED** DC1-DH2300-CRAH-DH-26 BMS/EPMS Programming | 1d | 2026-07-15 A | 2026-07-15 A | QTS-1020 | 100% | 2026-08-17 | 2026-08-17 | PRM | Commissioning | DH2300 | L3 | DH CRAH | DELETED | DH1100 |
| DC1-CRAH-L3-Cx-5660 | **DELETED** DC1-DH2300-CRAH-DH-27 FTE | 1d | 2026-07-15 A | 2026-07-15 A | QTS-1020 | 100% | 2026-08-12 | 2026-08-12 | ROS | Commissioning | DH2300 | L3 | DH CRAH | DELETED | DH1100 |
| DC1-CRAH-L3-Cx-5670 | **DELETED** DC1-DH2300-CRAH-DH-27 L3 Startup | 2d | 2026-07-15 A | 2026-07-15 A | QTS-1020 | 100% | 2026-08-13 | 2026-08-14 | UMAS | Commissioning | DH2300 | L3 | DH CRAH | DELETED | DH1100 |
| DC1-CRAH-L3-Cx-5680 | **DELETED** DC1-DH2300-CRAH-DH-27 BMS/EPMS Programming | 1d | 2026-07-15 A | 2026-07-15 A | QTS-1020 | 100% | 2026-08-17 | 2026-08-17 | PRM | Commissioning | DH2300 | L3 | DH CRAH | DELETED | DH1100 |
| DC1-CRAH-L3-Cx-5690 | **DELETED** DC1-DH2300-CRAH-DH-28 FTE | 1d | 2026-07-15 A | 2026-07-15 A | QTS-1020 | 100% | 2026-08-12 | 2026-08-12 | ROS | Commissioning | DH2300 | L3 | DH CRAH | DELETED | DH1100 |
| DC1-CRAH-L3-Cx-5700 | **DELETED** DC1-DH2300-CRAH-DH-28 L3 Startup | 2d | 2026-07-15 A | 2026-07-15 A | QTS-1020 | 100% | 2026-08-13 | 2026-08-14 | UMAS | Commissioning | DH2300 | L3 | DH CRAH | DELETED | DH1100 |
| DC1-CRAH-L3-Cx-5710 | **DELETED** DC1-DH2300-CRAH-DH-28 BMS/EPMS Programming | 1d | 2026-07-15 A | 2026-07-15 A | QTS-1020 | 100% | 2026-08-17 | 2026-08-17 | PRM | Commissioning | DH2300 | L3 | DH CRAH | DELETED | DH1100 |
| DC1-CRAH-L3-Cx-5720 | **DELETED** DC1-DH2300-CRAH-EG-2302-01 FTE | 1d | 2026-07-15 A | 2026-07-15 A | QTS-1020 | 100% | 2026-08-12 | 2026-08-12 | ROS | Commissioning | DH2300 | L3 | EG CRAH | DELETED | DH1100 |
| DC1-CRAH-L3-Cx-5730 | **DELETED** DC1-DH2300-CRAH-EG-2302-01 L3 Startup | 2d | 2026-07-15 A | 2026-07-15 A | QTS-1020 | 100% | 2026-08-13 | 2026-08-14 | VER | Commissioning | DH2300 | L3 | EG CRAH | DELETED | DH1100 |
| DC1-CRAH-L3-Cx-5740 | **DELETED** DC1-DH2300-CRAH-EG-2302-01 BMS/EPMS Programming | 1d | 2026-07-15 A | 2026-07-15 A | QTS-1020 | 100% | 2026-08-17 | 2026-08-17 | PRM | Commissioning | DH2300 | L3 | EG CRAH | DELETED | DH1100 |
| DC1-CRAH-L3-Cx-5750 | **DELETED** DC1-DH2300-CRAH-EG-2302-02 FTE | 1d | 2026-07-15 A | 2026-07-15 A | QTS-1020 | 100% | 2026-08-12 | 2026-08-12 | ROS | Commissioning | DH2300 | L3 | EG CRAH | DELETED | DH1100 |
| DC1-CRAH-L3-Cx-5760 | **DELETED** DC1-DH2300-CRAH-EG-2302-02 L3 Startup | 2d | 2026-07-15 A | 2026-07-15 A | QTS-1020 | 100% | 2026-08-13 | 2026-08-14 | VER | Commissioning | DH2300 | L3 | EG CRAH | DELETED | DH1100 |
| DC1-CRAH-L3-Cx-5770 | **DELETED** DC1-DH2300-CRAH-EG-2302-02 BMS/EPMS Programming | 1d | 2026-07-15 A | 2026-07-15 A | QTS-1020 | 100% | 2026-08-17 | 2026-08-17 | PRM | Commissioning | DH2300 | L3 | EG CRAH | DELETED | DH1100 |
| DC1-CRAH-L3-Cx-5780 | **DELETED** DC1-DH2300-CRAH-EG-2302-03 FTE | 1d | 2026-07-15 A | 2026-07-15 A | QTS-1020 | 100% | 2026-08-12 | 2026-08-12 | ROS | Commissioning | DH2300 | L3 | EG CRAH | DELETED | DH1100 |

Notes:
- DC1-CRAH-L3-Cx-5100: Steps: EC Startup Checklist; MC Startup Checklist; Vendor Startup
- DC1-CRAH-L3-Cx-5130: Steps: EC Startup Checklist; MC Startup Checklist; Vendor Startup
- DC1-CRAH-L3-Cx-5160: Steps: EC Startup Checklist; MC Startup Checklist; Vendor Startup
- DC1-CRAH-L3-Cx-5190: Steps: EC Startup Checklist; MC Startup Checklist; Vendor Startup
- DC1-CRAH-L3-Cx-5220: Steps: EC Startup Checklist; MC Startup Checklist; Vendor Startup
- DC1-CRAH-L3-Cx-5250: Steps: EC Startup Checklist; MC Startup Checklist; Vendor Startup
- DC1-CRAH-L3-Cx-5280: Steps: EC Startup Checklist; MC Startup Checklist; Vendor Startup
- DC1-CRAH-L3-Cx-5310: Steps: EC Startup Checklist; MC Startup Checklist; Vendor Startup
- DC1-CRAH-L3-Cx-5340: Steps: EC Startup Checklist; MC Startup Checklist; Vendor Startup
- DC1-CRAH-L3-Cx-5370: Steps: EC Startup Checklist; MC Startup Checklist; Vendor Startup
- DC1-CRAH-L3-Cx-5400: Steps: EC Startup Checklist; MC Startup Checklist; Vendor Startup
- DC1-CRAH-L3-Cx-5430: Steps: EC Startup Checklist; MC Startup Checklist; Vendor Startup
- DC1-CRAH-L3-Cx-5460: Steps: EC Startup Checklist; MC Startup Checklist; Vendor Startup
- DC1-CRAH-L3-Cx-5490: Steps: EC Startup Checklist; MC Startup Checklist; Vendor Startup
- DC1-CRAH-L3-Cx-5520: Steps: EC Startup Checklist; MC Startup Checklist; Vendor Startup
- DC1-CRAH-L3-Cx-5550: Steps: EC Startup Checklist; MC Startup Checklist; Vendor Startup
- DC1-CRAH-L3-Cx-5580: Steps: EC Startup Checklist; MC Startup Checklist; Vendor Startup
- DC1-CRAH-L3-Cx-5610: Steps: EC Startup Checklist; MC Startup Checklist; Vendor Startup
- DC1-CRAH-L3-Cx-5640: Steps: EC Startup Checklist; MC Startup Checklist; Vendor Startup
- DC1-CRAH-L3-Cx-5670: Steps: EC Startup Checklist; MC Startup Checklist; Vendor Startup
- DC1-CRAH-L3-Cx-5700: Steps: EC Startup Checklist; MC Startup Checklist; Vendor Startup
- DC1-CRAH-L3-Cx-5730: Steps: EC Startup Checklist; MC Startup Checklist; Vendor Startup
- DC1-CRAH-L3-Cx-5760: Steps: EC Startup Checklist; MC Startup Checklist; Vendor Startup

| ID | Activity | Duration | Start | Finish | Predecessors | Complete | Planned start | Planned finish | Vendor Responsible Party | Layton Discipline | Location | CX Level | Equipment | DELETED | D |
| --- | --- | --- | --- | --- | --- | --- | --- | --- | --- | --- | --- | --- | --- | --- | --- |
| DC1-CRAH-L3-Cx-5790 | **DELETED** DC1-DH2300-CRAH-EG-2302-03 L3 Startup | 2d | 2026-07-15 A | 2026-07-15 A | QTS-1020 | 100% | 2026-08-13 | 2026-08-14 | VER | Commissioning | DH2300 | L3 | EG CRAH | DELETED | DH1100 |
| DC1-CRAH-L3-Cx-5800 | **DELETED** DC1-DH2300-CRAH-EG-2302-03 BMS/EPMS Programming | 1d | 2026-07-15 A | 2026-07-15 A | QTS-1020 | 100% | 2026-08-17 | 2026-08-17 | PRM | Commissioning | DH2300 | L3 | EG CRAH | DELETED | DH1100 |
| DC1-CRAH-L3-Cx-5810 | **DELETED** DC1-DH2300-CRAH-EG-2302-04 FTE | 1d | 2026-07-15 A | 2026-07-15 A | QTS-1020 | 100% | 2026-08-12 | 2026-08-12 | ROS | Commissioning | DH2300 | L3 | EG CRAH | DELETED | DH1100 |
| DC1-CRAH-L3-Cx-5820 | **DELETED** DC1-DH2300-CRAH-EG-2302-04 L3 Startup | 2d | 2026-07-15 A | 2026-07-15 A | QTS-1020 | 100% | 2026-08-13 | 2026-08-14 | VER | Commissioning | DH2300 | L3 | EG CRAH | DELETED | DH1100 |
| DC1-CRAH-L3-Cx-5830 | **DELETED** DC1-DH2300-CRAH-EG-2302-04 BMS/EPMS Programming | 1d | 2026-07-15 A | 2026-07-15 A | QTS-1020 | 100% | 2026-08-17 | 2026-08-17 | PRM | Commissioning | DH2300 | L3 | EG CRAH | DELETED | DH1100 |
| DC1-CRAH-L3-Cx-5840 | **DELETED** DC1-DH1300-CRAH-DH-01 FTE | 1d | 2026-07-15 A | 2026-07-15 A | DC1-CRAH-L2-3280, DC1-MOD2-L3-Cx-2930 SS, DC1-MOD2-L3-Cx-3020 SS, QTS-1020 | 100% | 2026-08-13 | 2026-08-13 | ROS | Commissioning | DH1300 | L3 | DH CRAH | DELETED | DH1100 |
| DC1-CRAH-L3-Cx-5850 | **DELETED** DC1-DH1300-CRAH-DH-01 L3 Startup | 2d | 2026-07-15 A | 2026-07-15 A | DC1-CRAH-L3-Cx-5840, QTS-1020 | 100% | 2026-08-14 | 2026-08-17 | UMAS | Commissioning | DH1300 | L3 | DH CRAH | DELETED | DH1100 |
| DC1-CRAH-L3-Cx-5860 | **DELETED** DC1-DH1300-CRAH-DH-01 BMS/EPMS Programming | 1d | 2026-07-15 A | 2026-07-15 A | DC1-CRAH-L3-Cx-5850, QTS-1020 | 100% | 2026-08-18 | 2026-08-18 | PRM | Commissioning | DH1300 | L3 | DH CRAH | DELETED | DH1100 |
| DC1-CRAH-L3-Cx-5870 | **DELETED** DC1-DH1300-CRAH-DH-02 FTE | 1d | 2026-07-15 A | 2026-07-15 A | DC1-CRAH-L2-3290, DC1-MOD2-L3-Cx-2990 SS, DC1-MOD2-L3-Cx-2900 SS, QTS-1020 | 100% | 2026-08-12 | 2026-08-12 | ROS | Commissioning | DH1300 | L3 | DH CRAH | DELETED | DH1100 |
| DC1-CRAH-L3-Cx-5880 | **DELETED** DC1-DH1300-CRAH-DH-02 L3 Startup | 2d | 2026-07-15 A | 2026-07-15 A | DC1-CRAH-L3-Cx-5870, QTS-1020 | 100% | 2026-08-13 | 2026-08-14 | UMAS | Commissioning | DH1300 | L3 | DH CRAH | DELETED | DH1100 |
| DC1-CRAH-L3-Cx-5890 | **DELETED** DC1-DH1300-CRAH-DH-02 BMS/EPMS Programming | 1d | 2026-07-15 A | 2026-07-15 A | DC1-CRAH-L3-Cx-5880, QTS-1020 | 100% | 2026-08-17 | 2026-08-17 | PRM | Commissioning | DH1300 | L3 | DH CRAH | DELETED | DH1100 |
| DC1-CRAH-L3-Cx-5900 | **DELETED** DC1-DH1300-CRAH-DH-03 FTE | 1d | 2026-07-15 A | 2026-07-15 A | DC1-CRAH-L2-3300, DC1-MOD2-L3-Cx-2960 SS, DC1-MOD2-L3-Cx-2870 SS, QTS-1020 | 100% | 2026-08-12 | 2026-08-12 | ROS | Commissioning | DH1300 | L3 | DH CRAH | DELETED | DH1100 |
| DC1-CRAH-L3-Cx-5910 | **DELETED** DC1-DH1300-CRAH-DH-03 L3 Startup | 2d | 2026-07-15 A | 2026-07-15 A | DC1-CRAH-L3-Cx-5900, QTS-1020 | 100% | 2026-08-13 | 2026-08-14 | UMAS | Commissioning | DH1300 | L3 | DH CRAH | DELETED | DH1100 |
| DC1-CRAH-L3-Cx-5920 | **DELETED** DC1-DH1300-CRAH-DH-03 BMS/EPMS Programming | 1d | 2026-07-15 A | 2026-07-15 A | DC1-CRAH-L3-Cx-5910, QTS-1020 | 100% | 2026-08-17 | 2026-08-17 | PRM | Commissioning | DH1300 | L3 | DH CRAH | DELETED | DH1100 |
| DC1-CRAH-L3-Cx-5930 | **DELETED** DC1-DH1300-CRAH-DH-04 FTE | 1d | 2026-07-15 A | 2026-07-15 A | DC1-CRAH-L2-3310, DC1-MOD2-L3-Cx-2930 SS, DC1-MOD2-L3-Cx-2840 SS, QTS-1020 | 100% | 2026-08-12 | 2026-08-12 | ROS | Commissioning | DH1300 | L3 | DH CRAH | DELETED | DH1100 |
| DC1-CRAH-L3-Cx-5940 | **DELETED** DC1-DH1300-CRAH-DH-04 L3 Startup | 2d | 2026-07-15 A | 2026-07-15 A | DC1-CRAH-L3-Cx-5930, QTS-1020 | 100% | 2026-08-13 | 2026-08-14 | UMAS | Commissioning | DH1300 | L3 | DH CRAH | DELETED | DH1100 |
| DC1-CRAH-L3-Cx-5950 | **DELETED** DC1-DH1300-CRAH-DH-04 BMS/EPMS Programming | 1d | 2026-07-15 A | 2026-07-15 A | DC1-CRAH-L3-Cx-5940, QTS-1020 | 100% | 2026-08-17 | 2026-08-17 | PRM | Commissioning | DH1300 | L3 | DH CRAH | DELETED | DH1100 |
| DC1-CRAH-L3-Cx-5960 | **DELETED** DC1-DH1300-CRAH-DH-05 FTE | 1d | 2026-07-15 A | 2026-07-15 A | DC1-CRAH-L2-3320, DC1-MOD2-L3-Cx-2900 SS, DC1-MOD2-L3-Cx-3020 SS, QTS-1020 | 100% | 2026-08-13 | 2026-08-13 | ROS | Commissioning | DH1300 | L3 | DH CRAH | DELETED | DH1100 |
| DC1-CRAH-L3-Cx-5970 | **DELETED** DC1-DH1300-CRAH-DH-05 L3 Startup | 2d | 2026-07-15 A | 2026-07-15 A | DC1-CRAH-L3-Cx-5960, QTS-1020 | 100% | 2026-08-14 | 2026-08-17 | UMAS | Commissioning | DH1300 | L3 | DH CRAH | DELETED | DH1100 |
| DC1-CRAH-L3-Cx-5980 | **DELETED** DC1-DH1300-CRAH-DH-05 BMS/EPMS Programming | 1d | 2026-07-15 A | 2026-07-15 A | DC1-CRAH-L3-Cx-5970, QTS-1020 | 100% | 2026-08-18 | 2026-08-18 | PRM | Commissioning | DH1300 | L3 | DH CRAH | DELETED | DH1100 |
| DC1-CRAH-L3-Cx-5990 | **DELETED** DC1-DH1300-CRAH-DH-06 FTE | 1d | 2026-07-15 A | 2026-07-15 A | QTS-1020 | 100% | 2026-08-12 | 2026-08-12 | ROS | Commissioning | DH1300 | L3 | DH CRAH | DELETED | DH1100 |
| DC1-CRAH-L3-Cx-6000 | **DELETED** DC1-DH1300-CRAH-DH-06 L3 Startup | 2d | 2026-07-15 A | 2026-07-15 A | QTS-1020 | 100% | 2026-08-13 | 2026-08-14 | UMAS | Commissioning | DH1300 | L3 | DH CRAH | DELETED | DH1100 |
| DC1-CRAH-L3-Cx-6010 | **DELETED** DC1-DH1300-CRAH-DH-06 BMS/EPMS Programming | 1d | 2026-07-15 A | 2026-07-15 A | DC1-CRAH-L3-Cx-6000, QTS-1020 | 100% | 2026-08-17 | 2026-08-17 | PRM | Commissioning | DH1300 | L3 | DH CRAH | DELETED | DH1100 |
| DC1-CRAH-L3-Cx-6020 | **DELETED** DC1-DH1300-CRAH-DH-07 FTE | 1d | 2026-07-15 A | 2026-07-15 A | DC1-CRAH-L2-3340, DC1-MOD2-L3-Cx-2960 SS, DC1-MOD2-L3-Cx-2840 SS, QTS-1020 | 100% | 2026-08-12 | 2026-08-12 | ROS | Commissioning | DH1300 | L3 | DH CRAH | DELETED | DH1100 |
| DC1-CRAH-L3-Cx-6030 | **DELETED** DC1-DH1300-CRAH-DH-07 L3 Startup | 2d | 2026-07-15 A | 2026-07-15 A | DC1-CRAH-L3-Cx-6020, QTS-1020 | 100% | 2026-08-13 | 2026-08-14 | UMAS | Commissioning | DH1300 | L3 | DH CRAH | DELETED | DH1100 |
| DC1-CRAH-L3-Cx-6040 | **DELETED** DC1-DH1300-CRAH-DH-07 BMS/EPMS Programming | 1d | 2026-07-15 A | 2026-07-15 A | DC1-CRAH-L3-Cx-6030, QTS-1020 | 100% | 2026-08-17 | 2026-08-17 | PRM | Commissioning | DH1300 | L3 | DH CRAH | DELETED | DH1100 |
| DC1-CRAH-L3-Cx-6050 | **DELETED** DC1-DH1300-CRAH-DH-08 FTE | 1d | 2026-07-15 A | 2026-07-15 A | DC1-CRAH-L2-3350, DC1-MOD2-L3-Cx-2900 SS, DC1-MOD2-L3-Cx-3020 SS, QTS-1020 | 100% | 2026-08-13 | 2026-08-13 | ROS | Commissioning | DH1300 | L3 | DH CRAH | DELETED | DH1100 |
| DC1-CRAH-L3-Cx-6060 | **DELETED** DC1-DH1300-CRAH-DH-08 L3 Startup | 2d | 2026-07-15 A | 2026-07-15 A | DC1-CRAH-L3-Cx-6050, QTS-1020 | 100% | 2026-08-14 | 2026-08-17 | UMAS | Commissioning | DH1300 | L3 | DH CRAH | DELETED | DH1100 |
| DC1-CRAH-L3-Cx-6070 | **DELETED** DC1-DH1300-CRAH-DH-08 BMS/EPMS Programming | 1d | 2026-07-15 A | 2026-07-15 A | DC1-CRAH-L3-Cx-6060, QTS-1020 | 100% | 2026-08-18 | 2026-08-18 | PRM | Commissioning | DH1300 | L3 | DH CRAH | DELETED | DH1100 |
| DC1-CRAH-L3-Cx-6080 | **DELETED** DC1-DH1300-CRAH-DH-09 FTE | 1d | 2026-07-15 A | 2026-07-15 A | DC1-CRAH-L2-3360, DC1-MOD2-L3-Cx-2990 SS, DC1-MOD2-L3-Cx-2870 SS, QTS-1020 | 100% | 2026-08-12 | 2026-08-12 | ROS | Commissioning | DH1300 | L3 | DH CRAH | DELETED | DH1100 |
| DC1-CRAH-L3-Cx-6090 | **DELETED** DC1-DH1300-CRAH-DH-09 L3 Startup | 2d | 2026-07-15 A | 2026-07-15 A | DC1-CRAH-L3-Cx-6080, QTS-1020 | 100% | 2026-08-13 | 2026-08-14 | UMAS | Commissioning | DH1300 | L3 | DH CRAH | DELETED | DH1100 |
| DC1-CRAH-L3-Cx-6100 | **DELETED** DC1-DH1300-CRAH-DH-09 BMS/EPMS Programming | 1d | 2026-07-15 A | 2026-07-15 A | DC1-CRAH-L3-Cx-6090, QTS-1020 | 100% | 2026-08-17 | 2026-08-17 | PRM | Commissioning | DH1300 | L3 | DH CRAH | DELETED | DH1100 |
| DC1-CRAH-L3-Cx-6110 | **DELETED** DC1-DH1300-CRAH-DH-10 FTE | 1d | 2026-07-15 A | 2026-07-15 A | DC1-CRAH-L2-3370, DC1-MOD2-L3-Cx-2960 SS, DC1-MOD2-L3-Cx-2840 SS, QTS-1020 | 100% | 2026-08-12 | 2026-08-12 | ROS | Commissioning | DH1300 | L3 | DH CRAH | DELETED | DH1100 |
| DC1-CRAH-L3-Cx-6120 | **DELETED** DC1-DH1300-CRAH-DH-10 L3 Startup | 2d | 2026-07-15 A | 2026-07-15 A | DC1-CRAH-L3-Cx-6110, QTS-1020 | 100% | 2026-08-13 | 2026-08-14 | UMAS | Commissioning | DH1300 | L3 | DH CRAH | DELETED | DH1100 |
| DC1-CRAH-L3-Cx-6130 | **DELETED** DC1-DH1300-CRAH-DH-10 BMS/EPMS Programming | 1d | 2026-07-15 A | 2026-07-15 A | DC1-CRAH-L3-Cx-6120, QTS-1020 | 100% | 2026-08-17 | 2026-08-17 | PRM | Commissioning | DH1300 | L3 | DH CRAH | DELETED | DH1100 |
| DC1-CRAH-L3-Cx-6140 | **DELETED** DC1-DH1300-CRAH-DH-11 FTE | 1d | 2026-07-15 A | 2026-07-15 A | DC1-CRAH-L2-3380, DC1-MOD2-L3-Cx-2930 SS, DC1-MOD2-L3-Cx-3020 SS, QTS-1020 | 100% | 2026-08-13 | 2026-08-13 | ROS | Commissioning | DH1300 | L3 | DH CRAH | DELETED | DH1100 |
| DC1-CRAH-L3-Cx-6150 | **DELETED** DC1-DH1300-CRAH-DH-11 L3 Startup | 2d | 2026-07-15 A | 2026-07-15 A | DC1-CRAH-L3-Cx-6140, QTS-1020 | 100% | 2026-08-14 | 2026-08-17 | UMAS | Commissioning | DH1300 | L3 | DH CRAH | DELETED | DH1100 |
| DC1-CRAH-L3-Cx-6160 | **DELETED** DC1-DH1300-CRAH-DH-11 BMS/EPMS Programming | 1d | 2026-07-15 A | 2026-07-15 A | DC1-CRAH-L3-Cx-6150, QTS-1020 | 100% | 2026-08-18 | 2026-08-18 | PRM | Commissioning | DH1300 | L3 | DH CRAH | DELETED | DH1100 |
| DC1-CRAH-L3-Cx-6170 | **DELETED** DC1-DH1300-CRAH-DH-12 FTE | 1d | 2026-07-15 A | 2026-07-15 A | DC1-CRAH-L2-3390, DC1-MOD2-L3-Cx-2990 SS, DC1-MOD2-L3-Cx-2900 SS, QTS-1020 | 100% | 2026-08-12 | 2026-08-12 | ROS | Commissioning | DH1300 | L3 | DH CRAH | DELETED | DH1100 |
| DC1-CRAH-L3-Cx-6180 | **DELETED** DC1-DH1300-CRAH-DH-12 L3 Startup | 2d | 2026-07-15 A | 2026-07-15 A | DC1-CRAH-L3-Cx-6170, QTS-1020 | 100% | 2026-08-13 | 2026-08-14 | UMAS | Commissioning | DH1300 | L3 | DH CRAH | DELETED | DH1100 |
| DC1-CRAH-L3-Cx-6190 | **DELETED** DC1-DH1300-CRAH-DH-12 BMS/EPMS Programming | 1d | 2026-07-15 A | 2026-07-15 A | DC1-CRAH-L3-Cx-6180, QTS-1020 | 100% | 2026-08-17 | 2026-08-17 | PRM | Commissioning | DH1300 | L3 | DH CRAH | DELETED | DH1100 |
| DC1-CRAH-L3-Cx-6200 | **DELETED** DC1-DH1300-CRAH-DH-13 FTE | 1d | 2026-07-15 A | 2026-07-15 A | DC1-CRAH-L2-3400, DC1-MOD2-L3-Cx-2960 SS, DC1-MOD2-L3-Cx-2870 SS, QTS-1020 | 100% | 2026-08-12 | 2026-08-12 | ROS | Commissioning | DH1300 | L3 | DH CRAH | DELETED | DH1100 |
| DC1-CRAH-L3-Cx-6210 | **DELETED** DC1-DH1300-CRAH-DH-13 L3 Startup | 2d | 2026-07-15 A | 2026-07-15 A | DC1-CRAH-L3-Cx-6200, QTS-1020 | 100% | 2026-08-13 | 2026-08-14 | UMAS | Commissioning | DH1300 | L3 | DH CRAH | DELETED | DH1100 |
| DC1-CRAH-L3-Cx-6220 | **DELETED** DC1-DH1300-CRAH-DH-13 BMS/EPMS Programming | 1d | 2026-07-15 A | 2026-07-15 A | DC1-CRAH-L3-Cx-6210, QTS-1020 | 100% | 2026-08-17 | 2026-08-17 | PRM | Commissioning | DH1300 | L3 | DH CRAH | DELETED | DH1100 |
| DC1-CRAH-L3-Cx-6230 | **DELETED** DC1-DH1300-CRAH-DH-14 FTE | 1d | 2026-07-15 A | 2026-07-15 A | DC1-CRAH-L2-3410, DC1-MOD2-L3-Cx-2930 SS, DC1-MOD2-L3-Cx-2840 SS, QTS-1020 | 100% | 2026-08-12 | 2026-08-12 | ROS | Commissioning | DH1300 | L3 | DH CRAH | DELETED | DH1100 |
| DC1-CRAH-L3-Cx-6240 | **DELETED** DC1-DH1300-CRAH-DH-14 L3 Startup | 2d | 2026-07-15 A | 2026-07-15 A | DC1-CRAH-L3-Cx-6230, QTS-1020 | 100% | 2026-08-13 | 2026-08-14 | UMAS | Commissioning | DH1300 | L3 | DH CRAH | DELETED | DH1100 |
| DC1-CRAH-L3-Cx-6250 | **DELETED** DC1-DH1300-CRAH-DH-14 BMS/EPMS Programming | 1d | 2026-07-15 A | 2026-07-15 A | DC1-CRAH-L3-Cx-6240, QTS-1020 | 100% | 2026-08-17 | 2026-08-17 | PRM | Commissioning | DH1300 | L3 | DH CRAH | DELETED | DH1100 |
| DC1-CRAH-L3-Cx-6260 | **DELETED** DC1-DH1300-CRAH-DH-15 FTE | 1d | 2026-07-15 A | 2026-07-15 A | DC1-CRAH-L2-3420, DC1-MOD2-L3-Cx-2870 SS, DC1-MOD2-L3-Cx-2840 SS, QTS-1020 | 100% | 2026-08-12 | 2026-08-12 | ROS | Commissioning | DH1300 | L3 | DH CRAH | DELETED | DH1100 |
| DC1-CRAH-L3-Cx-6270 | **DELETED** DC1-DH1300-CRAH-DH-15 L3 Startup | 2d | 2026-07-15 A | 2026-07-15 A | DC1-CRAH-L3-Cx-6260, QTS-1020 | 100% | 2026-08-13 | 2026-08-14 | UMAS | Commissioning | DH1300 | L3 | DH CRAH | DELETED | DH1100 |
| DC1-CRAH-L3-Cx-6280 | **DELETED** DC1-DH1300-CRAH-DH-15 BMS/EPMS Programming | 1d | 2026-07-15 A | 2026-07-15 A | DC1-CRAH-L3-Cx-6270, QTS-1020 | 100% | 2026-08-17 | 2026-08-17 | PRM | Commissioning | DH1300 | L3 | DH CRAH | DELETED | DH1100 |
| DC1-CRAH-L3-Cx-6290 | **DELETED** DC1-DH1300-CRAH-DH-16 FTE | 1d | 2026-07-15 A | 2026-07-15 A | DC1-CRAH-L2-3430, DC1-MOD2-L3-Cx-2900 SS, DC1-MOD2-L3-Cx-2870 SS, QTS-1020 | 100% | 2026-08-12 | 2026-08-12 | ROS | Commissioning | DH1300 | L3 | DH CRAH | DELETED | DH1100 |
| DC1-CRAH-L3-Cx-6300 | **DELETED** DC1-DH1300-CRAH-DH-16 L3 Startup | 2d | 2026-07-15 A | 2026-07-15 A | DC1-CRAH-L3-Cx-6290, QTS-1020 | 100% | 2026-08-13 | 2026-08-14 | UMAS | Commissioning | DH1300 | L3 | DH CRAH | DELETED | DH1100 |
| DC1-CRAH-L3-Cx-6310 | **DELETED** DC1-DH1300-CRAH-DH-16 BMS/EPMS Programming | 1d | 2026-07-15 A | 2026-07-15 A | DC1-CRAH-L3-Cx-6300, QTS-1020 | 100% | 2026-08-17 | 2026-08-17 | PRM | Commissioning | DH1300 | L3 | DH CRAH | DELETED | DH1100 |
| DC1-CRAH-L3-Cx-6320 | **DELETED** DC1-DH1300-CRAH-DH-17 FTE | 1d | 2026-07-15 A | 2026-07-15 A | DC1-CRAH-L2-3440, DC1-MOD2-L3-Cx-2930 SS, DC1-MOD2-L3-Cx-2900 SS, QTS-1020 | 100% | 2026-08-12 | 2026-08-12 | ROS | Commissioning | DH1300 | L3 | DH CRAH | DELETED | DH1100 |
| DC1-CRAH-L3-Cx-6330 | **DELETED** DC1-DH1300-CRAH-DH-17 L3 Startup | 2d | 2026-07-15 A | 2026-07-15 A | DC1-CRAH-L3-Cx-6320, QTS-1020 | 100% | 2026-08-13 | 2026-08-14 | UMAS | Commissioning | DH1300 | L3 | DH CRAH | DELETED | DH1100 |
| DC1-CRAH-L3-Cx-6340 | **DELETED** DC1-DH1300-CRAH-DH-17 BMS/EPMS Programming | 1d | 2026-07-15 A | 2026-07-15 A | DC1-CRAH-L3-Cx-6330, QTS-1020 | 100% | 2026-08-17 | 2026-08-17 | PRM | Commissioning | DH1300 | L3 | DH CRAH | DELETED | DH1100 |
| DC1-CRAH-L3-Cx-6350 | **DELETED** DC1-DH1300-CRAH-DH-18 FTE | 1d | 2026-07-15 A | 2026-07-15 A | DC1-CRAH-L2-3450, DC1-MOD2-L3-Cx-2960 SS, DC1-MOD2-L3-Cx-2930 SS, QTS-1020 | 100% | 2026-08-12 | 2026-08-12 | ROS | Commissioning | DH1300 | L3 | DH CRAH | DELETED | DH1100 |
| DC1-CRAH-L3-Cx-6360 | **DELETED** DC1-DH1300-CRAH-DH-18 L3 Startup | 2d | 2026-07-15 A | 2026-07-15 A | DC1-CRAH-L3-Cx-6350, QTS-1020 | 100% | 2026-08-13 | 2026-08-14 | UMAS | Commissioning | DH1300 | L3 | DH CRAH | DELETED | DH1100 |
| DC1-CRAH-L3-Cx-6370 | **DELETED** DC1-DH1300-CRAH-DH-18 BMS/EPMS Programming | 1d | 2026-07-15 A | 2026-07-15 A | DC1-CRAH-L3-Cx-6360, QTS-1020 | 100% | 2026-08-17 | 2026-08-17 | PRM | Commissioning | DH1300 | L3 | DH CRAH | DELETED | DH1100 |
| DC1-CRAH-L3-Cx-6380 | **DELETED** DC1-DH1300-CRAH-DH-19 FTE | 1d | 2026-07-15 A | 2026-07-15 A | DC1-CRAH-L2-3460, DC1-MOD2-L3-Cx-2990 SS, DC1-MOD2-L3-Cx-2960 SS, QTS-1020 | 100% | 2026-08-12 | 2026-08-12 | ROS | Commissioning | DH1300 | L3 | DH CRAH | DELETED | DH1100 |
| DC1-CRAH-L3-Cx-6390 | **DELETED** DC1-DH1300-CRAH-DH-19 L3 Startup | 2d | 2026-07-15 A | 2026-07-15 A | DC1-CRAH-L3-Cx-6380, QTS-1020 | 100% | 2026-08-13 | 2026-08-14 | UMAS | Commissioning | DH1300 | L3 | DH CRAH | DELETED | DH1100 |
| DC1-CRAH-L3-Cx-6400 | **DELETED** DC1-DH1300-CRAH-DH-19 BMS/EPMS Programming | 1d | 2026-07-15 A | 2026-07-15 A | DC1-CRAH-L3-Cx-6390, QTS-1020 | 100% | 2026-08-17 | 2026-08-17 | PRM | Commissioning | DH1300 | L3 | DH CRAH | DELETED | DH1100 |
| DC1-CRAH-L3-Cx-6410 | **DELETED** DC1-DH1300-CRAH-DH-20 FTE | 1d | 2026-07-15 A | 2026-07-15 A | DC1-CRAH-L2-3470, DC1-MOD2-L3-Cx-2990 SS, DC1-MOD2-L3-Cx-3020 SS, QTS-1020 | 100% | 2026-08-13 | 2026-08-13 | ROS | Commissioning | DH1300 | L3 | DH CRAH | DELETED | DH1100 |
| DC1-CRAH-L3-Cx-6420 | **DELETED** DC1-DH1300-CRAH-DH-20 L3 Startup | 2d | 2026-07-15 A | 2026-07-15 A | DC1-CRAH-L3-Cx-6410, QTS-1020 | 100% | 2026-08-14 | 2026-08-17 | UMAS | Commissioning | DH1300 | L3 | DH CRAH | DELETED | DH1100 |
| DC1-CRAH-L3-Cx-6430 | **DELETED** DC1-DH1300-CRAH-DH-20 BMS/EPMS Programming | 1d | 2026-07-15 A | 2026-07-15 A | DC1-CRAH-L3-Cx-6420, QTS-1020 | 100% | 2026-08-18 | 2026-08-18 | PRM | Commissioning | DH1300 | L3 | DH CRAH | DELETED | DH1100 |
| DC1-CRAH-L3-Cx-6440 | **DELETED** DC1-DH1300-CRAH-DH-21 FTE | 1d | 2026-07-15 A | 2026-07-15 A | DC1-MOD2-L3-Cx-3020 SS, DC1-CRAH-L2-3480, DC1-MOD2-L3-Cx-2840 SS, QTS-1020 | 100% | 2026-08-13 | 2026-08-13 | ROS | Commissioning | DH1300 | L3 | DH CRAH | DELETED | DH1100 |
| DC1-CRAH-L3-Cx-6450 | **DELETED** DC1-DH1300-CRAH-DH-21 L3 Startup | 2d | 2026-07-15 A | 2026-07-15 A | DC1-CRAH-L3-Cx-6440, QTS-1020 | 100% | 2026-08-14 | 2026-08-17 | UMAS | Commissioning | DH1300 | L3 | DH CRAH | DELETED | DH1100 |
| DC1-CRAH-L3-Cx-6460 | **DELETED** DC1-DH1300-CRAH-DH-21 BMS/EPMS Programming | 1d | 2026-07-15 A | 2026-07-15 A | DC1-CRAH-L3-Cx-6450, QTS-1020 | 100% | 2026-08-18 | 2026-08-18 | PRM | Commissioning | DH1300 | L3 | DH CRAH | DELETED | DH1100 |
| DC1-CRAH-L3-Cx-6470 | **DELETED** DC1-DH1300-CRAH-DH-22 FTE | 1d | 2026-07-15 A | 2026-07-15 A | DC1-CRAH-L2-3490, DC1-MOD2-L3-Cx-2900 SS, DC1-MOD2-L3-Cx-2840 SS, QTS-1020 | 100% | 2026-08-12 | 2026-08-12 | ROS | Commissioning | DH1300 | L3 | DH CRAH | DELETED | DH1100 |
| DC1-CRAH-L3-Cx-6480 | **DELETED** DC1-DH1300-CRAH-DH-22 L3 Startup | 2d | 2026-07-15 A | 2026-07-15 A | DC1-CRAH-L3-Cx-6470, QTS-1020 | 100% | 2026-08-13 | 2026-08-14 | UMAS | Commissioning | DH1300 | L3 | DH CRAH | DELETED | DH1100 |

Notes:
- DC1-CRAH-L3-Cx-5790: Steps: EC Startup Checklist; MC Startup Checklist; Vendor Startup
- DC1-CRAH-L3-Cx-5820: Steps: EC Startup Checklist; MC Startup Checklist; Vendor Startup
- DC1-CRAH-L3-Cx-5850: Steps: EC Startup Checklist; MC Startup Checklist; Vendor Startup
- DC1-CRAH-L3-Cx-5880: Steps: EC Startup Checklist; MC Startup Checklist; Vendor Startup
- DC1-CRAH-L3-Cx-5910: Steps: EC Startup Checklist; MC Startup Checklist; Vendor Startup
- DC1-CRAH-L3-Cx-5940: Steps: EC Startup Checklist; MC Startup Checklist; Vendor Startup
- DC1-CRAH-L3-Cx-5970: Steps: EC Startup Checklist; MC Startup Checklist; Vendor Startup
- DC1-CRAH-L3-Cx-6000: Steps: EC Startup Checklist; MC Startup Checklist; Vendor Startup
- DC1-CRAH-L3-Cx-6030: Steps: EC Startup Checklist; MC Startup Checklist; Vendor Startup
- DC1-CRAH-L3-Cx-6060: Steps: EC Startup Checklist; MC Startup Checklist; Vendor Startup
- DC1-CRAH-L3-Cx-6090: Steps: EC Startup Checklist; MC Startup Checklist; Vendor Startup
- DC1-CRAH-L3-Cx-6120: Steps: EC Startup Checklist; MC Startup Checklist; Vendor Startup
- DC1-CRAH-L3-Cx-6150: Steps: EC Startup Checklist; MC Startup Checklist; Vendor Startup
- DC1-CRAH-L3-Cx-6180: Steps: EC Startup Checklist; MC Startup Checklist; Vendor Startup
- DC1-CRAH-L3-Cx-6210: Steps: EC Startup Checklist; MC Startup Checklist; Vendor Startup
- DC1-CRAH-L3-Cx-6240: Steps: EC Startup Checklist; MC Startup Checklist; Vendor Startup
- DC1-CRAH-L3-Cx-6270: Steps: EC Startup Checklist; MC Startup Checklist; Vendor Startup
- DC1-CRAH-L3-Cx-6300: Steps: EC Startup Checklist; MC Startup Checklist; Vendor Startup
- DC1-CRAH-L3-Cx-6330: Steps: EC Startup Checklist; MC Startup Checklist; Vendor Startup
- DC1-CRAH-L3-Cx-6360: Steps: EC Startup Checklist; MC Startup Checklist; Vendor Startup
- DC1-CRAH-L3-Cx-6390: Steps: EC Startup Checklist; MC Startup Checklist; Vendor Startup
- DC1-CRAH-L3-Cx-6420: Steps: EC Startup Checklist; MC Startup Checklist; Vendor Startup
- DC1-CRAH-L3-Cx-6450: Steps: EC Startup Checklist; MC Startup Checklist; Vendor Startup
- DC1-CRAH-L3-Cx-6480: Steps: EC Startup Checklist; MC Startup Checklist; Vendor Startup

| ID | Activity | Duration | Start | Finish | Predecessors | Complete | Planned start | Planned finish | Vendor Responsible Party | Layton Discipline | Location | CX Level | Equipment | DELETED | D | NICK | Fragnet | Fragnet Responsible Party | MC Delay |
| --- | --- | --- | --- | --- | --- | --- | --- | --- | --- | --- | --- | --- | --- | --- | --- | --- | --- | --- | --- |
| DC1-CRAH-L3-Cx-6490 | **DELETED** DC1-DH1300-CRAH-DH-22 BMS/EPMS Programming | 1d | 2026-07-15 A | 2026-07-15 A | DC1-CRAH-L3-Cx-6480, QTS-1020 | 100% | 2026-08-17 | 2026-08-17 | PRM | Commissioning | DH1300 | L3 | DH CRAH | DELETED | DH1100 |  |  |  |  |
| DC1-CRAH-L3-Cx-6500 | **DELETED** DC1-DH1300-CRAH-DH-23 FTE | 1d | 2026-07-15 A | 2026-07-15 A | DC1-CRAH-L2-3500, DC1-MOD2-L3-Cx-2930 SS, DC1-MOD2-L3-Cx-2870 SS, QTS-1020 | 100% | 2026-08-12 | 2026-08-12 | ROS | Commissioning | DH1300 | L3 | DH CRAH | DELETED | DH1100 |  |  |  |  |
| DC1-CRAH-L3-Cx-6510 | **DELETED** DC1-DH1300-CRAH-DH-23 L3 Startup | 2d | 2026-07-15 A | 2026-07-15 A | DC1-CRAH-L3-Cx-6500, QTS-1020 | 100% | 2026-08-13 | 2026-08-14 | UMAS | Commissioning | DH1300 | L3 | DH CRAH | DELETED | DH1100 |  |  |  |  |
| DC1-CRAH-L3-Cx-6520 | **DELETED** DC1-DH1300-CRAH-DH-23 BMS/EPMS Programming | 1d | 2026-07-15 A | 2026-07-15 A | DC1-CRAH-L3-Cx-6510, QTS-1020 | 100% | 2026-08-17 | 2026-08-17 | PRM | Commissioning | DH1300 | L3 | DH CRAH | DELETED | DH1100 |  |  |  |  |
| DC1-CRAH-L3-Cx-6530 | **DELETED** DC1-DH1300-CRAH-DH-24 FTE | 1d | 2026-07-15 A | 2026-07-15 A | DC1-CRAH-L2-3510, DC1-MOD2-L3-Cx-2960 SS, DC1-MOD2-L3-Cx-2900 SS, QTS-1020 | 100% | 2026-08-12 | 2026-08-12 | ROS | Commissioning | DH1300 | L3 | DH CRAH | DELETED | DH1100 |  |  |  |  |
| DC1-CRAH-L3-Cx-6540 | **DELETED** DC1-DH1300-CRAH-DH-24 L3 Startup | 2d | 2026-07-15 A | 2026-07-15 A | DC1-CRAH-L3-Cx-6530, QTS-1020 | 100% | 2026-08-13 | 2026-08-14 | UMAS | Commissioning | DH1300 | L3 | DH CRAH | DELETED | DH1100 |  |  |  |  |
| DC1-CRAH-L3-Cx-6550 | **DELETED** DC1-DH1300-CRAH-DH-24 BMS/EPMS Programming | 1d | 2026-07-15 A | 2026-07-15 A | DC1-CRAH-L3-Cx-6540, QTS-1020 | 100% | 2026-08-17 | 2026-08-17 | PRM | Commissioning | DH1300 | L3 | DH CRAH | DELETED | DH1100 |  |  |  |  |
| DC1-CRAH-L3-Cx-6560 | **DELETED** DC1-DH1300-CRAH-DH-25 FTE | 1d | 2026-07-15 A | 2026-07-15 A | DC1-CRAH-L2-3520, DC1-MOD2-L3-Cx-2990 SS, DC1-MOD2-L3-Cx-2930 SS, QTS-1020 | 100% | 2026-08-12 | 2026-08-12 | ROS | Commissioning | DH1300 | L3 | DH CRAH | DELETED | DH1100 |  |  |  |  |
| DC1-CRAH-L3-Cx-6570 | **DELETED** DC1-DH1300-CRAH-DH-25 L3 Startup | 2d | 2026-07-15 A | 2026-07-15 A | DC1-CRAH-L3-Cx-6560, QTS-1020 | 100% | 2026-08-13 | 2026-08-14 | UMAS | Commissioning | DH1300 | L3 | DH CRAH | DELETED | DH1100 |  |  |  |  |
| DC1-CRAH-L3-Cx-6580 | **DELETED** DC1-DH1300-CRAH-DH-25 BMS/EPMS Programming | 1d | 2026-07-15 A | 2026-07-15 A | DC1-CRAH-L3-Cx-6570, QTS-1020 | 100% | 2026-08-17 | 2026-08-17 | PRM | Commissioning | DH1300 | L3 | DH CRAH | DELETED | DH1100 |  |  |  |  |
| DC1-CRAH-L3-Cx-6590 | **DELETED** DC1-DH1300-CRAH-DH-26 FTE | 1d | 2026-07-15 A | 2026-07-15 A | DC1-CRAH-L2-3530, DC1-MOD2-L3-Cx-2960 SS, DC1-MOD2-L3-Cx-3020 SS, QTS-1020 | 100% | 2026-08-13 | 2026-08-13 | ROS | Commissioning | DH1300 | L3 | DH CRAH | DELETED | DH1100 |  |  |  |  |
| DC1-CRAH-L3-Cx-6600 | **DELETED** DC1-DH1300-CRAH-DH-26 L3 Startup | 2d | 2026-07-15 A | 2026-07-15 A | DC1-CRAH-L3-Cx-6590, QTS-1020 | 100% | 2026-08-14 | 2026-08-17 | UMAS | Commissioning | DH1300 | L3 | DH CRAH | DELETED | DH1100 |  |  |  |  |
| DC1-CRAH-L3-Cx-6610 | **DELETED** DC1-DH1300-CRAH-DH-26 BMS/EPMS Programming | 1d | 2026-07-15 A | 2026-07-15 A | DC1-CRAH-L3-Cx-6600, QTS-1020 | 100% | 2026-08-18 | 2026-08-18 | PRM | Commissioning | DH1300 | L3 | DH CRAH | DELETED | DH1100 |  |  |  |  |
| DC1-CRAH-L3-Cx-6620 | **DELETED** DC1-DH1300-CRAH-DH-27 FTE | 1d | 2026-07-15 A | 2026-07-15 A | DC1-CRAH-L2-3540, DC1-MOD2-L3-Cx-2990 SS, DC1-MOD2-L3-Cx-2840 SS, QTS-1020 | 100% | 2026-08-12 | 2026-08-12 | ROS | Commissioning | DH1300 | L3 | DH CRAH | DELETED | DH1100 |  |  |  |  |
| DC1-CRAH-L3-Cx-6630 | **DELETED** DC1-DH1300-CRAH-DH-27 L3 Startup | 2d | 2026-07-15 A | 2026-07-15 A | DC1-CRAH-L3-Cx-6620, QTS-1020 | 100% | 2026-08-13 | 2026-08-14 | UMAS | Commissioning | DH1300 | L3 | DH CRAH | DELETED | DH1100 |  |  |  |  |
| DC1-CRAH-L3-Cx-6640 | **DELETED** DC1-DH1300-CRAH-DH-27 BMS/EPMS Programming | 1d | 2026-07-15 A | 2026-07-15 A | DC1-CRAH-L3-Cx-6630, QTS-1020 | 100% | 2026-08-17 | 2026-08-17 | PRM | Commissioning | DH1300 | L3 | DH CRAH | DELETED | DH1100 |  |  |  |  |
| DC1-CRAH-L3-Cx-6650 | **DELETED** DC1-DH1300-CRAH-DH-28 FTE | 1d | 2026-07-15 A | 2026-07-15 A | DC1-MOD2-L3-Cx-3020 SS, DC1-CRAH-L2-3550, DC1-MOD2-L3-Cx-2870 SS, QTS-1020 | 100% | 2026-08-13 | 2026-08-13 | ROS | Commissioning | DH1300 | L3 | DH CRAH | DELETED | DH1100 |  |  |  |  |
| DC1-CRAH-L3-Cx-6660 | **DELETED** DC1-DH1300-CRAH-DH-28 L3 Startup | 2d | 2026-07-15 A | 2026-07-15 A | DC1-CRAH-L3-Cx-6650, QTS-1020 | 100% | 2026-08-14 | 2026-08-17 | UMAS | Commissioning | DH1300 | L3 | DH CRAH | DELETED | DH1100 |  |  |  |  |
| DC1-CRAH-L3-Cx-6670 | **DELETED** DC1-DH1300-CRAH-DH-28 BMS/EPMS Programming | 1d | 2026-07-15 A | 2026-07-15 A | DC1-CRAH-L3-Cx-6660, QTS-1020 | 100% | 2026-08-18 | 2026-08-18 | PRM | Commissioning | DH1300 | L3 | DH CRAH | DELETED | DH1100 |  |  |  |  |
| DC1-CRAH-L3-Cx-6680 | **DELETED** DC1-DH1300-CRAH-EG-1302-01 FTE | 1d | 2026-07-15 A | 2026-07-15 A | DC1-MOD2-L3-Cx-2990 SS, DC1-CRAH-L2-3560, QTS-1020 | 100% | 2026-08-12 | 2026-08-12 | ROS | Commissioning | DH1300 | L3 | EG CRAH | DELETED | DH1100 |  |  |  |  |
| DC1-CRAH-L3-Cx-6690 | **DELETED** DC1-DH1300-CRAH-EG-1302-01 L3 Startup | 2d | 2026-07-15 A | 2026-07-15 A | DC1-CRAH-L3-Cx-6680, QTS-1020 | 100% | 2026-08-13 | 2026-08-14 | VER | Commissioning | DH1300 | L3 | EG CRAH | DELETED | DH1100 |  |  |  |  |
| DC1-CRAH-L3-Cx-6700 | **DELETED** DC1-DH1300-CRAH-EG-1302-01 BMS/EPMS Programming | 1d | 2026-07-15 A | 2026-07-15 A | DC1-CRAH-L3-Cx-6690, QTS-1020 | 100% | 2026-08-17 | 2026-08-17 | PRM | Commissioning | DH1300 | L3 | EG CRAH | DELETED | DH1100 |  |  |  |  |
| DC1-CRAH-L3-Cx-6710 | **DELETED** DC1-DH1300-CRAH-EG-1302-02 FTE | 1d | 2026-07-15 A | 2026-07-15 A | DC1-CRAH-L2-3570, DC1-MOD2-L3-Cx-2930 SS, QTS-1020 | 100% | 2026-08-12 | 2026-08-12 | ROS | Commissioning | DH1300 | L3 | EG CRAH | DELETED | DH1100 |  |  |  |  |
| DC1-CRAH-L3-Cx-6720 | **DELETED** DC1-DH1300-CRAH-EG-1302-02 L3 Startup | 2d | 2026-07-15 A | 2026-07-15 A | DC1-CRAH-L3-Cx-6710, QTS-1020 | 100% | 2026-08-13 | 2026-08-14 | VER | Commissioning | DH1300 | L3 | EG CRAH | DELETED | DH1100 |  |  |  |  |
| DC1-CRAH-L3-Cx-6730 | **DELETED** DC1-DH1300-CRAH-EG-1302-02 BMS/EPMS Programming | 1d | 2026-07-15 A | 2026-07-15 A | DC1-CRAH-L3-Cx-6720, QTS-1020 | 100% | 2026-08-17 | 2026-08-17 | PRM | Commissioning | DH1300 | L3 | EG CRAH | DELETED | DH1100 |  |  |  |  |
| DC1-CRAH-L3-Cx-6740 | **DELETED** DC1-DH1300-CRAH-EG-1302-03 FTE | 1d | 2026-07-15 A | 2026-07-15 A | DC1-CRAH-L2-3580, DC1-MOD2-L3-Cx-2900 SS, QTS-1020 | 100% | 2026-08-12 | 2026-08-12 | ROS | Commissioning | DH1300 | L3 | EG CRAH | DELETED | DH1100 |  |  |  |  |
| DC1-CRAH-L3-Cx-6750 | **DELETED** DC1-DH1300-CRAH-EG-1302-03 L3 Startup | 2d | 2026-07-15 A | 2026-07-15 A | DC1-CRAH-L3-Cx-6740, QTS-1020 | 100% | 2026-08-13 | 2026-08-14 | VER | Commissioning | DH1300 | L3 | EG CRAH | DELETED | DH1100 |  |  |  |  |
| DC1-CRAH-L3-Cx-6760 | **DELETED** DC1-DH1300-CRAH-EG-1302-03 BMS/EPMS Programming | 1d | 2026-07-15 A | 2026-07-15 A | DC1-CRAH-L3-Cx-6750, QTS-1020 | 100% | 2026-08-17 | 2026-08-17 | PRM | Commissioning | DH1300 | L3 | EG CRAH | DELETED | DH1100 |  |  |  |  |
| DC1-CRAH-L3-Cx-6770 | **DELETED** DC1-DH1300-CRAH-EG-1302-04 FTE | 1d | 2026-07-15 A | 2026-07-15 A | QTS-1020 | 100% | 2026-08-12 | 2026-08-12 | ROS | Commissioning | DH1300 | L3 | EG CRAH | DELETED | DH1100 |  |  |  |  |
| DC1-CRAH-L3-Cx-6780 | **DELETED** DC1-DH1300-CRAH-EG-1302-04 L3 Startup | 2d | 2026-07-15 A | 2026-07-15 A | QTS-1020 | 100% | 2026-08-13 | 2026-08-14 | VER | Commissioning | DH1300 | L3 | EG CRAH | DELETED | DH1100 |  |  |  |  |
| DC1-CRAH-L3-Cx-6790 | **DELETED** DC1-DH1300-CRAH-EG-1302-04 BMS/EPMS Programming | 1d | 2026-07-15 A | 2026-07-15 A | QTS-1020 | 100% | 2026-08-17 | 2026-08-17 | PRM | Commissioning | DH1300 | L3 | EG CRAH | DELETED | DH1100 |  |  |  |  |
| DC1-DH1300-LB-1000 | **DELETED** DC1-DH1300 Connect Air Cooled Load Banks at RPPs | 5d | 2026-07-15 A | 2026-07-15 A | QTS-1020 | 100% | 2026-08-18 | 2026-08-24 | PHE | Commissioning | DH1300 | L3 | COD | DELETED | DH1100 | NICK |  |  |  |
| DC1-DH1300-LB-1010 | **DELETED** DC1-DH1300 Burn in Chillers | 5d | 2026-07-15 A | 2026-07-15 A | QTS-1020 | 100% | 2026-08-25 | 2026-08-31 | LAY | Commissioning | DH1300 | L3 | CHILLER | DELETED | DH1100 | NICK |  |  |  |
| DC1-DH1300-LB-1030 | **DELETED** DC1-DH1300 10% Continuity Testing RPP Whips | 2d | 2026-07-15 A | 2026-07-15 A | QTS-1020 | 100% | 2026-07-15 | 2026-07-16 | PHE | Commissioning | DH1300 | L3 | RPP | DELETED | DH1100 |  |  |  |  |
| DC1-DH1300-LB-1040 | **DELETED** DC1-DH1300 Liquid Cooled Load Bank (Secondary Side) | 12d | 2026-07-15 A | 2026-07-15 A | QTS-1020 | 100% | 2026-08-27 | 2026-09-14 | LAY | Commissioning | DH1300 | L3 |  | DELETED | DH1100 | NICK |  |  |  |
| DC1-DH1300-LB-1050 | **DELETED** DC1-DH1300 Install DanFoss Connectors | 2d | 2026-07-15 A | 2026-07-15 A | QTS-1020 | 100% | 2026-09-15 | 2026-09-16 | PHE | Commissioning | DH1300 | L3 |  | DELETED | DH1100 |  |  |  |  |
| DC1-DH1300-LB-1060 | Fragnet / **DELETED** DC1-DH1300 40% Load Bank Testing RPP Whips | 2d | 2026-07-15 A | 2026-07-15 A | QTS-1020 | 100% | 2026-07-27 | 2026-07-28 | PHE | Commissioning | DH1300 | L3 |  | DELETED | DH1100 | NICK | Fragnet | Parrish-Hare Electrical Supply | Y |
| DC1-DH1300-TAB-1000 | **DELETED** DC1-DH1300 Water Tab (Industrial Loop) | 5d | 2026-07-15 A | 2026-07-15 A | QTS-1020 | 100% | 2026-08-31 | 2026-09-04 | LAY | Commissioning | DH1300 | L3 |  | DELETED | DH1100 | NICK |  |  |  |
| DC1-DH1300-TAB-1010 | **DELETED** DC1-DH1300 Air Tab | 5d | 2026-07-15 A | 2026-07-15 A | QTS-1020 | 100% | 2026-08-19 | 2026-08-25 | LAY | Commissioning | DH1300 | L3 |  | DELETED | DH1100 | NICK |  |  |  |
| DC1-DH2200-LB-1000 | **DELETED** DC1-DH2200 Connect Air Cooled Load Banks at RPPs | 5d | 2026-07-15 A | 2026-07-16 A | QTS-1020 | 100% | 2026-07-21 | 2026-07-27 | PHE | Commissioning | DH2200 | L3 | COD | DELETED | DH1100 | NICK |  |  |  |
| DC1-DH2200-LB-1010 | **DELETED** DC1-DH2200 Burn in Chillers | 5d | 2026-07-15 A | 2026-07-16 A | QTS-1020 | 100% | 2026-07-28 | 2026-08-03 | LAY | Commissioning | DH2200 | L3 | CHILLER | DELETED | DH1100 | NICK |  |  |  |
| DC1-DH2200-LB-1030 | **DELETED** DC1-DH2200 10% Continuity Testing RPP Whips | 2d | 2026-07-15 A | 2026-07-16 A | QTS-1020 | 100% |  |  | PHE | Commissioning | DH2200 | L3 | RPP | DELETED | DH1100 |  |  |  |  |
| DC1-DH2200-LB-1040 | **DELETED** DC1-DH2200 Liquid Cooled Load Bank (Secondary Side) | 12d | 2026-07-15 A | 2026-07-16 A | QTS-1020 | 100% | 2026-08-28 | 2026-09-15 | LAY | Commissioning | DH2200 | L3 |  | DELETED | DH1100 | NICK |  |  |  |
| DC1-DH2200-LB-1050 | **DELETED** DC1-DH2200 Install DanFoss Connectors | 2d | 2026-07-15 A | 2026-07-16 A | QTS-1020 | 100% | 2026-09-16 | 2026-09-17 | PHE | Commissioning | DH2200 | L3 |  | DELETED | DH1100 |  |  |  |  |
| DC1-DH2200-LB-1060 | **DELETED** Fragnet / DC1-DH2200 40% Load Bank Testing RPP Whips | 2d | 2026-07-15 A | 2026-07-16 A | QTS-1020 | 100% | 2026-07-17 | 2026-07-20 | PHE | Commissioning | DH2200 | L3 |  | DELETED | DH1100 | NICK | Fragnet | Parrish-Hare Electrical Supply |  |
| DC1-DH2200-TAB-1000 | **DELETED** DC1-DH2200 Water Tab (Industrial Loop) | 5d | 2026-07-15 A | 2026-07-16 A | QTS-1020 | 100% | 2026-07-22 | 2026-07-28 | LAY | Commissioning | DH2200 | L3 |  | DELETED | DH1100 | NICK |  |  |  |
| DC1-DH2200-TAB-1010 | **DELETED** DC1-DH2200 Air Tab | 5d | 2026-07-15 A | 2026-07-16 A | QTS-1020 | 100% | 2026-07-29 | 2026-08-04 | LAY | Commissioning | DH2200 | L3 |  | DELETED | DH1100 | NICK |  |  |  |
| DC1-DH2300-LB-1000 | **DELETED** DC1-DH2300 Connect Air Cooled Load Banks at RPPs | 5d | 2026-07-15 A | 2026-07-15 A | QTS-1020 | 100% | 2026-08-18 | 2026-08-24 | PHE | Commissioning | DH2300 | L3 | COD | DELETED | DH1100 | NICK |  |  |  |
| DC1-DH2300-LB-1010 | **DELETED** DC1-DH2300 Burn in Chillers | 5d | 2026-07-15 A | 2026-07-15 A | QTS-1020 | 100% | 2026-08-25 | 2026-08-31 | LAY | Commissioning | DH2300 | L3 | CHILLER | DELETED | DH1100 | NICK |  |  |  |
| DC1-DH2300-LB-1030 | **DELETED** DC1-DH2300 10% Continuity Testing RPP Whips | 2d | 2026-07-15 A | 2026-07-15 A | QTS-1020 | 100% | 2026-07-15 | 2026-07-16 | PHE | Commissioning | DH2300 | L3 | RPP | DELETED | DH1100 |  |  |  |  |
| DC1-DH2300-LB-1040 | **DELETED** DC1-DH2300 Liquid Cooled Load Bank (Secondary Side) | 5d | 2026-07-15 A | 2026-07-15 A | QTS-1020 | 100% | 2026-10-01 | 2026-10-07 | LAY | Commissioning | DH2300 | L3 |  | DELETED | DH1100 | NICK |  |  |  |
| DC1-DH2300-LB-1050 | **DELETED** DC1-DH2300 Install DanFoss Connectors | 2d | 2026-07-15 A | 2026-07-15 A | QTS-1020 | 100% | 2026-10-06 | 2026-10-07 | PHE | Commissioning | DH2300 | L3 |  | DELETED | DH1100 |  |  |  |  |
| DC1-DH2300-LB-1060 | Fragnet / **DELETED** DC1-DH2300 40% Load Bank Testing RPP Whips | 2d | 2026-07-15 A | 2026-07-15 A | QTS-1020 | 100% | 2026-07-23 | 2026-07-24 | PHE | Commissioning | DH2300 | L3 |  | DELETED | DH1100 | NICK | Fragnet | Parrish-Hare Electrical Supply |  |
| DC1-DH2300-TAB-1000 | **DELETED** DC1-DH2300 Water Tab (Industrial Loop) | 5d | 2026-07-15 A | 2026-07-15 A | QTS-1020 | 100% | 2026-08-31 | 2026-09-04 | LAY | Commissioning | DH2300 | L3 |  | DELETED | DH1100 | NICK |  |  |  |
| DC1-DH2300-TAB-1010 | **DELETED** DC1-DH2300 Air Tab | 5d | 2026-07-15 A | 2026-07-15 A | QTS-1020 | 100% | 2026-08-19 | 2026-08-25 | LAY | Commissioning | DH2300 | L3 |  | DELETED | DH1100 | NICK |  |  |  |
| DC1-DOAS-L2-2040 | **DELETED** DH1200 DOAS-01 L2 Checklist | 3d | 2026-07-15 A | 2026-07-16 A | QTS-1020 | 100% | 2026-07-21 | 2026-07-23 | TAS | Commissioning | DH1200 | L2 | DOAS | DELETED | DH1100 |  |  |  |  |
| DC1-DOAS-L2-2050 | **DELETED** DH1200 DOAS-02 L2 Checklist | 3d | 2026-07-15 A | 2026-07-16 A | QTS-1020 | 100% | 2026-07-21 | 2026-07-23 | TAS | Commissioning | DH1200 | L2 | DOAS | DELETED | DH1100 |  |  |  |  |
| DC1-DOAS-L2-2060 | **DELETED** DH2300 DOAS-01 L2 Checklist | 3d | 2026-07-15 A | 2026-07-15 A | QTS-1020 | 100% | 2026-07-23 | 2026-07-27 | TAS | Commissioning | DH2300 | L2 | DOAS | DELETED | DH1100 |  |  |  |  |
| DC1-DOAS-L2-2070 | **DELETED** DH2300 DOAS-02 L2 Checklist | 3d | 2026-07-15 A | 2026-07-15 A | QTS-1020 | 100% | 2026-07-23 | 2026-07-27 | TAS | Commissioning | DH2300 | L2 | DOAS | DELETED | DH1100 |  |  |  |  |
| DC1-DOAS-L2-2080 | **DELETED** DH1300 DOAS-01 L2 Checklist | 3d | 2026-07-15 A | 2026-07-15 A | QTS-1020 | 100% | 2026-07-23 | 2026-07-27 | TAS | Commissioning | DH1300 | L2 | DOAS | DELETED | DH1100 |  |  |  |  |
| DC1-DOAS-L2-2090 | **DELETED** DH1300 DOAS-02 L2 Checklist | 3d | 2026-07-15 A | 2026-07-15 A | QTS-1020 | 100% | 2026-07-23 | 2026-07-27 | TAS | Commissioning | DH1300 | L2 | DOAS | DELETED | DH1100 |  |  |  |  |
| DC1-DOAS-L3-Cx-2180 | **DELETED** DC1-DH2300-DOAS-RT-01 FTE | 1d | 2026-07-15 A | 2026-07-15 A | QTS-1020 | 100% | 2026-08-12 | 2026-08-12 | ROS | Commissioning | DH2300 | L3 | DOAS | DELETED | DH1100 |  |  |  |  |
| DC1-DOAS-L3-Cx-2190 | **DELETED** DC1-DH2300-DOAS-RT-01 L3 Startup | 2d | 2026-07-15 A | 2026-07-15 A | QTS-1020 | 100% | 2026-08-13 | 2026-08-14 | TAS | Commissioning | DH2300 | L3 | DOAS | DELETED | DH1100 |  |  |  |  |
| DC1-DOAS-L3-Cx-2200 | **DELETED** DC1-DH2300-DOAS-RT-01 BMS/EPMS Programming | 1d | 2026-07-15 A | 2026-07-15 A | QTS-1020 | 100% | 2026-08-17 | 2026-08-17 | PRM | Commissioning | DH2300 | L3 | DOAS | DELETED | DH1100 |  |  |  |  |
| DC1-DOAS-L3-Cx-2210 | **DELETED** DC1-DH2300-DOAS-RT-02 FTE | 1d | 2026-07-15 A | 2026-07-15 A | QTS-1020 | 100% | 2026-08-12 | 2026-08-12 | ROS | Commissioning | DH2300 | L3 | DOAS | DELETED | DH1100 |  |  |  |  |
| DC1-DOAS-L3-Cx-2220 | **DELETED** DC1-DH2300-DOAS-RT-02 L3 Startup | 2d | 2026-07-15 A | 2026-07-15 A | QTS-1020 | 100% | 2026-08-13 | 2026-08-14 | TAS | Commissioning | DH2300 | L3 | DOAS | DELETED | DH1100 |  |  |  |  |
| DC1-DOAS-L3-Cx-2230 | **DELETED** DC1-DH2300-DOAS-RT-02 BMS/EPMS Programming | 1d | 2026-07-15 A | 2026-07-15 A | QTS-1020 | 100% | 2026-08-17 | 2026-08-17 | PRM | Commissioning | DH2300 | L3 | DOAS | DELETED | DH1100 |  |  |  |  |
| DC1-DOAS-L3-Cx-2240 | **DELETED** DC1-DH1300-DOAS-RT-01 FTE | 1d | 2026-07-15 A | 2026-07-15 A | QTS-1020 | 100% | 2026-08-13 | 2026-08-13 | ROS | Commissioning | DH1300 | L3 | DOAS | DELETED | DH1100 |  |  |  |  |
| DC1-DOAS-L3-Cx-2250 | **DELETED** DC1-DH1300-DOAS-RT-01 L3 Startup | 2d | 2026-07-15 A | 2026-07-15 A | QTS-1020 | 100% | 2026-08-14 | 2026-08-17 | TAS | Commissioning | DH1300 | L3 | DOAS | DELETED | DH1100 |  |  |  |  |
| DC1-DOAS-L3-Cx-2260 | **DELETED** DC1-DH1300-DOAS-RT-01 BMS/EPMS Programming | 1d | 2026-07-15 A | 2026-07-15 A | QTS-1020 | 100% | 2026-08-18 | 2026-08-18 | PRM | Commissioning | DH1300 | L3 | DOAS | DELETED | DH1100 |  |  |  |  |

Notes:
- DC1-CRAH-L3-Cx-6510: Steps: EC Startup Checklist; MC Startup Checklist; Vendor Startup
- DC1-CRAH-L3-Cx-6540: Steps: EC Startup Checklist; MC Startup Checklist; Vendor Startup
- DC1-CRAH-L3-Cx-6570: Steps: EC Startup Checklist; MC Startup Checklist; Vendor Startup
- DC1-CRAH-L3-Cx-6600: Steps: EC Startup Checklist; MC Startup Checklist; Vendor Startup
- DC1-CRAH-L3-Cx-6630: Steps: EC Startup Checklist; MC Startup Checklist; Vendor Startup
- DC1-CRAH-L3-Cx-6660: Steps: EC Startup Checklist; MC Startup Checklist; Vendor Startup
- DC1-CRAH-L3-Cx-6690: Steps: EC Startup Checklist; MC Startup Checklist; Vendor Startup
- DC1-CRAH-L3-Cx-6720: Steps: EC Startup Checklist; MC Startup Checklist; Vendor Startup
- DC1-CRAH-L3-Cx-6750: Steps: EC Startup Checklist; MC Startup Checklist; Vendor Startup
- DC1-CRAH-L3-Cx-6780: Steps: EC Startup Checklist; MC Startup Checklist; Vendor Startup
- DC1-DOAS-L2-2040: Steps: EC Installation Checklist; MC Installation Checklist; CC Installation Checklist; Vendor Pre-Energization Checklist; CXA Pre-Energization Inspection; PEI/Clean-Walk
- DC1-DOAS-L2-2050: Steps: EC Installation Checklist; MC Installation Checklist; CC Installation Checklist; Vendor Pre-Energization Checklist; CXA Pre-Energization Inspection; PEI/Clean-Walk
- DC1-DOAS-L2-2060: Steps: EC Installation Checklist; MC Installation Checklist; CC Installation Checklist; Vendor Pre-Energization Checklist; CXA Pre-Energization Inspection; PEI/Clean-Walk
- DC1-DOAS-L2-2070: Steps: EC Installation Checklist; MC Installation Checklist; CC Installation Checklist; Vendor Pre-Energization Checklist; CXA Pre-Energization Inspection; PEI/Clean-Walk
- DC1-DOAS-L2-2080: Steps: EC Installation Checklist; MC Installation Checklist; CC Installation Checklist; Vendor Pre-Energization Checklist; CXA Pre-Energization Inspection; PEI/Clean-Walk
- DC1-DOAS-L2-2090: Steps: EC Installation Checklist; MC Installation Checklist; CC Installation Checklist; Vendor Pre-Energization Checklist; CXA Pre-Energization Inspection; PEI/Clean-Walk
- DC1-DOAS-L3-Cx-2190: Steps: EC Startup Checklist; MC Startup Checklist; Vendor Startup
- DC1-DOAS-L3-Cx-2220: Steps: EC Startup Checklist; MC Startup Checklist; Vendor Startup
- DC1-DOAS-L3-Cx-2250: Steps: EC Startup Checklist; MC Startup Checklist; Vendor Startup

| ID | Activity | Duration | Start | Finish | Predecessors | Complete | Planned start | Planned finish | Vendor Responsible Party | Layton Discipline | Location | CX Level | Equipment | DELETED | D | NICK | Notes |
| --- | --- | --- | --- | --- | --- | --- | --- | --- | --- | --- | --- | --- | --- | --- | --- | --- | --- |
| DC1-DOAS-L3-Cx-2270 | **DELETED** DC1-DH1300-DOAS-RT-02 FTE | 1d | 2026-07-15 A | 2026-07-15 A | QTS-1020 | 100% | 2026-08-12 | 2026-08-12 | ROS | Commissioning | DH1300 | L3 | DOAS | DELETED | DH1100 |  |  |
| DC1-DOAS-L3-Cx-2280 | **DELETED** DC1-DH1300-DOAS-RT-02 L3 Startup | 2d | 2026-07-15 A | 2026-07-15 A | QTS-1020 | 100% | 2026-08-13 | 2026-08-14 | TAS | Commissioning | DH1300 | L3 | DOAS | DELETED | DH1100 |  |  |
| DC1-DOAS-L3-Cx-2290 | **DELETED** DC1-DH1300-DOAS-RT-02 BMS/EPMS Programming | 1d | 2026-07-15 A | 2026-07-15 A | QTS-1020 | 100% | 2026-08-17 | 2026-08-17 | PRM | Commissioning | DH1300 | L3 | DOAS | DELETED | DH1100 |  |  |
| DC1-DOAS-L3-Cx-2300 | **DELETED** DC1-DH2100-CDU SCP FTE | 1d | 2026-07-15 A | 2026-07-15 A | QTS-1020 | 100% |  |  | ROS | Commissioning | DH2100 | L3 | CDU SCP | DELETED | DH1100 |  |  |
| DC1-DOAS-L3-Cx-2310 | **DELETED** DC1-DH2100-CDU SCP L3 Startup | 2d | 2026-07-15 A | 2026-07-15 A | QTS-1020 | 100% | 2026-07-16 | 2026-07-17 | VER | Commissioning | DH2100 | L3 | CDU SCP | DELETED | DH1100 |  |  |
| DC1-DOAS-L3-Cx-2320 | **DELETED** DC1-DH2100-CDU SCP BMS/EPMS Programming | 3d | 2026-07-15 A | 2026-07-15 A | QTS-1020 | 100% | 2026-07-20 | 2026-07-22 | PRM | Commissioning | DH2100 | L3 | CDU SCP | DELETED | DH1100 |  |  |
| DC1-ELEC-L4-Cx-1020 | **DELETED** DC1 Data Hall 2200 Air Cooled L4 | 15d | 2026-07-15 A | 2026-07-16 A | QTS-1020 | 100% | 2026-08-05 | 2026-08-25 | LAY | Commissioning | DH2200 | L4 |  | DELETED | DH1100 | NICK |  |
| DC1-ELEC-L4-Cx-1040 | **DELETED** DC1 Data Hall 2300 Air Cooled L4 | 15d | 2026-07-15 A | 2026-07-15 A | QTS-1020 | 100% | 2026-09-08 | 2026-09-28 | LAY | Commissioning | DH2300 | L4 |  | DELETED | DH1100 | NICK |  |
| DC1-ELEC-L4-Cx-1050 | **DELETED** DC1 Data Hall 1300 Air Cooled L4 | 15d | 2026-07-15 A | 2026-07-15 A | QTS-1020 | 100% | 2026-09-15 | 2026-10-05 | LAY | Commissioning | DH1300 | L4 |  | DELETED | DH1100 | NICK |  |
| DC1-ELEC-L4-Cx-1060 | **DELETED** DC1 Data Hall 1300 Liquid Cooled L4 | 15d | 2026-07-15 A | 2026-07-15 A | QTS-1020 | 100% | 2026-09-01 | 2026-09-22 | LAY | Commissioning | DH1300 | L4 |  | DELETED | DH1100 | NICK |  |
| DC1-ELEC-L4-Cx-1070 | **DELETED** DC1 Data Hall 2300 Liquid Cooled L4 | 15d | 2026-07-15 A | 2026-07-15 A | QTS-1020 | 100% | 2026-09-01 | 2026-09-22 | LAY | Commissioning | DH2300 | L4 |  | DELETED | DH1100 | NICK |  |
| DC1-ELEC-L4-Cx-1090 | **DELETED** DC1 Data Hall 2200 Liquid Cooled L4 | 15d | 2026-07-15 A | 2026-07-16 A | QTS-1020 | 100% | 2026-07-24 | 2026-08-13 | LAY | Commissioning | DH2200 | L4 |  | DELETED | DH1100 | NICK |  |
| DC1-ELEC-L4-Cx-1110 | **DELETED** DC1 Data Hall 1300 BMS/EPMS Integration | 5d | 2026-07-15 A | 2026-07-15 A | QTS-1020 | 100% | 2026-09-08 | 2026-09-14 | LAY | Commissioning | DH1300 | L4 |  | DELETED | DH1100 |  |  |
| DC1-IST-2010 | **DELETED** DC1 Data Hall 2200 IST (6/1/26) | 2d | 2026-07-15 A | 2026-07-16 A | QTS-1020 | 100% | 2026-08-26 | 2026-08-27 | LAY | Commissioning | DH2200 | L5 |  | DELETED | DH1100 |  |  |
| DC1-IST-2030 | **DELETED** DC1 Data Hall 2300 IST (8/3/26) | 2d | 2026-07-15 A | 2026-07-15 A | QTS-1020 | 100% | 2026-09-29 | 2026-09-30 | LAY | Commissioning | DH2300 | L5 |  | DELETED | DH1100 |  |  |
| DC1-IST-2040 | **DELETED** DC1 Data Hall 1300 IST (8/3/26) | 2d | 2026-07-15 A | 2026-07-15 A | QTS-1020 | 100% | 2026-09-18 | 2026-09-21 | LAY | Commissioning | DH1300 | L5 |  | DELETED | DH1100 |  |  |
| DC1-L4-Cx-1270 | **DELETED** DC1 Data Hall 2300 Generator Burns A23 & B23 | 1d | 2026-07-15 A | 2026-07-15 A | QTS-1020 | 100% | 2026-08-13 | 2026-08-13 | HLT | Commissioning | DH2300 | L4 | GEN | DELETED | DH1100 | NICK |  |
| DC1-L4-Cx-1280 | **DELETED** DC1 Data Hall 2300 Generator Burns C23 & D23 | 1d | 2026-07-15 A | 2026-07-15 A | QTS-1020 | 100% | 2026-08-14 | 2026-08-14 | HLT | Commissioning | DH2300 | L4 | GEN | DELETED | DH1100 | NICK |  |
| DC1-L4-Cx-1290 | **DELETED** DC1 Data Hall 2300 Generator Burns E23 & F23 | 1d | 2026-07-15 A | 2026-07-15 A | QTS-1020 | 100% | 2026-08-17 | 2026-08-17 | HLT | Commissioning | DH2300 | L4 | GEN | DELETED | DH1100 | NICK |  |
| DC1-L4-Cx-1300 | **DELETED** DC1 Data Hall 2300 Generator Burns R23 | 1d | 2026-07-15 A | 2026-07-15 A | QTS-1020 | 100% | 2026-08-18 | 2026-08-18 | HLT | Commissioning | DH2300 | L4 | GEN | DELETED | DH1100 | NICK |  |
| DC1-L4-Cx-1310 | **DELETED** DC1 Data Hall 1300 Generator Burns A13 & B13 | 1d | 2026-07-15 A | 2026-07-15 A | QTS-1020 | 100% | 2026-08-17 | 2026-08-17 | HLT | Commissioning | DH1300 | L4 | GEN | DELETED | DH1100 | NICK |  |
| DC1-L4-Cx-1320 | **DELETED** DC1 Data Hall 1300 Generator Burns C13 & D13 | 1d | 2026-07-15 A | 2026-07-15 A | QTS-1020 | 100% | 2026-08-18 | 2026-08-18 | HLT | Commissioning | DH1300 | L4 | GEN | DELETED | DH1100 | NICK |  |
| DC1-L4-Cx-1330 | **DELETED** DC1 Data Hall 1300 Generator Burns E13 & F13 | 1d | 2026-07-15 A | 2026-07-15 A | QTS-1020 | 100% | 2026-08-19 | 2026-08-19 | HLT | Commissioning | DH1300 | L4 | GEN | DELETED | DH1100 | NICK |  |
| DC1-L4-Cx-1340 | **DELETED** DC1 Data Hall 1300 Generator Burns R13 | 1d | 2026-07-15 A | 2026-07-15 A | QTS-1020 | 100% | 2026-08-20 | 2026-08-20 | HLT | Commissioning | DH1300 | L4 | GEN | DELETED | DH1100 | NICK |  |
| DC1-MECH-L4-Cx-1120 | **DELETED** DC1 Data Hall 2200 BMS/EPMS Integration | 1d | 2026-07-15 A | 2026-07-16 A | QTS-1020 | 100% | 2026-07-29 | 2026-07-29 |  | Commissioning | DH2200 | L4 |  | DELETED | DH1100 |  |  |
| DC1-MECH-L4-Cx-1140 | **DELETED** DC1 Data Hall 2300 BMS/EPMS Integration | 1d | 2026-07-15 A | 2026-07-15 A | QTS-1020 | 100% | 2026-09-04 | 2026-09-04 |  | Commissioning | DH2300 | L4 |  | DELETED | DH1100 |  |  |
| DC1-MOD01-L2-2210 | **DELETED** DH2300 MOD-A23-01 L2 Checklist | 3d | 2026-07-15 A | 2026-07-15 A | QTS-1020 | 100% | 2026-07-15 | 2026-07-17 | PHE | Commissioning | DH2300 | L2 | MOD-01 | DELETED | DH1100 |  |  |
| DC1-MOD01-L2-2220 | **DELETED** DH2300 MOD-B23-01 L2 Checklist | 3d | 2026-07-15 A | 2026-07-15 A | QTS-1020 | 100% | 2026-07-20 | 2026-07-22 | PHE | Commissioning | DH2300 | L2 | MOD-01 | DELETED | DH1100 |  |  |
| DC1-MOD01-L2-2230 | **DELETED** DH2300 MOD-C23-01 L2 Checklist | 3d | 2026-07-15 A | 2026-07-15 A | QTS-1020 | 100% | 2026-07-23 | 2026-07-27 | PHE | Commissioning | DH2300 | L2 | MOD-01 | DELETED | DH1100 |  | Do we need? |
| DC1-MOD01-L2-2240 | **DELETED** DH2300 MOD-D23-01 L2 Checklist | 3d | 2026-07-15 A | 2026-07-15 A | QTS-1020 | 100% | 2026-07-28 | 2026-07-30 | PHE | Commissioning | DH2300 | L2 | MOD-01 | DELETED | DH1100 |  | Do we need? |
| DC1-MOD01-L2-2250 | **DELETED** DH2300 MOD-E23-01 L2 Checklist | 3d | 2026-07-15 A | 2026-07-15 A | QTS-1020 | 100% | 2026-07-31 | 2026-08-04 | PHE | Commissioning | DH2300 | L2 | MOD-01 | DELETED | DH1100 |  | Do we need? |
| DC1-MOD01-L2-2260 | **DELETED** DH2300 MOD-F23-01 L2 Checklist | 3d | 2026-07-15 A | 2026-07-15 A | QTS-1020 | 100% | 2026-08-05 | 2026-08-07 | PHE | Commissioning | DH2300 | L2 | MOD-01 | DELETED | DH1100 |  | Do we need? |
| DC1-MOD01-L2-2270 | **DELETED** DH2300 MOD-R23-01 L2 Checklist | 3d | 2026-07-15 A | 2026-07-15 A | QTS-1020 | 100% | 2026-08-10 | 2026-08-12 | PHE | Commissioning | DH2300 | L2 | MOD-01 | DELETED | DH1100 |  | Do we need? |
| DC1-MOD01-L2-2280 | **DELETED** DH1300 MOD-A13-01 L2 Checklist | 3d | 2026-07-15 A | 2026-07-15 A | QTS-1020 | 100% | 2026-07-15 | 2026-07-17 | PHE | Commissioning | DH1300 | L2 | MOD-01 | DELETED | DH1100 |  |  |
| DC1-MOD01-L2-2290 | **DELETED** DH1300 MOD-B13-01 L2 Checklist | 3d | 2026-07-15 A | 2026-07-15 A | QTS-1020 | 100% | 2026-07-20 | 2026-07-22 | PHE | Commissioning | DH1300 | L2 | MOD-01 | DELETED | DH1100 |  |  |
| DC1-MOD01-L2-2300 | **DELETED** DH1300 MOD-C13-01 L2 Checklist | 3d | 2026-07-15 A | 2026-07-15 A | QTS-1020 | 100% | 2026-07-23 | 2026-07-27 | PHE | Commissioning | DH1300 | L2 | MOD-01 | DELETED | DH1100 |  | Do we need this? |
| DC1-MOD01-L2-2310 | **DELETED** DH1300 MOD-D13-01 L2 Checklist | 3d | 2026-07-15 A | 2026-07-15 A | QTS-1020 | 100% | 2026-07-28 | 2026-07-30 | PHE | Commissioning | DH1300 | L2 | MOD-01 | DELETED | DH1100 |  | Do we need this? |
| DC1-MOD01-L2-2320 | **DELETED** DH1300 MOD-E13-01 L2 Checklist | 3d | 2026-07-15 A | 2026-07-15 A | QTS-1020 | 100% | 2026-07-31 | 2026-08-04 | PHE | Commissioning | DH1300 | L2 | MOD-01 | DELETED | DH1100 |  | Do we need this? |
| DC1-MOD01-L2-2330 | **DELETED** DH1300 MOD-F13-01 L2 Checklist | 3d | 2026-07-15 A | 2026-07-15 A | QTS-1020 | 100% | 2026-08-05 | 2026-08-07 | PHE | Commissioning | DH1300 | L2 | MOD-01 | DELETED | DH1100 |  | Do we need this? |
| DC1-MOD01-L2-2340 | **DELETED** DH1300 MOD-R13-01 L2 Checklist | 3d | 2026-07-15 A | 2026-07-15 A | QTS-1020 | 100% | 2026-08-10 | 2026-08-12 | PHE | Commissioning | DH1300 | L2 | MOD-01 | DELETED | DH1100 |  | Do we need this? |
| DC1-MOD02-L2-2140 | **DELETED** DH1200 MOD-A12-02 L2 Checklist | 1d | 2026-07-15 A | 2026-07-16 A | QTS-1020 | 100% | 2026-07-09 | 2026-07-09 | PHE | Commissioning | DH1200 | L2 | MOD-02 | DELETED | DH1100 |  |  |
| DC1-MOD02-L2-2150 | **DELETED** DH1200 MOD-B12-02 L2 Checklist | 1d | 2026-07-15 A | 2026-07-16 A | QTS-1020 | 100% | 2026-07-09 | 2026-07-09 | PHE | Commissioning | DH1200 | L2 | MOD-02 | DELETED | DH1100 |  |  |
| DC1-MOD02-L2-2160 | **DELETED** DH1200 MOD-C12-02 L2 Checklist | 1d | 2026-07-15 A | 2026-07-16 A | QTS-1020 | 100% | 2026-07-09 | 2026-07-09 | PHE | Commissioning | DH1200 | L2 | MOD-02 | DELETED | DH1100 |  |  |
| DC1-MOD02-L2-2170 | **DELETED** DH1200 MOD-D12-02 L2 Checklist | 1d | 2026-07-15 A | 2026-07-16 A | QTS-1020 | 100% | 2026-07-09 | 2026-07-09 | PHE | Commissioning | DH1200 | L2 | MOD-02 | DELETED | DH1100 |  |  |
| DC1-MOD02-L2-2180 | **DELETED** DH1200 MOD-E12-02 L2 Checklist | 1d | 2026-07-15 A | 2026-07-16 A | QTS-1020 | 100% | 2026-07-09 | 2026-07-09 | PHE | Commissioning | DH1200 | L2 | MOD-02 | DELETED | DH1100 |  |  |
| DC1-MOD02-L2-2190 | **DELETED** DH1200 MOD-F12-02 L2 Checklist | 1d | 2026-07-15 A | 2026-07-16 A | QTS-1020 | 100% | 2026-07-09 | 2026-07-09 | PHE | Commissioning | DH1200 | L2 | MOD-02 | DELETED | DH1100 |  |  |
| DC1-MOD02-L2-2200 | **DELETED** DH1200 MOD-R12-02 L2 Checklist | 1d | 2026-07-15 A | 2026-07-16 A | QTS-1020 | 100% | 2026-07-09 | 2026-07-09 | PHE | Commissioning | DH1200 | L2 | MOD-02 | DELETED | DH1100 |  |  |
| DC1-MOD02-L2-2210 | **DELETED** DH2300 MOD-A23-02 L2 Checklist | 2d | 2026-07-15 A | 2026-07-15 A | QTS-1020 | 100% | 2026-07-15 | 2026-07-16 | PHE | Commissioning | DH2300 | L2 | MOD-02 | DELETED | DH1100 |  |  |
| DC1-MOD02-L2-2220 | **DELETED** DH2300 MOD-B23-02 L2 Checklist | 2d | 2026-07-15 A | 2026-07-15 A | QTS-1020 | 100% | 2026-07-17 | 2026-07-20 | PHE | Commissioning | DH2300 | L2 | MOD-02 | DELETED | DH1100 |  |  |
| DC1-MOD02-L2-2230 | **DELETED** DH2300 MOD-C23-02 L2 Checklist | 2d | 2026-07-15 A | 2026-07-15 A | QTS-1020 | 100% | 2026-07-21 | 2026-07-22 | PHE | Commissioning | DH2300 | L2 | MOD-02 | DELETED | DH1100 |  |  |
| DC1-MOD02-L2-2240 | **DELETED** DH2300 MOD-D23-02 L2 Checklist | 2d | 2026-07-15 A | 2026-07-15 A | QTS-1020 | 100% | 2026-07-23 | 2026-07-24 | PHE | Commissioning | DH2300 | L2 | MOD-02 | DELETED | DH1100 |  |  |
| DC1-MOD02-L2-2250 | **DELETED** DH2300 MOD-E23-02 L2 Checklist | 2d | 2026-07-15 A | 2026-07-15 A | QTS-1020 | 100% | 2026-07-27 | 2026-07-28 | PHE | Commissioning | DH2300 | L2 | MOD-02 | DELETED | DH1100 |  |  |
| DC1-MOD02-L2-2260 | **DELETED** DH2300 MOD-F23-02 L2 Checklist | 2d | 2026-07-15 A | 2026-07-15 A | QTS-1020 | 100% | 2026-07-29 | 2026-07-30 | PHE | Commissioning | DH2300 | L2 | MOD-02 | DELETED | DH1100 |  |  |
| DC1-MOD02-L2-2270 | **DELETED** DH2300 MOD-R23-02 L2 Checklist | 2d | 2026-07-15 A | 2026-07-15 A | QTS-1020 | 100% | 2026-07-31 | 2026-08-03 | PHE | Commissioning | DH2300 | L2 | MOD-02 | DELETED | DH1100 |  |  |
| DC1-MOD02-L2-2280 | **DELETED** DH1300 MOD-A13-02 L2 Checklist | 3d | 2026-07-15 A | 2026-07-15 A | QTS-1020 | 100% | 2026-07-15 | 2026-07-17 | PHE | Commissioning | DH1300 | L2 | MOD-02 | DELETED | DH1100 |  |  |
| DC1-MOD02-L2-2290 | **DELETED** DH1300 MOD-B13-02 L2 Checklist | 3d | 2026-07-15 A | 2026-07-15 A | DC1-MOD02-L2-2280, QTS-1020 | 100% | 2026-07-20 | 2026-07-22 | PHE | Commissioning | DH1300 | L2 | MOD-02 | DELETED | DH1100 |  |  |
| DC1-MOD02-L2-2300 | **DELETED** DH1300 MOD-C13-02 L2 Checklist | 3d | 2026-07-15 A | 2026-07-15 A | DC1-MOD02-L2-2290, QTS-1020 | 100% | 2026-07-23 | 2026-07-27 | PHE | Commissioning | DH1300 | L2 | MOD-02 | DELETED | DH1100 |  |  |
| DC1-MOD02-L2-2310 | **DELETED** DH1300 MOD-D13-02 L2 Checklist | 3d | 2026-07-15 A | 2026-07-15 A | DC1-MOD02-L2-2300, QTS-1020 | 100% | 2026-07-28 | 2026-07-30 | PHE | Commissioning | DH1300 | L2 | MOD-02 | DELETED | DH1100 |  |  |
| DC1-MOD02-L2-2320 | **DELETED** DH1300 MOD-E13-02 L2 Checklist | 3d | 2026-07-15 A | 2026-07-15 A | DC1-MOD02-L2-2310, QTS-1020 | 100% | 2026-07-31 | 2026-08-04 | PHE | Commissioning | DH1300 | L2 | MOD-02 | DELETED | DH1100 |  |  |
| DC1-MOD02-L2-2330 | **DELETED** DH1300 MOD-F13-02 L2 Checklist | 3d | 2026-07-15 A | 2026-07-15 A | DC1-MOD02-L2-2320, QTS-1020 | 100% | 2026-08-05 | 2026-08-07 | PHE | Commissioning | DH1300 | L2 | MOD-02 | DELETED | DH1100 |  |  |
| DC1-MOD02-L2-2340 | **DELETED** DH1300 MOD-R13-02 L2 Checklist | 3d | 2026-07-15 A | 2026-07-15 A | DC1-MOD02-L2-2330, QTS-1020 | 100% | 2026-08-10 | 2026-08-12 | PHE | Commissioning | DH1300 | L2 | MOD-02 | DELETED | DH1100 |  |  |
| DC1-MOD03-L2-2140 | **DELETED** DH1200 MOD-A12-03 L2 Checklist | 2d | 2026-07-15 A | 2026-07-16 A | QTS-1020 | 100% | 2026-07-23 | 2026-07-24 | PHE | Commissioning | DH1200 | L2 | MOD-03 | DELETED | DH1100 |  |  |
| DC1-MOD03-L2-2150 | **DELETED** DH1200 MOD-B12-03 L2 Checklist | 2d | 2026-07-15 A | 2026-07-16 A | QTS-1020 | 100% | 2026-07-23 | 2026-07-24 | PHE | Commissioning | DH1200 | L2 | MOD-03 | DELETED | DH1100 |  |  |
| DC1-MOD03-L2-2160 | **DELETED** DH1200 MOD-C12-03 L2 Checklist | 2d | 2026-07-15 A | 2026-07-16 A | QTS-1020 | 100% | 2026-07-23 | 2026-07-24 | PHE | Commissioning | DH1200 | L2 | MOD-03 | DELETED | DH1100 |  |  |
| DC1-MOD03-L2-2170 | **DELETED** DH1200 MOD-D12-03 L2 Checklist | 2d | 2026-07-15 A | 2026-07-16 A | QTS-1020 | 100% | 2026-07-23 | 2026-07-24 | PHE | Commissioning | DH1200 | L2 | MOD-03 | DELETED | DH1100 |  |  |
| DC1-MOD03-L2-2180 | **DELETED** DH1200 MOD-E12-03 L2 Checklist | 2d | 2026-07-15 A | 2026-07-16 A | QTS-1020 | 100% | 2026-07-23 | 2026-07-24 | PHE | Commissioning | DH1200 | L2 | MOD-03 | DELETED | DH1100 |  |  |
| DC1-MOD03-L2-2190 | **DELETED** DH1200 MOD-F12-03 L2 Checklist | 2d | 2026-07-15 A | 2026-07-16 A | QTS-1020 | 100% | 2026-07-23 | 2026-07-24 | PHE | Commissioning | DH1200 | L2 | MOD-03 | DELETED | DH1100 |  |  |
| DC1-MOD03-L2-2200 | **DELETED** DH1200 MOD-R12-03 L2 Checklist | 2d | 2026-07-15 A | 2026-07-16 A | QTS-1020 | 100% | 2026-07-23 | 2026-07-24 | PHE | Commissioning | DH1200 | L2 | MOD-03 | DELETED | DH1100 |  |  |
| DC1-MOD03-L2-2210 | **DELETED** DH2300 MOD-A23-03 L2 Checklist | 3d | 2026-07-15 A | 2026-07-15 A | QTS-1020 | 100% | 2026-07-15 | 2026-07-17 | PHE | Commissioning | DH2300 | L2 | MOD-03 | DELETED | DH1100 |  |  |
| DC1-MOD03-L2-2220 | **DELETED** DH2300 MOD-B23-03 L2 Checklist | 3d | 2026-07-15 A | 2026-07-15 A | QTS-1020 | 100% | 2026-07-20 | 2026-07-22 | PHE | Commissioning | DH2300 | L2 | MOD-03 | DELETED | DH1100 |  |  |

Notes:
- DC1-DOAS-L3-Cx-2280: Steps: EC Startup Checklist; MC Startup Checklist; Vendor Startup
- DC1-DOAS-L3-Cx-2310: Steps: EC Startup Checklist; MC Startup Checklist; Vendor Startup
- DC1-MOD01-L2-2210: Steps: Vendor Pre-Energization Checklist; CXA Pre-Energization Inspection; PEI/Clean-Walk
- DC1-MOD01-L2-2220: Steps: Vendor Pre-Energization Checklist; CXA Pre-Energization Inspection; PEI/Clean-Walk
- DC1-MOD01-L2-2230: Steps: Vendor Pre-Energization Checklist; CXA Pre-Energization Inspection; PEI/Clean-Walk
- DC1-MOD01-L2-2240: Steps: Vendor Pre-Energization Checklist; CXA Pre-Energization Inspection; PEI/Clean-Walk
- DC1-MOD01-L2-2250: Steps: Vendor Pre-Energization Checklist; CXA Pre-Energization Inspection; PEI/Clean-Walk
- DC1-MOD01-L2-2260: Steps: Vendor Pre-Energization Checklist; CXA Pre-Energization Inspection; PEI/Clean-Walk
- DC1-MOD01-L2-2270: Steps: Vendor Pre-Energization Checklist; CXA Pre-Energization Inspection; PEI/Clean-Walk
- DC1-MOD01-L2-2280: Steps: Vendor Pre-Energization Checklist; CXA Pre-Energization Inspection; PEI/Clean-Walk
- DC1-MOD01-L2-2290: Steps: Vendor Pre-Energization Checklist; CXA Pre-Energization Inspection; PEI/Clean-Walk
- DC1-MOD01-L2-2300: Steps: Vendor Pre-Energization Checklist; CXA Pre-Energization Inspection; PEI/Clean-Walk
- DC1-MOD01-L2-2310: Steps: Vendor Pre-Energization Checklist; CXA Pre-Energization Inspection; PEI/Clean-Walk
- DC1-MOD01-L2-2320: Steps: Vendor Pre-Energization Checklist; CXA Pre-Energization Inspection; PEI/Clean-Walk
- DC1-MOD01-L2-2330: Steps: Vendor Pre-Energization Checklist; CXA Pre-Energization Inspection; PEI/Clean-Walk
- DC1-MOD01-L2-2340: Steps: Vendor Pre-Energization Checklist; CXA Pre-Energization Inspection; PEI/Clean-Walk
- DC1-MOD02-L2-2140: Steps: EC Installation Checklist (done); CC Installation Checklist (done); Vendor Pre-Energization Checklist; CXA Pre-Energization Inspection; PEI/Clean-Walk
- DC1-MOD02-L2-2150: Steps: EC Installation Checklist; CC Installation Checklist (done); Vendor Pre-Energization Checklist; CXA Pre-Energization Inspection; PEI/Clean-Walk
- DC1-MOD02-L2-2160: Steps: EC Installation Checklist (done); CC Installation Checklist (done); Vendor Pre-Energization Checklist; CXA Pre-Energization Inspection; PEI/Clean-Walk
- DC1-MOD02-L2-2170: Steps: EC Installation Checklist (done); CC Installation Checklist (done); Vendor Pre-Energization Checklist; CXA Pre-Energization Inspection; PEI/Clean-Walk
- DC1-MOD02-L2-2180: Steps: EC Installation Checklist; CC Installation Checklist (done); Vendor Pre-Energization Checklist; CXA Pre-Energization Inspection; PEI/Clean-Walk
- DC1-MOD02-L2-2190: Steps: EC Installation Checklist; CC Installation Checklist (done); Vendor Pre-Energization Checklist; CXA Pre-Energization Inspection; PEI/Clean-Walk
- DC1-MOD02-L2-2200: Steps: EC Installation Checklist; CC Installation Checklist (done); Vendor Pre-Energization Checklist; CXA Pre-Energization Inspection; PEI/Clean-Walk
- DC1-MOD02-L2-2210: Steps: EC Installation Checklist; CC Installation Checklist; Vendor Pre-Energization Checklist; CXA Pre-Energization Inspection; PEI/Clean-Walk
- DC1-MOD02-L2-2220: Steps: EC Installation Checklist; CC Installation Checklist; Vendor Pre-Energization Checklist; CXA Pre-Energization Inspection; PEI/Clean-Walk
- DC1-MOD02-L2-2230: Steps: EC Installation Checklist; CC Installation Checklist; Vendor Pre-Energization Checklist; CXA Pre-Energization Inspection; PEI/Clean-Walk
- DC1-MOD02-L2-2240: Steps: EC Installation Checklist; CC Installation Checklist; Vendor Pre-Energization Checklist; CXA Pre-Energization Inspection; PEI/Clean-Walk
- DC1-MOD02-L2-2250: Steps: EC Installation Checklist; CC Installation Checklist; Vendor Pre-Energization Checklist; CXA Pre-Energization Inspection; PEI/Clean-Walk
- DC1-MOD02-L2-2260: Steps: EC Installation Checklist; CC Installation Checklist; Vendor Pre-Energization Checklist; CXA Pre-Energization Inspection; PEI/Clean-Walk
- DC1-MOD02-L2-2270: Steps: EC Installation Checklist; CC Installation Checklist; Vendor Pre-Energization Checklist; CXA Pre-Energization Inspection; PEI/Clean-Walk
- DC1-MOD02-L2-2280: Steps: EC Installation Checklist; CC Installation Checklist; Vendor Pre-Energization Checklist; CXA Pre-Energization Inspection; PEI/Clean-Walk
- DC1-MOD02-L2-2290: Steps: EC Installation Checklist; CC Installation Checklist; Vendor Pre-Energization Checklist; CXA Pre-Energization Inspection; PEI/Clean-Walk
- DC1-MOD02-L2-2300: Steps: EC Installation Checklist; CC Installation Checklist; Vendor Pre-Energization Checklist; CXA Pre-Energization Inspection; PEI/Clean-Walk
- DC1-MOD02-L2-2310: Steps: EC Installation Checklist; CC Installation Checklist; Vendor Pre-Energization Checklist; CXA Pre-Energization Inspection; PEI/Clean-Walk
- DC1-MOD02-L2-2320: Steps: EC Installation Checklist; CC Installation Checklist; Vendor Pre-Energization Checklist; CXA Pre-Energization Inspection; PEI/Clean-Walk
- DC1-MOD02-L2-2330: Steps: EC Installation Checklist; CC Installation Checklist; Vendor Pre-Energization Checklist; CXA Pre-Energization Inspection; PEI/Clean-Walk
- DC1-MOD02-L2-2340: Steps: EC Installation Checklist; CC Installation Checklist; Vendor Pre-Energization Checklist; CXA Pre-Energization Inspection; PEI/Clean-Walk
- DC1-MOD03-L2-2140: Steps: EC Installation Checklist; CC Installation Checklist (done); Vendor Pre-Energization Checklist; CXA Pre-Energization Inspection; PEI/Clean-Walk
- DC1-MOD03-L2-2150: Steps: EC Installation Checklist (done); CC Installation Checklist (done); Vendor Pre-Energization Checklist; CXA Pre-Energization Inspection; PEI/Clean-Walk
- DC1-MOD03-L2-2160: Steps: EC Installation Checklist (done); CC Installation Checklist (done); Vendor Pre-Energization Checklist; CXA Pre-Energization Inspection; PEI/Clean-Walk
- DC1-MOD03-L2-2170: Steps: EC Installation Checklist; CC Installation Checklist (done); Vendor Pre-Energization Checklist; CXA Pre-Energization Inspection; PEI/Clean-Walk
- DC1-MOD03-L2-2180: Steps: EC Installation Checklist; CC Installation Checklist (done); Vendor Pre-Energization Checklist; CXA Pre-Energization Inspection; PEI/Clean-Walk
- DC1-MOD03-L2-2190: Steps: EC Installation Checklist; CC Installation Checklist (done); Vendor Pre-Energization Checklist; CXA Pre-Energization Inspection; PEI/Clean-Walk
- DC1-MOD03-L2-2200: Steps: EC Installation Checklist; CC Installation Checklist (done); Vendor Pre-Energization Checklist; CXA Pre-Energization Inspection; PEI/Clean-Walk
- DC1-MOD03-L2-2210: Steps: EC Installation Checklist; CC Installation Checklist; Vendor Pre-Energization Checklist; CXA Pre-Energization Inspection; PEI/Clean-Walk
- DC1-MOD03-L2-2220: Steps: EC Installation Checklist; CC Installation Checklist; Vendor Pre-Energization Checklist; CXA Pre-Energization Inspection; PEI/Clean-Walk

| ID | Activity | Duration | Start | Finish | Predecessors | Complete | Planned start | Planned finish | Vendor Responsible Party | Layton Discipline | Location | CX Level | Equipment | DELETED | D | Notes |
| --- | --- | --- | --- | --- | --- | --- | --- | --- | --- | --- | --- | --- | --- | --- | --- | --- |
| DC1-MOD03-L2-2230 | **DELETED** DH2300 MOD-C23-03 L2 Checklist | 3d | 2026-07-15 A | 2026-07-15 A | QTS-1020 | 100% | 2026-07-23 | 2026-07-27 | PHE | Commissioning | DH2300 | L2 | MOD-03 | DELETED | DH1100 |  |
| DC1-MOD03-L2-2240 | **DELETED** DH2300 MOD-D23-03 L2 Checklist | 3d | 2026-07-15 A | 2026-07-15 A | QTS-1020 | 100% | 2026-07-28 | 2026-07-30 | PHE | Commissioning | DH2300 | L2 | MOD-03 | DELETED | DH1100 |  |
| DC1-MOD03-L2-2250 | **DELETED** DH2300 MOD-E23-03 L2 Checklist | 3d | 2026-07-15 A | 2026-07-15 A | QTS-1020 | 100% | 2026-07-31 | 2026-08-04 | PHE | Commissioning | DH2300 | L2 | MOD-03 | DELETED | DH1100 |  |
| DC1-MOD03-L2-2260 | **DELETED** DH2300 MOD-F23-03 L2 Checklist | 3d | 2026-07-15 A | 2026-07-15 A | QTS-1020 | 100% | 2026-08-05 | 2026-08-07 | PHE | Commissioning | DH2300 | L2 | MOD-03 | DELETED | DH1100 |  |
| DC1-MOD03-L2-2270 | **DELETED** DH2300 MOD-R23-03 L2 Checklist | 3d | 2026-07-15 A | 2026-07-15 A | QTS-1020 | 100% | 2026-08-10 | 2026-08-12 | PHE | Commissioning | DH2300 | L2 | MOD-03 | DELETED | DH1100 |  |
| DC1-MOD03-L2-2280 | **DELETED** DH1300 MOD-A13-03 L2 Checklist | 3d | 2026-07-15 A | 2026-07-15 A | QTS-1020 | 100% | 2026-07-15 | 2026-07-17 | PHE | Commissioning | DH1300 | L2 | MOD-03 | DELETED | DH1100 |  |
| DC1-MOD03-L2-2290 | **DELETED** DH1300 MOD-B13-03 L2 Checklist | 3d | 2026-07-15 A | 2026-07-15 A | DC1-MOD03-L2-2280, QTS-1020 | 100% | 2026-07-20 | 2026-07-22 | PHE | Commissioning | DH1300 | L2 | MOD-03 | DELETED | DH1100 |  |
| DC1-MOD03-L2-2300 | **DELETED** DH1300 MOD-C13-03 L2 Checklist | 3d | 2026-07-15 A | 2026-07-15 A | DC1-MOD03-L2-2290, QTS-1020 | 100% | 2026-07-23 | 2026-07-27 | PHE | Commissioning | DH1300 | L2 | MOD-03 | DELETED | DH1100 |  |
| DC1-MOD03-L2-2310 | **DELETED** DH1300 MOD-D13-03 L2 Checklist | 3d | 2026-07-15 A | 2026-07-15 A | DC1-MOD03-L2-2300, QTS-1020 | 100% | 2026-07-28 | 2026-07-30 | PHE | Commissioning | DH1300 | L2 | MOD-03 | DELETED | DH1100 |  |
| DC1-MOD03-L2-2320 | **DELETED** DH1300 MOD-E13-03 L2 Checklist | 3d | 2026-07-15 A | 2026-07-15 A | DC1-MOD03-L2-2310, QTS-1020 | 100% | 2026-07-31 | 2026-08-04 | PHE | Commissioning | DH1300 | L2 | MOD-03 | DELETED | DH1100 |  |
| DC1-MOD03-L2-2330 | **DELETED** DH1300 MOD-F13-03 L2 Checklist | 3d | 2026-07-15 A | 2026-07-15 A | DC1-MOD03-L2-2320, QTS-1020 | 100% | 2026-08-05 | 2026-08-07 | PHE | Commissioning | DH1300 | L2 | MOD-03 | DELETED | DH1100 |  |
| DC1-MOD03-L2-2340 | **DELETED** DH1300 MOD-R13-03 L2 Checklist | 3d | 2026-07-15 A | 2026-07-15 A | DC1-MOD03-L2-2330, QTS-1020 | 100% | 2026-08-10 | 2026-08-12 | PHE | Commissioning | DH1300 | L2 | MOD-03 | DELETED | DH1100 |  |
| DC1-MOD1-L3-CX-2630 | **DELETED** DC1-MOD-01-A23 FTE | 1d | 2026-07-15 A | 2026-07-15 A | QTS-1020 | 100% | 2026-08-11 | 2026-08-11 | ROS | Commissioning | DH2300 | L3 | MOD-01 | DELETED | DH1100 |  |
| DC1-MOD1-L3-CX-2640 | **DELETED** DC1-MOD-01-A23 L3 Startup | 2d | 2026-07-15 A | 2026-07-15 A | QTS-1020 | 100% | 2026-08-12 | 2026-08-13 | PHE | Commissioning | DH2300 | L3 | MOD-01 | DELETED | DH1100 | Vendor Only |
| DC1-MOD1-L3-CX-2650 | **DELETED** DC1-MOD-01-A23 BMS/EPMS Programming | 1d | 2026-07-15 A | 2026-07-15 A | QTS-1020 | 100% | 2026-08-14 | 2026-08-14 | PRM | Commissioning | DH2300 | L3 | MOD-01 | DELETED | DH1100 |  |
| DC1-MOD1-L3-CX-2660 | **DELETED** DC1-MOD-01-B23 FTE | 1d | 2026-07-15 A | 2026-07-15 A | QTS-1020 | 100% | 2026-08-11 | 2026-08-11 | ROS | Commissioning | DH2300 | L3 | MOD-01 | DELETED | DH1100 |  |
| DC1-MOD1-L3-CX-2670 | **DELETED** DC1-MOD-01-B23 L3 Startup | 2d | 2026-07-15 A | 2026-07-15 A | QTS-1020 | 100% | 2026-08-12 | 2026-08-13 | PHE | Commissioning | DH2300 | L3 | MOD-01 | DELETED | DH1100 | Vendor Only |
| DC1-MOD1-L3-CX-2680 | **DELETED** DC1-MOD-01-B23 BMS/EPMS Programming | 1d | 2026-07-15 A | 2026-07-15 A | QTS-1020 | 100% | 2026-08-14 | 2026-08-14 | PRM | Commissioning | DH2300 | L3 | MOD-01 | DELETED | DH1100 |  |
| DC1-MOD1-L3-CX-2690 | **DELETED** DC1-MOD-01-C23 FTE | 1d | 2026-07-15 A | 2026-07-15 A | QTS-1020 | 100% | 2026-08-11 | 2026-08-11 | ROS | Commissioning | DH2300 | L3 | MOD-01 | DELETED | DH1100 |  |
| DC1-MOD1-L3-CX-2700 | **DELETED** DC1-MOD-01-C23 L3 Startup | 2d | 2026-07-15 A | 2026-07-15 A | QTS-1020 | 100% | 2026-08-12 | 2026-08-13 | PHE | Commissioning | DH2300 | L3 | MOD-01 | DELETED | DH1100 | Vendor Only |
| DC1-MOD1-L3-CX-2710 | **DELETED** DC1-MOD-01-C23 BMS/EPMS Programming | 1d | 2026-07-15 A | 2026-07-15 A | QTS-1020 | 100% | 2026-08-14 | 2026-08-14 | PRM | Commissioning | DH2300 | L3 | MOD-01 | DELETED | DH1100 |  |
| DC1-MOD1-L3-CX-2720 | **DELETED** DC1-MOD-01-D23 FTE | 1d | 2026-07-15 A | 2026-07-15 A | QTS-1020 | 100% | 2026-08-11 | 2026-08-11 | ROS | Commissioning | DH2300 | L3 | MOD-01 | DELETED | DH1100 |  |
| DC1-MOD1-L3-CX-2730 | **DELETED** DC1-MOD-01-D23 L3 Startup | 2d | 2026-07-15 A | 2026-07-15 A | QTS-1020 | 100% | 2026-08-12 | 2026-08-13 | PHE | Commissioning | DH2300 | L3 | MOD-01 | DELETED | DH1100 | Vendor Only |
| DC1-MOD1-L3-CX-2740 | **DELETED** DC1-MOD-01-D23 BMS/EPMS Programming | 1d | 2026-07-15 A | 2026-07-15 A | QTS-1020 | 100% | 2026-08-14 | 2026-08-14 | PRM | Commissioning | DH2300 | L3 | MOD-01 | DELETED | DH1100 |  |
| DC1-MOD1-L3-CX-2750 | **DELETED** DC1-MOD-01-E23 FTE | 1d | 2026-07-15 A | 2026-07-15 A | QTS-1020 | 100% | 2026-08-11 | 2026-08-11 | ROS | Commissioning | DH2300 | L3 | MOD-01 | DELETED | DH1100 |  |
| DC1-MOD1-L3-CX-2760 | **DELETED** DC1-MOD-01-E23 L3 Startup | 2d | 2026-07-15 A | 2026-07-15 A | QTS-1020 | 100% | 2026-08-12 | 2026-08-13 | PHE | Commissioning | DH2300 | L3 | MOD-01 | DELETED | DH1100 | Vendor Only |
| DC1-MOD1-L3-CX-2770 | **DELETED** DC1-MOD-01-E23 BMS/EPMS Programming | 1d | 2026-07-15 A | 2026-07-15 A | QTS-1020 | 100% | 2026-08-14 | 2026-08-14 | PRM | Commissioning | DH2300 | L3 | MOD-01 | DELETED | DH1100 |  |
| DC1-MOD1-L3-CX-2780 | **DELETED** DC1-MOD-01-F23 FTE | 1d | 2026-07-15 A | 2026-07-15 A | QTS-1020 | 100% | 2026-08-11 | 2026-08-11 | ROS | Commissioning | DH2300 | L3 | MOD-01 | DELETED | DH1100 |  |
| DC1-MOD1-L3-CX-2790 | **DELETED** DC1-MOD-01-F23 L3 Startup | 2d | 2026-07-15 A | 2026-07-15 A | QTS-1020 | 100% | 2026-08-12 | 2026-08-13 | PHE | Commissioning | DH2300 | L3 | MOD-01 | DELETED | DH1100 | Vendor Only |
| DC1-MOD1-L3-CX-2800 | **DELETED** DC1-MOD-01-F23 BMS/EPMS Programming | 1d | 2026-07-15 A | 2026-07-15 A | QTS-1020 | 100% | 2026-08-14 | 2026-08-14 | PRM | Commissioning | DH2300 | L3 | MOD-01 | DELETED | DH1100 |  |
| DC1-MOD1-L3-CX-2810 | **DELETED** DC1-MOD-01-R23 FTE | 1d | 2026-07-15 A | 2026-07-15 A | QTS-1020 | 100% | 2026-08-13 | 2026-08-13 | ROS | Commissioning | DH2300 | L3 | MOD-01 | DELETED | DH1100 |  |
| DC1-MOD1-L3-CX-2820 | **DELETED** DC1-MOD-01-R23 L3 Startup | 2d | 2026-07-15 A | 2026-07-15 A | QTS-1020 | 100% | 2026-08-14 | 2026-08-17 | PHE | Commissioning | DH2300 | L3 | MOD-01 | DELETED | DH1100 | Vendor Only |
| DC1-MOD1-L3-CX-2830 | **DELETED** DC1-MOD-01-R23 BMS/EPMS Programming | 1d | 2026-07-15 A | 2026-07-15 A | QTS-1020 | 100% | 2026-08-18 | 2026-08-18 | PRM | Commissioning | DH2300 | L3 | MOD-01 | DELETED | DH1100 |  |
| DC1-MOD1-L3-CX-2840 | **DELETED** DC1-MOD-01-A13 FTE | 1d | 2026-07-15 A | 2026-07-15 A | DC1-SWD-L3-CX-2840 SS, QTS-1020 | 100% | 2026-08-11 | 2026-08-11 | ROS | Commissioning | DH1300 | L3 | MOD-01 | DELETED | DH1100 |  |
| DC1-MOD1-L3-CX-2850 | **DELETED** DC1-MOD-01-A13 L3 Startup | 2d | 2026-07-15 A | 2026-07-15 A | DC1-MOD1-L3-CX-2840, QTS-1020 | 100% | 2026-08-12 | 2026-08-13 | PHE | Commissioning | DH1300 | L3 | MOD-01 | DELETED | DH1100 | Vendor Only |
| DC1-MOD1-L3-CX-2860 | **DELETED** DC1-MOD-01-A13 BMS/EPMS Programming | 1d | 2026-07-15 A | 2026-07-15 A | DC1-MOD1-L3-CX-2850, QTS-1020 | 100% | 2026-08-14 | 2026-08-14 | PRM | Commissioning | DH1300 | L3 | MOD-01 | DELETED | DH1100 |  |
| DC1-MOD1-L3-CX-2870 | **DELETED** DC1-MOD-01-B13 FTE | 1d | 2026-07-15 A | 2026-07-15 A | DC1-SWD-L3-CX-2870 SS, QTS-1020 | 100% | 2026-08-11 | 2026-08-11 | ROS | Commissioning | DH1300 | L3 | MOD-01 | DELETED | DH1100 |  |
| DC1-MOD1-L3-CX-2880 | **DELETED** DC1-MOD-01-B13 L3 Startup | 2d | 2026-07-15 A | 2026-07-15 A | DC1-MOD1-L3-CX-2870, QTS-1020 | 100% | 2026-08-12 | 2026-08-13 | PHE | Commissioning | DH1300 | L3 | MOD-01 | DELETED | DH1100 | Vendor Only |
| DC1-MOD1-L3-CX-2890 | **DELETED** DC1-MOD-01-B13 BMS/EPMS Programming | 1d | 2026-07-15 A | 2026-07-15 A | DC1-MOD1-L3-CX-2880, QTS-1020 | 100% | 2026-08-14 | 2026-08-14 | PRM | Commissioning | DH1300 | L3 | MOD-01 | DELETED | DH1100 |  |
| DC1-MOD1-L3-CX-2900 | **DELETED** DC1-MOD-01-C13 FTE | 1d | 2026-07-15 A | 2026-07-15 A | DC1-SWD-L3-CX-2900 SS, QTS-1020 | 100% | 2026-08-11 | 2026-08-11 | ROS | Commissioning | DH1300 | L3 | MOD-01 | DELETED | DH1100 |  |
| DC1-MOD1-L3-CX-2910 | **DELETED** DC1-MOD-01-C13 L3 Startup | 2d | 2026-07-15 A | 2026-07-15 A | DC1-MOD1-L3-CX-2900, QTS-1020 | 100% | 2026-08-12 | 2026-08-13 | PHE | Commissioning | DH1300 | L3 | MOD-01 | DELETED | DH1100 | Vendor Only |
| DC1-MOD1-L3-CX-2920 | **DELETED** DC1-MOD-01-C13 BMS/EPMS Programming | 1d | 2026-07-15 A | 2026-07-15 A | DC1-MOD1-L3-CX-2910, QTS-1020 | 100% | 2026-08-14 | 2026-08-14 | PRM | Commissioning | DH1300 | L3 | MOD-01 | DELETED | DH1100 |  |
| DC1-MOD1-L3-CX-2930 | **DELETED** DC1-MOD-01-D13 FTE | 1d | 2026-07-15 A | 2026-07-15 A | DC1-SWD-L3-CX-2930 SS, QTS-1020 | 100% | 2026-08-11 | 2026-08-11 | ROS | Commissioning | DH1300 | L3 | MOD-01 | DELETED | DH1100 |  |
| DC1-MOD1-L3-CX-2940 | **DELETED** DC1-MOD-01-D13 L3 Startup | 2d | 2026-07-15 A | 2026-07-15 A | DC1-MOD1-L3-CX-2930, QTS-1020 | 100% | 2026-08-12 | 2026-08-13 | PHE | Commissioning | DH1300 | L3 | MOD-01 | DELETED | DH1100 | Vendor Only |
| DC1-MOD1-L3-CX-2950 | **DELETED** DC1-MOD-01-D13 BMS/EPMS Programming | 1d | 2026-07-15 A | 2026-07-15 A | DC1-MOD1-L3-CX-2940, QTS-1020 | 100% | 2026-08-14 | 2026-08-14 | PRM | Commissioning | DH1300 | L3 | MOD-01 | DELETED | DH1100 |  |
| DC1-MOD1-L3-CX-2960 | **DELETED** DC1-MOD-01-E13 FTE | 1d | 2026-07-15 A | 2026-07-15 A | DC1-SWD-L3-CX-2960 SS, QTS-1020 | 100% | 2026-08-11 | 2026-08-11 | ROS | Commissioning | DH1300 | L3 | MOD-01 | DELETED | DH1100 |  |
| DC1-MOD1-L3-CX-2970 | **DELETED** DC1-MOD-01-E13 L3 Startup | 2d | 2026-07-15 A | 2026-07-15 A | DC1-MOD1-L3-CX-2960, QTS-1020 | 100% | 2026-08-12 | 2026-08-13 | PHE | Commissioning | DH1300 | L3 | MOD-01 | DELETED | DH1100 | Vendor Only |
| DC1-MOD1-L3-CX-2980 | **DELETED** DC1-MOD-01-E13 BMS/EPMS Programming | 1d | 2026-07-15 A | 2026-07-15 A | DC1-MOD1-L3-CX-2970, QTS-1020 | 100% | 2026-08-14 | 2026-08-14 | PRM | Commissioning | DH1300 | L3 | MOD-01 | DELETED | DH1100 |  |
| DC1-MOD1-L3-CX-2990 | **DELETED** DC1-MOD-01-F13 FTE | 1d | 2026-07-15 A | 2026-07-15 A | DC1-SWD-L3-CX-2990 SS, QTS-1020 | 100% | 2026-08-11 | 2026-08-11 | ROS | Commissioning | DH1300 | L3 | MOD-01 | DELETED | DH1100 |  |
| DC1-MOD1-L3-CX-3000 | **DELETED** DC1-MOD-01-F13 L3 Startup | 2d | 2026-07-15 A | 2026-07-15 A | DC1-MOD1-L3-CX-2990, QTS-1020 | 100% | 2026-08-12 | 2026-08-13 | PHE | Commissioning | DH1300 | L3 | MOD-01 | DELETED | DH1100 | Vendor Only |
| DC1-MOD1-L3-CX-3010 | **DELETED** DC1-MOD-01-F13 BMS/EPMS Programming | 1d | 2026-07-15 A | 2026-07-15 A | DC1-MOD1-L3-CX-3000, QTS-1020 | 100% | 2026-08-14 | 2026-08-14 | PRM | Commissioning | DH1300 | L3 | MOD-01 | DELETED | DH1100 |  |
| DC1-MOD1-L3-CX-3020 | **DELETED** DC1-MOD-01-R13 FTE | 1d | 2026-07-15 A | 2026-07-15 A | DC1-SWD-L3-CX-3020 SS, QTS-1020 | 100% | 2026-08-13 | 2026-08-13 | ROS | Commissioning | DH1300 | L3 | MOD-01 | DELETED | DH1100 |  |
| DC1-MOD1-L3-CX-3030 | **DELETED** DC1-MOD-01-R13 L3 Startup | 2d | 2026-07-15 A | 2026-07-15 A | DC1-MOD1-L3-CX-3020, QTS-1020 | 100% | 2026-08-14 | 2026-08-17 | PHE | Commissioning | DH1300 | L3 | MOD-01 | DELETED | DH1100 | Vendor Only |
| DC1-MOD1-L3-CX-3040 | **DELETED** DC1-MOD-01-R13 BMS/EPMS Programming | 1d | 2026-07-15 A | 2026-07-15 A | DC1-MOD1-L3-CX-3030, QTS-1020 | 100% | 2026-08-18 | 2026-08-18 | PRM | Commissioning | DH1300 | L3 | MOD-01 | DELETED | DH1100 |  |
| DC1-MOD2-L3-Cx-2630 | **DELETED** DC1-MOD-A23-02 FTE | 1d | 2026-07-15 A | 2026-07-15 A | QTS-1020 | 100% | 2026-08-12 | 2026-08-12 | ROS | Commissioning | DH2300 | L3 | MOD-02 | DELETED | DH1100 |  |
| DC1-MOD2-L3-Cx-2640 | **DELETED** DC1-MOD-A23-02 L3 Startup | 2d | 2026-07-15 A | 2026-07-15 A | QTS-1020 | 100% | 2026-08-13 | 2026-08-14 | PHE | Commissioning | DH2300 | L3 | MOD-02 | DELETED | DH1100 |  |
| DC1-MOD2-L3-Cx-2650 | **DELETED** DC1-MOD-A23-02 BMS/EPMS Programming | 1d | 2026-07-15 A | 2026-07-15 A | QTS-1020 | 100% | 2026-08-17 | 2026-08-17 | PRM | Commissioning | DH2300 | L3 | MOD-02 | DELETED | DH1100 |  |
| DC1-MOD2-L3-Cx-2660 | **DELETED** DC1-MOD-B23-02 FTE | 1d | 2026-07-15 A | 2026-07-15 A | QTS-1020 | 100% | 2026-08-12 | 2026-08-12 | ROS | Commissioning | DH2300 | L3 | MOD-02 | DELETED | DH1100 |  |
| DC1-MOD2-L3-Cx-2670 | **DELETED** DC1-MOD-B23-02 L3 Startup | 2d | 2026-07-15 A | 2026-07-15 A | QTS-1020 | 100% | 2026-08-13 | 2026-08-14 | PHE | Commissioning | DH2300 | L3 | MOD-02 | DELETED | DH1100 |  |
| DC1-MOD2-L3-Cx-2680 | **DELETED** DC1-MOD-B23-02 BMS/EPMS Programming | 1d | 2026-07-15 A | 2026-07-15 A | QTS-1020 | 100% | 2026-08-17 | 2026-08-17 | PRM | Commissioning | DH2300 | L3 | MOD-02 | DELETED | DH1100 |  |
| DC1-MOD2-L3-Cx-2690 | **DELETED** DC1-MOD-C23-02 FTE | 1d | 2026-07-15 A | 2026-07-15 A | QTS-1020 | 100% | 2026-08-12 | 2026-08-12 | ROS | Commissioning | DH2300 | L3 | MOD-02 | DELETED | DH1100 |  |
| DC1-MOD2-L3-Cx-2700 | **DELETED** DC1-MOD-C23-02 L3 Startup | 2d | 2026-07-15 A | 2026-07-15 A | QTS-1020 | 100% | 2026-08-13 | 2026-08-14 | PHE | Commissioning | DH2300 | L3 | MOD-02 | DELETED | DH1100 |  |
| DC1-MOD2-L3-Cx-2710 | **DELETED** DC1-MOD-C23-02 BMS/EPMS Programming | 1d | 2026-07-15 A | 2026-07-15 A | QTS-1020 | 100% | 2026-08-17 | 2026-08-17 | PRM | Commissioning | DH2300 | L3 | MOD-02 | DELETED | DH1100 |  |
| DC1-MOD2-L3-Cx-2720 | **DELETED** DC1-MOD-D23-02 FTE | 1d | 2026-07-15 A | 2026-07-15 A | QTS-1020 | 100% | 2026-08-12 | 2026-08-12 | ROS | Commissioning | DH2300 | L3 | MOD-02 | DELETED | DH1100 |  |
| DC1-MOD2-L3-Cx-2730 | **DELETED** DC1-MOD-D23-02 L3 Startup | 2d | 2026-07-15 A | 2026-07-15 A | QTS-1020 | 100% | 2026-08-13 | 2026-08-14 | PHE | Commissioning | DH2300 | L3 | MOD-02 | DELETED | DH1100 |  |
| DC1-MOD2-L3-Cx-2740 | **DELETED** DC1-MOD-D23-02 BMS/EPMS Programming | 1d | 2026-07-15 A | 2026-07-15 A | QTS-1020 | 100% | 2026-08-17 | 2026-08-17 | PRM | Commissioning | DH2300 | L3 | MOD-02 | DELETED | DH1100 |  |
| DC1-MOD2-L3-Cx-2750 | **DELETED** DC1-MOD-E23-02 FTE | 1d | 2026-07-15 A | 2026-07-15 A | QTS-1020 | 100% | 2026-08-12 | 2026-08-12 | ROS | Commissioning | DH2300 | L3 | MOD-02 | DELETED | DH1100 |  |
| DC1-MOD2-L3-Cx-2760 | **DELETED** DC1-MOD-E23-02 L3 Startup | 2d | 2026-07-15 A | 2026-07-15 A | QTS-1020 | 100% | 2026-08-13 | 2026-08-14 | PHE | Commissioning | DH2300 | L3 | MOD-02 | DELETED | DH1100 |  |
| DC1-MOD2-L3-Cx-2770 | **DELETED** DC1-MOD-E23-02 BMS/EPMS Programming | 1d | 2026-07-15 A | 2026-07-15 A | QTS-1020 | 100% | 2026-08-17 | 2026-08-17 | PRM | Commissioning | DH2300 | L3 | MOD-02 | DELETED | DH1100 |  |
| DC1-MOD2-L3-Cx-2780 | **DELETED** DC1-MOD-F23-02 FTE | 1d | 2026-07-15 A | 2026-07-15 A | QTS-1020 | 100% | 2026-08-12 | 2026-08-12 | ROS | Commissioning | DH2300 | L3 | MOD-02 | DELETED | DH1100 |  |

Notes:
- DC1-MOD03-L2-2230: Steps: EC Installation Checklist; CC Installation Checklist; Vendor Pre-Energization Checklist; CXA Pre-Energization Inspection; PEI/Clean-Walk
- DC1-MOD03-L2-2240: Steps: EC Installation Checklist; CC Installation Checklist; Vendor Pre-Energization Checklist; CXA Pre-Energization Inspection; PEI/Clean-Walk
- DC1-MOD03-L2-2250: Steps: EC Installation Checklist; CC Installation Checklist; Vendor Pre-Energization Checklist; CXA Pre-Energization Inspection; PEI/Clean-Walk
- DC1-MOD03-L2-2260: Steps: EC Installation Checklist; CC Installation Checklist; Vendor Pre-Energization Checklist; CXA Pre-Energization Inspection; PEI/Clean-Walk
- DC1-MOD03-L2-2270: Steps: EC Installation Checklist; CC Installation Checklist; Vendor Pre-Energization Checklist; CXA Pre-Energization Inspection; PEI/Clean-Walk
- DC1-MOD03-L2-2280: Steps: EC Installation Checklist; CC Installation Checklist; Vendor Pre-Energization Checklist; CXA Pre-Energization Inspection; PEI/Clean-Walk
- DC1-MOD03-L2-2290: Steps: EC Installation Checklist; CC Installation Checklist; Vendor Pre-Energization Checklist; CXA Pre-Energization Inspection; PEI/Clean-Walk
- DC1-MOD03-L2-2300: Steps: EC Installation Checklist; CC Installation Checklist; Vendor Pre-Energization Checklist; CXA Pre-Energization Inspection; PEI/Clean-Walk
- DC1-MOD03-L2-2310: Steps: EC Installation Checklist; CC Installation Checklist; Vendor Pre-Energization Checklist; CXA Pre-Energization Inspection; PEI/Clean-Walk
- DC1-MOD03-L2-2320: Steps: EC Installation Checklist; CC Installation Checklist; Vendor Pre-Energization Checklist; CXA Pre-Energization Inspection; PEI/Clean-Walk
- DC1-MOD03-L2-2330: Steps: EC Installation Checklist; CC Installation Checklist; Vendor Pre-Energization Checklist; CXA Pre-Energization Inspection; PEI/Clean-Walk
- DC1-MOD03-L2-2340: Steps: EC Installation Checklist; CC Installation Checklist; Vendor Pre-Energization Checklist; CXA Pre-Energization Inspection; PEI/Clean-Walk
- DC1-MOD2-L3-Cx-2640: Steps: EC Startup Report; Vendor Startup
- DC1-MOD2-L3-Cx-2670: Steps: EC Startup Report; Vendor Startup
- DC1-MOD2-L3-Cx-2700: Steps: EC Startup Report; Vendor Startup
- DC1-MOD2-L3-Cx-2730: Steps: EC Startup Report; Vendor Startup
- DC1-MOD2-L3-Cx-2760: Steps: EC Startup Report; Vendor Startup

| ID | Activity | Duration | Start | Finish | Predecessors | Complete | Planned start | Planned finish | Vendor Responsible Party | Layton Discipline | Location | CX Level | Equipment | DELETED | D |
| --- | --- | --- | --- | --- | --- | --- | --- | --- | --- | --- | --- | --- | --- | --- | --- |
| DC1-MOD2-L3-Cx-2790 | **DELETED** DC1-MOD-F23-02 L3 Startup | 2d | 2026-07-15 A | 2026-07-15 A | QTS-1020 | 100% | 2026-08-13 | 2026-08-14 | PHE | Commissioning | DH2300 | L3 | MOD-02 | DELETED | DH1100 |
| DC1-MOD2-L3-Cx-2800 | **DELETED** DC1-MOD-F23-02 BMS/EPMS Programming | 1d | 2026-07-15 A | 2026-07-15 A | QTS-1020 | 100% | 2026-08-17 | 2026-08-17 | PRM | Commissioning | DH2300 | L3 | MOD-02 | DELETED | DH1100 |
| DC1-MOD2-L3-Cx-2810 | **DELETED** DC1-MOD-R23-02 FTE | 1d | 2026-07-15 A | 2026-07-15 A | QTS-1020 | 100% | 2026-08-12 | 2026-08-12 | ROS | Commissioning | DH2300 | L3 | MOD-02 | DELETED | DH1100 |
| DC1-MOD2-L3-Cx-2820 | **DELETED** DC1-MOD-R23-02 L3 Startup | 2d | 2026-07-15 A | 2026-07-15 A | QTS-1020 | 100% | 2026-08-13 | 2026-08-14 | PHE | Commissioning | DH2300 | L3 | MOD-02 | DELETED | DH1100 |
| DC1-MOD2-L3-Cx-2830 | **DELETED** DC1-MOD-R23-02 BMS/EPMS Programming | 1d | 2026-07-15 A | 2026-07-15 A | QTS-1020 | 100% | 2026-08-17 | 2026-08-17 | PRM | Commissioning | DH2300 | L3 | MOD-02 | DELETED | DH1100 |
| DC1-MOD2-L3-Cx-2840 | **DELETED** DC1-MOD-A13-02 FTE | 1d | 2026-07-15 A | 2026-07-15 A | DC1-SWD-L3-CX-2840, DC1-MOD02-L2-2280, QTS-1020 | 100% | 2026-08-12 | 2026-08-12 | ROS | Commissioning | DH1300 | L3 | MOD-02 | DELETED | DH1100 |
| DC1-MOD2-L3-Cx-2850 | **DELETED** DC1-MOD-A13-02 L3 Startup | 2d | 2026-07-15 A | 2026-07-15 A | DC1-MOD2-L3-Cx-2840, QTS-1020 | 100% | 2026-08-13 | 2026-08-14 | PHE | Commissioning | DH1300 | L3 | MOD-02 | DELETED | DH1100 |
| DC1-MOD2-L3-Cx-2860 | **DELETED** DC1-MOD-A13-02 BMS/EPMS Programming | 1d | 2026-07-15 A | 2026-07-15 A | DC1-MOD2-L3-Cx-2850, QTS-1020 | 100% | 2026-08-17 | 2026-08-17 | PRM | Commissioning | DH1300 | L3 | MOD-02 | DELETED | DH1100 |
| DC1-MOD2-L3-Cx-2870 | **DELETED** DC1-MOD-B13-02 FTE | 1d | 2026-07-15 A | 2026-07-15 A | DC1-SWD-L3-CX-2870, DC1-MOD02-L2-2290, QTS-1020 | 100% | 2026-08-12 | 2026-08-12 | ROS | Commissioning | DH1300 | L3 | MOD-02 | DELETED | DH1100 |
| DC1-MOD2-L3-Cx-2880 | **DELETED** DC1-MOD-B13-02 L3 Startup | 2d | 2026-07-15 A | 2026-07-15 A | DC1-MOD2-L3-Cx-2870, QTS-1020 | 100% | 2026-08-13 | 2026-08-14 | PHE | Commissioning | DH1300 | L3 | MOD-02 | DELETED | DH1100 |
| DC1-MOD2-L3-Cx-2890 | **DELETED** DC1-MOD-B13-02 BMS/EPMS Programming | 1d | 2026-07-15 A | 2026-07-15 A | DC1-MOD2-L3-Cx-2880, QTS-1020 | 100% | 2026-08-17 | 2026-08-17 | PRM | Commissioning | DH1300 | L3 | MOD-02 | DELETED | DH1100 |
| DC1-MOD2-L3-Cx-2900 | **DELETED** DC1-MOD-C13-02 FTE | 1d | 2026-07-15 A | 2026-07-15 A | DC1-SWD-L3-CX-2900, DC1-MOD02-L2-2300, QTS-1020 | 100% | 2026-08-12 | 2026-08-12 | ROS | Commissioning | DH1300 | L3 | MOD-02 | DELETED | DH1100 |
| DC1-MOD2-L3-Cx-2910 | **DELETED** DC1-MOD-C13-02 L3 Startup | 2d | 2026-07-15 A | 2026-07-15 A | DC1-MOD2-L3-Cx-2900, QTS-1020 | 100% | 2026-08-13 | 2026-08-14 | PHE | Commissioning | DH1300 | L3 | MOD-02 | DELETED | DH1100 |
| DC1-MOD2-L3-Cx-2920 | **DELETED** DC1-MOD-C13-02 BMS/EPMS Programming | 1d | 2026-07-15 A | 2026-07-15 A | DC1-MOD2-L3-Cx-2910, QTS-1020 | 100% | 2026-08-17 | 2026-08-17 | PRM | Commissioning | DH1300 | L3 | MOD-02 | DELETED | DH1100 |
| DC1-MOD2-L3-Cx-2930 | **DELETED** DC1-MOD-D13-02 FTE | 1d | 2026-07-15 A | 2026-07-15 A | DC1-SWD-L3-CX-2930, DC1-MOD02-L2-2310, QTS-1020 | 100% | 2026-08-12 | 2026-08-12 | ROS | Commissioning | DH1300 | L3 | MOD-02 | DELETED | DH1100 |
| DC1-MOD2-L3-Cx-2940 | **DELETED** DC1-MOD-D13-02 L3 Startup | 2d | 2026-07-15 A | 2026-07-15 A | DC1-MOD2-L3-Cx-2930, QTS-1020 | 100% | 2026-08-13 | 2026-08-14 | PHE | Commissioning | DH1300 | L3 | MOD-02 | DELETED | DH1100 |
| DC1-MOD2-L3-Cx-2950 | **DELETED** DC1-MOD-D13-02 BMS/EPMS Programming | 1d | 2026-07-15 A | 2026-07-15 A | DC1-MOD2-L3-Cx-2940, QTS-1020 | 100% | 2026-08-17 | 2026-08-17 | PRM | Commissioning | DH1300 | L3 | MOD-02 | DELETED | DH1100 |
| DC1-MOD2-L3-Cx-2960 | **DELETED** DC1-MOD-E13-02 FTE | 1d | 2026-07-15 A | 2026-07-15 A | DC1-SWD-L3-CX-2960, DC1-MOD02-L2-2320, QTS-1020 | 100% | 2026-08-12 | 2026-08-12 | ROS | Commissioning | DH1300 | L3 | MOD-02 | DELETED | DH1100 |
| DC1-MOD2-L3-Cx-2970 | **DELETED** DC1-MOD-E13-02 L3 Startup | 2d | 2026-07-15 A | 2026-07-15 A | DC1-MOD2-L3-Cx-2960, QTS-1020 | 100% | 2026-08-13 | 2026-08-14 | PHE | Commissioning | DH1300 | L3 | MOD-02 | DELETED | DH1100 |
| DC1-MOD2-L3-Cx-2980 | **DELETED** DC1-MOD-E13-02 BMS/EPMS Programming | 1d | 2026-07-15 A | 2026-07-15 A | DC1-MOD2-L3-Cx-2970, QTS-1020 | 100% | 2026-08-17 | 2026-08-17 | PRM | Commissioning | DH1300 | L3 | MOD-02 | DELETED | DH1100 |
| DC1-MOD2-L3-Cx-2990 | **DELETED** DC1-MOD-F13-02 FTE | 1d | 2026-07-15 A | 2026-07-15 A | DC1-SWD-L3-CX-2990, DC1-MOD02-L2-2330, QTS-1020 | 100% | 2026-08-12 | 2026-08-12 | ROS | Commissioning | DH1300 | L3 | MOD-02 | DELETED | DH1100 |
| DC1-MOD2-L3-Cx-3000 | **DELETED** DC1-MOD-F13-02 L3 Startup | 2d | 2026-07-15 A | 2026-07-15 A | DC1-MOD2-L3-Cx-2990, QTS-1020 | 100% | 2026-08-13 | 2026-08-14 | PHE | Commissioning | DH1300 | L3 | MOD-02 | DELETED | DH1100 |
| DC1-MOD2-L3-Cx-3010 | **DELETED** DC1-MOD-F13-02 BMS/EPMS Programming | 1d | 2026-07-15 A | 2026-07-15 A | DC1-MOD2-L3-Cx-3000, QTS-1020 | 100% | 2026-08-17 | 2026-08-17 | PRM | Commissioning | DH1300 | L3 | MOD-02 | DELETED | DH1100 |
| DC1-MOD2-L3-Cx-3020 | **DELETED** DC1-MOD-R13-02 FTE | 1d | 2026-07-15 A | 2026-07-15 A | DC1-SWD-L3-CX-3020, DC1-MOD02-L2-2340, QTS-1020 | 100% | 2026-08-13 | 2026-08-13 | ROS | Commissioning | DH1300 | L3 | MOD-02 | DELETED | DH1100 |
| DC1-MOD2-L3-Cx-3030 | **DELETED** DC1-MOD-R13-02 L3 Startup | 2d | 2026-07-15 A | 2026-07-15 A | DC1-MOD2-L3-Cx-3020, QTS-1020 | 100% | 2026-08-14 | 2026-08-17 | PHE | Commissioning | DH1300 | L3 | MOD-02 | DELETED | DH1100 |
| DC1-MOD2-L3-Cx-3040 | **DELETED** DC1-MOD-R13-02 BMS/EPMS Programming | 1d | 2026-07-15 A | 2026-07-15 A | DC1-MOD2-L3-Cx-3030, QTS-1020 | 100% | 2026-08-18 | 2026-08-18 | PRM | Commissioning | DH1300 | L3 | MOD-02 | DELETED | DH1100 |
| DC1-MOD3-L3-Cx-2630 | **DELETED** DC1-MOD-A23-03 FTE | 1d | 2026-07-15 A | 2026-07-15 A | QTS-1020 | 100% | 2026-08-18 | 2026-08-18 | ROS | Commissioning | DH2300 | L3 | MOD-03 | DELETED | DH1100 |
| DC1-MOD3-L3-Cx-2640 | **DELETED** DC1-MOD-A23-03 L3 Startup | 2d | 2026-07-15 A | 2026-07-15 A | QTS-1020 | 100% | 2026-08-19 | 2026-08-20 | PHE | Commissioning | DH2300 | L3 | MOD-03 | DELETED | DH1100 |
| DC1-MOD3-L3-Cx-2650 | **DELETED** DC1-MOD-A23-03 BMS/EPMS Programming | 1d | 2026-07-15 A | 2026-07-15 A | QTS-1020 | 100% | 2026-08-21 | 2026-08-21 | PRM | Commissioning | DH2300 | L3 | MOD-03 | DELETED | DH1100 |
| DC1-MOD3-L3-Cx-2660 | **DELETED** DC1-MOD-B23-03 FTE | 1d | 2026-07-15 A | 2026-07-15 A | QTS-1020 | 100% | 2026-08-19 | 2026-08-19 | ROS | Commissioning | DH2300 | L3 | MOD-03 | DELETED | DH1100 |
| DC1-MOD3-L3-Cx-2670 | **DELETED** DC1-MOD-B23-03 L3 Startup | 2d | 2026-07-15 A | 2026-07-15 A | QTS-1020 | 100% | 2026-08-20 | 2026-08-21 | PHE | Commissioning | DH2300 | L3 | MOD-03 | DELETED | DH1100 |
| DC1-MOD3-L3-Cx-2680 | **DELETED** DC1-MOD-B23-03 BMS/EPMS Programming | 1d | 2026-07-15 A | 2026-07-15 A | QTS-1020 | 100% | 2026-08-24 | 2026-08-24 | PRM | Commissioning | DH2300 | L3 | MOD-03 | DELETED | DH1100 |
| DC1-MOD3-L3-Cx-2690 | **DELETED** DC1-MOD-C23-03 FTE | 1d | 2026-07-15 A | 2026-07-15 A | QTS-1020 | 100% | 2026-08-20 | 2026-08-20 | ROS | Commissioning | DH2300 | L3 | MOD-03 | DELETED | DH1100 |
| DC1-MOD3-L3-Cx-2700 | **DELETED** DC1-MOD-C23-03 L3 Startup | 2d | 2026-07-15 A | 2026-07-15 A | QTS-1020 | 100% | 2026-08-21 | 2026-08-24 | PHE | Commissioning | DH2300 | L3 | MOD-03 | DELETED | DH1100 |
| DC1-MOD3-L3-Cx-2710 | **DELETED** DC1-MOD-C23-03 BMS/EPMS Programming | 1d | 2026-07-15 A | 2026-07-15 A | QTS-1020 | 100% | 2026-08-25 | 2026-08-25 | PRM | Commissioning | DH2300 | L3 | MOD-03 | DELETED | DH1100 |
| DC1-MOD3-L3-Cx-2720 | **DELETED** DC1-MOD-D23-03 FTE | 1d | 2026-07-15 A | 2026-07-15 A | QTS-1020 | 100% | 2026-08-21 | 2026-08-21 | ROS | Commissioning | DH2300 | L3 | MOD-03 | DELETED | DH1100 |
| DC1-MOD3-L3-Cx-2730 | **DELETED** DC1-MOD-D23-03 L3 Startup | 2d | 2026-07-15 A | 2026-07-15 A | QTS-1020 | 100% | 2026-08-24 | 2026-08-25 | PHE | Commissioning | DH2300 | L3 | MOD-03 | DELETED | DH1100 |
| DC1-MOD3-L3-Cx-2740 | **DELETED** DC1-MOD-D23-03 BMS/EPMS Programming | 1d | 2026-07-15 A | 2026-07-15 A | QTS-1020 | 100% | 2026-08-26 | 2026-08-26 | PRM | Commissioning | DH2300 | L3 | MOD-03 | DELETED | DH1100 |
| DC1-MOD3-L3-Cx-2750 | **DELETED** DC1-MOD-E23-03 FTE | 1d | 2026-07-15 A | 2026-07-15 A | QTS-1020 | 100% | 2026-08-24 | 2026-08-24 | ROS | Commissioning | DH2300 | L3 | MOD-03 | DELETED | DH1100 |
| DC1-MOD3-L3-Cx-2760 | **DELETED** DC1-MOD-E23-03 L3 Startup | 2d | 2026-07-15 A | 2026-07-15 A | QTS-1020 | 100% | 2026-08-25 | 2026-08-26 | PHE | Commissioning | DH2300 | L3 | MOD-03 | DELETED | DH1100 |
| DC1-MOD3-L3-Cx-2770 | **DELETED** DC1-MOD-E23-03 BMS/EPMS Programming | 1d | 2026-07-15 A | 2026-07-15 A | QTS-1020 | 100% | 2026-08-27 | 2026-08-27 | PRM | Commissioning | DH2300 | L3 | MOD-03 | DELETED | DH1100 |
| DC1-MOD3-L3-Cx-2780 | **DELETED** DC1-MOD-F23-03 FTE | 1d | 2026-07-15 A | 2026-07-15 A | QTS-1020 | 100% | 2026-08-25 | 2026-08-25 | ROS | Commissioning | DH2300 | L3 | MOD-03 | DELETED | DH1100 |
| DC1-MOD3-L3-Cx-2790 | **DELETED** DC1-MOD-F23-03 L3 Startup | 2d | 2026-07-15 A | 2026-07-15 A | QTS-1020 | 100% | 2026-08-26 | 2026-08-27 | PHE | Commissioning | DH2300 | L3 | MOD-03 | DELETED | DH1100 |
| DC1-MOD3-L3-Cx-2800 | **DELETED** DC1-MOD-F23-03 BMS/EPMS Programming | 1d | 2026-07-15 A | 2026-07-15 A | QTS-1020 | 100% | 2026-08-28 | 2026-08-28 | PRM | Commissioning | DH2300 | L3 | MOD-03 | DELETED | DH1100 |
| DC1-MOD3-L3-Cx-2810 | **DELETED** DC1-MOD-R23-03 FTE | 1d | 2026-07-15 A | 2026-07-15 A | QTS-1020 | 100% | 2026-08-26 | 2026-08-26 | ROS | Commissioning | DH2300 | L3 | MOD-03 | DELETED | DH1100 |
| DC1-MOD3-L3-Cx-2820 | **DELETED** DC1-MOD-R23-03 L3 Startup | 2d | 2026-07-15 A | 2026-07-15 A | QTS-1020 | 100% | 2026-08-27 | 2026-08-28 | PHE | Commissioning | DH2300 | L3 | MOD-03 | DELETED | DH1100 |
| DC1-MOD3-L3-Cx-2830 | **DELETED** DC1-MOD-R23-03 BMS/EPMS Programming | 1d | 2026-07-15 A | 2026-07-15 A | QTS-1020 | 100% | 2026-08-31 | 2026-08-31 | PRM | Commissioning | DH2300 | L3 | MOD-03 | DELETED | DH1100 |
| DC1-MOD3-L3-Cx-2840 | **DELETED** DC1-MOD-A13-03 FTE | 1d | 2026-07-15 A | 2026-07-15 A | DC1-MOD03-L2-2280, QTS-1020 | 100% | 2026-08-18 | 2026-08-18 | ROS | Commissioning | DH1300 | L3 | MOD-03 | DELETED | DH1100 |
| DC1-MOD3-L3-Cx-2850 | **DELETED** DC1-MOD-A13-03 L3 Startup | 2d | 2026-07-15 A | 2026-07-15 A | DC1-MOD3-L3-Cx-2840, QTS-1020 | 100% | 2026-08-19 | 2026-08-20 | PHE | Commissioning | DH1300 | L3 | MOD-03 | DELETED | DH1100 |
| DC1-MOD3-L3-Cx-2860 | **DELETED** DC1-MOD-A13-03 BMS/EPMS Programming | 1d | 2026-07-15 A | 2026-07-15 A | DC1-MOD3-L3-Cx-2850, QTS-1020 | 100% | 2026-08-21 | 2026-08-21 | PRM | Commissioning | DH1300 | L3 | MOD-03 | DELETED | DH1100 |
| DC1-MOD3-L3-Cx-2870 | **DELETED** DC1-MOD-B13-03 FTE | 1d | 2026-07-15 A | 2026-07-15 A | DC1-MOD03-L2-2290, QTS-1020 | 100% | 2026-08-19 | 2026-08-19 | ROS | Commissioning | DH1300 | L3 | MOD-03 | DELETED | DH1100 |
| DC1-MOD3-L3-Cx-2880 | **DELETED** DC1-MOD-B13-03 L3 Startup | 2d | 2026-07-15 A | 2026-07-15 A | DC1-MOD3-L3-Cx-2870, QTS-1020 | 100% | 2026-08-20 | 2026-08-21 | PHE | Commissioning | DH1300 | L3 | MOD-03 | DELETED | DH1100 |
| DC1-MOD3-L3-Cx-2890 | **DELETED** DC1-MOD-B13-03 BMS/EPMS Programming | 1d | 2026-07-15 A | 2026-07-15 A | DC1-MOD3-L3-Cx-2880, QTS-1020 | 100% | 2026-08-24 | 2026-08-24 | PRM | Commissioning | DH1300 | L3 | MOD-03 | DELETED | DH1100 |
| DC1-MOD3-L3-Cx-2900 | **DELETED** DC1-MOD-C13-03 FTE | 1d | 2026-07-15 A | 2026-07-15 A | DC1-MOD03-L2-2300, QTS-1020 | 100% | 2026-08-20 | 2026-08-20 | ROS | Commissioning | DH1300 | L3 | MOD-03 | DELETED | DH1100 |
| DC1-MOD3-L3-Cx-2910 | **DELETED** DC1-MOD-C13-03 L3 Startup | 2d | 2026-07-15 A | 2026-07-15 A | DC1-MOD3-L3-Cx-2900, QTS-1020 | 100% | 2026-08-21 | 2026-08-24 | PHE | Commissioning | DH1300 | L3 | MOD-03 | DELETED | DH1100 |
| DC1-MOD3-L3-Cx-2920 | **DELETED** DC1-MOD-C13-03 BMS/EPMS Programming | 1d | 2026-07-15 A | 2026-07-15 A | DC1-MOD3-L3-Cx-2910, QTS-1020 | 100% | 2026-08-25 | 2026-08-25 | PRM | Commissioning | DH1300 | L3 | MOD-03 | DELETED | DH1100 |
| DC1-MOD3-L3-Cx-2930 | **DELETED** DC1-MOD-D13-03 FTE | 1d | 2026-07-15 A | 2026-07-15 A | DC1-MOD03-L2-2310, QTS-1020 | 100% | 2026-08-21 | 2026-08-21 | ROS | Commissioning | DH1300 | L3 | MOD-03 | DELETED | DH1100 |
| DC1-MOD3-L3-Cx-2940 | **DELETED** DC1-MOD-D13-03 L3 Startup | 2d | 2026-07-15 A | 2026-07-15 A | DC1-MOD3-L3-Cx-2930, QTS-1020 | 100% | 2026-08-24 | 2026-08-25 | PHE | Commissioning | DH1300 | L3 | MOD-03 | DELETED | DH1100 |
| DC1-MOD3-L3-Cx-2950 | **DELETED** DC1-MOD-D13-03 BMS/EPMS Programming | 1d | 2026-07-15 A | 2026-07-15 A | DC1-MOD3-L3-Cx-2940, QTS-1020 | 100% | 2026-08-26 | 2026-08-26 | PRM | Commissioning | DH1300 | L3 | MOD-03 | DELETED | DH1100 |
| DC1-MOD3-L3-Cx-2960 | **DELETED** DC1-MOD-E13-03 FTE | 1d | 2026-07-15 A | 2026-07-15 A | DC1-MOD03-L2-2320, QTS-1020 | 100% | 2026-08-24 | 2026-08-24 | ROS | Commissioning | DH1300 | L3 | MOD-03 | DELETED | DH1100 |
| DC1-MOD3-L3-Cx-2970 | **DELETED** DC1-MOD-E13-03 L3 Startup | 2d | 2026-07-15 A | 2026-07-15 A | DC1-MOD3-L3-Cx-2960, QTS-1020 | 100% | 2026-08-25 | 2026-08-26 | PHE | Commissioning | DH1300 | L3 | MOD-03 | DELETED | DH1100 |
| DC1-MOD3-L3-Cx-2980 | **DELETED** DC1-MOD-E13-03 BMS/EPMS Programming | 1d | 2026-07-15 A | 2026-07-15 A | DC1-MOD3-L3-Cx-2970, QTS-1020 | 100% | 2026-08-27 | 2026-08-27 | PRM | Commissioning | DH1300 | L3 | MOD-03 | DELETED | DH1100 |
| DC1-MOD3-L3-Cx-2990 | **DELETED** DC1-MOD-F13-03 FTE | 1d | 2026-07-15 A | 2026-07-15 A | DC1-MOD03-L2-2330, QTS-1020 | 100% | 2026-08-25 | 2026-08-25 | ROS | Commissioning | DH1300 | L3 | MOD-03 | DELETED | DH1100 |
| DC1-MOD3-L3-Cx-3000 | **DELETED** DC1-MOD-F13-03 L3 Startup | 2d | 2026-07-15 A | 2026-07-15 A | DC1-MOD3-L3-Cx-2990, QTS-1020 | 100% | 2026-08-26 | 2026-08-27 | PHE | Commissioning | DH1300 | L3 | MOD-03 | DELETED | DH1100 |
| DC1-MOD3-L3-Cx-3010 | **DELETED** DC1-MOD-F13-03 BMS/EPMS Programming | 1d | 2026-07-15 A | 2026-07-15 A | DC1-MOD3-L3-Cx-3000, QTS-1020 | 100% | 2026-08-28 | 2026-08-28 | PRM | Commissioning | DH1300 | L3 | MOD-03 | DELETED | DH1100 |
| DC1-MOD3-L3-Cx-3020 | **DELETED** DC1-MOD-R13-03 FTE | 1d | 2026-07-15 A | 2026-07-15 A | DC1-MOD03-L2-2340, QTS-1020 | 100% | 2026-08-25 | 2026-08-25 | ROS | Commissioning | DH1300 | L3 | MOD-03 | DELETED | DH1100 |
| DC1-MOD3-L3-Cx-3030 | **DELETED** DC1-MOD-R13-03 L3 Startup | 2d | 2026-07-15 A | 2026-07-15 A | DC1-MOD3-L3-Cx-3020, QTS-1020 | 100% | 2026-08-26 | 2026-08-27 | PHE | Commissioning | DH1300 | L3 | MOD-03 | DELETED | DH1100 |
| DC1-MOD3-L3-Cx-3040 | **DELETED** DC1-MOD-R13-03 BMS/EPMS Programming | 1d | 2026-07-15 A | 2026-07-15 A | DC1-MOD3-L3-Cx-3030, QTS-1020 | 100% | 2026-08-28 | 2026-08-28 | PRM | Commissioning | DH1300 | L3 | MOD-03 | DELETED | DH1100 |
| DC1-RPP-L2-2720 | **DELETED** DH1200 RPP-A12-01 A/B L2 Checklist | 2d | 2026-07-15 A | 2026-07-16 A | QTS-1020 | 100% | 2026-07-23 | 2026-07-24 | SQD | Commissioning | DH1200 | L2 | RPP | DELETED | DH1100 |
| DC1-RPP-L2-2730 | **DELETED** DH1200 RPP-A12-02 A/B L2 Checklist | 2d | 2026-07-15 A | 2026-07-16 A | QTS-1020 | 100% | 2026-07-23 | 2026-07-24 | SQD | Commissioning | DH1200 | L2 | RPP | DELETED | DH1100 |

Notes:
- DC1-MOD2-L3-Cx-2790: Steps: EC Startup Report; Vendor Startup
- DC1-MOD2-L3-Cx-2820: Steps: EC Startup Report; Vendor Startup
- DC1-MOD2-L3-Cx-2850: Steps: EC Startup Report; Vendor Startup
- DC1-MOD2-L3-Cx-2880: Steps: EC Startup Report; Vendor Startup
- DC1-MOD2-L3-Cx-2910: Steps: EC Startup Report; Vendor Startup
- DC1-MOD2-L3-Cx-2940: Steps: EC Startup Report; Vendor Startup
- DC1-MOD2-L3-Cx-2970: Steps: EC Startup Report; Vendor Startup
- DC1-MOD2-L3-Cx-3000: Steps: EC Startup Report; Vendor Startup
- DC1-MOD2-L3-Cx-3030: Steps: EC Startup Report; Vendor Startup
- DC1-MOD3-L3-Cx-2640: Steps: EC Startup Report; Vendor Startup
- DC1-MOD3-L3-Cx-2670: Steps: EC Startup Report; Vendor Startup
- DC1-MOD3-L3-Cx-2700: Steps: EC Startup Report; Vendor Startup
- DC1-MOD3-L3-Cx-2730: Steps: EC Startup Report; Vendor Startup
- DC1-MOD3-L3-Cx-2760: Steps: EC Startup Report; Vendor Startup
- DC1-MOD3-L3-Cx-2790: Steps: EC Startup Report; Vendor Startup
- DC1-MOD3-L3-Cx-2820: Steps: EC Startup Report; Vendor Startup
- DC1-MOD3-L3-Cx-2850: Steps: EC Startup Report; Vendor Startup
- DC1-MOD3-L3-Cx-2880: Steps: EC Startup Report; Vendor Startup
- DC1-MOD3-L3-Cx-2910: Steps: EC Startup Report; Vendor Startup
- DC1-MOD3-L3-Cx-2940: Steps: EC Startup Report; Vendor Startup
- DC1-MOD3-L3-Cx-2970: Steps: EC Startup Report; Vendor Startup
- DC1-MOD3-L3-Cx-3000: Steps: EC Startup Report; Vendor Startup
- DC1-MOD3-L3-Cx-3030: Steps: EC Startup Report; Vendor Startup
- DC1-RPP-L2-2720: Steps: EC Installation Checklist; CC Installation Checklist; Vendor Pre-Energization Checklist; CXA Pre-Energization Inspection; PEI/Clean-Walk
- DC1-RPP-L2-2730: Steps: EC Installation Checklist; CC Installation Checklist; Vendor Pre-Energization Checklist; CXA Pre-Energization Inspection; PEI/Clean-Walk

| ID | Activity | Duration | Start | Finish | Predecessors | Complete | Planned start | Planned finish | Vendor Responsible Party | Layton Discipline | Location | CX Level | Equipment | DELETED | D |
| --- | --- | --- | --- | --- | --- | --- | --- | --- | --- | --- | --- | --- | --- | --- | --- |
| DC1-RPP-L2-2740 | **DELETED** DH1200 RPP-A12-03 A/B L2 Checklist | 2d | 2026-07-15 A | 2026-07-16 A | QTS-1020 | 100% | 2026-07-23 | 2026-07-24 | SQD | Commissioning | DH1200 | L2 | RPP | DELETED | DH1100 |
| DC1-RPP-L2-2750 | **DELETED** DH1200 RPP-A12-04 A/B L2 Checklist | 2d | 2026-07-15 A | 2026-07-16 A | QTS-1020 | 100% | 2026-07-23 | 2026-07-24 | SQD | Commissioning | DH1200 | L2 | RPP | DELETED | DH1100 |
| DC1-RPP-L2-2760 | **DELETED** DH1200 RPP-A12-05 A/B L2 Checklist | 2d | 2026-07-15 A | 2026-07-16 A | QTS-1020 | 100% | 2026-07-23 | 2026-07-24 | SQD | Commissioning | DH1200 | L2 | RPP | DELETED | DH1100 |
| DC1-RPP-L2-2770 | **DELETED** DH1200 RPP-A12-06 A/B L2 Checklist | 2d | 2026-07-15 A | 2026-07-16 A | QTS-1020 | 100% | 2026-07-23 | 2026-07-24 | SQD | Commissioning | DH1200 | L2 | RPP | DELETED | DH1100 |
| DC1-RPP-L2-2780 | **DELETED** DH1200 RPP-B12-01 A/B L2 Checklist | 2d | 2026-07-15 A | 2026-07-16 A | QTS-1020 | 100% | 2026-07-23 | 2026-07-24 | SQD | Commissioning | DH1200 | L2 | RPP | DELETED | DH1100 |
| DC1-RPP-L2-2790 | **DELETED** DH1200 RPP-B12-02 A/B L2 Checklist | 2d | 2026-07-15 A | 2026-07-16 A | QTS-1020 | 100% | 2026-07-23 | 2026-07-24 | SQD | Commissioning | DH1200 | L2 | RPP | DELETED | DH1100 |
| DC1-RPP-L2-2800 | **DELETED** DH1200 RPP-B12-03 A/B L2 Checklist | 2d | 2026-07-15 A | 2026-07-16 A | QTS-1020 | 100% | 2026-07-23 | 2026-07-24 | SQD | Commissioning | DH1200 | L2 | RPP | DELETED | DH1100 |
| DC1-RPP-L2-2810 | **DELETED** DH1200 RPP-B12-04 A/B L2 Checklist | 2d | 2026-07-15 A | 2026-07-16 A | QTS-1020 | 100% | 2026-07-23 | 2026-07-24 | SQD | Commissioning | DH1200 | L2 | RPP | DELETED | DH1100 |
| DC1-RPP-L2-2820 | **DELETED** DH1200 RPP-B12-05 A/B L2 Checklist | 2d | 2026-07-15 A | 2026-07-16 A | QTS-1020 | 100% | 2026-07-23 | 2026-07-24 | SQD | Commissioning | DH1200 | L2 | RPP | DELETED | DH1100 |
| DC1-RPP-L2-2830 | **DELETED** DH1200 RPP-B12-06 A/B L2 Checklist | 2d | 2026-07-15 A | 2026-07-16 A | QTS-1020 | 100% | 2026-07-23 | 2026-07-24 | SQD | Commissioning | DH1200 | L2 | RPP | DELETED | DH1100 |
| DC1-RPP-L2-2840 | **DELETED** DH1200 RPP-C12-01 A/B L2 Checklist | 2d | 2026-07-15 A | 2026-07-16 A | QTS-1020 | 100% | 2026-07-23 | 2026-07-24 | SQD | Commissioning | DH1200 | L2 | RPP | DELETED | DH1100 |
| DC1-RPP-L2-2850 | **DELETED** DH1200 RPP-C12-02 A/B L2 Checklist | 2d | 2026-07-15 A | 2026-07-16 A | QTS-1020 | 100% | 2026-07-23 | 2026-07-24 | SQD | Commissioning | DH1200 | L2 | RPP | DELETED | DH1100 |
| DC1-RPP-L2-2860 | **DELETED** DH1200 RPP-C12-03 A/B L2 Checklist | 2d | 2026-07-15 A | 2026-07-16 A | QTS-1020 | 100% | 2026-07-23 | 2026-07-24 | SQD | Commissioning | DH1200 | L2 | RPP | DELETED | DH1100 |
| DC1-RPP-L2-2870 | **DELETED** DH1200 RPP-C12-04 A/B L2 Checklist | 2d | 2026-07-15 A | 2026-07-16 A | QTS-1020 | 100% | 2026-07-23 | 2026-07-24 | SQD | Commissioning | DH1200 | L2 | RPP | DELETED | DH1100 |
| DC1-RPP-L2-2880 | **DELETED** DH1200 RPP-C12-05 A/B L2 Checklist | 2d | 2026-07-15 A | 2026-07-16 A | QTS-1020 | 100% | 2026-07-23 | 2026-07-24 | SQD | Commissioning | DH1200 | L2 | RPP | DELETED | DH1100 |
| DC1-RPP-L2-2890 | **DELETED** DH1200 RPP-C12-06 A/B L2 Checklist | 2d | 2026-07-15 A | 2026-07-16 A | QTS-1020 | 100% | 2026-07-23 | 2026-07-24 | SQD | Commissioning | DH1200 | L2 | RPP | DELETED | DH1100 |
| DC1-RPP-L2-2900 | **DELETED** DH1200 RPP-D12-01 A/B L2 Checklist | 2d | 2026-07-15 A | 2026-07-16 A | QTS-1020 | 100% |  |  | SQD | Commissioning | DH1200 | L2 | RPP | DELETED | DH1100 |
| DC1-RPP-L2-2910 | **DELETED** DH1200 RPP-D12-02 A/B L2 Checklist | 2d | 2026-07-15 A | 2026-07-16 A | QTS-1020 | 100% |  |  | SQD | Commissioning | DH1200 | L2 | RPP | DELETED | DH1100 |
| DC1-RPP-L2-2920 | **DELETED** DH1200 RPP-D12-03 A/B L2 Checklist | 2d | 2026-07-15 A | 2026-07-16 A | QTS-1020 | 100% |  |  | SQD | Commissioning | DH1200 | L2 | RPP | DELETED | DH1100 |
| DC1-RPP-L2-2930 | **DELETED** DH1200 RPP-D12-04 A/B L2 Checklist | 2d | 2026-07-15 A | 2026-07-16 A | QTS-1020 | 100% |  |  | SQD | Commissioning | DH1200 | L2 | RPP | DELETED | DH1100 |
| DC1-RPP-L2-2940 | **DELETED** DH1200 RPP-D12-05 A/B L2 Checklist | 2d | 2026-07-15 A | 2026-07-16 A | QTS-1020 | 100% |  |  | SQD | Commissioning | DH1200 | L2 | RPP | DELETED | DH1100 |
| DC1-RPP-L2-2950 | **DELETED** DH1200 RPP-D12-06 A/B L2 Checklist | 2d | 2026-07-15 A | 2026-07-16 A | QTS-1020 | 100% |  |  | SQD | Commissioning | DH1200 | L2 | RPP | DELETED | DH1100 |
| DC1-RPP-L2-2960 | **DELETED** DH1200 RPP-E12-01 A/B L2 Checklist | 2d | 2026-07-15 A | 2026-07-16 A | QTS-1020 | 100% |  |  | SQD | Commissioning | DH1200 | L2 | RPP | DELETED | DH1100 |
| DC1-RPP-L2-2970 | **DELETED** DH1200 RPP-E12-02 A/B L2 Checklist | 2d | 2026-07-15 A | 2026-07-16 A | QTS-1020 | 100% |  |  | SQD | Commissioning | DH1200 | L2 | RPP | DELETED | DH1100 |
| DC1-RPP-L2-2980 | **DELETED** DH1200 RPP-E12-03 A/B L2 Checklist | 2d | 2026-07-15 A | 2026-07-16 A | QTS-1020 | 100% |  |  | SQD | Commissioning | DH1200 | L2 | RPP | DELETED | DH1100 |
| DC1-RPP-L2-2990 | **DELETED** DH1200 RPP-E12-04 A/B L2 Checklist | 2d | 2026-07-15 A | 2026-07-16 A | QTS-1020 | 100% |  |  | SQD | Commissioning | DH1200 | L2 | RPP | DELETED | DH1100 |
| DC1-RPP-L2-3000 | **DELETED** DH1200 RPP-E12-05 A/B L2 Checklist | 2d | 2026-07-15 A | 2026-07-16 A | QTS-1020 | 100% |  |  | SQD | Commissioning | DH1200 | L2 | RPP | DELETED | DH1100 |
| DC1-RPP-L2-3010 | **DELETED** DH1200 RPP-E12-06 A/B L2 Checklist | 2d | 2026-07-15 A | 2026-07-16 A | QTS-1020 | 100% |  |  | SQD | Commissioning | DH1200 | L2 | RPP | DELETED | DH1100 |
| DC1-RPP-L2-3020 | **DELETED** DH1200 RPP-F12-01 A/B L2 Checklist | 2d | 2026-07-15 A | 2026-07-16 A | QTS-1020 | 100% |  |  | SQD | Commissioning | DH1200 | L2 | RPP | DELETED | DH1100 |
| DC1-RPP-L2-3030 | **DELETED** DH1200 RPP-F12-02 A/B L2 Checklist | 2d | 2026-07-15 A | 2026-07-16 A | QTS-1020 | 100% |  |  | SQD | Commissioning | DH1200 | L2 | RPP | DELETED | DH1100 |
| DC1-RPP-L2-3040 | **DELETED** DH1200 RPP-F12-03 A/B L2 Checklist | 2d | 2026-07-15 A | 2026-07-16 A | QTS-1020 | 100% |  |  | SQD | Commissioning | DH1200 | L2 | RPP | DELETED | DH1100 |
| DC1-RPP-L2-3050 | **DELETED** DH1200 RPP-F12-04 A/B L2 Checklist | 2d | 2026-07-15 A | 2026-07-16 A | QTS-1020 | 100% |  |  | SQD | Commissioning | DH1200 | L2 | RPP | DELETED | DH1100 |
| DC1-RPP-L2-3060 | **DELETED** DH1200 RPP-F12-05 A/B L2 Checklist | 2d | 2026-07-15 A | 2026-07-16 A | QTS-1020 | 100% |  |  | SQD | Commissioning | DH1200 | L2 | RPP | DELETED | DH1100 |
| DC1-RPP-L2-3070 | **DELETED** DH1200 RPP-F12-06 A/B L2 Checklist | 2d | 2026-07-15 A | 2026-07-16 A | QTS-1020 | 100% |  |  | SQD | Commissioning | DH1200 | L2 | RPP | DELETED | DH1100 |
| DC1-RPP-L2-3080 | **DELETED** DH2300 RPP-A23-01 A/B L2 Checklist | 3d | 2026-07-15 A | 2026-07-15 A | QTS-1020 | 100% | 2026-07-15 | 2026-07-17 | SQD | Commissioning | DH2300 | L2 | RPP | DELETED | DH1100 |
| DC1-RPP-L2-3090 | **DELETED** DH2300 RPP-A23-02 A/B L2 Checklist | 3d | 2026-07-15 A | 2026-07-15 A | QTS-1020 | 100% | 2026-07-15 | 2026-07-17 | SQD | Commissioning | DH2300 | L2 | RPP | DELETED | DH1100 |
| DC1-RPP-L2-3100 | **DELETED** DH2300 RPP-A23-03 A/B L2 Checklist | 3d | 2026-07-15 A | 2026-07-15 A | QTS-1020 | 100% | 2026-07-15 | 2026-07-17 | SQD | Commissioning | DH2300 | L2 | RPP | DELETED | DH1100 |
| DC1-RPP-L2-3110 | **DELETED** DH2300 RPP-A23-04 A/B L2 Checklist | 3d | 2026-07-15 A | 2026-07-15 A | QTS-1020 | 100% | 2026-07-15 | 2026-07-17 | SQD | Commissioning | DH2300 | L2 | RPP | DELETED | DH1100 |
| DC1-RPP-L2-3120 | **DELETED** DH2300 RPP-A23-05 A/B L2 Checklist | 3d | 2026-07-15 A | 2026-07-15 A | QTS-1020 | 100% | 2026-07-15 | 2026-07-17 | SQD | Commissioning | DH2300 | L2 | RPP | DELETED | DH1100 |
| DC1-RPP-L2-3130 | **DELETED** DH2300 RPP-A23-06 A/B L2 Checklist | 3d | 2026-07-15 A | 2026-07-15 A | QTS-1020 | 100% | 2026-07-15 | 2026-07-17 | SQD | Commissioning | DH2300 | L2 | RPP | DELETED | DH1100 |
| DC1-RPP-L2-3140 | **DELETED** DH2300 RPP-B23-01 A/B L2 Checklist | 3d | 2026-07-15 A | 2026-07-15 A | QTS-1020 | 100% | 2026-07-15 | 2026-07-17 | SQD | Commissioning | DH2300 | L2 | RPP | DELETED | DH1100 |
| DC1-RPP-L2-3150 | **DELETED** DH2300 RPP-B23-02 A/B L2 Checklist | 3d | 2026-07-15 A | 2026-07-15 A | QTS-1020 | 100% | 2026-07-15 | 2026-07-17 | SQD | Commissioning | DH2300 | L2 | RPP | DELETED | DH1100 |
| DC1-RPP-L2-3160 | **DELETED** DH2300 RPP-B23-03 A/B L2 Checklist | 3d | 2026-07-15 A | 2026-07-15 A | QTS-1020 | 100% | 2026-07-15 | 2026-07-17 | SQD | Commissioning | DH2300 | L2 | RPP | DELETED | DH1100 |
| DC1-RPP-L2-3170 | **DELETED** DH2300 RPP-B23-04 A/B L2 Checklist | 3d | 2026-07-15 A | 2026-07-15 A | QTS-1020 | 100% | 2026-07-15 | 2026-07-17 | SQD | Commissioning | DH2300 | L2 | RPP | DELETED | DH1100 |
| DC1-RPP-L2-3180 | **DELETED** DH2300 RPP-B23-05 A/B L2 Checklist | 3d | 2026-07-15 A | 2026-07-15 A | QTS-1020 | 100% | 2026-07-15 | 2026-07-17 | SQD | Commissioning | DH2300 | L2 | RPP | DELETED | DH1100 |
| DC1-RPP-L2-3190 | **DELETED** DH2300 RPP-B23-06 A/B L2 Checklist | 3d | 2026-07-15 A | 2026-07-15 A | QTS-1020 | 100% | 2026-07-15 | 2026-07-17 | SQD | Commissioning | DH2300 | L2 | RPP | DELETED | DH1100 |
| DC1-RPP-L2-3200 | **DELETED** DH2300 RPP-C23-01 A/B L2 Checklist | 3d | 2026-07-15 A | 2026-07-15 A | QTS-1020 | 100% | 2026-07-15 | 2026-07-17 | SQD | Commissioning | DH2300 | L2 | RPP | DELETED | DH1100 |
| DC1-RPP-L2-3210 | **DELETED** DH2300 RPP-C23-02 A/B L2 Checklist | 3d | 2026-07-15 A | 2026-07-15 A | QTS-1020 | 100% | 2026-07-15 | 2026-07-17 | SQD | Commissioning | DH2300 | L2 | RPP | DELETED | DH1100 |
| DC1-RPP-L2-3220 | **DELETED** DH2300 RPP-C23-03 A/B L2 Checklist | 3d | 2026-07-15 A | 2026-07-15 A | QTS-1020 | 100% | 2026-07-15 | 2026-07-17 | SQD | Commissioning | DH2300 | L2 | RPP | DELETED | DH1100 |
| DC1-RPP-L2-3230 | **DELETED** DH2300 RPP-C23-04 A/B L2 Checklist | 3d | 2026-07-15 A | 2026-07-15 A | QTS-1020 | 100% | 2026-07-15 | 2026-07-17 | SQD | Commissioning | DH2300 | L2 | RPP | DELETED | DH1100 |
| DC1-RPP-L2-3240 | **DELETED** DH2300 RPP-C23-05 A/B L2 Checklist | 3d | 2026-07-15 A | 2026-07-15 A | QTS-1020 | 100% | 2026-07-15 | 2026-07-17 | SQD | Commissioning | DH2300 | L2 | RPP | DELETED | DH1100 |
| DC1-RPP-L2-3250 | **DELETED** DH2300 RPP-C23-06 A/B L2 Checklist | 3d | 2026-07-15 A | 2026-07-15 A | QTS-1020 | 100% | 2026-07-15 | 2026-07-17 | SQD | Commissioning | DH2300 | L2 | RPP | DELETED | DH1100 |
| DC1-RPP-L2-3260 | **DELETED** DH2300 RPP-D23-01 A/B L2 Checklist | 3d | 2026-07-15 A | 2026-07-15 A | QTS-1020 | 100% | 2026-07-15 | 2026-07-17 | SQD | Commissioning | DH2300 | L2 | RPP | DELETED | DH1100 |
| DC1-RPP-L2-3270 | **DELETED** DH2300 RPP-D23-02 A/B L2 Checklist | 3d | 2026-07-15 A | 2026-07-15 A | QTS-1020 | 100% | 2026-07-15 | 2026-07-17 | SQD | Commissioning | DH2300 | L2 | RPP | DELETED | DH1100 |
| DC1-RPP-L2-3280 | **DELETED** DH2300 RPP-D23-03 A/B L2 Checklist | 3d | 2026-07-15 A | 2026-07-15 A | QTS-1020 | 100% | 2026-07-15 | 2026-07-17 | SQD | Commissioning | DH2300 | L2 | RPP | DELETED | DH1100 |
| DC1-RPP-L2-3290 | **DELETED** DH2300 RPP-D23-04 A/B L2 Checklist | 3d | 2026-07-15 A | 2026-07-15 A | QTS-1020 | 100% | 2026-07-15 | 2026-07-17 | SQD | Commissioning | DH2300 | L2 | RPP | DELETED | DH1100 |
| DC1-RPP-L2-3300 | **DELETED** DH2300 RPP-D23-05 A/B L2 Checklist | 3d | 2026-07-15 A | 2026-07-15 A | QTS-1020 | 100% | 2026-07-15 | 2026-07-17 | SQD | Commissioning | DH2300 | L2 | RPP | DELETED | DH1100 |
| DC1-RPP-L2-3310 | **DELETED** DH2300 RPP-D23-06 A/B L2 Checklist | 3d | 2026-07-15 A | 2026-07-15 A | QTS-1020 | 100% | 2026-07-15 | 2026-07-17 | SQD | Commissioning | DH2300 | L2 | RPP | DELETED | DH1100 |
| DC1-RPP-L2-3320 | **DELETED** DH2300 RPP-E23-01 A/B L2 Checklist | 3d | 2026-07-15 A | 2026-07-15 A | QTS-1020 | 100% | 2026-07-15 | 2026-07-17 | SQD | Commissioning | DH2300 | L2 | RPP | DELETED | DH1100 |
| DC1-RPP-L2-3330 | **DELETED** DH2300 RPP-E23-02 A/B L2 Checklist | 3d | 2026-07-15 A | 2026-07-15 A | QTS-1020 | 100% | 2026-07-15 | 2026-07-17 | SQD | Commissioning | DH2300 | L2 | RPP | DELETED | DH1100 |
| DC1-RPP-L2-3340 | **DELETED** DH2300 RPP-E23-03 A/B L2 Checklist | 3d | 2026-07-15 A | 2026-07-15 A | QTS-1020 | 100% | 2026-07-15 | 2026-07-17 | SQD | Commissioning | DH2300 | L2 | RPP | DELETED | DH1100 |
| DC1-RPP-L2-3350 | **DELETED** DH2300 RPP-E23-04 A/B L2 Checklist | 3d | 2026-07-15 A | 2026-07-15 A | QTS-1020 | 100% | 2026-07-15 | 2026-07-17 | SQD | Commissioning | DH2300 | L2 | RPP | DELETED | DH1100 |
| DC1-RPP-L2-3360 | **DELETED** DH2300 RPP-E23-05 A/B L2 Checklist | 3d | 2026-07-15 A | 2026-07-15 A | QTS-1020 | 100% | 2026-07-15 | 2026-07-17 | SQD | Commissioning | DH2300 | L2 | RPP | DELETED | DH1100 |
| DC1-RPP-L2-3370 | **DELETED** DH2300 RPP-E23-06 A/B L2 Checklist | 3d | 2026-07-15 A | 2026-07-15 A | QTS-1020 | 100% | 2026-07-15 | 2026-07-17 | SQD | Commissioning | DH2300 | L2 | RPP | DELETED | DH1100 |
| DC1-RPP-L2-3380 | **DELETED** DH2300 RPP-F23-01 A/B L2 Checklist | 3d | 2026-07-15 A | 2026-07-15 A | QTS-1020 | 100% | 2026-07-15 | 2026-07-17 | SQD | Commissioning | DH2300 | L2 | RPP | DELETED | DH1100 |
| DC1-RPP-L2-3390 | **DELETED** DH2300 RPP-F23-02 A/B L2 Checklist | 3d | 2026-07-15 A | 2026-07-15 A | QTS-1020 | 100% | 2026-07-15 | 2026-07-17 | SQD | Commissioning | DH2300 | L2 | RPP | DELETED | DH1100 |
| DC1-RPP-L2-3400 | **DELETED** DH2300 RPP-F23-03 A/B L2 Checklist | 3d | 2026-07-15 A | 2026-07-15 A | QTS-1020 | 100% | 2026-07-15 | 2026-07-17 | SQD | Commissioning | DH2300 | L2 | RPP | DELETED | DH1100 |
| DC1-RPP-L2-3410 | **DELETED** DH2300 RPP-F23-04 A/B L2 Checklist | 3d | 2026-07-15 A | 2026-07-15 A | QTS-1020 | 100% | 2026-07-15 | 2026-07-17 | SQD | Commissioning | DH2300 | L2 | RPP | DELETED | DH1100 |
| DC1-RPP-L2-3420 | **DELETED** DH2300 RPP-F23-05 A/B L2 Checklist | 3d | 2026-07-15 A | 2026-07-15 A | QTS-1020 | 100% | 2026-07-15 | 2026-07-17 | SQD | Commissioning | DH2300 | L2 | RPP | DELETED | DH1100 |
| DC1-RPP-L2-3430 | **DELETED** DH2300 RPP-F23-06 A/B L2 Checklist | 3d | 2026-07-15 A | 2026-07-15 A | QTS-1020 | 100% | 2026-07-15 | 2026-07-17 | SQD | Commissioning | DH2300 | L2 | RPP | DELETED | DH1100 |

Notes:
- DC1-RPP-L2-2740: Steps: EC Installation Checklist; CC Installation Checklist; Vendor Pre-Energization Checklist; CXA Pre-Energization Inspection; PEI/Clean-Walk
- DC1-RPP-L2-2750: Steps: EC Installation Checklist; CC Installation Checklist; Vendor Pre-Energization Checklist; CXA Pre-Energization Inspection; PEI/Clean-Walk
- DC1-RPP-L2-2760: Steps: EC Installation Checklist; CC Installation Checklist; Vendor Pre-Energization Checklist; CXA Pre-Energization Inspection; PEI/Clean-Walk
- DC1-RPP-L2-2770: Steps: EC Installation Checklist; CC Installation Checklist; Vendor Pre-Energization Checklist; CXA Pre-Energization Inspection; PEI/Clean-Walk
- DC1-RPP-L2-2780: Steps: EC Installation Checklist; CC Installation Checklist; Vendor Pre-Energization Checklist; CXA Pre-Energization Inspection; PEI/Clean-Walk
- DC1-RPP-L2-2790: Steps: EC Installation Checklist; CC Installation Checklist; Vendor Pre-Energization Checklist; CXA Pre-Energization Inspection; PEI/Clean-Walk
- DC1-RPP-L2-2800: Steps: EC Installation Checklist; CC Installation Checklist; Vendor Pre-Energization Checklist; CXA Pre-Energization Inspection; PEI/Clean-Walk
- DC1-RPP-L2-2810: Steps: EC Installation Checklist; CC Installation Checklist; Vendor Pre-Energization Checklist; CXA Pre-Energization Inspection; PEI/Clean-Walk
- DC1-RPP-L2-2820: Steps: EC Installation Checklist; CC Installation Checklist; Vendor Pre-Energization Checklist; CXA Pre-Energization Inspection; PEI/Clean-Walk
- DC1-RPP-L2-2830: Steps: EC Installation Checklist; CC Installation Checklist; Vendor Pre-Energization Checklist; CXA Pre-Energization Inspection; PEI/Clean-Walk
- DC1-RPP-L2-2840: Steps: EC Installation Checklist; CC Installation Checklist; Vendor Pre-Energization Checklist; CXA Pre-Energization Inspection; PEI/Clean-Walk
- DC1-RPP-L2-2850: Steps: EC Installation Checklist; CC Installation Checklist; Vendor Pre-Energization Checklist; CXA Pre-Energization Inspection; PEI/Clean-Walk
- DC1-RPP-L2-2860: Steps: EC Installation Checklist; CC Installation Checklist; Vendor Pre-Energization Checklist; CXA Pre-Energization Inspection; PEI/Clean-Walk
- DC1-RPP-L2-2870: Steps: EC Installation Checklist; CC Installation Checklist; Vendor Pre-Energization Checklist; CXA Pre-Energization Inspection; PEI/Clean-Walk
- DC1-RPP-L2-2880: Steps: EC Installation Checklist; CC Installation Checklist; Vendor Pre-Energization Checklist; CXA Pre-Energization Inspection; PEI/Clean-Walk
- DC1-RPP-L2-2890: Steps: EC Installation Checklist; CC Installation Checklist; Vendor Pre-Energization Checklist; CXA Pre-Energization Inspection; PEI/Clean-Walk
- DC1-RPP-L2-2900: Steps: EC Installation Checklist; CC Installation Checklist; Vendor Pre-Energization Checklist; CXA Pre-Energization Inspection; PEI/Clean-Walk
- DC1-RPP-L2-2910: Steps: EC Installation Checklist; CC Installation Checklist; Vendor Pre-Energization Checklist; CXA Pre-Energization Inspection; PEI/Clean-Walk
- DC1-RPP-L2-2920: Steps: EC Installation Checklist; CC Installation Checklist; Vendor Pre-Energization Checklist; CXA Pre-Energization Inspection; PEI/Clean-Walk
- DC1-RPP-L2-2930: Steps: EC Installation Checklist; CC Installation Checklist; Vendor Pre-Energization Checklist; CXA Pre-Energization Inspection; PEI/Clean-Walk
- DC1-RPP-L2-2940: Steps: EC Installation Checklist; CC Installation Checklist; Vendor Pre-Energization Checklist; CXA Pre-Energization Inspection; PEI/Clean-Walk
- DC1-RPP-L2-2950: Steps: EC Installation Checklist; CC Installation Checklist; Vendor Pre-Energization Checklist; CXA Pre-Energization Inspection; PEI/Clean-Walk
- DC1-RPP-L2-2960: Steps: EC Installation Checklist; CC Installation Checklist; Vendor Pre-Energization Checklist; CXA Pre-Energization Inspection; PEI/Clean-Walk
- DC1-RPP-L2-2970: Steps: EC Installation Checklist; CC Installation Checklist; Vendor Pre-Energization Checklist; CXA Pre-Energization Inspection; PEI/Clean-Walk
- DC1-RPP-L2-2980: Steps: EC Installation Checklist; CC Installation Checklist; Vendor Pre-Energization Checklist; CXA Pre-Energization Inspection; PEI/Clean-Walk
- DC1-RPP-L2-2990: Steps: EC Installation Checklist; CC Installation Checklist; Vendor Pre-Energization Checklist; CXA Pre-Energization Inspection; PEI/Clean-Walk
- DC1-RPP-L2-3000: Steps: EC Installation Checklist; CC Installation Checklist; Vendor Pre-Energization Checklist; CXA Pre-Energization Inspection; PEI/Clean-Walk
- DC1-RPP-L2-3010: Steps: EC Installation Checklist; CC Installation Checklist; Vendor Pre-Energization Checklist; CXA Pre-Energization Inspection; PEI/Clean-Walk
- DC1-RPP-L2-3020: Steps: EC Installation Checklist; CC Installation Checklist; Vendor Pre-Energization Checklist; CXA Pre-Energization Inspection; PEI/Clean-Walk
- DC1-RPP-L2-3030: Steps: EC Installation Checklist; CC Installation Checklist; Vendor Pre-Energization Checklist; CXA Pre-Energization Inspection; PEI/Clean-Walk
- DC1-RPP-L2-3040: Steps: EC Installation Checklist; CC Installation Checklist; Vendor Pre-Energization Checklist; CXA Pre-Energization Inspection; PEI/Clean-Walk
- DC1-RPP-L2-3050: Steps: EC Installation Checklist; CC Installation Checklist; Vendor Pre-Energization Checklist; CXA Pre-Energization Inspection; PEI/Clean-Walk
- DC1-RPP-L2-3060: Steps: EC Installation Checklist; CC Installation Checklist; Vendor Pre-Energization Checklist; CXA Pre-Energization Inspection; PEI/Clean-Walk
- DC1-RPP-L2-3070: Steps: EC Installation Checklist; CC Installation Checklist; Vendor Pre-Energization Checklist; CXA Pre-Energization Inspection; PEI/Clean-Walk
- DC1-RPP-L2-3080: Steps: EC Installation Checklist; CC Installation Checklist; Vendor Pre-Energization Checklist; CXA Pre-Energization Inspection; PEI/Clean-Walk
- DC1-RPP-L2-3090: Steps: EC Installation Checklist; CC Installation Checklist; Vendor Pre-Energization Checklist; CXA Pre-Energization Inspection; PEI/Clean-Walk
- DC1-RPP-L2-3100: Steps: EC Installation Checklist; CC Installation Checklist; Vendor Pre-Energization Checklist; CXA Pre-Energization Inspection; PEI/Clean-Walk
- DC1-RPP-L2-3110: Steps: EC Installation Checklist; CC Installation Checklist; Vendor Pre-Energization Checklist; CXA Pre-Energization Inspection; PEI/Clean-Walk
- DC1-RPP-L2-3120: Steps: EC Installation Checklist; CC Installation Checklist; Vendor Pre-Energization Checklist; CXA Pre-Energization Inspection; PEI/Clean-Walk
- DC1-RPP-L2-3130: Steps: EC Installation Checklist; CC Installation Checklist; Vendor Pre-Energization Checklist; CXA Pre-Energization Inspection; PEI/Clean-Walk
- DC1-RPP-L2-3140: Steps: EC Installation Checklist; CC Installation Checklist; Vendor Pre-Energization Checklist; CXA Pre-Energization Inspection; PEI/Clean-Walk
- DC1-RPP-L2-3150: Steps: EC Installation Checklist; CC Installation Checklist; Vendor Pre-Energization Checklist; CXA Pre-Energization Inspection; PEI/Clean-Walk
- DC1-RPP-L2-3160: Steps: EC Installation Checklist; CC Installation Checklist; Vendor Pre-Energization Checklist; CXA Pre-Energization Inspection; PEI/Clean-Walk
- DC1-RPP-L2-3170: Steps: EC Installation Checklist; CC Installation Checklist; Vendor Pre-Energization Checklist; CXA Pre-Energization Inspection; PEI/Clean-Walk
- DC1-RPP-L2-3180: Steps: EC Installation Checklist; CC Installation Checklist; Vendor Pre-Energization Checklist; CXA Pre-Energization Inspection; PEI/Clean-Walk
- DC1-RPP-L2-3190: Steps: EC Installation Checklist; CC Installation Checklist; Vendor Pre-Energization Checklist; CXA Pre-Energization Inspection; PEI/Clean-Walk
- DC1-RPP-L2-3200: Steps: EC Installation Checklist; CC Installation Checklist; Vendor Pre-Energization Checklist; CXA Pre-Energization Inspection; PEI/Clean-Walk
- DC1-RPP-L2-3210: Steps: EC Installation Checklist; CC Installation Checklist; Vendor Pre-Energization Checklist; CXA Pre-Energization Inspection; PEI/Clean-Walk
- DC1-RPP-L2-3220: Steps: EC Installation Checklist; CC Installation Checklist; Vendor Pre-Energization Checklist; CXA Pre-Energization Inspection; PEI/Clean-Walk
- DC1-RPP-L2-3230: Steps: EC Installation Checklist; CC Installation Checklist; Vendor Pre-Energization Checklist; CXA Pre-Energization Inspection; PEI/Clean-Walk
- DC1-RPP-L2-3240: Steps: EC Installation Checklist; CC Installation Checklist; Vendor Pre-Energization Checklist; CXA Pre-Energization Inspection; PEI/Clean-Walk
- DC1-RPP-L2-3250: Steps: EC Installation Checklist; CC Installation Checklist; Vendor Pre-Energization Checklist; CXA Pre-Energization Inspection; PEI/Clean-Walk
- DC1-RPP-L2-3260: Steps: EC Installation Checklist; CC Installation Checklist; Vendor Pre-Energization Checklist; CXA Pre-Energization Inspection; PEI/Clean-Walk
- DC1-RPP-L2-3270: Steps: EC Installation Checklist; CC Installation Checklist; Vendor Pre-Energization Checklist; CXA Pre-Energization Inspection; PEI/Clean-Walk
- DC1-RPP-L2-3280: Steps: EC Installation Checklist; CC Installation Checklist; Vendor Pre-Energization Checklist; CXA Pre-Energization Inspection; PEI/Clean-Walk
- DC1-RPP-L2-3290: Steps: EC Installation Checklist; CC Installation Checklist; Vendor Pre-Energization Checklist; CXA Pre-Energization Inspection; PEI/Clean-Walk
- DC1-RPP-L2-3300: Steps: EC Installation Checklist; CC Installation Checklist; Vendor Pre-Energization Checklist; CXA Pre-Energization Inspection; PEI/Clean-Walk
- DC1-RPP-L2-3310: Steps: EC Installation Checklist; CC Installation Checklist; Vendor Pre-Energization Checklist; CXA Pre-Energization Inspection; PEI/Clean-Walk
- DC1-RPP-L2-3320: Steps: EC Installation Checklist; CC Installation Checklist; Vendor Pre-Energization Checklist; CXA Pre-Energization Inspection; PEI/Clean-Walk
- DC1-RPP-L2-3330: Steps: EC Installation Checklist; CC Installation Checklist; Vendor Pre-Energization Checklist; CXA Pre-Energization Inspection; PEI/Clean-Walk
- DC1-RPP-L2-3340: Steps: EC Installation Checklist; CC Installation Checklist; Vendor Pre-Energization Checklist; CXA Pre-Energization Inspection; PEI/Clean-Walk
- DC1-RPP-L2-3350: Steps: EC Installation Checklist; CC Installation Checklist; Vendor Pre-Energization Checklist; CXA Pre-Energization Inspection; PEI/Clean-Walk
- DC1-RPP-L2-3360: Steps: EC Installation Checklist; CC Installation Checklist; Vendor Pre-Energization Checklist; CXA Pre-Energization Inspection; PEI/Clean-Walk
- DC1-RPP-L2-3370: Steps: EC Installation Checklist; CC Installation Checklist; Vendor Pre-Energization Checklist; CXA Pre-Energization Inspection; PEI/Clean-Walk
- DC1-RPP-L2-3380: Steps: EC Installation Checklist; CC Installation Checklist; Vendor Pre-Energization Checklist; CXA Pre-Energization Inspection; PEI/Clean-Walk
- DC1-RPP-L2-3390: Steps: EC Installation Checklist; CC Installation Checklist; Vendor Pre-Energization Checklist; CXA Pre-Energization Inspection; PEI/Clean-Walk
- DC1-RPP-L2-3400: Steps: EC Installation Checklist; CC Installation Checklist; Vendor Pre-Energization Checklist; CXA Pre-Energization Inspection; PEI/Clean-Walk
- DC1-RPP-L2-3410: Steps: EC Installation Checklist; CC Installation Checklist; Vendor Pre-Energization Checklist; CXA Pre-Energization Inspection; PEI/Clean-Walk
- DC1-RPP-L2-3420: Steps: EC Installation Checklist; CC Installation Checklist; Vendor Pre-Energization Checklist; CXA Pre-Energization Inspection; PEI/Clean-Walk
- DC1-RPP-L2-3430: Steps: EC Installation Checklist; CC Installation Checklist; Vendor Pre-Energization Checklist; CXA Pre-Energization Inspection; PEI/Clean-Walk

| ID | Activity | Duration | Start | Finish | Predecessors | Complete | Planned start | Planned finish | Vendor Responsible Party | Layton Discipline | Location | CX Level | Equipment | DELETED | D |
| --- | --- | --- | --- | --- | --- | --- | --- | --- | --- | --- | --- | --- | --- | --- | --- |
| DC1-RPP-L2-3440 | **DELETED** DH1300 RPP-A13-01 A/B L2 Checklist | 3d | 2026-07-15 A | 2026-07-15 A | QTS-1020 | 100% | 2026-07-15 | 2026-07-17 | SQD | Commissioning | DH1300 | L2 | RPP | DELETED | DH1100 |
| DC1-RPP-L2-3450 | **DELETED** DH1300 RPP-A13-02 A/B L2 Checklist | 3d | 2026-07-15 A | 2026-07-15 A | QTS-1020 | 100% | 2026-07-15 | 2026-07-17 | SQD | Commissioning | DH1300 | L2 | RPP | DELETED | DH1100 |
| DC1-RPP-L2-3460 | **DELETED** DH1300 RPP-A13-03 A/B L2 Checklist | 3d | 2026-07-15 A | 2026-07-15 A | QTS-1020 | 100% | 2026-07-15 | 2026-07-17 | SQD | Commissioning | DH1300 | L2 | RPP | DELETED | DH1100 |
| DC1-RPP-L2-3470 | **DELETED** DH1300 RPP-A13-04 A/B L2 Checklist | 3d | 2026-07-15 A | 2026-07-15 A | QTS-1020 | 100% | 2026-07-15 | 2026-07-17 | SQD | Commissioning | DH1300 | L2 | RPP | DELETED | DH1100 |
| DC1-RPP-L2-3480 | **DELETED** DH1300 RPP-A13-05 A/B L2 Checklist | 3d | 2026-07-15 A | 2026-07-15 A | QTS-1020 | 100% | 2026-07-15 | 2026-07-17 | SQD | Commissioning | DH1300 | L2 | RPP | DELETED | DH1100 |
| DC1-RPP-L2-3490 | **DELETED** DH1300 RPP-A13-06 A/B L2 Checklist | 3d | 2026-07-15 A | 2026-07-15 A | QTS-1020 | 100% | 2026-07-15 | 2026-07-17 | SQD | Commissioning | DH1300 | L2 | RPP | DELETED | DH1100 |
| DC1-RPP-L2-3500 | **DELETED** DH1300 RPP-B13-01 A/B L2 Checklist | 3d | 2026-07-15 A | 2026-07-15 A | QTS-1020 | 100% | 2026-07-15 | 2026-07-17 | SQD | Commissioning | DH1300 | L2 | RPP | DELETED | DH1100 |
| DC1-RPP-L2-3510 | **DELETED** DH1300 RPP-B13-02 A/B L2 Checklist | 3d | 2026-07-15 A | 2026-07-15 A | QTS-1020 | 100% | 2026-07-15 | 2026-07-17 | SQD | Commissioning | DH1300 | L2 | RPP | DELETED | DH1100 |
| DC1-RPP-L2-3520 | **DELETED** DH1300 RPP-B13-03 A/B L2 Checklist | 3d | 2026-07-15 A | 2026-07-15 A | QTS-1020 | 100% | 2026-07-15 | 2026-07-17 | SQD | Commissioning | DH1300 | L2 | RPP | DELETED | DH1100 |
| DC1-RPP-L2-3530 | **DELETED** DH1300 RPP-B13-04 A/B L2 Checklist | 3d | 2026-07-15 A | 2026-07-15 A | QTS-1020 | 100% | 2026-07-15 | 2026-07-17 | SQD | Commissioning | DH1300 | L2 | RPP | DELETED | DH1100 |
| DC1-RPP-L2-3540 | **DELETED** DH1300 RPP-B13-05 A/B L2 Checklist | 3d | 2026-07-15 A | 2026-07-15 A | QTS-1020 | 100% | 2026-07-15 | 2026-07-17 | SQD | Commissioning | DH1300 | L2 | RPP | DELETED | DH1100 |
| DC1-RPP-L2-3550 | **DELETED** DH1300 RPP-B13-06 A/B L2 Checklist | 3d | 2026-07-15 A | 2026-07-15 A | QTS-1020 | 100% | 2026-07-15 | 2026-07-17 | SQD | Commissioning | DH1300 | L2 | RPP | DELETED | DH1100 |
| DC1-RPP-L2-3560 | **DELETED** DH1300 RPP-C13-01 A/B L2 Checklist | 3d | 2026-07-15 A | 2026-07-15 A | QTS-1020 | 100% | 2026-07-15 | 2026-07-17 | SQD | Commissioning | DH1300 | L2 | RPP | DELETED | DH1100 |
| DC1-RPP-L2-3570 | **DELETED** DH1300 RPP-C13-02 A/B L2 Checklist | 3d | 2026-07-15 A | 2026-07-15 A | QTS-1020 | 100% | 2026-07-15 | 2026-07-17 | SQD | Commissioning | DH1300 | L2 | RPP | DELETED | DH1100 |
| DC1-RPP-L2-3580 | **DELETED** DH1300 RPP-C13-03 A/B L2 Checklist | 3d | 2026-07-15 A | 2026-07-15 A | QTS-1020 | 100% | 2026-07-15 | 2026-07-17 | SQD | Commissioning | DH1300 | L2 | RPP | DELETED | DH1100 |
| DC1-RPP-L2-3590 | **DELETED** DH1300 RPP-C13-04 A/B L2 Checklist | 3d | 2026-07-15 A | 2026-07-15 A | QTS-1020 | 100% | 2026-07-15 | 2026-07-17 | SQD | Commissioning | DH1300 | L2 | RPP | DELETED | DH1100 |
| DC1-RPP-L2-3600 | **DELETED** DH1300 RPP-C13-05 A/B L2 Checklist | 3d | 2026-07-15 A | 2026-07-15 A | QTS-1020 | 100% | 2026-07-15 | 2026-07-17 | SQD | Commissioning | DH1300 | L2 | RPP | DELETED | DH1100 |
| DC1-RPP-L2-3610 | **DELETED** DH1300 RPP-C13-06 A/B L2 Checklist | 3d | 2026-07-15 A | 2026-07-15 A | QTS-1020 | 100% | 2026-07-15 | 2026-07-17 | SQD | Commissioning | DH1300 | L2 | RPP | DELETED | DH1100 |
| DC1-RPP-L2-3620 | **DELETED** DH1300 RPP-D13-01 A/B L2 Checklist | 3d | 2026-07-15 A | 2026-07-15 A | QTS-1020 | 100% | 2026-07-15 | 2026-07-17 | SQD | Commissioning | DH1300 | L2 | RPP | DELETED | DH1100 |
| DC1-RPP-L2-3630 | **DELETED** DH1300 RPP-D13-02 A/B L2 Checklist | 3d | 2026-07-15 A | 2026-07-15 A | QTS-1020 | 100% | 2026-07-15 | 2026-07-17 | SQD | Commissioning | DH1300 | L2 | RPP | DELETED | DH1100 |
| DC1-RPP-L2-3640 | **DELETED** DH1300 RPP-D13-03 A/B L2 Checklist | 3d | 2026-07-15 A | 2026-07-15 A | QTS-1020 | 100% | 2026-07-15 | 2026-07-17 | SQD | Commissioning | DH1300 | L2 | RPP | DELETED | DH1100 |
| DC1-RPP-L2-3650 | **DELETED** DH1300 RPP-D13-04 A/B L2 Checklist | 3d | 2026-07-15 A | 2026-07-15 A | QTS-1020 | 100% | 2026-07-15 | 2026-07-17 | SQD | Commissioning | DH1300 | L2 | RPP | DELETED | DH1100 |
| DC1-RPP-L2-3660 | **DELETED** DH1300 RPP-D13-05 A/B L2 Checklist | 3d | 2026-07-15 A | 2026-07-15 A | QTS-1020 | 100% | 2026-07-15 | 2026-07-17 | SQD | Commissioning | DH1300 | L2 | RPP | DELETED | DH1100 |
| DC1-RPP-L2-3670 | **DELETED** DH1300 RPP-D13-06 A/B L2 Checklist | 3d | 2026-07-15 A | 2026-07-15 A | QTS-1020 | 100% | 2026-07-15 | 2026-07-17 | SQD | Commissioning | DH1300 | L2 | RPP | DELETED | DH1100 |
| DC1-RPP-L2-3680 | **DELETED** DH1300 RPP-E13-01 A/B L2 Checklist | 3d | 2026-07-15 A | 2026-07-15 A | QTS-1020 | 100% | 2026-07-15 | 2026-07-17 | SQD | Commissioning | DH1300 | L2 | RPP | DELETED | DH1100 |
| DC1-RPP-L2-3690 | **DELETED** DH1300 RPP-E13-02 A/B L2 Checklist | 3d | 2026-07-15 A | 2026-07-15 A | QTS-1020 | 100% | 2026-07-15 | 2026-07-17 | SQD | Commissioning | DH1300 | L2 | RPP | DELETED | DH1100 |
| DC1-RPP-L2-3700 | **DELETED** DH1300 RPP-E13-03 A/B L2 Checklist | 3d | 2026-07-15 A | 2026-07-15 A | QTS-1020 | 100% | 2026-07-15 | 2026-07-17 | SQD | Commissioning | DH1300 | L2 | RPP | DELETED | DH1100 |
| DC1-RPP-L2-3710 | **DELETED** DH1300 RPP-E13-04 A/B L2 Checklist | 3d | 2026-07-15 A | 2026-07-15 A | QTS-1020 | 100% | 2026-07-15 | 2026-07-17 | SQD | Commissioning | DH1300 | L2 | RPP | DELETED | DH1100 |
| DC1-RPP-L2-3720 | **DELETED** DH1300 RPP-E13-05 A/B L2 Checklist | 3d | 2026-07-15 A | 2026-07-15 A | QTS-1020 | 100% | 2026-07-15 | 2026-07-17 | SQD | Commissioning | DH1300 | L2 | RPP | DELETED | DH1100 |
| DC1-RPP-L2-3730 | **DELETED** DH1300 RPP-E13-06 A/B L2 Checklist | 3d | 2026-07-15 A | 2026-07-15 A | QTS-1020 | 100% | 2026-07-15 | 2026-07-17 | SQD | Commissioning | DH1300 | L2 | RPP | DELETED | DH1100 |
| DC1-RPP-L2-3740 | **DELETED** DH1300 RPP-F13-01 A/B L2 Checklist | 3d | 2026-07-15 A | 2026-07-15 A | QTS-1020 | 100% | 2026-07-15 | 2026-07-17 | SQD | Commissioning | DH1300 | L2 | RPP | DELETED | DH1100 |
| DC1-RPP-L2-3750 | **DELETED** DH1300 RPP-F13-02 A/B L2 Checklist | 3d | 2026-07-15 A | 2026-07-15 A | QTS-1020 | 100% | 2026-07-15 | 2026-07-17 | SQD | Commissioning | DH1300 | L2 | RPP | DELETED | DH1100 |
| DC1-RPP-L2-3760 | **DELETED** DH1300 RPP-F13-03 A/B L2 Checklist | 3d | 2026-07-15 A | 2026-07-15 A | QTS-1020 | 100% | 2026-07-15 | 2026-07-17 | SQD | Commissioning | DH1300 | L2 | RPP | DELETED | DH1100 |
| DC1-RPP-L2-3770 | **DELETED** DH1300 RPP-F13-04 A/B L2 Checklist | 3d | 2026-07-15 A | 2026-07-15 A | QTS-1020 | 100% | 2026-07-15 | 2026-07-17 | SQD | Commissioning | DH1300 | L2 | RPP | DELETED | DH1100 |
| DC1-RPP-L2-3780 | **DELETED** DH1300 RPP-F13-05 A/B L2 Checklist | 3d | 2026-07-15 A | 2026-07-15 A | QTS-1020 | 100% | 2026-07-15 | 2026-07-17 | SQD | Commissioning | DH1300 | L2 | RPP | DELETED | DH1100 |
| DC1-RPP-L2-3790 | **DELETED** DH1300 RPP-F13-06 A/B L2 Checklist | 3d | 2026-07-15 A | 2026-07-15 A | QTS-1020 | 100% | 2026-07-15 | 2026-07-17 | SQD | Commissioning | DH1300 | L2 | RPP | DELETED | DH1100 |
| DC1-RPP-L3-CX-4705 | **DELETED** DC1-RPP-A23-01 A/B FTE | 1d | 2026-07-15 A | 2026-07-15 A | QTS-1020 | 100% | 2026-08-13 | 2026-08-13 | ROS | Commissioning | DH2300 | L3 | RPP | DELETED | DH1100 |
| DC1-RPP-L3-CX-4715 | **DELETED** DC1-RPP-A23-01 A/B L3 Startup | 2d | 2026-07-15 A | 2026-07-15 A | QTS-1020 | 100% | 2026-08-14 | 2026-08-17 | SQD | Commissioning | DH2300 | L3 | RPP | DELETED | DH1100 |
| DC1-RPP-L3-CX-4725 | **DELETED** DC1-RPP-A23-01 A/B BMS/EPMS Programming | 1d | 2026-07-15 A | 2026-07-15 A | QTS-1020 | 100% | 2026-08-18 | 2026-08-18 | PRM | Commissioning | DH2300 | L3 | RPP | DELETED | DH1100 |
| DC1-RPP-L3-CX-4735 | **DELETED** DC1-RPP-A23-02 A/B FTE | 1d | 2026-07-15 A | 2026-07-15 A | QTS-1020 | 100% | 2026-08-14 | 2026-08-14 | ROS | Commissioning | DH2300 | L3 | RPP | DELETED | DH1100 |
| DC1-RPP-L3-CX-4745 | **DELETED** DC1-RPP-A23-02 A/B L3 Startup | 2d | 2026-07-15 A | 2026-07-15 A | QTS-1020 | 100% | 2026-08-17 | 2026-08-18 | SQD | Commissioning | DH2300 | L3 | RPP | DELETED | DH1100 |
| DC1-RPP-L3-CX-4755 | **DELETED** DC1-RPP-A23-02 A/B BMS/EPMS Programming | 1d | 2026-07-15 A | 2026-07-15 A | QTS-1020 | 100% | 2026-08-19 | 2026-08-19 | PRM | Commissioning | DH2300 | L3 | RPP | DELETED | DH1100 |
| DC1-RPP-L3-CX-4765 | **DELETED** DC1-RPP-A23-03 A/B FTE | 1d | 2026-07-15 A | 2026-07-15 A | QTS-1020 | 100% | 2026-08-13 | 2026-08-13 | ROS | Commissioning | DH2300 | L3 | RPP | DELETED | DH1100 |
| DC1-RPP-L3-CX-4775 | **DELETED** DC1-RPP-A23-03 A/B L3 Startup | 2d | 2026-07-15 A | 2026-07-15 A | QTS-1020 | 100% | 2026-08-14 | 2026-08-17 | SQD | Commissioning | DH2300 | L3 | RPP | DELETED | DH1100 |
| DC1-RPP-L3-CX-4785 | **DELETED** DC1-RPP-A23-03 A/B BMS/EPMS Programming | 1d | 2026-07-15 A | 2026-07-15 A | QTS-1020 | 100% | 2026-08-18 | 2026-08-18 | PRM | Commissioning | DH2300 | L3 | RPP | DELETED | DH1100 |
| DC1-RPP-L3-CX-4795 | **DELETED** DC1-RPP-A23-04 A/B FTE | 1d | 2026-07-15 A | 2026-07-15 A | QTS-1020 | 100% | 2026-08-14 | 2026-08-14 | ROS | Commissioning | DH2300 | L3 | RPP | DELETED | DH1100 |
| DC1-RPP-L3-CX-4805 | **DELETED** DC1-RPP-A23-04 A/B L3 Startup | 2d | 2026-07-15 A | 2026-07-15 A | QTS-1020 | 100% | 2026-08-17 | 2026-08-18 | SQD | Commissioning | DH2300 | L3 | RPP | DELETED | DH1100 |
| DC1-RPP-L3-CX-4815 | **DELETED** DC1-RPP-A23-04 A/B BMS/EPMS Programming | 1d | 2026-07-15 A | 2026-07-15 A | QTS-1020 | 100% | 2026-08-19 | 2026-08-19 | PRM | Commissioning | DH2300 | L3 | RPP | DELETED | DH1100 |
| DC1-RPP-L3-CX-4825 | **DELETED** DC1-RPP-A23-05 A/B FTE | 1d | 2026-07-15 A | 2026-07-15 A | QTS-1020 | 100% | 2026-08-13 | 2026-08-13 | ROS | Commissioning | DH2300 | L3 | RPP | DELETED | DH1100 |
| DC1-RPP-L3-CX-4835 | **DELETED** DC1-RPP-A23-05 A/B L3 Startup | 2d | 2026-07-15 A | 2026-07-15 A | QTS-1020 | 100% | 2026-08-14 | 2026-08-17 | SQD | Commissioning | DH2300 | L3 | RPP | DELETED | DH1100 |
| DC1-RPP-L3-CX-4845 | **DELETED** DC1-RPP-A23-05 A/B BMS/EPMS Programming | 1d | 2026-07-15 A | 2026-07-15 A | QTS-1020 | 100% | 2026-08-18 | 2026-08-18 | PRM | Commissioning | DH2300 | L3 | RPP | DELETED | DH1100 |
| DC1-RPP-L3-CX-4855 | **DELETED** DC1-RPP-A23-06 A/B FTE | 1d | 2026-07-15 A | 2026-07-15 A | QTS-1020 | 100% | 2026-08-14 | 2026-08-14 | ROS | Commissioning | DH2300 | L3 | RPP | DELETED | DH1100 |
| DC1-RPP-L3-CX-4865 | **DELETED** DC1-RPP-A23-06 A/B L3 Startup | 2d | 2026-07-15 A | 2026-07-15 A | QTS-1020 | 100% | 2026-08-17 | 2026-08-18 | SQD | Commissioning | DH2300 | L3 | RPP | DELETED | DH1100 |
| DC1-RPP-L3-CX-4875 | **DELETED** DC1-RPP-A23-06 A/B BMS/EPMS Programming | 1d | 2026-07-15 A | 2026-07-15 A | QTS-1020 | 100% | 2026-08-19 | 2026-08-19 | PRM | Commissioning | DH2300 | L3 | RPP | DELETED | DH1100 |
| DC1-RPP-L3-CX-4885 | **DELETED** DC1-RPP-B23-01 A/B FTE | 1d | 2026-07-15 A | 2026-07-15 A | QTS-1020 | 100% | 2026-08-13 | 2026-08-13 | ROS | Commissioning | DH2300 | L3 | RPP | DELETED | DH1100 |
| DC1-RPP-L3-CX-4895 | **DELETED** DC1-RPP-B23-01 A/B L3 Startup | 2d | 2026-07-15 A | 2026-07-15 A | QTS-1020 | 100% | 2026-08-14 | 2026-08-17 | SQD | Commissioning | DH2300 | L3 | RPP | DELETED | DH1100 |
| DC1-RPP-L3-CX-4905 | **DELETED** DC1-RPP-B23-01 A/B BMS/EPMS Programming | 1d | 2026-07-15 A | 2026-07-15 A | QTS-1020 | 100% | 2026-08-18 | 2026-08-18 | PRM | Commissioning | DH2300 | L3 | RPP | DELETED | DH1100 |
| DC1-RPP-L3-CX-4915 | **DELETED** DC1-RPP-B23-02 A/B FTE | 1d | 2026-07-15 A | 2026-07-15 A | QTS-1020 | 100% | 2026-08-17 | 2026-08-17 | ROS | Commissioning | DH2300 | L3 | RPP | DELETED | DH1100 |
| DC1-RPP-L3-CX-4925 | **DELETED** DC1-RPP-B23-02 A/B L3 Startup | 2d | 2026-07-15 A | 2026-07-15 A | QTS-1020 | 100% | 2026-08-18 | 2026-08-19 | SQD | Commissioning | DH2300 | L3 | RPP | DELETED | DH1100 |
| DC1-RPP-L3-CX-4935 | **DELETED** DC1-RPP-B23-02 A/B BMS/EPMS Programming | 1d | 2026-07-15 A | 2026-07-15 A | QTS-1020 | 100% | 2026-08-20 | 2026-08-20 | PRM | Commissioning | DH2300 | L3 | RPP | DELETED | DH1100 |
| DC1-RPP-L3-CX-4945 | **DELETED** DC1-RPP-B23-03 A/B FTE | 1d | 2026-07-15 A | 2026-07-15 A | QTS-1020 | 100% | 2026-08-13 | 2026-08-13 | ROS | Commissioning | DH2300 | L3 | RPP | DELETED | DH1100 |
| DC1-RPP-L3-CX-4955 | **DELETED** DC1-RPP-B23-03 A/B L3 Startup | 2d | 2026-07-15 A | 2026-07-15 A | QTS-1020 | 100% | 2026-08-14 | 2026-08-17 | SQD | Commissioning | DH2300 | L3 | RPP | DELETED | DH1100 |
| DC1-RPP-L3-CX-4965 | **DELETED** DC1-RPP-B23-03 A/B BMS/EPMS Programming | 1d | 2026-07-15 A | 2026-07-15 A | QTS-1020 | 100% | 2026-08-18 | 2026-08-18 | PRM | Commissioning | DH2300 | L3 | RPP | DELETED | DH1100 |
| DC1-RPP-L3-CX-4975 | **DELETED** DC1-RPP-B23-04 A/B FTE | 1d | 2026-07-15 A | 2026-07-15 A | QTS-1020 | 100% | 2026-08-17 | 2026-08-17 | ROS | Commissioning | DH2300 | L3 | RPP | DELETED | DH1100 |
| DC1-RPP-L3-CX-4985 | **DELETED** DC1-RPP-B23-04 A/B L3 Startup | 2d | 2026-07-15 A | 2026-07-15 A | QTS-1020 | 100% | 2026-08-18 | 2026-08-19 | SQD | Commissioning | DH2300 | L3 | RPP | DELETED | DH1100 |
| DC1-RPP-L3-CX-4995 | **DELETED** DC1-RPP-B23-04 A/B BMS/EPMS Programming | 1d | 2026-07-15 A | 2026-07-15 A | QTS-1020 | 100% | 2026-08-20 | 2026-08-20 | PRM | Commissioning | DH2300 | L3 | RPP | DELETED | DH1100 |
| DC1-RPP-L3-CX-5005 | **DELETED** DC1-RPP-B23-05 A/B FTE | 1d | 2026-07-15 A | 2026-07-15 A | QTS-1020 | 100% | 2026-08-13 | 2026-08-13 | ROS | Commissioning | DH2300 | L3 | RPP | DELETED | DH1100 |
| DC1-RPP-L3-CX-5015 | **DELETED** DC1-RPP-B23-05 A/B L3 Startup | 2d | 2026-07-15 A | 2026-07-15 A | QTS-1020 | 100% | 2026-08-14 | 2026-08-17 | SQD | Commissioning | DH2300 | L3 | RPP | DELETED | DH1100 |
| DC1-RPP-L3-CX-5025 | **DELETED** DC1-RPP-B23-05 A/B BMS/EPMS Programming | 1d | 2026-07-15 A | 2026-07-15 A | QTS-1020 | 100% | 2026-08-18 | 2026-08-18 | PRM | Commissioning | DH2300 | L3 | RPP | DELETED | DH1100 |
| DC1-RPP-L3-CX-5035 | **DELETED** DC1-RPP-B23-06 A/B FTE | 1d | 2026-07-15 A | 2026-07-15 A | QTS-1020 | 100% | 2026-08-17 | 2026-08-17 | ROS | Commissioning | DH2300 | L3 | RPP | DELETED | DH1100 |

Notes:
- DC1-RPP-L2-3440: Steps: EC Installation Checklist; CC Installation Checklist; Vendor Pre-Energization Checklist; CXA Pre-Energization Inspection; PEI/Clean-Walk
- DC1-RPP-L2-3450: Steps: EC Installation Checklist; CC Installation Checklist; Vendor Pre-Energization Checklist; CXA Pre-Energization Inspection; PEI/Clean-Walk
- DC1-RPP-L2-3460: Steps: EC Installation Checklist; CC Installation Checklist; Vendor Pre-Energization Checklist; CXA Pre-Energization Inspection; PEI/Clean-Walk
- DC1-RPP-L2-3470: Steps: EC Installation Checklist; CC Installation Checklist; Vendor Pre-Energization Checklist; CXA Pre-Energization Inspection; PEI/Clean-Walk
- DC1-RPP-L2-3480: Steps: EC Installation Checklist; CC Installation Checklist; Vendor Pre-Energization Checklist; CXA Pre-Energization Inspection; PEI/Clean-Walk
- DC1-RPP-L2-3490: Steps: EC Installation Checklist; CC Installation Checklist; Vendor Pre-Energization Checklist; CXA Pre-Energization Inspection; PEI/Clean-Walk
- DC1-RPP-L2-3500: Steps: EC Installation Checklist; CC Installation Checklist; Vendor Pre-Energization Checklist; CXA Pre-Energization Inspection; PEI/Clean-Walk
- DC1-RPP-L2-3510: Steps: EC Installation Checklist; CC Installation Checklist; Vendor Pre-Energization Checklist; CXA Pre-Energization Inspection; PEI/Clean-Walk
- DC1-RPP-L2-3520: Steps: EC Installation Checklist; CC Installation Checklist; Vendor Pre-Energization Checklist; CXA Pre-Energization Inspection; PEI/Clean-Walk
- DC1-RPP-L2-3530: Steps: EC Installation Checklist; CC Installation Checklist; Vendor Pre-Energization Checklist; CXA Pre-Energization Inspection; PEI/Clean-Walk
- DC1-RPP-L2-3540: Steps: EC Installation Checklist; CC Installation Checklist; Vendor Pre-Energization Checklist; CXA Pre-Energization Inspection; PEI/Clean-Walk
- DC1-RPP-L2-3550: Steps: EC Installation Checklist; CC Installation Checklist; Vendor Pre-Energization Checklist; CXA Pre-Energization Inspection; PEI/Clean-Walk
- DC1-RPP-L2-3560: Steps: EC Installation Checklist; CC Installation Checklist; Vendor Pre-Energization Checklist; CXA Pre-Energization Inspection; PEI/Clean-Walk
- DC1-RPP-L2-3570: Steps: EC Installation Checklist; CC Installation Checklist; Vendor Pre-Energization Checklist; CXA Pre-Energization Inspection; PEI/Clean-Walk
- DC1-RPP-L2-3580: Steps: EC Installation Checklist; CC Installation Checklist; Vendor Pre-Energization Checklist; CXA Pre-Energization Inspection; PEI/Clean-Walk
- DC1-RPP-L2-3590: Steps: EC Installation Checklist; CC Installation Checklist; Vendor Pre-Energization Checklist; CXA Pre-Energization Inspection; PEI/Clean-Walk
- DC1-RPP-L2-3600: Steps: EC Installation Checklist; CC Installation Checklist; Vendor Pre-Energization Checklist; CXA Pre-Energization Inspection; PEI/Clean-Walk
- DC1-RPP-L2-3610: Steps: EC Installation Checklist; CC Installation Checklist; Vendor Pre-Energization Checklist; CXA Pre-Energization Inspection; PEI/Clean-Walk
- DC1-RPP-L2-3620: Steps: EC Installation Checklist; CC Installation Checklist; Vendor Pre-Energization Checklist; CXA Pre-Energization Inspection; PEI/Clean-Walk
- DC1-RPP-L2-3630: Steps: EC Installation Checklist; CC Installation Checklist; Vendor Pre-Energization Checklist; CXA Pre-Energization Inspection; PEI/Clean-Walk
- DC1-RPP-L2-3640: Steps: EC Installation Checklist; CC Installation Checklist; Vendor Pre-Energization Checklist; CXA Pre-Energization Inspection; PEI/Clean-Walk
- DC1-RPP-L2-3650: Steps: EC Installation Checklist; CC Installation Checklist; Vendor Pre-Energization Checklist; CXA Pre-Energization Inspection; PEI/Clean-Walk
- DC1-RPP-L2-3660: Steps: EC Installation Checklist; CC Installation Checklist; Vendor Pre-Energization Checklist; CXA Pre-Energization Inspection; PEI/Clean-Walk
- DC1-RPP-L2-3670: Steps: EC Installation Checklist; CC Installation Checklist; Vendor Pre-Energization Checklist; CXA Pre-Energization Inspection; PEI/Clean-Walk
- DC1-RPP-L2-3680: Steps: EC Installation Checklist; CC Installation Checklist; Vendor Pre-Energization Checklist; CXA Pre-Energization Inspection; PEI/Clean-Walk
- DC1-RPP-L2-3690: Steps: EC Installation Checklist; CC Installation Checklist; Vendor Pre-Energization Checklist; CXA Pre-Energization Inspection; PEI/Clean-Walk
- DC1-RPP-L2-3700: Steps: EC Installation Checklist; CC Installation Checklist; Vendor Pre-Energization Checklist; CXA Pre-Energization Inspection; PEI/Clean-Walk
- DC1-RPP-L2-3710: Steps: EC Installation Checklist; CC Installation Checklist; Vendor Pre-Energization Checklist; CXA Pre-Energization Inspection; PEI/Clean-Walk
- DC1-RPP-L2-3720: Steps: EC Installation Checklist; CC Installation Checklist; Vendor Pre-Energization Checklist; CXA Pre-Energization Inspection; PEI/Clean-Walk
- DC1-RPP-L2-3730: Steps: EC Installation Checklist; CC Installation Checklist; Vendor Pre-Energization Checklist; CXA Pre-Energization Inspection; PEI/Clean-Walk
- DC1-RPP-L2-3740: Steps: EC Installation Checklist; CC Installation Checklist; Vendor Pre-Energization Checklist; CXA Pre-Energization Inspection; PEI/Clean-Walk
- DC1-RPP-L2-3750: Steps: EC Installation Checklist; CC Installation Checklist; Vendor Pre-Energization Checklist; CXA Pre-Energization Inspection; PEI/Clean-Walk
- DC1-RPP-L2-3760: Steps: EC Installation Checklist; CC Installation Checklist; Vendor Pre-Energization Checklist; CXA Pre-Energization Inspection; PEI/Clean-Walk
- DC1-RPP-L2-3770: Steps: EC Installation Checklist; CC Installation Checklist; Vendor Pre-Energization Checklist; CXA Pre-Energization Inspection; PEI/Clean-Walk
- DC1-RPP-L2-3780: Steps: EC Installation Checklist; CC Installation Checklist; Vendor Pre-Energization Checklist; CXA Pre-Energization Inspection; PEI/Clean-Walk
- DC1-RPP-L2-3790: Steps: EC Installation Checklist; CC Installation Checklist; Vendor Pre-Energization Checklist; CXA Pre-Energization Inspection; PEI/Clean-Walk
- DC1-RPP-L3-CX-4715: Steps: EC Startup Report; Vendor Startup
- DC1-RPP-L3-CX-4745: Steps: EC Startup Report; Vendor Startup
- DC1-RPP-L3-CX-4775: Steps: EC Startup Report; Vendor Startup
- DC1-RPP-L3-CX-4805: Steps: EC Startup Report; Vendor Startup
- DC1-RPP-L3-CX-4835: Steps: EC Startup Report; Vendor Startup
- DC1-RPP-L3-CX-4865: Steps: EC Startup Report; Vendor Startup
- DC1-RPP-L3-CX-4895: Steps: EC Startup Report; Vendor Startup
- DC1-RPP-L3-CX-4925: Steps: EC Startup Report; Vendor Startup
- DC1-RPP-L3-CX-4955: Steps: EC Startup Report; Vendor Startup
- DC1-RPP-L3-CX-4985: Steps: EC Startup Report; Vendor Startup
- DC1-RPP-L3-CX-5015: Steps: EC Startup Report; Vendor Startup

| ID | Activity | Duration | Start | Finish | Predecessors | Complete | Planned start | Planned finish | Vendor Responsible Party | Layton Discipline | Location | CX Level | Equipment | DELETED | D |
| --- | --- | --- | --- | --- | --- | --- | --- | --- | --- | --- | --- | --- | --- | --- | --- |
| DC1-RPP-L3-CX-5045 | **DELETED** DC1-RPP-B23-06 A/B L3 Startup | 2d | 2026-07-15 A | 2026-07-15 A | QTS-1020 | 100% | 2026-08-18 | 2026-08-19 | SQD | Commissioning | DH2300 | L3 | RPP | DELETED | DH1100 |
| DC1-RPP-L3-CX-5055 | **DELETED** DC1-RPP-B23-06 A/B BMS/EPMS Programming | 1d | 2026-07-15 A | 2026-07-15 A | QTS-1020 | 100% | 2026-08-20 | 2026-08-20 | PRM | Commissioning | DH2300 | L3 | RPP | DELETED | DH1100 |
| DC1-RPP-L3-CX-5065 | **DELETED** DC1-RPP-C23-01 A/B FTE | 1d | 2026-07-15 A | 2026-07-15 A | QTS-1020 | 100% | 2026-08-13 | 2026-08-13 | ROS | Commissioning | DH2300 | L3 | RPP | DELETED | DH1100 |
| DC1-RPP-L3-CX-5075 | **DELETED** DC1-RPP-C23-01 A/B L3 Startup | 2d | 2026-07-15 A | 2026-07-15 A | QTS-1020 | 100% | 2026-08-14 | 2026-08-17 | SQD | Commissioning | DH2300 | L3 | RPP | DELETED | DH1100 |
| DC1-RPP-L3-CX-5085 | **DELETED** DC1-RPP-C23-01 A/B BMS/EPMS Programming | 1d | 2026-07-15 A | 2026-07-15 A | QTS-1020 | 100% | 2026-08-18 | 2026-08-18 | PRM | Commissioning | DH2300 | L3 | RPP | DELETED | DH1100 |
| DC1-RPP-L3-CX-5095 | **DELETED** DC1-RPP-C23-02 A/B FTE | 1d | 2026-07-15 A | 2026-07-15 A | QTS-1020 | 100% | 2026-08-17 | 2026-08-17 | ROS | Commissioning | DH2300 | L3 | RPP | DELETED | DH1100 |
| DC1-RPP-L3-CX-5105 | **DELETED** DC1-RPP-C23-02 A/B L3 Startup | 2d | 2026-07-15 A | 2026-07-15 A | QTS-1020 | 100% | 2026-08-18 | 2026-08-19 | SQD | Commissioning | DH2300 | L3 | RPP | DELETED | DH1100 |
| DC1-RPP-L3-CX-5115 | **DELETED** DC1-RPP-C23-02 A/B BMS/EPMS Programming | 1d | 2026-07-15 A | 2026-07-15 A | QTS-1020 | 100% | 2026-08-20 | 2026-08-20 | PRM | Commissioning | DH2300 | L3 | RPP | DELETED | DH1100 |
| DC1-RPP-L3-CX-5125 | **DELETED** DC1-RPP-C23-03 A/B FTE | 1d | 2026-07-15 A | 2026-07-15 A | QTS-1020 | 100% | 2026-08-13 | 2026-08-13 | ROS | Commissioning | DH2300 | L3 | RPP | DELETED | DH1100 |
| DC1-RPP-L3-CX-5135 | **DELETED** DC1-RPP-C23-03 A/B L3 Startup | 2d | 2026-07-15 A | 2026-07-15 A | QTS-1020 | 100% | 2026-08-14 | 2026-08-17 | SQD | Commissioning | DH2300 | L3 | RPP | DELETED | DH1100 |
| DC1-RPP-L3-CX-5145 | **DELETED** DC1-RPP-C23-03 A/B BMS/EPMS Programming | 1d | 2026-07-15 A | 2026-07-15 A | QTS-1020 | 100% | 2026-08-18 | 2026-08-18 | PRM | Commissioning | DH2300 | L3 | RPP | DELETED | DH1100 |
| DC1-RPP-L3-CX-5155 | **DELETED** DC1-RPP-C23-04 A/B FTE | 1d | 2026-07-15 A | 2026-07-15 A | QTS-1020 | 100% | 2026-08-17 | 2026-08-17 | ROS | Commissioning | DH2300 | L3 | RPP | DELETED | DH1100 |
| DC1-RPP-L3-CX-5165 | **DELETED** DC1-RPP-C23-04 A/B L3 Startup | 2d | 2026-07-15 A | 2026-07-15 A | QTS-1020 | 100% | 2026-08-18 | 2026-08-19 | SQD | Commissioning | DH2300 | L3 | RPP | DELETED | DH1100 |
| DC1-RPP-L3-CX-5175 | **DELETED** DC1-RPP-C23-04 A/B BMS/EPMS Programming | 1d | 2026-07-15 A | 2026-07-15 A | QTS-1020 | 100% | 2026-08-20 | 2026-08-20 | PRM | Commissioning | DH2300 | L3 | RPP | DELETED | DH1100 |
| DC1-RPP-L3-CX-5185 | **DELETED** DC1-RPP-C23-05 A/B FTE | 1d | 2026-07-15 A | 2026-07-15 A | QTS-1020 | 100% | 2026-08-13 | 2026-08-13 | ROS | Commissioning | DH2300 | L3 | RPP | DELETED | DH1100 |
| DC1-RPP-L3-CX-5195 | **DELETED** DC1-RPP-C23-05 A/B L3 Startup | 2d | 2026-07-15 A | 2026-07-15 A | QTS-1020 | 100% | 2026-08-14 | 2026-08-17 | SQD | Commissioning | DH2300 | L3 | RPP | DELETED | DH1100 |
| DC1-RPP-L3-CX-5205 | **DELETED** DC1-RPP-C23-05 A/B BMS/EPMS Programming | 1d | 2026-07-15 A | 2026-07-15 A | QTS-1020 | 100% | 2026-08-18 | 2026-08-18 | PRM | Commissioning | DH2300 | L3 | RPP | DELETED | DH1100 |
| DC1-RPP-L3-CX-5215 | **DELETED** DC1-RPP-C23-06 A/B FTE | 1d | 2026-07-15 A | 2026-07-15 A | QTS-1020 | 100% | 2026-08-17 | 2026-08-17 | ROS | Commissioning | DH2300 | L3 | RPP | DELETED | DH1100 |
| DC1-RPP-L3-CX-5225 | **DELETED** DC1-RPP-C23-06 A/B L3 Startup | 2d | 2026-07-15 A | 2026-07-15 A | QTS-1020 | 100% | 2026-08-18 | 2026-08-19 | SQD | Commissioning | DH2300 | L3 | RPP | DELETED | DH1100 |
| DC1-RPP-L3-CX-5235 | **DELETED** DC1-RPP-C23-06 A/B BMS/EPMS Programming | 1d | 2026-07-15 A | 2026-07-15 A | QTS-1020 | 100% | 2026-08-20 | 2026-08-20 | PRM | Commissioning | DH2300 | L3 | RPP | DELETED | DH1100 |
| DC1-RPP-L3-CX-5245 | **DELETED** DC1-RPP-D23-01 A/B FTE | 1d | 2026-07-15 A | 2026-07-15 A | QTS-1020 | 100% | 2026-08-13 | 2026-08-13 | ROS | Commissioning | DH2300 | L3 | RPP | DELETED | DH1100 |
| DC1-RPP-L3-CX-5255 | **DELETED** DC1-RPP-D23-01 A/B L3 Startup | 2d | 2026-07-15 A | 2026-07-15 A | QTS-1020 | 100% | 2026-08-14 | 2026-08-17 | SQD | Commissioning | DH2300 | L3 | RPP | DELETED | DH1100 |
| DC1-RPP-L3-CX-5265 | **DELETED** DC1-RPP-D23-01 A/B BMS/EPMS Programming | 1d | 2026-07-15 A | 2026-07-15 A | QTS-1020 | 100% | 2026-08-18 | 2026-08-18 | PRM | Commissioning | DH2300 | L3 | RPP | DELETED | DH1100 |
| DC1-RPP-L3-CX-5275 | **DELETED** DC1-RPP-D23-02 A/B FTE | 1d | 2026-07-15 A | 2026-07-15 A | QTS-1020 | 100% | 2026-08-17 | 2026-08-17 | ROS | Commissioning | DH2300 | L3 | RPP | DELETED | DH1100 |
| DC1-RPP-L3-CX-5285 | **DELETED** DC1-RPP-D23-02 A/B L3 Startup | 2d | 2026-07-15 A | 2026-07-15 A | QTS-1020 | 100% | 2026-08-18 | 2026-08-19 | SQD | Commissioning | DH2300 | L3 | RPP | DELETED | DH1100 |
| DC1-RPP-L3-CX-5295 | **DELETED** DC1-RPP-D23-02 A/B BMS/EPMS Programming | 1d | 2026-07-15 A | 2026-07-15 A | QTS-1020 | 100% | 2026-08-20 | 2026-08-20 | PRM | Commissioning | DH2300 | L3 | RPP | DELETED | DH1100 |
| DC1-RPP-L3-CX-5305 | **DELETED** DC1-RPP-D23-03 A/B FTE | 1d | 2026-07-15 A | 2026-07-15 A | QTS-1020 | 100% | 2026-08-13 | 2026-08-13 | ROS | Commissioning | DH2300 | L3 | RPP | DELETED | DH1100 |
| DC1-RPP-L3-CX-5315 | **DELETED** DC1-RPP-D23-03 A/B L3 Startup | 2d | 2026-07-15 A | 2026-07-15 A | QTS-1020 | 100% | 2026-08-14 | 2026-08-17 | SQD | Commissioning | DH2300 | L3 | RPP | DELETED | DH1100 |
| DC1-RPP-L3-CX-5325 | **DELETED** DC1-RPP-D23-03 A/B BMS/EPMS Programming | 1d | 2026-07-15 A | 2026-07-15 A | QTS-1020 | 100% | 2026-08-18 | 2026-08-18 | PRM | Commissioning | DH2300 | L3 | RPP | DELETED | DH1100 |
| DC1-RPP-L3-CX-5335 | **DELETED** DC1-RPP-D23-04 A/B FTE | 1d | 2026-07-15 A | 2026-07-15 A | QTS-1020 | 100% | 2026-08-17 | 2026-08-17 | ROS | Commissioning | DH2300 | L3 | RPP | DELETED | DH1100 |
| DC1-RPP-L3-CX-5345 | **DELETED** DC1-RPP-D23-04 A/B L3 Startup | 2d | 2026-07-15 A | 2026-07-15 A | QTS-1020 | 100% | 2026-08-18 | 2026-08-19 | SQD | Commissioning | DH2300 | L3 | RPP | DELETED | DH1100 |
| DC1-RPP-L3-CX-5355 | **DELETED** DC1-RPP-D23-04 A/B BMS/EPMS Programming | 1d | 2026-07-15 A | 2026-07-15 A | QTS-1020 | 100% | 2026-08-20 | 2026-08-20 | PRM | Commissioning | DH2300 | L3 | RPP | DELETED | DH1100 |
| DC1-RPP-L3-CX-5365 | **DELETED** DC1-RPP-D23-05 A/B FTE | 1d | 2026-07-15 A | 2026-07-15 A | QTS-1020 | 100% | 2026-08-13 | 2026-08-13 | ROS | Commissioning | DH2300 | L3 | RPP | DELETED | DH1100 |
| DC1-RPP-L3-CX-5375 | **DELETED** DC1-RPP-D23-05 A/B L3 Startup | 2d | 2026-07-15 A | 2026-07-15 A | QTS-1020 | 100% | 2026-08-14 | 2026-08-17 | SQD | Commissioning | DH2300 | L3 | RPP | DELETED | DH1100 |
| DC1-RPP-L3-CX-5385 | **DELETED** DC1-RPP-D23-05 A/B BMS/EPMS Programming | 1d | 2026-07-15 A | 2026-07-15 A | QTS-1020 | 100% | 2026-08-18 | 2026-08-18 | PRM | Commissioning | DH2300 | L3 | RPP | DELETED | DH1100 |
| DC1-RPP-L3-CX-5395 | **DELETED** DC1-RPP-D23-06 A/B FTE | 1d | 2026-07-15 A | 2026-07-15 A | QTS-1020 | 100% | 2026-08-17 | 2026-08-17 | ROS | Commissioning | DH2300 | L3 | RPP | DELETED | DH1100 |
| DC1-RPP-L3-CX-5405 | **DELETED** DC1-RPP-D23-06 A/B L3 Startup | 2d | 2026-07-15 A | 2026-07-15 A | QTS-1020 | 100% | 2026-08-18 | 2026-08-19 | SQD | Commissioning | DH2300 | L3 | RPP | DELETED | DH1100 |
| DC1-RPP-L3-CX-5415 | **DELETED** DC1-RPP-D23-06 A/B BMS/EPMS Programming | 1d | 2026-07-15 A | 2026-07-15 A | QTS-1020 | 100% | 2026-08-20 | 2026-08-20 | PRM | Commissioning | DH2300 | L3 | RPP | DELETED | DH1100 |
| DC1-RPP-L3-CX-5425 | **DELETED** DC1-RPP-E23-01 A/B FTE | 1d | 2026-07-15 A | 2026-07-15 A | QTS-1020 | 100% | 2026-08-13 | 2026-08-13 | ROS | Commissioning | DH2300 | L3 | RPP | DELETED | DH1100 |
| DC1-RPP-L3-CX-5435 | **DELETED** DC1-RPP-E23-01 A/B L3 Startup | 2d | 2026-07-15 A | 2026-07-15 A | QTS-1020 | 100% | 2026-08-14 | 2026-08-17 | SQD | Commissioning | DH2300 | L3 | RPP | DELETED | DH1100 |
| DC1-RPP-L3-CX-5445 | **DELETED** DC1-RPP-E23-01 A/B BMS/EPMS Programming | 1d | 2026-07-15 A | 2026-07-15 A | QTS-1020 | 100% | 2026-08-18 | 2026-08-18 | PRM | Commissioning | DH2300 | L3 | RPP | DELETED | DH1100 |
| DC1-RPP-L3-CX-5455 | **DELETED** DC1-RPP-E23-02 A/B FTE | 1d | 2026-07-15 A | 2026-07-15 A | QTS-1020 | 100% | 2026-08-17 | 2026-08-17 | ROS | Commissioning | DH2300 | L3 | RPP | DELETED | DH1100 |
| DC1-RPP-L3-CX-5465 | **DELETED** DC1-RPP-E23-02 A/B L3 Startup | 2d | 2026-07-15 A | 2026-07-15 A | QTS-1020 | 100% | 2026-08-18 | 2026-08-19 | SQD | Commissioning | DH2300 | L3 | RPP | DELETED | DH1100 |
| DC1-RPP-L3-CX-5475 | **DELETED** DC1-RPP-E23-02 A/B BMS/EPMS Programming | 1d | 2026-07-15 A | 2026-07-15 A | QTS-1020 | 100% | 2026-08-20 | 2026-08-20 | PRM | Commissioning | DH2300 | L3 | RPP | DELETED | DH1100 |
| DC1-RPP-L3-CX-5485 | **DELETED** DC1-RPP-E23-03 A/B FTE | 1d | 2026-07-15 A | 2026-07-15 A | QTS-1020 | 100% | 2026-08-13 | 2026-08-13 | ROS | Commissioning | DH2300 | L3 | RPP | DELETED | DH1100 |
| DC1-RPP-L3-CX-5495 | **DELETED** DC1-RPP-E23-03 A/B L3 Startup | 2d | 2026-07-15 A | 2026-07-15 A | QTS-1020 | 100% | 2026-08-14 | 2026-08-17 | SQD | Commissioning | DH2300 | L3 | RPP | DELETED | DH1100 |
| DC1-RPP-L3-CX-5505 | **DELETED** DC1-RPP-E23-03 A/B BMS/EPMS Programming | 1d | 2026-07-15 A | 2026-07-15 A | QTS-1020 | 100% | 2026-08-18 | 2026-08-18 | PRM | Commissioning | DH2300 | L3 | RPP | DELETED | DH1100 |
| DC1-RPP-L3-CX-5515 | **DELETED** DC1-RPP-E23-04 A/B FTE | 1d | 2026-07-15 A | 2026-07-15 A | QTS-1020 | 100% | 2026-08-17 | 2026-08-17 | ROS | Commissioning | DH2300 | L3 | RPP | DELETED | DH1100 |
| DC1-RPP-L3-CX-5525 | **DELETED** DC1-RPP-E23-04 A/B L3 Startup | 2d | 2026-07-15 A | 2026-07-15 A | QTS-1020 | 100% | 2026-08-18 | 2026-08-19 | SQD | Commissioning | DH2300 | L3 | RPP | DELETED | DH1100 |
| DC1-RPP-L3-CX-5535 | **DELETED** DC1-RPP-E23-04 A/B BMS/EPMS Programming | 1d | 2026-07-15 A | 2026-07-15 A | QTS-1020 | 100% | 2026-08-20 | 2026-08-20 | PRM | Commissioning | DH2300 | L3 | RPP | DELETED | DH1100 |
| DC1-RPP-L3-CX-5545 | **DELETED** DC1-RPP-E23-05 A/B FTE | 1d | 2026-07-15 A | 2026-07-15 A | QTS-1020 | 100% | 2026-08-13 | 2026-08-13 | ROS | Commissioning | DH2300 | L3 | RPP | DELETED | DH1100 |
| DC1-RPP-L3-CX-5555 | **DELETED** DC1-RPP-E23-05 A/B L3 Startup | 2d | 2026-07-15 A | 2026-07-15 A | QTS-1020 | 100% | 2026-08-14 | 2026-08-17 | SQD | Commissioning | DH2300 | L3 | RPP | DELETED | DH1100 |
| DC1-RPP-L3-CX-5565 | **DELETED** DC1-RPP-E23-05 A/B BMS/EPMS Programming | 1d | 2026-07-15 A | 2026-07-15 A | QTS-1020 | 100% | 2026-08-18 | 2026-08-18 | PRM | Commissioning | DH2300 | L3 | RPP | DELETED | DH1100 |
| DC1-RPP-L3-CX-5575 | **DELETED** DC1-RPP-E23-06 A/B FTE | 1d | 2026-07-15 A | 2026-07-15 A | QTS-1020 | 100% | 2026-08-17 | 2026-08-17 | ROS | Commissioning | DH2300 | L3 | RPP | DELETED | DH1100 |
| DC1-RPP-L3-CX-5585 | **DELETED** DC1-RPP-E23-06 A/B L3 Startup | 2d | 2026-07-15 A | 2026-07-15 A | QTS-1020 | 100% | 2026-08-18 | 2026-08-19 | SQD | Commissioning | DH2300 | L3 | RPP | DELETED | DH1100 |
| DC1-RPP-L3-CX-5595 | **DELETED** DC1-RPP-E23-06 A/B BMS/EPMS Programming | 1d | 2026-07-15 A | 2026-07-15 A | QTS-1020 | 100% | 2026-08-20 | 2026-08-20 | PRM | Commissioning | DH2300 | L3 | RPP | DELETED | DH1100 |
| DC1-RPP-L3-CX-5605 | **DELETED** DC1-RPP-F23-01 A/B FTE | 1d | 2026-07-15 A | 2026-07-15 A | QTS-1020 | 100% | 2026-08-13 | 2026-08-13 | ROS | Commissioning | DH2300 | L3 | RPP | DELETED | DH1100 |
| DC1-RPP-L3-CX-5615 | **DELETED** DC1-RPP-F23-01 A/B L3 Startup | 2d | 2026-07-15 A | 2026-07-15 A | QTS-1020 | 100% | 2026-08-14 | 2026-08-17 | SQD | Commissioning | DH2300 | L3 | RPP | DELETED | DH1100 |
| DC1-RPP-L3-CX-5625 | **DELETED** DC1-RPP-F23-01 A/B BMS/EPMS Programming | 1d | 2026-07-15 A | 2026-07-15 A | QTS-1020 | 100% | 2026-08-18 | 2026-08-18 | PRM | Commissioning | DH2300 | L3 | RPP | DELETED | DH1100 |
| DC1-RPP-L3-CX-5635 | **DELETED** DC1-RPP-F23-02 A/B FTE | 1d | 2026-07-15 A | 2026-07-15 A | QTS-1020 | 100% | 2026-08-17 | 2026-08-17 | ROS | Commissioning | DH2300 | L3 | RPP | DELETED | DH1100 |
| DC1-RPP-L3-CX-5645 | **DELETED** DC1-RPP-F23-02 A/B L3 Startup | 2d | 2026-07-15 A | 2026-07-15 A | QTS-1020 | 100% | 2026-08-18 | 2026-08-19 | SQD | Commissioning | DH2300 | L3 | RPP | DELETED | DH1100 |
| DC1-RPP-L3-CX-5655 | **DELETED** DC1-RPP-F23-02 A/B BMS/EPMS Programming | 1d | 2026-07-15 A | 2026-07-15 A | QTS-1020 | 100% | 2026-08-20 | 2026-08-20 | PRM | Commissioning | DH2300 | L3 | RPP | DELETED | DH1100 |
| DC1-RPP-L3-CX-5665 | **DELETED** DC1-RPP-F23-03 A/B FTE | 1d | 2026-07-15 A | 2026-07-15 A | QTS-1020 | 100% | 2026-08-13 | 2026-08-13 | ROS | Commissioning | DH2300 | L3 | RPP | DELETED | DH1100 |
| DC1-RPP-L3-CX-5675 | **DELETED** DC1-RPP-F23-03 A/B L3 Startup | 2d | 2026-07-15 A | 2026-07-15 A | QTS-1020 | 100% | 2026-08-14 | 2026-08-17 | SQD | Commissioning | DH2300 | L3 | RPP | DELETED | DH1100 |
| DC1-RPP-L3-CX-5685 | **DELETED** DC1-RPP-F23-03 A/B BMS/EPMS Programming | 1d | 2026-07-15 A | 2026-07-15 A | QTS-1020 | 100% | 2026-08-18 | 2026-08-18 | PRM | Commissioning | DH2300 | L3 | RPP | DELETED | DH1100 |
| DC1-RPP-L3-CX-5695 | **DELETED** DC1-RPP-F23-04 A/B FTE | 1d | 2026-07-15 A | 2026-07-15 A | QTS-1020 | 100% | 2026-08-17 | 2026-08-17 | ROS | Commissioning | DH2300 | L3 | RPP | DELETED | DH1100 |
| DC1-RPP-L3-CX-5705 | **DELETED** DC1-RPP-F23-04 A/B L3 Startup | 2d | 2026-07-15 A | 2026-07-15 A | QTS-1020 | 100% | 2026-08-18 | 2026-08-19 | SQD | Commissioning | DH2300 | L3 | RPP | DELETED | DH1100 |
| DC1-RPP-L3-CX-5715 | **DELETED** DC1-RPP-F23-04 A/B BMS/EPMS Programming | 1d | 2026-07-15 A | 2026-07-15 A | QTS-1020 | 100% | 2026-08-20 | 2026-08-20 | PRM | Commissioning | DH2300 | L3 | RPP | DELETED | DH1100 |
| DC1-RPP-L3-CX-5725 | **DELETED** DC1-RPP-F23-05 A/B FTE | 1d | 2026-07-15 A | 2026-07-15 A | QTS-1020 | 100% | 2026-08-13 | 2026-08-13 | ROS | Commissioning | DH2300 | L3 | RPP | DELETED | DH1100 |
| DC1-RPP-L3-CX-5735 | **DELETED** DC1-RPP-F23-05 A/B L3 Startup | 2d | 2026-07-15 A | 2026-07-15 A | QTS-1020 | 100% | 2026-08-14 | 2026-08-17 | SQD | Commissioning | DH2300 | L3 | RPP | DELETED | DH1100 |

Notes:
- DC1-RPP-L3-CX-5045: Steps: EC Startup Report; Vendor Startup
- DC1-RPP-L3-CX-5075: Steps: EC Startup Report; Vendor Startup
- DC1-RPP-L3-CX-5105: Steps: EC Startup Report; Vendor Startup
- DC1-RPP-L3-CX-5135: Steps: EC Startup Report; Vendor Startup
- DC1-RPP-L3-CX-5165: Steps: EC Startup Report; Vendor Startup
- DC1-RPP-L3-CX-5195: Steps: EC Startup Report; Vendor Startup
- DC1-RPP-L3-CX-5225: Steps: EC Startup Report; Vendor Startup
- DC1-RPP-L3-CX-5255: Steps: EC Startup Report; Vendor Startup
- DC1-RPP-L3-CX-5285: Steps: EC Startup Report; Vendor Startup
- DC1-RPP-L3-CX-5315: Steps: EC Startup Report; Vendor Startup
- DC1-RPP-L3-CX-5345: Steps: EC Startup Report; Vendor Startup
- DC1-RPP-L3-CX-5375: Steps: EC Startup Report; Vendor Startup
- DC1-RPP-L3-CX-5405: Steps: EC Startup Report; Vendor Startup
- DC1-RPP-L3-CX-5435: Steps: EC Startup Report; Vendor Startup
- DC1-RPP-L3-CX-5465: Steps: EC Startup Report; Vendor Startup
- DC1-RPP-L3-CX-5495: Steps: EC Startup Report; Vendor Startup
- DC1-RPP-L3-CX-5525: Steps: EC Startup Report; Vendor Startup
- DC1-RPP-L3-CX-5555: Steps: EC Startup Report; Vendor Startup
- DC1-RPP-L3-CX-5585: Steps: EC Startup Report; Vendor Startup
- DC1-RPP-L3-CX-5615: Steps: EC Startup Report; Vendor Startup
- DC1-RPP-L3-CX-5645: Steps: EC Startup Report; Vendor Startup
- DC1-RPP-L3-CX-5675: Steps: EC Startup Report; Vendor Startup
- DC1-RPP-L3-CX-5705: Steps: EC Startup Report; Vendor Startup
- DC1-RPP-L3-CX-5735: Steps: EC Startup Report; Vendor Startup

| ID | Activity | Duration | Start | Finish | Predecessors | Complete | Planned start | Planned finish | Vendor Responsible Party | Layton Discipline | Location | CX Level | Equipment | DELETED | D |
| --- | --- | --- | --- | --- | --- | --- | --- | --- | --- | --- | --- | --- | --- | --- | --- |
| DC1-RPP-L3-CX-5745 | **DELETED** DC1-RPP-F23-05 A/B BMS/EPMS Programming | 1d | 2026-07-15 A | 2026-07-15 A | QTS-1020 | 100% | 2026-08-18 | 2026-08-18 | PRM | Commissioning | DH2300 | L3 | RPP | DELETED | DH1100 |
| DC1-RPP-L3-CX-5755 | **DELETED** DC1-RPP-F23-06 A/B FTE | 1d | 2026-07-15 A | 2026-07-15 A | QTS-1020 | 100% | 2026-08-17 | 2026-08-17 | ROS | Commissioning | DH2300 | L3 | RPP | DELETED | DH1100 |
| DC1-RPP-L3-CX-5765 | **DELETED** DC1-RPP-F23-06 A/B L3 Startup | 2d | 2026-07-15 A | 2026-07-15 A | QTS-1020 | 100% | 2026-08-18 | 2026-08-19 | SQD | Commissioning | DH2300 | L3 | RPP | DELETED | DH1100 |
| DC1-RPP-L3-CX-5775 | **DELETED** DC1-RPP-F23-06 A/B BMS/EPMS Programming | 1d | 2026-07-15 A | 2026-07-15 A | QTS-1020 | 100% | 2026-08-20 | 2026-08-20 | PRM | Commissioning | DH2300 | L3 | RPP | DELETED | DH1100 |
| DC1-RPP-L3-CX-5785 | **DELETED** DC1-RPP-A13-01 A/B FTE | 1d | 2026-07-15 A | 2026-07-15 A | QTS-1020 | 100% | 2026-08-13 | 2026-08-13 | ROS | Commissioning | DH1300 | L3 | RPP | DELETED | DH1100 |
| DC1-RPP-L3-CX-5795 | **DELETED** DC1-RPP-A13-01 A/B L3 Startup | 2d | 2026-07-15 A | 2026-07-15 A | QTS-1020 | 100% | 2026-08-14 | 2026-08-17 | SQD | Commissioning | DH1300 | L3 | RPP | DELETED | DH1100 |
| DC1-RPP-L3-CX-5805 | **DELETED** DC1-RPP-A13-01 A/B BMS/EPMS Programming | 1d | 2026-07-15 A | 2026-07-15 A | QTS-1020 | 100% | 2026-08-18 | 2026-08-18 | PRM | Commissioning | DH1300 | L3 | RPP | DELETED | DH1100 |
| DC1-RPP-L3-CX-5815 | **DELETED** DC1-RPP-A13-02 A/B FTE | 1d | 2026-07-15 A | 2026-07-15 A | QTS-1020 | 100% | 2026-08-14 | 2026-08-14 | ROS | Commissioning | DH1300 | L3 | RPP | DELETED | DH1100 |
| DC1-RPP-L3-CX-5825 | **DELETED** DC1-RPP-A13-02 A/B L3 Startup | 2d | 2026-07-15 A | 2026-07-15 A | QTS-1020 | 100% | 2026-08-17 | 2026-08-18 | SQD | Commissioning | DH1300 | L3 | RPP | DELETED | DH1100 |
| DC1-RPP-L3-CX-5835 | **DELETED** DC1-RPP-A13-02 A/B BMS/EPMS Programming | 1d | 2026-07-15 A | 2026-07-15 A | QTS-1020 | 100% | 2026-08-19 | 2026-08-19 | PRM | Commissioning | DH1300 | L3 | RPP | DELETED | DH1100 |
| DC1-RPP-L3-CX-5845 | **DELETED** DC1-RPP-A13-03 A/B FTE | 1d | 2026-07-15 A | 2026-07-15 A | QTS-1020 | 100% | 2026-08-13 | 2026-08-13 | ROS | Commissioning | DH1300 | L3 | RPP | DELETED | DH1100 |
| DC1-RPP-L3-CX-5855 | **DELETED** DC1-RPP-A13-03 A/B L3 Startup | 2d | 2026-07-15 A | 2026-07-15 A | QTS-1020 | 100% | 2026-08-14 | 2026-08-17 | SQD | Commissioning | DH1300 | L3 | RPP | DELETED | DH1100 |
| DC1-RPP-L3-CX-5865 | **DELETED** DC1-RPP-A13-03 A/B BMS/EPMS Programming | 1d | 2026-07-15 A | 2026-07-15 A | QTS-1020 | 100% | 2026-08-18 | 2026-08-18 | PRM | Commissioning | DH1300 | L3 | RPP | DELETED | DH1100 |
| DC1-RPP-L3-CX-5875 | **DELETED** DC1-RPP-A13-04 A/B FTE | 1d | 2026-07-15 A | 2026-07-15 A | QTS-1020 | 100% | 2026-08-14 | 2026-08-14 | ROS | Commissioning | DH1300 | L3 | RPP | DELETED | DH1100 |
| DC1-RPP-L3-CX-5885 | **DELETED** DC1-RPP-A13-04 A/B L3 Startup | 2d | 2026-07-15 A | 2026-07-15 A | QTS-1020 | 100% | 2026-08-17 | 2026-08-18 | SQD | Commissioning | DH1300 | L3 | RPP | DELETED | DH1100 |
| DC1-RPP-L3-CX-5895 | **DELETED** DC1-RPP-A13-04 A/B BMS/EPMS Programming | 1d | 2026-07-15 A | 2026-07-15 A | QTS-1020 | 100% | 2026-08-19 | 2026-08-19 | PRM | Commissioning | DH1300 | L3 | RPP | DELETED | DH1100 |
| DC1-RPP-L3-CX-5905 | **DELETED** DC1-RPP-A13-05 A/B FTE | 1d | 2026-07-15 A | 2026-07-15 A | QTS-1020 | 100% | 2026-08-13 | 2026-08-13 | ROS | Commissioning | DH1300 | L3 | RPP | DELETED | DH1100 |
| DC1-RPP-L3-CX-5915 | **DELETED** DC1-RPP-A13-05 A/B L3 Startup | 2d | 2026-07-15 A | 2026-07-15 A | QTS-1020 | 100% | 2026-08-14 | 2026-08-17 | SQD | Commissioning | DH1300 | L3 | RPP | DELETED | DH1100 |
| DC1-RPP-L3-CX-5925 | **DELETED** DC1-RPP-A13-05 A/B BMS/EPMS Programming | 1d | 2026-07-15 A | 2026-07-15 A | QTS-1020 | 100% | 2026-08-18 | 2026-08-18 | PRM | Commissioning | DH1300 | L3 | RPP | DELETED | DH1100 |
| DC1-RPP-L3-CX-5935 | **DELETED** DC1-RPP-A13-06 A/B FTE | 1d | 2026-07-15 A | 2026-07-15 A | QTS-1020 | 100% | 2026-08-14 | 2026-08-14 | ROS | Commissioning | DH1300 | L3 | RPP | DELETED | DH1100 |
| DC1-RPP-L3-CX-5945 | **DELETED** DC1-RPP-A13-06 A/B L3 Startup | 2d | 2026-07-15 A | 2026-07-15 A | QTS-1020 | 100% | 2026-08-17 | 2026-08-18 | SQD | Commissioning | DH1300 | L3 | RPP | DELETED | DH1100 |
| DC1-RPP-L3-CX-5955 | **DELETED** DC1-RPP-A13-06 A/B BMS/EPMS Programming | 1d | 2026-07-15 A | 2026-07-15 A | QTS-1020 | 100% | 2026-08-19 | 2026-08-19 | PRM | Commissioning | DH1300 | L3 | RPP | DELETED | DH1100 |
| DC1-RPP-L3-CX-5965 | **DELETED** DC1-RPP-B13-01 A/B FTE | 1d | 2026-07-15 A | 2026-07-15 A | QTS-1020 | 100% | 2026-08-13 | 2026-08-13 | ROS | Commissioning | DH1300 | L3 | RPP | DELETED | DH1100 |
| DC1-RPP-L3-CX-5975 | **DELETED** DC1-RPP-B13-01 A/B L3 Startup | 2d | 2026-07-15 A | 2026-07-15 A | QTS-1020 | 100% | 2026-08-14 | 2026-08-17 | SQD | Commissioning | DH1300 | L3 | RPP | DELETED | DH1100 |
| DC1-RPP-L3-CX-5985 | **DELETED** DC1-RPP-B13-01 A/B BMS/EPMS Programming | 1d | 2026-07-15 A | 2026-07-15 A | QTS-1020 | 100% | 2026-08-18 | 2026-08-18 | PRM | Commissioning | DH1300 | L3 | RPP | DELETED | DH1100 |
| DC1-RPP-L3-CX-5995 | **DELETED** DC1-RPP-B13-02 A/B FTE | 1d | 2026-07-15 A | 2026-07-15 A | QTS-1020 | 100% | 2026-08-17 | 2026-08-17 | ROS | Commissioning | DH1300 | L3 | RPP | DELETED | DH1100 |
| DC1-RPP-L3-CX-6005 | **DELETED** DC1-RPP-B13-02 A/B L3 Startup | 2d | 2026-07-15 A | 2026-07-15 A | QTS-1020 | 100% | 2026-08-18 | 2026-08-19 | SQD | Commissioning | DH1300 | L3 | RPP | DELETED | DH1100 |
| DC1-RPP-L3-CX-6015 | **DELETED** DC1-RPP-B13-02 A/B BMS/EPMS Programming | 1d | 2026-07-15 A | 2026-07-15 A | QTS-1020 | 100% | 2026-08-20 | 2026-08-20 | PRM | Commissioning | DH1300 | L3 | RPP | DELETED | DH1100 |
| DC1-RPP-L3-CX-6025 | **DELETED** DC1-RPP-B13-03 A/B FTE | 1d | 2026-07-15 A | 2026-07-15 A | QTS-1020 | 100% | 2026-08-13 | 2026-08-13 | ROS | Commissioning | DH1300 | L3 | RPP | DELETED | DH1100 |
| DC1-RPP-L3-CX-6035 | **DELETED** DC1-RPP-B13-03 A/B L3 Startup | 2d | 2026-07-15 A | 2026-07-15 A | QTS-1020 | 100% | 2026-08-14 | 2026-08-17 | SQD | Commissioning | DH1300 | L3 | RPP | DELETED | DH1100 |
| DC1-RPP-L3-CX-6045 | **DELETED** DC1-RPP-B13-03 A/B BMS/EPMS Programming | 1d | 2026-07-15 A | 2026-07-15 A | QTS-1020 | 100% | 2026-08-18 | 2026-08-18 | PRM | Commissioning | DH1300 | L3 | RPP | DELETED | DH1100 |
| DC1-RPP-L3-CX-6055 | **DELETED** DC1-RPP-B13-04 A/B FTE | 1d | 2026-07-15 A | 2026-07-15 A | QTS-1020 | 100% | 2026-08-17 | 2026-08-17 | ROS | Commissioning | DH1300 | L3 | RPP | DELETED | DH1100 |
| DC1-RPP-L3-CX-6065 | **DELETED** DC1-RPP-B13-04 A/B L3 Startup | 2d | 2026-07-15 A | 2026-07-15 A | QTS-1020 | 100% | 2026-08-18 | 2026-08-19 | SQD | Commissioning | DH1300 | L3 | RPP | DELETED | DH1100 |
| DC1-RPP-L3-CX-6075 | **DELETED** DC1-RPP-B13-04 A/B BMS/EPMS Programming | 1d | 2026-07-15 A | 2026-07-15 A | QTS-1020 | 100% | 2026-08-20 | 2026-08-20 | PRM | Commissioning | DH1300 | L3 | RPP | DELETED | DH1100 |
| DC1-RPP-L3-CX-6085 | **DELETED** DC1-RPP-B13-05 A/B FTE | 1d | 2026-07-15 A | 2026-07-15 A | QTS-1020 | 100% | 2026-08-13 | 2026-08-13 | ROS | Commissioning | DH1300 | L3 | RPP | DELETED | DH1100 |
| DC1-RPP-L3-CX-6095 | **DELETED** DC1-RPP-B13-05 A/B L3 Startup | 2d | 2026-07-15 A | 2026-07-15 A | QTS-1020 | 100% | 2026-08-14 | 2026-08-17 | SQD | Commissioning | DH1300 | L3 | RPP | DELETED | DH1100 |
| DC1-RPP-L3-CX-6105 | **DELETED** DC1-RPP-B13-05 A/B BMS/EPMS Programming | 1d | 2026-07-15 A | 2026-07-15 A | QTS-1020 | 100% | 2026-08-18 | 2026-08-18 | PRM | Commissioning | DH1300 | L3 | RPP | DELETED | DH1100 |
| DC1-RPP-L3-CX-6115 | **DELETED** DC1-RPP-B13-06 A/B FTE | 1d | 2026-07-15 A | 2026-07-15 A | QTS-1020 | 100% | 2026-08-17 | 2026-08-17 | ROS | Commissioning | DH1300 | L3 | RPP | DELETED | DH1100 |
| DC1-RPP-L3-CX-6125 | **DELETED** DC1-RPP-B13-06 A/B L3 Startup | 2d | 2026-07-15 A | 2026-07-15 A | QTS-1020 | 100% | 2026-08-18 | 2026-08-19 | SQD | Commissioning | DH1300 | L3 | RPP | DELETED | DH1100 |
| DC1-RPP-L3-CX-6135 | **DELETED** DC1-RPP-B13-06 A/B BMS/EPMS Programming | 1d | 2026-07-15 A | 2026-07-15 A | QTS-1020 | 100% | 2026-08-20 | 2026-08-20 | PRM | Commissioning | DH1300 | L3 | RPP | DELETED | DH1100 |
| DC1-RPP-L3-CX-6145 | **DELETED** DC1-RPP-C13-01 A/B FTE | 1d | 2026-07-15 A | 2026-07-15 A | QTS-1020 | 100% | 2026-08-13 | 2026-08-13 | ROS | Commissioning | DH1300 | L3 | RPP | DELETED | DH1100 |
| DC1-RPP-L3-CX-6155 | **DELETED** DC1-RPP-C13-01 A/B L3 Startup | 2d | 2026-07-15 A | 2026-07-15 A | QTS-1020 | 100% | 2026-08-14 | 2026-08-17 | SQD | Commissioning | DH1300 | L3 | RPP | DELETED | DH1100 |
| DC1-RPP-L3-CX-6165 | **DELETED** DC1-RPP-C13-01 A/B BMS/EPMS Programming | 1d | 2026-07-15 A | 2026-07-15 A | QTS-1020 | 100% | 2026-08-18 | 2026-08-18 | PRM | Commissioning | DH1300 | L3 | RPP | DELETED | DH1100 |
| DC1-RPP-L3-CX-6175 | **DELETED** DC1-RPP-C13-02 A/B FTE | 1d | 2026-07-15 A | 2026-07-15 A | QTS-1020 | 100% | 2026-08-17 | 2026-08-17 | ROS | Commissioning | DH1300 | L3 | RPP | DELETED | DH1100 |
| DC1-RPP-L3-CX-6185 | **DELETED** DC1-RPP-C13-02 A/B L3 Startup | 2d | 2026-07-15 A | 2026-07-15 A | QTS-1020 | 100% | 2026-08-18 | 2026-08-19 | SQD | Commissioning | DH1300 | L3 | RPP | DELETED | DH1100 |
| DC1-RPP-L3-CX-6195 | **DELETED** DC1-RPP-C13-02 A/B BMS/EPMS Programming | 1d | 2026-07-15 A | 2026-07-15 A | QTS-1020 | 100% | 2026-08-20 | 2026-08-20 | PRM | Commissioning | DH1300 | L3 | RPP | DELETED | DH1100 |
| DC1-RPP-L3-CX-6205 | **DELETED** DC1-RPP-C13-03 A/B FTE | 1d | 2026-07-15 A | 2026-07-15 A | QTS-1020 | 100% | 2026-08-13 | 2026-08-13 | ROS | Commissioning | DH1300 | L3 | RPP | DELETED | DH1100 |
| DC1-RPP-L3-CX-6215 | **DELETED** DC1-RPP-C13-03 A/B L3 Startup | 2d | 2026-07-15 A | 2026-07-15 A | QTS-1020 | 100% | 2026-08-14 | 2026-08-17 | SQD | Commissioning | DH1300 | L3 | RPP | DELETED | DH1100 |
| DC1-RPP-L3-CX-6225 | **DELETED** DC1-RPP-C13-03 A/B BMS/EPMS Programming | 1d | 2026-07-15 A | 2026-07-15 A | QTS-1020 | 100% | 2026-08-18 | 2026-08-18 | PRM | Commissioning | DH1300 | L3 | RPP | DELETED | DH1100 |
| DC1-RPP-L3-CX-6235 | **DELETED** DC1-RPP-C13-04 A/B FTE | 1d | 2026-07-15 A | 2026-07-15 A | QTS-1020 | 100% | 2026-08-17 | 2026-08-17 | ROS | Commissioning | DH1300 | L3 | RPP | DELETED | DH1100 |
| DC1-RPP-L3-CX-6245 | **DELETED** DC1-RPP-C13-04 A/B L3 Startup | 2d | 2026-07-15 A | 2026-07-15 A | QTS-1020 | 100% | 2026-08-18 | 2026-08-19 | SQD | Commissioning | DH1300 | L3 | RPP | DELETED | DH1100 |
| DC1-RPP-L3-CX-6255 | **DELETED** DC1-RPP-C13-04 A/B BMS/EPMS Programming | 1d | 2026-07-15 A | 2026-07-15 A | QTS-1020 | 100% | 2026-08-20 | 2026-08-20 | PRM | Commissioning | DH1300 | L3 | RPP | DELETED | DH1100 |
| DC1-RPP-L3-CX-6265 | **DELETED** DC1-RPP-C13-05 A/B FTE | 1d | 2026-07-15 A | 2026-07-15 A | QTS-1020 | 100% | 2026-08-13 | 2026-08-13 | ROS | Commissioning | DH1300 | L3 | RPP | DELETED | DH1100 |
| DC1-RPP-L3-CX-6275 | **DELETED** DC1-RPP-C13-05 A/B L3 Startup | 2d | 2026-07-15 A | 2026-07-15 A | QTS-1020 | 100% | 2026-08-14 | 2026-08-17 | SQD | Commissioning | DH1300 | L3 | RPP | DELETED | DH1100 |
| DC1-RPP-L3-CX-6285 | **DELETED** DC1-RPP-C13-05 A/B BMS/EPMS Programming | 1d | 2026-07-15 A | 2026-07-15 A | QTS-1020 | 100% | 2026-08-18 | 2026-08-18 | PRM | Commissioning | DH1300 | L3 | RPP | DELETED | DH1100 |
| DC1-RPP-L3-CX-6295 | **DELETED** DC1-RPP-C13-06 A/B FTE | 1d | 2026-07-15 A | 2026-07-15 A | QTS-1020 | 100% | 2026-08-17 | 2026-08-17 | ROS | Commissioning | DH1300 | L3 | RPP | DELETED | DH1100 |
| DC1-RPP-L3-CX-6305 | **DELETED** DC1-RPP-C13-06 A/B L3 Startup | 2d | 2026-07-15 A | 2026-07-15 A | QTS-1020 | 100% | 2026-08-18 | 2026-08-19 | SQD | Commissioning | DH1300 | L3 | RPP | DELETED | DH1100 |
| DC1-RPP-L3-CX-6315 | **DELETED** DC1-RPP-C13-06 A/B BMS/EPMS Programming | 1d | 2026-07-15 A | 2026-07-15 A | QTS-1020 | 100% | 2026-08-20 | 2026-08-20 | PRM | Commissioning | DH1300 | L3 | RPP | DELETED | DH1100 |
| DC1-RPP-L3-CX-6325 | **DELETED** DC1-RPP-D13-01 A/B FTE | 1d | 2026-07-15 A | 2026-07-15 A | QTS-1020 | 100% | 2026-08-13 | 2026-08-13 | ROS | Commissioning | DH1300 | L3 | RPP | DELETED | DH1100 |
| DC1-RPP-L3-CX-6335 | **DELETED** DC1-RPP-D13-01 A/B L3 Startup | 2d | 2026-07-15 A | 2026-07-15 A | QTS-1020 | 100% | 2026-08-14 | 2026-08-17 | SQD | Commissioning | DH1300 | L3 | RPP | DELETED | DH1100 |
| DC1-RPP-L3-CX-6345 | **DELETED** DC1-RPP-D13-01 A/B BMS/EPMS Programming | 1d | 2026-07-15 A | 2026-07-15 A | QTS-1020 | 100% | 2026-08-18 | 2026-08-18 | PRM | Commissioning | DH1300 | L3 | RPP | DELETED | DH1100 |
| DC1-RPP-L3-CX-6355 | **DELETED** DC1-RPP-D13-02 A/B FTE | 1d | 2026-07-15 A | 2026-07-15 A | QTS-1020 | 100% | 2026-08-17 | 2026-08-17 | ROS | Commissioning | DH1300 | L3 | RPP | DELETED | DH1100 |
| DC1-RPP-L3-CX-6365 | **DELETED** DC1-RPP-D13-02 A/B L3 Startup | 2d | 2026-07-15 A | 2026-07-15 A | QTS-1020 | 100% | 2026-08-18 | 2026-08-19 | SQD | Commissioning | DH1300 | L3 | RPP | DELETED | DH1100 |
| DC1-RPP-L3-CX-6375 | **DELETED** DC1-RPP-D13-02 A/B BMS/EPMS Programming | 1d | 2026-07-15 A | 2026-07-15 A | QTS-1020 | 100% | 2026-08-20 | 2026-08-20 | PRM | Commissioning | DH1300 | L3 | RPP | DELETED | DH1100 |
| DC1-RPP-L3-CX-6385 | **DELETED** DC1-RPP-D13-03 A/B FTE | 1d | 2026-07-15 A | 2026-07-15 A | QTS-1020 | 100% | 2026-08-13 | 2026-08-13 | ROS | Commissioning | DH1300 | L3 | RPP | DELETED | DH1100 |
| DC1-RPP-L3-CX-6395 | **DELETED** DC1-RPP-D13-03 A/B L3 Startup | 2d | 2026-07-15 A | 2026-07-15 A | QTS-1020 | 100% | 2026-08-14 | 2026-08-17 | SQD | Commissioning | DH1300 | L3 | RPP | DELETED | DH1100 |
| DC1-RPP-L3-CX-6405 | **DELETED** DC1-RPP-D13-03 A/B BMS/EPMS Programming | 1d | 2026-07-15 A | 2026-07-15 A | QTS-1020 | 100% | 2026-08-18 | 2026-08-18 | PRM | Commissioning | DH1300 | L3 | RPP | DELETED | DH1100 |
| DC1-RPP-L3-CX-6415 | **DELETED** DC1-RPP-D13-04 A/B FTE | 1d | 2026-07-15 A | 2026-07-15 A | QTS-1020 | 100% | 2026-08-17 | 2026-08-17 | ROS | Commissioning | DH1300 | L3 | RPP | DELETED | DH1100 |
| DC1-RPP-L3-CX-6425 | **DELETED** DC1-RPP-D13-04 A/B L3 Startup | 2d | 2026-07-15 A | 2026-07-15 A | QTS-1020 | 100% | 2026-08-18 | 2026-08-19 | SQD | Commissioning | DH1300 | L3 | RPP | DELETED | DH1100 |
| DC1-RPP-L3-CX-6435 | **DELETED** DC1-RPP-D13-04 A/B BMS/EPMS Programming | 1d | 2026-07-15 A | 2026-07-15 A | QTS-1020 | 100% | 2026-08-20 | 2026-08-20 | PRM | Commissioning | DH1300 | L3 | RPP | DELETED | DH1100 |

Notes:
- DC1-RPP-L3-CX-5765: Steps: EC Startup Report; Vendor Startup
- DC1-RPP-L3-CX-5795: Steps: EC Startup Report; Vendor Startup
- DC1-RPP-L3-CX-5825: Steps: EC Startup Report; Vendor Startup
- DC1-RPP-L3-CX-5855: Steps: EC Startup Report; Vendor Startup
- DC1-RPP-L3-CX-5885: Steps: EC Startup Report; Vendor Startup
- DC1-RPP-L3-CX-5915: Steps: EC Startup Report; Vendor Startup
- DC1-RPP-L3-CX-5945: Steps: EC Startup Report; Vendor Startup
- DC1-RPP-L3-CX-5975: Steps: EC Startup Report; Vendor Startup
- DC1-RPP-L3-CX-6005: Steps: EC Startup Report; Vendor Startup
- DC1-RPP-L3-CX-6035: Steps: EC Startup Report; Vendor Startup
- DC1-RPP-L3-CX-6065: Steps: EC Startup Report; Vendor Startup
- DC1-RPP-L3-CX-6095: Steps: EC Startup Report; Vendor Startup
- DC1-RPP-L3-CX-6125: Steps: EC Startup Report; Vendor Startup
- DC1-RPP-L3-CX-6155: Steps: EC Startup Report; Vendor Startup
- DC1-RPP-L3-CX-6185: Steps: EC Startup Report; Vendor Startup
- DC1-RPP-L3-CX-6215: Steps: EC Startup Report; Vendor Startup
- DC1-RPP-L3-CX-6245: Steps: EC Startup Report; Vendor Startup
- DC1-RPP-L3-CX-6275: Steps: EC Startup Report; Vendor Startup
- DC1-RPP-L3-CX-6305: Steps: EC Startup Report; Vendor Startup
- DC1-RPP-L3-CX-6335: Steps: EC Startup Report; Vendor Startup
- DC1-RPP-L3-CX-6365: Steps: EC Startup Report; Vendor Startup
- DC1-RPP-L3-CX-6395: Steps: EC Startup Report; Vendor Startup
- DC1-RPP-L3-CX-6425: Steps: EC Startup Report; Vendor Startup

| ID | Activity | Duration | Start | Finish | Predecessors | Complete | Planned start | Planned finish | Vendor Responsible Party | Layton Discipline | Location | CX Level | Equipment | DELETED | D |
| --- | --- | --- | --- | --- | --- | --- | --- | --- | --- | --- | --- | --- | --- | --- | --- |
| DC1-RPP-L3-CX-6445 | **DELETED** DC1-RPP-D13-05 A/B FTE | 1d | 2026-07-15 A | 2026-07-15 A | QTS-1020 | 100% | 2026-08-13 | 2026-08-13 | ROS | Commissioning | DH1300 | L3 | RPP | DELETED | DH1100 |
| DC1-RPP-L3-CX-6455 | **DELETED** DC1-RPP-D13-05 A/B L3 Startup | 2d | 2026-07-15 A | 2026-07-15 A | QTS-1020 | 100% | 2026-08-14 | 2026-08-17 | SQD | Commissioning | DH1300 | L3 | RPP | DELETED | DH1100 |
| DC1-RPP-L3-CX-6465 | **DELETED** DC1-RPP-D13-05 A/B BMS/EPMS Programming | 1d | 2026-07-15 A | 2026-07-15 A | QTS-1020 | 100% | 2026-08-18 | 2026-08-18 | PRM | Commissioning | DH1300 | L3 | RPP | DELETED | DH1100 |
| DC1-RPP-L3-CX-6475 | **DELETED** DC1-RPP-D13-06 A/B FTE | 1d | 2026-07-15 A | 2026-07-15 A | QTS-1020 | 100% | 2026-08-17 | 2026-08-17 | ROS | Commissioning | DH1300 | L3 | RPP | DELETED | DH1100 |
| DC1-RPP-L3-CX-6485 | **DELETED** DC1-RPP-D13-06 A/B L3 Startup | 2d | 2026-07-15 A | 2026-07-15 A | QTS-1020 | 100% | 2026-08-18 | 2026-08-19 | SQD | Commissioning | DH1300 | L3 | RPP | DELETED | DH1100 |
| DC1-RPP-L3-CX-6495 | **DELETED** DC1-RPP-D13-06 A/B BMS/EPMS Programming | 1d | 2026-07-15 A | 2026-07-15 A | QTS-1020 | 100% | 2026-08-20 | 2026-08-20 | PRM | Commissioning | DH1300 | L3 | RPP | DELETED | DH1100 |
| DC1-RPP-L3-CX-6505 | **DELETED** DC1-RPP-E13-01 A/B FTE | 1d | 2026-07-15 A | 2026-07-15 A | QTS-1020 | 100% | 2026-08-13 | 2026-08-13 | ROS | Commissioning | DH1300 | L3 | RPP | DELETED | DH1100 |
| DC1-RPP-L3-CX-6515 | **DELETED** DC1-RPP-E13-01 A/B L3 Startup | 2d | 2026-07-15 A | 2026-07-15 A | QTS-1020 | 100% | 2026-08-14 | 2026-08-17 | SQD | Commissioning | DH1300 | L3 | RPP | DELETED | DH1100 |
| DC1-RPP-L3-CX-6525 | **DELETED** DC1-RPP-E13-01 A/B BMS/EPMS Programming | 1d | 2026-07-15 A | 2026-07-15 A | QTS-1020 | 100% | 2026-08-18 | 2026-08-18 | PRM | Commissioning | DH1300 | L3 | RPP | DELETED | DH1100 |
| DC1-RPP-L3-CX-6535 | **DELETED** DC1-RPP-E13-02 A/B FTE | 1d | 2026-07-15 A | 2026-07-15 A | QTS-1020 | 100% | 2026-08-17 | 2026-08-17 | ROS | Commissioning | DH1300 | L3 | RPP | DELETED | DH1100 |
| DC1-RPP-L3-CX-6545 | **DELETED** DC1-RPP-E13-02 A/B L3 Startup | 2d | 2026-07-15 A | 2026-07-15 A | QTS-1020 | 100% | 2026-08-18 | 2026-08-19 | SQD | Commissioning | DH1300 | L3 | RPP | DELETED | DH1100 |
| DC1-RPP-L3-CX-6555 | **DELETED** DC1-RPP-E13-02 A/B BMS/EPMS Programming | 1d | 2026-07-15 A | 2026-07-15 A | QTS-1020 | 100% | 2026-08-20 | 2026-08-20 | PRM | Commissioning | DH1300 | L3 | RPP | DELETED | DH1100 |
| DC1-RPP-L3-CX-6565 | **DELETED** DC1-RPP-E13-03 A/B FTE | 1d | 2026-07-15 A | 2026-07-15 A | QTS-1020 | 100% | 2026-08-13 | 2026-08-13 | ROS | Commissioning | DH1300 | L3 | RPP | DELETED | DH1100 |
| DC1-RPP-L3-CX-6575 | **DELETED** DC1-RPP-E13-03 A/B L3 Startup | 2d | 2026-07-15 A | 2026-07-15 A | QTS-1020 | 100% | 2026-08-14 | 2026-08-17 | SQD | Commissioning | DH1300 | L3 | RPP | DELETED | DH1100 |
| DC1-RPP-L3-CX-6585 | **DELETED** DC1-RPP-E13-03 A/B BMS/EPMS Programming | 1d | 2026-07-15 A | 2026-07-15 A | QTS-1020 | 100% | 2026-08-18 | 2026-08-18 | PRM | Commissioning | DH1300 | L3 | RPP | DELETED | DH1100 |
| DC1-RPP-L3-CX-6595 | **DELETED** DC1-RPP-E13-04 A/B FTE | 1d | 2026-07-15 A | 2026-07-15 A | QTS-1020 | 100% | 2026-08-17 | 2026-08-17 | ROS | Commissioning | DH1300 | L3 | RPP | DELETED | DH1100 |
| DC1-RPP-L3-CX-6605 | **DELETED** DC1-RPP-E13-04 A/B L3 Startup | 2d | 2026-07-15 A | 2026-07-15 A | QTS-1020 | 100% | 2026-08-18 | 2026-08-19 | SQD | Commissioning | DH1300 | L3 | RPP | DELETED | DH1100 |
| DC1-RPP-L3-CX-6615 | **DELETED** DC1-RPP-E13-04 A/B BMS/EPMS Programming | 1d | 2026-07-15 A | 2026-07-15 A | QTS-1020 | 100% | 2026-08-20 | 2026-08-20 | PRM | Commissioning | DH1300 | L3 | RPP | DELETED | DH1100 |
| DC1-RPP-L3-CX-6625 | **DELETED** DC1-RPP-E13-05 A/B FTE | 1d | 2026-07-15 A | 2026-07-15 A | QTS-1020 | 100% | 2026-08-13 | 2026-08-13 | ROS | Commissioning | DH1300 | L3 | RPP | DELETED | DH1100 |
| DC1-RPP-L3-CX-6635 | **DELETED** DC1-RPP-E13-05 A/B L3 Startup | 2d | 2026-07-15 A | 2026-07-15 A | QTS-1020 | 100% | 2026-08-14 | 2026-08-17 | SQD | Commissioning | DH1300 | L3 | RPP | DELETED | DH1100 |
| DC1-RPP-L3-CX-6645 | **DELETED** DC1-RPP-E13-05 A/B BMS/EPMS Programming | 1d | 2026-07-15 A | 2026-07-15 A | QTS-1020 | 100% | 2026-08-18 | 2026-08-18 | PRM | Commissioning | DH1300 | L3 | RPP | DELETED | DH1100 |
| DC1-RPP-L3-CX-6655 | **DELETED** DC1-RPP-E13-06 A/B FTE | 1d | 2026-07-15 A | 2026-07-15 A | QTS-1020 | 100% | 2026-08-17 | 2026-08-17 | ROS | Commissioning | DH1300 | L3 | RPP | DELETED | DH1100 |
| DC1-RPP-L3-CX-6665 | **DELETED** DC1-RPP-E13-06 A/B L3 Startup | 2d | 2026-07-15 A | 2026-07-15 A | QTS-1020 | 100% | 2026-08-18 | 2026-08-19 | SQD | Commissioning | DH1300 | L3 | RPP | DELETED | DH1100 |
| DC1-RPP-L3-CX-6675 | **DELETED** DC1-RPP-E13-06 A/B BMS/EPMS Programming | 1d | 2026-07-15 A | 2026-07-15 A | QTS-1020 | 100% | 2026-08-20 | 2026-08-20 | PRM | Commissioning | DH1300 | L3 | RPP | DELETED | DH1100 |
| DC1-RPP-L3-CX-6685 | **DELETED** DC1-RPP-F13-01 A/B FTE | 1d | 2026-07-15 A | 2026-07-15 A | QTS-1020 | 100% | 2026-08-13 | 2026-08-13 | ROS | Commissioning | DH1300 | L3 | RPP | DELETED | DH1100 |
| DC1-RPP-L3-CX-6695 | **DELETED** DC1-RPP-F13-01 A/B L3 Startup | 2d | 2026-07-15 A | 2026-07-15 A | QTS-1020 | 100% | 2026-08-14 | 2026-08-17 | SQD | Commissioning | DH1300 | L3 | RPP | DELETED | DH1100 |
| DC1-RPP-L3-CX-6705 | **DELETED** DC1-RPP-F13-01 A/B BMS/EPMS Programming | 1d | 2026-07-15 A | 2026-07-15 A | QTS-1020 | 100% | 2026-08-18 | 2026-08-18 | PRM | Commissioning | DH1300 | L3 | RPP | DELETED | DH1100 |
| DC1-RPP-L3-CX-6715 | **DELETED** DC1-RPP-F13-02 A/B FTE | 1d | 2026-07-15 A | 2026-07-15 A | QTS-1020 | 100% | 2026-08-17 | 2026-08-17 | ROS | Commissioning | DH1300 | L3 | RPP | DELETED | DH1100 |
| DC1-RPP-L3-CX-6725 | **DELETED** DC1-RPP-F13-02 A/B L3 Startup | 2d | 2026-07-15 A | 2026-07-15 A | QTS-1020 | 100% | 2026-08-18 | 2026-08-19 | SQD | Commissioning | DH1300 | L3 | RPP | DELETED | DH1100 |
| DC1-RPP-L3-CX-6735 | **DELETED** DC1-RPP-F13-02 A/B BMS/EPMS Programming | 1d | 2026-07-15 A | 2026-07-15 A | QTS-1020 | 100% | 2026-08-20 | 2026-08-20 | PRM | Commissioning | DH1300 | L3 | RPP | DELETED | DH1100 |
| DC1-RPP-L3-CX-6745 | **DELETED** DC1-RPP-F13-03 A/B FTE | 1d | 2026-07-15 A | 2026-07-15 A | QTS-1020 | 100% | 2026-08-13 | 2026-08-13 | ROS | Commissioning | DH1300 | L3 | RPP | DELETED | DH1100 |
| DC1-RPP-L3-CX-6755 | **DELETED** DC1-RPP-F13-03 A/B L3 Startup | 2d | 2026-07-15 A | 2026-07-15 A | QTS-1020 | 100% | 2026-08-14 | 2026-08-17 | SQD | Commissioning | DH1300 | L3 | RPP | DELETED | DH1100 |
| DC1-RPP-L3-CX-6765 | **DELETED** DC1-RPP-F13-03 A/B BMS/EPMS Programming | 1d | 2026-07-15 A | 2026-07-15 A | QTS-1020 | 100% | 2026-08-18 | 2026-08-18 | PRM | Commissioning | DH1300 | L3 | RPP | DELETED | DH1100 |
| DC1-RPP-L3-CX-6775 | **DELETED** DC1-RPP-F13-04 A/B FTE | 1d | 2026-07-15 A | 2026-07-15 A | QTS-1020 | 100% | 2026-08-17 | 2026-08-17 | ROS | Commissioning | DH1300 | L3 | RPP | DELETED | DH1100 |
| DC1-RPP-L3-CX-6785 | **DELETED** DC1-RPP-F13-04 A/B L3 Startup | 2d | 2026-07-15 A | 2026-07-15 A | QTS-1020 | 100% | 2026-08-18 | 2026-08-19 | SQD | Commissioning | DH1300 | L3 | RPP | DELETED | DH1100 |
| DC1-RPP-L3-CX-6795 | **DELETED** DC1-RPP-F13-04 A/B BMS/EPMS Programming | 1d | 2026-07-15 A | 2026-07-15 A | QTS-1020 | 100% | 2026-08-20 | 2026-08-20 | PRM | Commissioning | DH1300 | L3 | RPP | DELETED | DH1100 |
| DC1-RPP-L3-CX-6805 | **DELETED** DC1-RPP-F13-05 A/B FTE | 1d | 2026-07-15 A | 2026-07-15 A | QTS-1020 | 100% | 2026-08-13 | 2026-08-13 | ROS | Commissioning | DH1300 | L3 | RPP | DELETED | DH1100 |
| DC1-RPP-L3-CX-6815 | **DELETED** DC1-RPP-F13-05 A/B L3 Startup | 2d | 2026-07-15 A | 2026-07-15 A | QTS-1020 | 100% | 2026-08-14 | 2026-08-17 | SQD | Commissioning | DH1300 | L3 | RPP | DELETED | DH1100 |
| DC1-RPP-L3-CX-6825 | **DELETED** DC1-RPP-F13-05 A/B BMS/EPMS Programming | 1d | 2026-07-15 A | 2026-07-15 A | QTS-1020 | 100% | 2026-08-18 | 2026-08-18 | PRM | Commissioning | DH1300 | L3 | RPP | DELETED | DH1100 |
| DC1-RPP-L3-CX-6835 | **DELETED** DC1-RPP-F13-06 A/B FTE | 1d | 2026-07-15 A | 2026-07-15 A | QTS-1020 | 100% | 2026-08-17 | 2026-08-17 | ROS | Commissioning | DH1300 | L3 | RPP | DELETED | DH1100 |
| DC1-RPP-L3-CX-6845 | **DELETED** DC1-RPP-F13-06 A/B L3 Startup | 2d | 2026-07-15 A | 2026-07-15 A | QTS-1020 | 100% | 2026-08-18 | 2026-08-19 | SQD | Commissioning | DH1300 | L3 | RPP | DELETED | DH1100 |
| DC1-RPP-L3-CX-6855 | **DELETED** DC1-RPP-F13-06 A/B BMS/EPMS Programming | 1d | 2026-07-15 A | 2026-07-15 A | QTS-1020 | 100% | 2026-08-20 | 2026-08-20 | PRM | Commissioning | DH1300 | L3 | RPP | DELETED | DH1100 |
| DC1-SWD-L2-2210 | **DELETED** DH2300 SWD-A23 L2 Checklist | 3d | 2026-07-15 A | 2026-07-15 A | QTS-1020 | 100% | 2026-07-28 | 2026-07-30 | SIE | Commissioning | DH2300 | L2 | SWD | DELETED | DH1100 |
| DC1-SWD-L2-2220 | **DELETED** DH2300 SWD-B23 L2 Checklist | 3d | 2026-07-15 A | 2026-07-15 A | QTS-1020 | 100% | 2026-07-30 | 2026-08-03 | SIE | Commissioning | DH2300 | L2 | SWD | DELETED | DH1100 |
| DC1-SWD-L2-2230 | **DELETED** DH2300 SWD-C23 L2 Checklist | 3d | 2026-07-15 A | 2026-07-15 A | QTS-1020 | 100% | 2026-08-03 | 2026-08-05 | SIE | Commissioning | DH2300 | L2 | SWD | DELETED | DH1100 |
| DC1-SWD-L2-2240 | **DELETED** DH2300 SWD-D23 L2 Checklist | 3d | 2026-07-15 A | 2026-07-15 A | QTS-1020 | 100% | 2026-08-04 | 2026-08-06 | SIE | Commissioning | DH2300 | L2 | SWD | DELETED | DH1100 |
| DC1-SWD-L2-2250 | **DELETED** DH2300 SWD-E23 L2 Checklist | 3d | 2026-07-15 A | 2026-07-15 A | QTS-1020 | 100% | 2026-08-05 | 2026-08-07 | SIE | Commissioning | DH2300 | L2 | SWD | DELETED | DH1100 |
| DC1-SWD-L2-2260 | **DELETED** DH2300 SWD-F23 L2 Checklist | 3d | 2026-07-15 A | 2026-07-15 A | QTS-1020 | 100% | 2026-08-06 | 2026-08-10 | SIE | Commissioning | DH2300 | L2 | SWD | DELETED | DH1100 |
| DC1-SWD-L2-2270 | **DELETED** DH2300 SWD-R23 L2 Checklist | 3d | 2026-07-15 A | 2026-07-15 A | QTS-1020 | 100% | 2026-07-24 | 2026-07-28 | SIE | Commissioning | DH2300 | L2 | SWD | DELETED | DH1100 |
| DC1-SWD-L2-2280 | **DELETED** DH1300 SWD-A13 L2 Checklist | 3d | 2026-07-15 A | 2026-07-15 A | QTS-1020 | 100% | 2026-07-28 | 2026-07-30 | SIE | Commissioning | DH1300 | L2 | SWD | DELETED | DH1100 |
| DC1-SWD-L2-2290 | **DELETED** DH1300 SWD-B13 L2 Checklist | 3d | 2026-07-15 A | 2026-07-15 A | QTS-1020 | 100% | 2026-07-30 | 2026-08-03 | SIE | Commissioning | DH1300 | L2 | SWD | DELETED | DH1100 |
| DC1-SWD-L2-2300 | **DELETED** DH1300 SWD-C13 L2 Checklist | 3d | 2026-07-15 A | 2026-07-15 A | QTS-1020 | 100% | 2026-08-03 | 2026-08-05 | SIE | Commissioning | DH1300 | L2 | SWD | DELETED | DH1100 |
| DC1-SWD-L2-2310 | **DELETED** DH1300 SWD-D13 L2 Checklist | 3d | 2026-07-15 A | 2026-07-15 A | QTS-1020 | 100% | 2026-08-04 | 2026-08-06 | SIE | Commissioning | DH1300 | L2 | SWD | DELETED | DH1100 |
| DC1-SWD-L2-2320 | **DELETED** DH1300 SWD-E13 L2 Checklist | 3d | 2026-07-15 A | 2026-07-15 A | QTS-1020 | 100% | 2026-08-05 | 2026-08-07 | SIE | Commissioning | DH1300 | L2 | SWD | DELETED | DH1100 |
| DC1-SWD-L2-2330 | **DELETED** DH1300 SWD-F13 L2 Checklist | 3d | 2026-07-15 A | 2026-07-15 A | QTS-1020 | 100% | 2026-08-06 | 2026-08-10 | SIE | Commissioning | DH1300 | L2 | SWD | DELETED | DH1100 |
| DC1-SWD-L2-2340 | **DELETED** DH1300 SWD-R13 L2 Checklist | 3d | 2026-07-15 A | 2026-07-15 A | QTS-1020 | 100% | 2026-07-24 | 2026-07-28 | SIE | Commissioning | DH1300 | L2 | SWD | DELETED | DH1100 |
| DC1-SWD-L3-CX-2630 | **DELETED** DC1-SWD-A23 FTE | 1d | 2026-07-15 A | 2026-07-15 A | QTS-1020 | 100% | 2026-08-11 | 2026-08-11 | ROS | Commissioning | DH2300 | L3 | SWD | DELETED | DH1100 |
| DC1-SWD-L3-CX-2640 | **DELETED** DC1-SWD-A23 L3 Startup | 2d | 2026-07-15 A | 2026-07-15 A | QTS-1020 | 100% | 2026-08-12 | 2026-08-13 | SIE | Commissioning | DH2300 | L3 | SWD | DELETED | DH1100 |
| DC1-SWD-L3-CX-2650 | **DELETED** DC1-SWD-A23 BMS/EPMS Programming | 1d | 2026-07-15 A | 2026-07-15 A | QTS-1020 | 100% | 2026-08-14 | 2026-08-14 | PRM | Commissioning | DH2300 | L3 | SWD | DELETED | DH1100 |
| DC1-SWD-L3-CX-2660 | **DELETED** DC1-SWD-B23 FTE | 1d | 2026-07-15 A | 2026-07-15 A | QTS-1020 | 100% | 2026-08-11 | 2026-08-11 | ROS | Commissioning | DH2300 | L3 | SWD | DELETED | DH1100 |
| DC1-SWD-L3-CX-2670 | **DELETED** DC1-SWD-B23 L3 Startup | 2d | 2026-07-15 A | 2026-07-15 A | QTS-1020 | 100% | 2026-08-12 | 2026-08-13 | SIE | Commissioning | DH2300 | L3 | SWD | DELETED | DH1100 |
| DC1-SWD-L3-CX-2680 | **DELETED** DC1-SWD-B23 BMS/EPMS Programming | 1d | 2026-07-15 A | 2026-07-15 A | QTS-1020 | 100% | 2026-08-14 | 2026-08-14 | PRM | Commissioning | DH2300 | L3 | SWD | DELETED | DH1100 |
| DC1-SWD-L3-CX-2690 | **DELETED** DC1-SWD-C23 FTE | 1d | 2026-07-15 A | 2026-07-15 A | QTS-1020 | 100% | 2026-08-11 | 2026-08-11 | ROS | Commissioning | DH2300 | L3 | SWD | DELETED | DH1100 |
| DC1-SWD-L3-CX-2700 | **DELETED** DC1-SWD-C23 L3 Startup | 2d | 2026-07-15 A | 2026-07-15 A | QTS-1020 | 100% | 2026-08-12 | 2026-08-13 | SIE | Commissioning | DH2300 | L3 | SWD | DELETED | DH1100 |
| DC1-SWD-L3-CX-2710 | **DELETED** DC1-SWD-C23 BMS/EPMS Programming | 1d | 2026-07-15 A | 2026-07-15 A | QTS-1020 | 100% | 2026-08-14 | 2026-08-14 | PRM | Commissioning | DH2300 | L3 | SWD | DELETED | DH1100 |
| DC1-SWD-L3-CX-2720 | **DELETED** DC1-SWD-D23 FTE | 1d | 2026-07-15 A | 2026-07-15 A | QTS-1020 | 100% | 2026-08-11 | 2026-08-11 | ROS | Commissioning | DH2300 | L3 | SWD | DELETED | DH1100 |
| DC1-SWD-L3-CX-2730 | **DELETED** DC1-SWD-D23 L3 Startup | 2d | 2026-07-15 A | 2026-07-15 A | QTS-1020 | 100% | 2026-08-12 | 2026-08-13 | SIE | Commissioning | DH2300 | L3 | SWD | DELETED | DH1100 |
| DC1-SWD-L3-CX-2740 | **DELETED** DC1-SWD-D23 BMS/EPMS Programming | 1d | 2026-07-15 A | 2026-07-15 A | QTS-1020 | 100% | 2026-08-14 | 2026-08-14 | PRM | Commissioning | DH2300 | L3 | SWD | DELETED | DH1100 |
| DC1-SWD-L3-CX-2750 | **DELETED** DC1-SWD-E23 FTE | 1d | 2026-07-15 A | 2026-07-15 A | QTS-1020 | 100% | 2026-08-11 | 2026-08-11 | ROS | Commissioning | DH2300 | L3 | SWD | DELETED | DH1100 |
| DC1-SWD-L3-CX-2760 | **DELETED** DC1-SWD-E23 L3 Startup | 2d | 2026-07-15 A | 2026-07-15 A | QTS-1020 | 100% | 2026-08-12 | 2026-08-13 | SIE | Commissioning | DH2300 | L3 | SWD | DELETED | DH1100 |

Notes:
- DC1-RPP-L3-CX-6455: Steps: EC Startup Report; Vendor Startup
- DC1-RPP-L3-CX-6485: Steps: EC Startup Report; Vendor Startup
- DC1-RPP-L3-CX-6515: Steps: EC Startup Report; Vendor Startup
- DC1-RPP-L3-CX-6545: Steps: EC Startup Report; Vendor Startup
- DC1-RPP-L3-CX-6575: Steps: EC Startup Report; Vendor Startup
- DC1-RPP-L3-CX-6605: Steps: EC Startup Report; Vendor Startup
- DC1-RPP-L3-CX-6635: Steps: EC Startup Report; Vendor Startup
- DC1-RPP-L3-CX-6665: Steps: EC Startup Report; Vendor Startup
- DC1-RPP-L3-CX-6695: Steps: EC Startup Report; Vendor Startup
- DC1-RPP-L3-CX-6725: Steps: EC Startup Report; Vendor Startup
- DC1-RPP-L3-CX-6755: Steps: EC Startup Report; Vendor Startup
- DC1-RPP-L3-CX-6785: Steps: EC Startup Report; Vendor Startup
- DC1-RPP-L3-CX-6815: Steps: EC Startup Report; Vendor Startup
- DC1-RPP-L3-CX-6845: Steps: EC Startup Report; Vendor Startup
- DC1-SWD-L2-2210: Steps: EC Pre-Energization Checklist; Vendor Pre-Energization Checklist; CXA Pre-Energization Inspection; PEI/Clean-Walk
- DC1-SWD-L2-2220: Steps: EC Pre-Energization Checklist; Vendor Pre-Energization Checklist; CXA Pre-Energization Inspection; PEI/Clean-Walk
- DC1-SWD-L2-2230: Steps: EC Pre-Energization Checklist; Vendor Pre-Energization Checklist; CXA Pre-Energization Inspection; PEI/Clean-Walk
- DC1-SWD-L2-2240: Steps: EC Pre-Energization Checklist; Vendor Pre-Energization Checklist; CXA Pre-Energization Inspection; PEI/Clean-Walk
- DC1-SWD-L2-2250: Steps: EC Pre-Energization Checklist; Vendor Pre-Energization Checklist; CXA Pre-Energization Inspection; PEI/Clean-Walk
- DC1-SWD-L2-2260: Steps: EC Pre-Energization Checklist; Vendor Pre-Energization Checklist; CXA Pre-Energization Inspection; PEI/Clean-Walk
- DC1-SWD-L2-2270: Steps: EC Pre-Energization Checklist; Vendor Pre-Energization Checklist; CXA Pre-Energization Inspection; PEI/Clean-Walk
- DC1-SWD-L2-2280: Steps: EC Pre-Energization Checklist; Vendor Pre-Energization Checklist; CXA Pre-Energization Inspection; PEI/Clean-Walk
- DC1-SWD-L2-2290: Steps: EC Pre-Energization Checklist; Vendor Pre-Energization Checklist; CXA Pre-Energization Inspection; PEI/Clean-Walk
- DC1-SWD-L2-2300: Steps: EC Pre-Energization Checklist; Vendor Pre-Energization Checklist; CXA Pre-Energization Inspection; PEI/Clean-Walk
- DC1-SWD-L2-2310: Steps: EC Pre-Energization Checklist; Vendor Pre-Energization Checklist; CXA Pre-Energization Inspection; PEI/Clean-Walk
- DC1-SWD-L2-2320: Steps: EC Pre-Energization Checklist; Vendor Pre-Energization Checklist; CXA Pre-Energization Inspection; PEI/Clean-Walk
- DC1-SWD-L2-2330: Steps: EC Pre-Energization Checklist; Vendor Pre-Energization Checklist; CXA Pre-Energization Inspection; PEI/Clean-Walk
- DC1-SWD-L2-2340: Steps: EC Pre-Energization Checklist; Vendor Pre-Energization Checklist; CXA Pre-Energization Inspection; PEI/Clean-Walk
- DC1-SWD-L3-CX-2640: Steps: EC Startup Report; Vendor Startup
- DC1-SWD-L3-CX-2670: Steps: EC Startup Report; Vendor Startup
- DC1-SWD-L3-CX-2700: Steps: EC Startup Report; Vendor Startup
- DC1-SWD-L3-CX-2730: Steps: EC Startup Report; Vendor Startup
- DC1-SWD-L3-CX-2760: Steps: EC Startup Report; Vendor Startup

| ID | Activity | Duration | Start | Finish | Predecessors | Complete | Planned start | Planned finish | Vendor Responsible Party | Layton Discipline | Location | CX Level | Equipment | DELETED | D |
| --- | --- | --- | --- | --- | --- | --- | --- | --- | --- | --- | --- | --- | --- | --- | --- |
| DC1-SWD-L3-CX-2770 | **DELETED** DC1-SWD-E23 BMS/EPMS Programming | 1d | 2026-07-15 A | 2026-07-15 A | QTS-1020 | 100% | 2026-08-14 | 2026-08-14 | PRM | Commissioning | DH2300 | L3 | SWD | DELETED | DH1100 |
| DC1-SWD-L3-CX-2780 | **DELETED** DC1-SWD-F23 FTE | 1d | 2026-07-15 A | 2026-07-15 A | QTS-1020 | 100% | 2026-08-11 | 2026-08-11 | ROS | Commissioning | DH2300 | L3 | SWD | DELETED | DH1100 |
| DC1-SWD-L3-CX-2790 | **DELETED** DC1-SWD-F23 L3 Startup | 2d | 2026-07-15 A | 2026-07-15 A | QTS-1020 | 100% | 2026-08-12 | 2026-08-13 | SIE | Commissioning | DH2300 | L3 | SWD | DELETED | DH1100 |
| DC1-SWD-L3-CX-2800 | **DELETED** DC1-SWD-F23 BMS/EPMS Programming | 1d | 2026-07-15 A | 2026-07-15 A | QTS-1020 | 100% | 2026-08-14 | 2026-08-14 | PRM | Commissioning | DH2300 | L3 | SWD | DELETED | DH1100 |
| DC1-SWD-L3-CX-2810 | **DELETED** DC1-SWD-R23 FTE | 1d | 2026-07-15 A | 2026-07-15 A | QTS-1020 | 100% | 2026-08-11 | 2026-08-11 | ROS | Commissioning | DH2300 | L3 | SWD | DELETED | DH1100 |
| DC1-SWD-L3-CX-2820 | **DELETED** DC1-SWD-R23 L3 Startup | 2d | 2026-07-15 A | 2026-07-15 A | QTS-1020 | 100% | 2026-08-12 | 2026-08-13 | SIE | Commissioning | DH2300 | L3 | SWD | DELETED | DH1100 |
| DC1-SWD-L3-CX-2830 | **DELETED** DC1-SWD-R23 BMS/EPMS Programming | 1d | 2026-07-15 A | 2026-07-15 A | QTS-1020 | 100% | 2026-08-14 | 2026-08-14 | PRM | Commissioning | DH2300 | L3 | SWD | DELETED | DH1100 |
| DC1-SWD-L3-CX-2840 | **DELETED** DC1-SWD-A13 FTE | 1d | 2026-07-15 A | 2026-07-15 A | DC1-XFM-L3-CX-1840 SS, QTS-1020 | 100% | 2026-08-11 | 2026-08-11 | ROS | Commissioning | DH1300 | L3 | SWD | DELETED | DH1100 |
| DC1-SWD-L3-CX-2850 | **DELETED** DC1-SWD-A13 L3 Startup | 2d | 2026-07-15 A | 2026-07-15 A | DC1-SWD-L3-CX-2840, QTS-1020 | 100% | 2026-08-12 | 2026-08-13 | SIE | Commissioning | DH1300 | L3 | SWD | DELETED | DH1100 |
| DC1-SWD-L3-CX-2860 | **DELETED** DC1-SWD-A13 BMS/EPMS Programming | 1d | 2026-07-15 A | 2026-07-15 A | DC1-SWD-L3-CX-2850, QTS-1020 | 100% | 2026-08-14 | 2026-08-14 | PRM | Commissioning | DH1300 | L3 | SWD | DELETED | DH1100 |
| DC1-SWD-L3-CX-2870 | **DELETED** DC1-SWD-B13 FTE | 1d | 2026-07-15 A | 2026-07-15 A | DC1-XFM-L3-CX-1870 SS, QTS-1020 | 100% | 2026-08-11 | 2026-08-11 | ROS | Commissioning | DH1300 | L3 | SWD | DELETED | DH1100 |
| DC1-SWD-L3-CX-2880 | **DELETED** DC1-SWD-B13 L3 Startup | 2d | 2026-07-15 A | 2026-07-15 A | DC1-SWD-L3-CX-2870, QTS-1020 | 100% | 2026-08-12 | 2026-08-13 | SIE | Commissioning | DH1300 | L3 | SWD | DELETED | DH1100 |
| DC1-SWD-L3-CX-2890 | **DELETED** DC1-SWD-B13 BMS/EPMS Programming | 1d | 2026-07-15 A | 2026-07-15 A | DC1-SWD-L3-CX-2880, QTS-1020 | 100% | 2026-08-14 | 2026-08-14 | PRM | Commissioning | DH1300 | L3 | SWD | DELETED | DH1100 |
| DC1-SWD-L3-CX-2900 | **DELETED** DC1-SWD-C13 FTE | 1d | 2026-07-15 A | 2026-07-15 A | DC1-XFM-L3-CX-1900 SS, QTS-1020 | 100% | 2026-08-11 | 2026-08-11 | ROS | Commissioning | DH1300 | L3 | SWD | DELETED | DH1100 |
| DC1-SWD-L3-CX-2910 | **DELETED** DC1-SWD-C13 L3 Startup | 2d | 2026-07-15 A | 2026-07-15 A | DC1-SWD-L3-CX-2900, QTS-1020 | 100% | 2026-08-12 | 2026-08-13 | SIE | Commissioning | DH1300 | L3 | SWD | DELETED | DH1100 |
| DC1-SWD-L3-CX-2920 | **DELETED** DC1-SWD-C13 BMS/EPMS Programming | 1d | 2026-07-15 A | 2026-07-15 A | DC1-SWD-L3-CX-2910, QTS-1020 | 100% | 2026-08-14 | 2026-08-14 | PRM | Commissioning | DH1300 | L3 | SWD | DELETED | DH1100 |
| DC1-SWD-L3-CX-2930 | **DELETED** DC1-SWD-D13 FTE | 1d | 2026-07-15 A | 2026-07-15 A | DC1-XFM-L3-CX-1930 SS, QTS-1020 | 100% | 2026-08-11 | 2026-08-11 | ROS | Commissioning | DH1300 | L3 | SWD | DELETED | DH1100 |
| DC1-SWD-L3-CX-2940 | **DELETED** DC1-SWD-D13 L3 Startup | 2d | 2026-07-15 A | 2026-07-15 A | DC1-SWD-L3-CX-2930, QTS-1020 | 100% | 2026-08-12 | 2026-08-13 | SIE | Commissioning | DH1300 | L3 | SWD | DELETED | DH1100 |
| DC1-SWD-L3-CX-2950 | **DELETED** DC1-SWD-D13 BMS/EPMS Programming | 1d | 2026-07-15 A | 2026-07-15 A | DC1-SWD-L3-CX-2940, QTS-1020 | 100% | 2026-08-14 | 2026-08-14 | PRM | Commissioning | DH1300 | L3 | SWD | DELETED | DH1100 |
| DC1-SWD-L3-CX-2960 | **DELETED** DC1-SWD-E13 FTE | 1d | 2026-07-15 A | 2026-07-15 A | DC1-XFM-L3-CX-1960 SS, QTS-1020 | 100% | 2026-08-11 | 2026-08-11 | ROS | Commissioning | DH1300 | L3 | SWD | DELETED | DH1100 |
| DC1-SWD-L3-CX-2970 | **DELETED** DC1-SWD-E13 L3 Startup | 2d | 2026-07-15 A | 2026-07-15 A | DC1-SWD-L3-CX-2960, QTS-1020 | 100% | 2026-08-12 | 2026-08-13 | SIE | Commissioning | DH1300 | L3 | SWD | DELETED | DH1100 |
| DC1-SWD-L3-CX-2980 | **DELETED** DC1-SWD-E13 BMS/EPMS Programming | 1d | 2026-07-15 A | 2026-07-15 A | DC1-SWD-L3-CX-2970, QTS-1020 | 100% | 2026-08-14 | 2026-08-14 | PRM | Commissioning | DH1300 | L3 | SWD | DELETED | DH1100 |
| DC1-SWD-L3-CX-2990 | **DELETED** DC1-SWD-F13 FTE | 1d | 2026-07-15 A | 2026-07-15 A | DC1-XFM-L3-CX-1990 SS, QTS-1020 | 100% | 2026-08-11 | 2026-08-11 | ROS | Commissioning | DH1300 | L3 | SWD | DELETED | DH1100 |
| DC1-SWD-L3-CX-3000 | **DELETED** DC1-SWD-F13 L3 Startup | 2d | 2026-07-15 A | 2026-07-15 A | DC1-SWD-L3-CX-2990, QTS-1020 | 100% | 2026-08-12 | 2026-08-13 | SIE | Commissioning | DH1300 | L3 | SWD | DELETED | DH1100 |
| DC1-SWD-L3-CX-3010 | **DELETED** DC1-SWD-F13 BMS/EPMS Programming | 1d | 2026-07-15 A | 2026-07-15 A | DC1-SWD-L3-CX-3000, QTS-1020 | 100% | 2026-08-14 | 2026-08-14 | PRM | Commissioning | DH1300 | L3 | SWD | DELETED | DH1100 |
| DC1-SWD-L3-CX-3020 | **DELETED** DC1-SWD-R13 FTE | 1d | 2026-07-15 A | 2026-07-15 A | DC1-XFM-L3-CX-2020 SS, QTS-1020 | 100% | 2026-08-11 | 2026-08-11 | ROS | Commissioning | DH1300 | L3 | SWD | DELETED | DH1100 |
| DC1-SWD-L3-CX-3030 | **DELETED** DC1-SWD-R13 L3 Startup | 2d | 2026-07-15 A | 2026-07-15 A | DC1-SWD-L3-CX-3020, QTS-1020 | 100% | 2026-08-12 | 2026-08-13 | SIE | Commissioning | DH1300 | L3 | SWD | DELETED | DH1100 |
| DC1-SWD-L3-CX-3040 | **DELETED** DC1-SWD-R13 BMS/EPMS Programming | 1d | 2026-07-15 A | 2026-07-15 A | DC1-SWD-L3-CX-3030, QTS-1020 | 100% | 2026-08-14 | 2026-08-14 | PRM | Commissioning | DH1300 | L3 | SWD | DELETED | DH1100 |
| DC1-UPS-M-L2-2210 | **DELETED** DH2300 UPS-M-A23 L2 Checklist | 3d | 2026-07-15 A | 2026-07-15 A | QTS-1020 | 100% | 2026-07-15 | 2026-07-17 | VER | Commissioning | DH2300 | L2 | UPS | DELETED | DH1100 |
| DC1-UPS-M-L2-2220 | **DELETED** DH2300 UPS-M-B23 L2 Checklist | 3d | 2026-07-15 A | 2026-07-15 A | QTS-1020 | 100% | 2026-07-20 | 2026-07-22 | VER | Commissioning | DH2300 | L2 | UPS | DELETED | DH1100 |
| DC1-UPS-M-L2-2230 | **DELETED** DH2300 UPS-M-C23 L2 Checklist | 3d | 2026-07-15 A | 2026-07-15 A | QTS-1020 | 100% | 2026-07-23 | 2026-07-27 | VER | Commissioning | DH2300 | L2 | UPS | DELETED | DH1100 |
| DC1-UPS-M-L2-2240 | **DELETED** DH2300 UPS-M-D23 L2 Checklist | 3d | 2026-07-15 A | 2026-07-15 A | QTS-1020 | 100% | 2026-07-28 | 2026-07-30 | VER | Commissioning | DH2300 | L2 | UPS | DELETED | DH1100 |
| DC1-UPS-M-L2-2250 | **DELETED** DH2300 UPS-M-E23 L2 Checklist | 3d | 2026-07-15 A | 2026-07-15 A | QTS-1020 | 100% | 2026-07-31 | 2026-08-04 | VER | Commissioning | DH2300 | L2 | UPS | DELETED | DH1100 |
| DC1-UPS-M-L2-2260 | **DELETED** DH2300 UPS-M-F23 L2 Checklist | 3d | 2026-07-15 A | 2026-07-15 A | QTS-1020 | 100% | 2026-08-05 | 2026-08-07 | VER | Commissioning | DH2300 | L2 | UPS | DELETED | DH1100 |
| DC1-UPS-M-L2-2270 | **DELETED** DH2300 UPS-M-R23 L2 Checklist | 3d | 2026-07-15 A | 2026-07-15 A | QTS-1020 | 100% | 2026-08-10 | 2026-08-12 | VER | Commissioning | DH2300 | L2 | UPS | DELETED | DH1100 |
| DC1-UPS-M-L2-2280 | **DELETED** DH1300 UPS-M-A13 L2 Checklist | 3d | 2026-07-15 A | 2026-07-15 A | QTS-1020 | 100% | 2026-07-15 | 2026-07-17 | VER | Commissioning | DH1300 | L2 | UPS | DELETED | DH1100 |
| DC1-UPS-M-L2-2290 | **DELETED** DH1300 UPS-M-B13 L2 Checklist | 3d | 2026-07-15 A | 2026-07-15 A | QTS-1020 | 100% | 2026-07-20 | 2026-07-22 | VER | Commissioning | DH1300 | L2 | UPS | DELETED | DH1100 |
| DC1-UPS-M-L2-2300 | **DELETED** DH1300 UPS-M-C13 L2 Checklist | 3d | 2026-07-15 A | 2026-07-15 A | QTS-1020 | 100% | 2026-07-23 | 2026-07-27 | VER | Commissioning | DH1300 | L2 | UPS | DELETED | DH1100 |
| DC1-UPS-M-L2-2310 | **DELETED** DH1300 UPS-M-D13 L2 Checklist | 3d | 2026-07-15 A | 2026-07-15 A | QTS-1020 | 100% | 2026-07-28 | 2026-07-30 | VER | Commissioning | DH1300 | L2 | UPS | DELETED | DH1100 |
| DC1-UPS-M-L2-2320 | **DELETED** DH1300 UPS-M-E13 L2 Checklist | 3d | 2026-07-15 A | 2026-07-15 A | QTS-1020 | 100% | 2026-07-31 | 2026-08-04 | VER | Commissioning | DH1300 | L2 | UPS | DELETED | DH1100 |
| DC1-UPS-M-L2-2330 | **DELETED** DH1300 UPS-M-F13 L2 Checklist | 3d | 2026-07-15 A | 2026-07-15 A | QTS-1020 | 100% | 2026-08-05 | 2026-08-07 | VER | Commissioning | DH1300 | L2 | UPS | DELETED | DH1100 |
| DC1-UPS-M-L2-2340 | **DELETED** DH1300 UPS-M-R13 L2 Checklist | 3d | 2026-07-15 A | 2026-07-15 A | QTS-1020 | 100% | 2026-08-10 | 2026-08-12 | VER | Commissioning | DH1300 | L2 | UPS | DELETED | DH1100 |
| DC1-UPSM-L3-CX-2630 | **DELETED** DC1-UPS-M-A23 FTE | 1d | 2026-07-15 A | 2026-07-15 A | QTS-1020 | 100% | 2026-08-17 | 2026-08-17 | ROS | Commissioning | DH2300 | L3 | UPS | DELETED | DH1100 |
| DC1-UPSM-L3-CX-2640 | **DELETED** DC1-UPS-M-A23 L3 Startup | 2d | 2026-07-15 A | 2026-07-15 A | QTS-1020 | 100% | 2026-08-18 | 2026-08-19 | VER | Commissioning | DH2300 | L3 | UPS | DELETED | DH1100 |
| DC1-UPSM-L3-CX-2650 | **DELETED** DC1-UPS-M-A23 BMS/EPMS Programming | 1d | 2026-07-15 A | 2026-07-15 A | QTS-1020 | 100% | 2026-08-20 | 2026-08-20 | PRM | Commissioning | DH2300 | L3 | UPS | DELETED | DH1100 |
| DC1-UPSM-L3-CX-2660 | **DELETED** DC1-UPS-M-B23 FTE | 1d | 2026-07-15 A | 2026-07-15 A | QTS-1020 | 100% | 2026-08-18 | 2026-08-18 | ROS | Commissioning | DH2300 | L3 | UPS | DELETED | DH1100 |
| DC1-UPSM-L3-CX-2670 | **DELETED** DC1-UPS-M-B23 L3 Startup | 2d | 2026-07-15 A | 2026-07-15 A | QTS-1020 | 100% | 2026-08-19 | 2026-08-20 | VER | Commissioning | DH2300 | L3 | UPS | DELETED | DH1100 |
| DC1-UPSM-L3-CX-2680 | **DELETED** DC1-UPS-M-B23 BMS/EPMS Programming | 1d | 2026-07-15 A | 2026-07-15 A | QTS-1020 | 100% | 2026-08-21 | 2026-08-21 | PRM | Commissioning | DH2300 | L3 | UPS | DELETED | DH1100 |
| DC1-UPSM-L3-CX-2690 | **DELETED** DC1-UPS-M-C23 FTE | 1d | 2026-07-15 A | 2026-07-15 A | QTS-1020 | 100% | 2026-08-19 | 2026-08-19 | ROS | Commissioning | DH2300 | L3 | UPS | DELETED | DH1100 |
| DC1-UPSM-L3-CX-2700 | **DELETED** DC1-UPS-M-C23 L3 Startup | 2d | 2026-07-15 A | 2026-07-15 A | QTS-1020 | 100% | 2026-08-20 | 2026-08-21 | VER | Commissioning | DH2300 | L3 | UPS | DELETED | DH1100 |
| DC1-UPSM-L3-CX-2710 | **DELETED** DC1-UPS-M-C23 BMS/EPMS Programming | 1d | 2026-07-15 A | 2026-07-15 A | QTS-1020 | 100% | 2026-08-24 | 2026-08-24 | PRM | Commissioning | DH2300 | L3 | UPS | DELETED | DH1100 |
| DC1-UPSM-L3-CX-2720 | **DELETED** DC1-UPS-M-D23 FTE | 1d | 2026-07-15 A | 2026-07-15 A | QTS-1020 | 100% | 2026-08-20 | 2026-08-20 | ROS | Commissioning | DH2300 | L3 | UPS | DELETED | DH1100 |
| DC1-UPSM-L3-CX-2730 | **DELETED** DC1-UPS-M-D23 L3 Startup | 2d | 2026-07-15 A | 2026-07-15 A | QTS-1020 | 100% | 2026-08-21 | 2026-08-24 | VER | Commissioning | DH2300 | L3 | UPS | DELETED | DH1100 |
| DC1-UPSM-L3-CX-2740 | **DELETED** DC1-UPS-M-D23 BMS/EPMS Programming | 1d | 2026-07-15 A | 2026-07-15 A | QTS-1020 | 100% | 2026-08-25 | 2026-08-25 | PRM | Commissioning | DH2300 | L3 | UPS | DELETED | DH1100 |
| DC1-UPSM-L3-CX-2750 | **DELETED** DC1-UPS-M-E23 FTE | 1d | 2026-07-15 A | 2026-07-15 A | QTS-1020 | 100% | 2026-08-21 | 2026-08-21 | ROS | Commissioning | DH2300 | L3 | UPS | DELETED | DH1100 |
| DC1-UPSM-L3-CX-2760 | **DELETED** DC1-UPS-M-E23 L3 Startup | 2d | 2026-07-15 A | 2026-07-15 A | QTS-1020 | 100% | 2026-08-24 | 2026-08-25 | VER | Commissioning | DH2300 | L3 | UPS | DELETED | DH1100 |
| DC1-UPSM-L3-CX-2770 | **DELETED** DC1-UPS-M-E23 BMS/EPMS Programming | 1d | 2026-07-15 A | 2026-07-15 A | QTS-1020 | 100% | 2026-08-26 | 2026-08-26 | PRM | Commissioning | DH2300 | L3 | UPS | DELETED | DH1100 |
| DC1-UPSM-L3-CX-2780 | **DELETED** DC1-UPS-M-F23 FTE | 1d | 2026-07-15 A | 2026-07-15 A | QTS-1020 | 100% | 2026-08-24 | 2026-08-24 | ROS | Commissioning | DH2300 | L3 | UPS | DELETED | DH1100 |
| DC1-UPSM-L3-CX-2790 | **DELETED** DC1-UPS-M-F23 L3 Startup | 2d | 2026-07-15 A | 2026-07-15 A | QTS-1020 | 100% | 2026-08-25 | 2026-08-26 | VER | Commissioning | DH2300 | L3 | UPS | DELETED | DH1100 |
| DC1-UPSM-L3-CX-2800 | **DELETED** DC1-UPS-M-F23 BMS/EPMS Programming | 1d | 2026-07-15 A | 2026-07-15 A | QTS-1020 | 100% | 2026-08-27 | 2026-08-27 | PRM | Commissioning | DH2300 | L3 | UPS | DELETED | DH1100 |
| DC1-UPSM-L3-CX-2810 | **DELETED** DC1-UPS-M-R23 FTE | 1d | 2026-07-15 A | 2026-07-15 A | QTS-1020 | 100% | 2026-08-25 | 2026-08-25 | ROS | Commissioning | DH2300 | L3 | UPS | DELETED | DH1100 |
| DC1-UPSM-L3-CX-2820 | **DELETED** DC1-UPS-M-R23 L3 Startup | 2d | 2026-07-15 A | 2026-07-15 A | QTS-1020 | 100% | 2026-08-26 | 2026-08-27 | VER | Commissioning | DH2300 | L3 | UPS | DELETED | DH1100 |
| DC1-UPSM-L3-CX-2830 | **DELETED** DC1-UPS-M-R23 BMS/EPMS Programming | 1d | 2026-07-15 A | 2026-07-15 A | QTS-1020 | 100% | 2026-08-28 | 2026-08-28 | PRM | Commissioning | DH2300 | L3 | UPS | DELETED | DH1100 |
| DC1-UPSM-L3-CX-2840 | **DELETED** DC1-UPS-M-A13 FTE | 1d | 2026-07-15 A | 2026-07-15 A | QTS-1020 | 100% | 2026-08-17 | 2026-08-17 | ROS | Commissioning | DH1300 | L3 | UPS | DELETED | DH1100 |
| DC1-UPSM-L3-CX-2850 | **DELETED** DC1-UPS-M-A13 L3 Startup | 2d | 2026-07-15 A | 2026-07-15 A | QTS-1020 | 100% | 2026-08-18 | 2026-08-19 | VER | Commissioning | DH1300 | L3 | UPS | DELETED | DH1100 |
| DC1-UPSM-L3-CX-2860 | **DELETED** DC1-UPS-M-A13 BMS/EPMS Programming | 1d | 2026-07-15 A | 2026-07-15 A | QTS-1020 | 100% | 2026-08-20 | 2026-08-20 | PRM | Commissioning | DH1300 | L3 | UPS | DELETED | DH1100 |
| DC1-UPSM-L3-CX-2870 | **DELETED** DC1-UPS-M-B13 FTE | 1d | 2026-07-15 A | 2026-07-15 A | QTS-1020 | 100% | 2026-08-18 | 2026-08-18 | ROS | Commissioning | DH1300 | L3 | UPS | DELETED | DH1100 |
| DC1-UPSM-L3-CX-2880 | **DELETED** DC1-UPS-M-B13 L3 Startup | 2d | 2026-07-15 A | 2026-07-15 A | QTS-1020 | 100% | 2026-08-19 | 2026-08-20 | VER | Commissioning | DH1300 | L3 | UPS | DELETED | DH1100 |
| DC1-UPSM-L3-CX-2890 | **DELETED** DC1-UPS-M-B13 BMS/EPMS Programming | 1d | 2026-07-15 A | 2026-07-15 A | QTS-1020 | 100% | 2026-08-21 | 2026-08-21 | PRM | Commissioning | DH1300 | L3 | UPS | DELETED | DH1100 |
| DC1-UPSM-L3-CX-2900 | **DELETED** DC1-UPS-M-C13 FTE | 1d | 2026-07-15 A | 2026-07-15 A | QTS-1020 | 100% | 2026-08-19 | 2026-08-19 | ROS | Commissioning | DH1300 | L3 | UPS | DELETED | DH1100 |

Notes:
- DC1-SWD-L3-CX-2790: Steps: EC Startup Report; Vendor Startup
- DC1-SWD-L3-CX-2820: Steps: EC Startup Report; Vendor Startup
- DC1-SWD-L3-CX-2850: Steps: EC Startup Report; Vendor Startup
- DC1-SWD-L3-CX-2880: Steps: EC Startup Report; Vendor Startup
- DC1-SWD-L3-CX-2910: Steps: EC Startup Report; Vendor Startup
- DC1-SWD-L3-CX-2940: Steps: EC Startup Report; Vendor Startup
- DC1-SWD-L3-CX-2970: Steps: EC Startup Report; Vendor Startup
- DC1-SWD-L3-CX-3000: Steps: EC Startup Report; Vendor Startup
- DC1-SWD-L3-CX-3030: Steps: EC Startup Report; Vendor Startup
- DC1-UPS-M-L2-2210: Steps: EC Pre-Energization Checklist; Vendor Pre-Energization Checklist; CXA Pre-Energization Inspection; PEI/Clean-Walk
- DC1-UPS-M-L2-2220: Steps: EC Pre-Energization Checklist; Vendor Pre-Energization Checklist; CXA Pre-Energization Inspection; PEI/Clean-Walk
- DC1-UPS-M-L2-2230: Steps: EC Pre-Energization Checklist; Vendor Pre-Energization Checklist; CXA Pre-Energization Inspection; PEI/Clean-Walk
- DC1-UPS-M-L2-2240: Steps: EC Pre-Energization Checklist; Vendor Pre-Energization Checklist; CXA Pre-Energization Inspection; PEI/Clean-Walk
- DC1-UPS-M-L2-2250: Steps: EC Pre-Energization Checklist; Vendor Pre-Energization Checklist; CXA Pre-Energization Inspection; PEI/Clean-Walk
- DC1-UPS-M-L2-2260: Steps: EC Pre-Energization Checklist; Vendor Pre-Energization Checklist; CXA Pre-Energization Inspection; PEI/Clean-Walk
- DC1-UPS-M-L2-2270: Steps: EC Pre-Energization Checklist; Vendor Pre-Energization Checklist; CXA Pre-Energization Inspection; PEI/Clean-Walk
- DC1-UPS-M-L2-2280: Steps: EC Pre-Energization Checklist; Vendor Pre-Energization Checklist; CXA Pre-Energization Inspection; PEI/Clean-Walk
- DC1-UPS-M-L2-2290: Steps: EC Pre-Energization Checklist; Vendor Pre-Energization Checklist; CXA Pre-Energization Inspection; PEI/Clean-Walk
- DC1-UPS-M-L2-2300: Steps: EC Pre-Energization Checklist; Vendor Pre-Energization Checklist; CXA Pre-Energization Inspection; PEI/Clean-Walk
- DC1-UPS-M-L2-2310: Steps: EC Pre-Energization Checklist; Vendor Pre-Energization Checklist; CXA Pre-Energization Inspection; PEI/Clean-Walk
- DC1-UPS-M-L2-2320: Steps: EC Pre-Energization Checklist; Vendor Pre-Energization Checklist; CXA Pre-Energization Inspection; PEI/Clean-Walk
- DC1-UPS-M-L2-2330: Steps: EC Pre-Energization Checklist; Vendor Pre-Energization Checklist; CXA Pre-Energization Inspection; PEI/Clean-Walk
- DC1-UPS-M-L2-2340: Steps: EC Pre-Energization Checklist; Vendor Pre-Energization Checklist; CXA Pre-Energization Inspection; PEI/Clean-Walk
- DC1-UPSM-L3-CX-2640: Steps: EC Startup Report; Vendor Startup
- DC1-UPSM-L3-CX-2670: Steps: EC Startup Report; Vendor Startup
- DC1-UPSM-L3-CX-2700: Steps: EC Startup Report; Vendor Startup
- DC1-UPSM-L3-CX-2730: Steps: EC Startup Report; Vendor Startup
- DC1-UPSM-L3-CX-2760: Steps: EC Startup Report; Vendor Startup
- DC1-UPSM-L3-CX-2790: Steps: EC Startup Report; Vendor Startup
- DC1-UPSM-L3-CX-2820: Steps: EC Startup Report; Vendor Startup
- DC1-UPSM-L3-CX-2850: Steps: EC Startup Report; Vendor Startup
- DC1-UPSM-L3-CX-2880: Steps: EC Startup Report; Vendor Startup

| ID | Activity | Duration | Start | Finish | Predecessors | Complete | Planned start | Planned finish | Vendor Responsible Party | Layton Discipline | Location | CX Level | Equipment | DELETED | D | Notes |
| --- | --- | --- | --- | --- | --- | --- | --- | --- | --- | --- | --- | --- | --- | --- | --- | --- |
| DC1-UPSM-L3-CX-2910 | **DELETED** DC1-UPS-M-C13 L3 Startup | 2d | 2026-07-15 A | 2026-07-15 A | QTS-1020 | 100% | 2026-08-20 | 2026-08-21 | VER | Commissioning | DH1300 | L3 | UPS | DELETED | DH1100 |  |
| DC1-UPSM-L3-CX-2920 | **DELETED** DC1-UPS-M-C13 BMS/EPMS Programming | 1d | 2026-07-15 A | 2026-07-15 A | QTS-1020 | 100% | 2026-08-24 | 2026-08-24 | PRM | Commissioning | DH1300 | L3 | UPS | DELETED | DH1100 |  |
| DC1-UPSM-L3-CX-2930 | **DELETED** DC1-UPS-M-D13 FTE | 1d | 2026-07-15 A | 2026-07-15 A | QTS-1020 | 100% | 2026-08-20 | 2026-08-20 | ROS | Commissioning | DH1300 | L3 | UPS | DELETED | DH1100 |  |
| DC1-UPSM-L3-CX-2940 | **DELETED** DC1-UPS-M-D13 L3 Startup | 2d | 2026-07-15 A | 2026-07-15 A | QTS-1020 | 100% | 2026-08-21 | 2026-08-24 | VER | Commissioning | DH1300 | L3 | UPS | DELETED | DH1100 |  |
| DC1-UPSM-L3-CX-2950 | **DELETED** DC1-UPS-M-D13 BMS/EPMS Programming | 1d | 2026-07-15 A | 2026-07-15 A | QTS-1020 | 100% | 2026-08-25 | 2026-08-25 | PRM | Commissioning | DH1300 | L3 | UPS | DELETED | DH1100 |  |
| DC1-UPSM-L3-CX-2960 | **DELETED** DC1-UPS-M-E13 FTE | 1d | 2026-07-15 A | 2026-07-15 A | QTS-1020 | 100% | 2026-08-21 | 2026-08-21 | ROS | Commissioning | DH1300 | L3 | UPS | DELETED | DH1100 |  |
| DC1-UPSM-L3-CX-2970 | **DELETED** DC1-UPS-M-E13 L3 Startup | 2d | 2026-07-15 A | 2026-07-15 A | QTS-1020 | 100% | 2026-08-24 | 2026-08-25 | VER | Commissioning | DH1300 | L3 | UPS | DELETED | DH1100 |  |
| DC1-UPSM-L3-CX-2980 | **DELETED** DC1-UPS-M-E13 BMS/EPMS Programming | 1d | 2026-07-15 A | 2026-07-15 A | QTS-1020 | 100% | 2026-08-26 | 2026-08-26 | PRM | Commissioning | DH1300 | L3 | UPS | DELETED | DH1100 |  |
| DC1-UPSM-L3-CX-2990 | **DELETED** DC1-UPS-M-F13 FTE | 1d | 2026-07-15 A | 2026-07-15 A | QTS-1020 | 100% | 2026-08-24 | 2026-08-24 | ROS | Commissioning | DH1300 | L3 | UPS | DELETED | DH1100 |  |
| DC1-UPSM-L3-CX-3000 | **DELETED** DC1-UPS-M-F13 L3 Startup | 2d | 2026-07-15 A | 2026-07-15 A | QTS-1020 | 100% | 2026-08-25 | 2026-08-26 | VER | Commissioning | DH1300 | L3 | UPS | DELETED | DH1100 |  |
| DC1-UPSM-L3-CX-3010 | **DELETED** DC1-UPS-M-F13 BMS/EPMS Programming | 1d | 2026-07-15 A | 2026-07-15 A | QTS-1020 | 100% | 2026-08-27 | 2026-08-27 | PRM | Commissioning | DH1300 | L3 | UPS | DELETED | DH1100 |  |
| DC1-UPSM-L3-CX-3020 | **DELETED** DC1-UPS-M-R13 FTE | 1d | 2026-07-15 A | 2026-07-15 A | QTS-1020 | 100% | 2026-08-24 | 2026-08-24 | ROS | Commissioning | DH1300 | L3 | UPS | DELETED | DH1100 |  |
| DC1-UPSM-L3-CX-3030 | **DELETED** DC1-UPS-M-R23 L3 Startup | 2d | 2026-07-15 A | 2026-07-15 A | QTS-1020 | 100% | 2026-08-25 | 2026-08-26 | VER | Commissioning | DH1300 | L3 | UPS | DELETED | DH1100 |  |
| DC1-UPSM-L3-CX-3040 | **DELETED** DC1-UPS-M-R13 BMS/EPMS Programming | 1d | 2026-07-15 A | 2026-07-15 A | QTS-1020 | 100% | 2026-08-27 | 2026-08-27 | PRM | Commissioning | DH1300 | L3 | UPS | DELETED | DH1100 |  |
| DC1-XFM-L3-CX-1630 | **DELETED** DC1-XFMR-A23 FTE | 1d | 2026-07-15 A | 2026-07-15 A | QTS-1020 | 100% | 2026-07-31 | 2026-07-31 | ROS | Commissioning | DH2300 | L3 | XFMR | DELETED | DH1100 | MVG FTE Pred |
| DC1-XFM-L3-CX-1640 | **DELETED** DC1-XFMR-A23 L3 Startup | 2d | 2026-07-15 A | 2026-07-15 A | QTS-1020 | 100% | 2026-08-03 | 2026-08-04 | VTC | Commissioning | DH2300 | L3 | XFMR | DELETED | DH1100 |  |
| DC1-XFM-L3-CX-1650 | **DELETED** DC1-XFMR-A23 BMS/EPMS Programming | 1d | 2026-07-15 A | 2026-07-15 A | QTS-1020 | 100% | 2026-08-05 | 2026-08-05 | PRM | Commissioning | DH2300 | L3 | XFMR | DELETED | DH1100 |  |
| DC1-XFM-L3-CX-1660 | **DELETED** DC1-XFMR-B23 FTE | 1d | 2026-07-15 A | 2026-07-15 A | QTS-1020 | 100% | 2026-08-04 | 2026-08-04 | ROS | Commissioning | DH2300 | L3 | XFMR | DELETED | DH1100 | MVG FTE Pred |
| DC1-XFM-L3-CX-1670 | **DELETED** DC1-XFMR-B23 L3 Startup | 2d | 2026-07-15 A | 2026-07-15 A | QTS-1020 | 100% | 2026-08-05 | 2026-08-06 | VTC | Commissioning | DH2300 | L3 | XFMR | DELETED | DH1100 |  |
| DC1-XFM-L3-CX-1680 | **DELETED** DC1-XFMR-B23 BMS/EPMS Programming | 1d | 2026-07-15 A | 2026-07-15 A | QTS-1020 | 100% | 2026-08-07 | 2026-08-07 | PRM | Commissioning | DH2300 | L3 | XFMR | DELETED | DH1100 |  |
| DC1-XFM-L3-CX-1690 | **DELETED** DC1-XFMR-C23 FTE | 1d | 2026-07-15 A | 2026-07-15 A | QTS-1020 | 100% | 2026-08-06 | 2026-08-06 | ROS | Commissioning | DH2300 | L3 | XFMR | DELETED | DH1100 | MVG FTE Pred |
| DC1-XFM-L3-CX-1700 | **DELETED** DC1-XFMR-C23 L3 Startup | 2d | 2026-07-15 A | 2026-07-15 A | QTS-1020 | 100% | 2026-08-07 | 2026-08-10 | VTC | Commissioning | DH2300 | L3 | XFMR | DELETED | DH1100 |  |
| DC1-XFM-L3-CX-1710 | **DELETED** DC1-XFMR-C23 BMS/EPMS Programming | 1d | 2026-07-15 A | 2026-07-15 A | QTS-1020 | 100% | 2026-08-11 | 2026-08-11 | PRM | Commissioning | DH2300 | L3 | XFMR | DELETED | DH1100 |  |
| DC1-XFM-L3-CX-1720 | **DELETED** DC1-XFMR-D23 FTE | 1d | 2026-07-15 A | 2026-07-15 A | QTS-1020 | 100% | 2026-08-07 | 2026-08-07 | ROS | Commissioning | DH2300 | L3 | XFMR | DELETED | DH1100 | MVG FTE Pred |
| DC1-XFM-L3-CX-1730 | **DELETED** DC1-XFMR-D23 L3 Startup | 2d | 2026-07-15 A | 2026-07-15 A | QTS-1020 | 100% | 2026-08-10 | 2026-08-11 | VTC | Commissioning | DH2300 | L3 | XFMR | DELETED | DH1100 |  |
| DC1-XFM-L3-CX-1740 | **DELETED** DC1-XFMR-D23 BMS/EPMS Programming | 1d | 2026-07-15 A | 2026-07-15 A | QTS-1020 | 100% | 2026-08-12 | 2026-08-12 | PRM | Commissioning | DH2300 | L3 | XFMR | DELETED | DH1100 |  |
| DC1-XFM-L3-CX-1750 | **DELETED** DC1-XFMR-E23 FTE | 1d | 2026-07-15 A | 2026-07-15 A | QTS-1020 | 100% | 2026-08-10 | 2026-08-10 | ROS | Commissioning | DH2300 | L3 | XFMR | DELETED | DH1100 | MVG FTE Pred |
| DC1-XFM-L3-CX-1760 | **DELETED** DC1-XFMR-E23 L3 Startup | 2d | 2026-07-15 A | 2026-07-15 A | QTS-1020 | 100% | 2026-08-11 | 2026-08-12 | VTC | Commissioning | DH2300 | L3 | XFMR | DELETED | DH1100 |  |
| DC1-XFM-L3-CX-1770 | **DELETED** DC1-XFMR-E23 BMS/EPMS Programming | 1d | 2026-07-15 A | 2026-07-15 A | QTS-1020 | 100% | 2026-08-13 | 2026-08-13 | PRM | Commissioning | DH2300 | L3 | XFMR | DELETED | DH1100 |  |
| DC1-XFM-L3-CX-1780 | **DELETED** DC1-XFMR-F23 FTE | 1d | 2026-07-15 A | 2026-07-15 A | QTS-1020 | 100% | 2026-08-11 | 2026-08-11 | ROS | Commissioning | DH2300 | L3 | XFMR | DELETED | DH1100 | MVG FTE Pred |
| DC1-XFM-L3-CX-1790 | **DELETED** DC1-XFMR-F23 L3 Startup | 2d | 2026-07-15 A | 2026-07-15 A | QTS-1020 | 100% | 2026-08-12 | 2026-08-13 | VTC | Commissioning | DH2300 | L3 | XFMR | DELETED | DH1100 |  |
| DC1-XFM-L3-CX-1800 | **DELETED** DC1-XFMR-F23 BMS/EPMS Programming | 1d | 2026-07-15 A | 2026-07-15 A | QTS-1020 | 100% | 2026-08-14 | 2026-08-14 | PRM | Commissioning | DH2300 | L3 | XFMR | DELETED | DH1100 |  |
| DC1-XFM-L3-CX-1810 | **DELETED** DC1-XFMR-R23 FTE | 1d | 2026-07-15 A | 2026-07-15 A | QTS-1020 | 100% | 2026-07-29 | 2026-07-29 | ROS | Commissioning | DH2300 | L3 | XFMR | DELETED | DH1100 | MVG FTE Pred |
| DC1-XFM-L3-CX-1820 | **DELETED** DC1-XFMR-R23 L3 Startup | 2d | 2026-07-15 A | 2026-07-15 A | QTS-1020 | 100% | 2026-07-30 | 2026-07-31 | VTC | Commissioning | DH2300 | L3 | XFMR | DELETED | DH1100 |  |
| DC1-XFM-L3-CX-1830 | **DELETED** DC1-XFMR-R23 BMS/EPMS Programming | 1d | 2026-07-15 A | 2026-07-15 A | QTS-1020 | 100% | 2026-08-03 | 2026-08-03 | PRM | Commissioning | DH2300 | L3 | XFMR | DELETED | DH1100 |  |
| DC1-XFM-L3-CX-1840 | **DELETED** DC1-XFMR-A13 FTE | 1d | 2026-07-15 A | 2026-07-15 A | QTS-1020 | 100% | 2026-07-31 | 2026-07-31 | ROS | Commissioning | DH1300 | L3 | XFMR | DELETED | DH1100 | MVG FTE Pred |
| DC1-XFM-L3-CX-1850 | **DELETED** DC1-XFMR-A13 L3 Startup | 2d | 2026-07-15 A | 2026-07-15 A | DC1-XFM-L3-CX-1840, QTS-1020 | 100% | 2026-08-03 | 2026-08-04 | VTC | Commissioning | DH1300 | L3 | XFMR | DELETED | DH1100 |  |
| DC1-XFM-L3-CX-1860 | **DELETED** DC1-XFMR-A13 BMS/EPMS Programming | 1d | 2026-07-15 A | 2026-07-15 A | DC1-XFM-L3-CX-1850, QTS-1020 | 100% | 2026-08-05 | 2026-08-05 | PRM | Commissioning | DH1300 | L3 | XFMR | DELETED | DH1100 |  |
| DC1-XFM-L3-CX-1870 | **DELETED** DC1-XFMR-B13 FTE | 1d | 2026-07-15 A | 2026-07-15 A | QTS-1020 | 100% | 2026-08-04 | 2026-08-04 | ROS | Commissioning | DH1300 | L3 | XFMR | DELETED | DH1100 | MVG FTE Pred |
| DC1-XFM-L3-CX-1880 | **DELETED** DC1-XFMR-B13 L3 Startup | 2d | 2026-07-15 A | 2026-07-15 A | DC1-XFM-L3-CX-1870, QTS-1020 | 100% | 2026-08-05 | 2026-08-06 | VTC | Commissioning | DH1300 | L3 | XFMR | DELETED | DH1100 |  |
| DC1-XFM-L3-CX-1890 | **DELETED** DC1-XFMR-B13 BMS/EPMS Programming | 1d | 2026-07-15 A | 2026-07-15 A | DC1-XFM-L3-CX-1880, QTS-1020 | 100% | 2026-08-07 | 2026-08-07 | PRM | Commissioning | DH1300 | L3 | XFMR | DELETED | DH1100 |  |
| DC1-XFM-L3-CX-1900 | **DELETED** DC1-XFMR-C13 FTE | 1d | 2026-07-15 A | 2026-07-15 A | QTS-1020 | 100% | 2026-08-06 | 2026-08-06 | ROS | Commissioning | DH1300 | L3 | XFMR | DELETED | DH1100 | MVG FTE Pred |
| DC1-XFM-L3-CX-1910 | **DELETED** DC1-XFMR-C13 L3 Startup | 2d | 2026-07-15 A | 2026-07-15 A | DC1-XFM-L3-CX-1900, QTS-1020 | 100% | 2026-08-07 | 2026-08-10 | VTC | Commissioning | DH1300 | L3 | XFMR | DELETED | DH1100 |  |
| DC1-XFM-L3-CX-1920 | **DELETED** DC1-XFMR-C13 BMS/EPMS Programming | 1d | 2026-07-15 A | 2026-07-15 A | DC1-XFM-L3-CX-1910, QTS-1020 | 100% | 2026-08-11 | 2026-08-11 | PRM | Commissioning | DH1300 | L3 | XFMR | DELETED | DH1100 |  |
| DC1-XFM-L3-CX-1930 | **DELETED** DC1-XFMR-D13 FTE | 1d | 2026-07-15 A | 2026-07-15 A | QTS-1020 | 100% | 2026-08-07 | 2026-08-07 | ROS | Commissioning | DH1300 | L3 | XFMR | DELETED | DH1100 | MVG FTE Pred |
| DC1-XFM-L3-CX-1940 | **DELETED** DC1-XFMR-D13 L3 Startup | 2d | 2026-07-15 A | 2026-07-15 A | DC1-XFM-L3-CX-1930, QTS-1020 | 100% | 2026-08-10 | 2026-08-11 | VTC | Commissioning | DH1300 | L3 | XFMR | DELETED | DH1100 |  |
| DC1-XFM-L3-CX-1950 | **DELETED** DC1-XFMR-D13 BMS/EPMS Programming | 1d | 2026-07-15 A | 2026-07-15 A | DC1-XFM-L3-CX-1940, QTS-1020 | 100% | 2026-08-12 | 2026-08-12 | PRM | Commissioning | DH1300 | L3 | XFMR | DELETED | DH1100 |  |
| DC1-XFM-L3-CX-1960 | **DELETED** DC1-XFMR-E13 FTE | 1d | 2026-07-15 A | 2026-07-15 A | QTS-1020 | 100% | 2026-08-10 | 2026-08-10 | ROS | Commissioning | DH1300 | L3 | XFMR | DELETED | DH1100 | MVG FTE Pred |
| DC1-XFM-L3-CX-1970 | **DELETED** DC1-XFMR-E13 L3 Startup | 2d | 2026-07-15 A | 2026-07-15 A | DC1-XFM-L3-CX-1960, QTS-1020 | 100% | 2026-08-11 | 2026-08-12 | VTC | Commissioning | DH1300 | L3 | XFMR | DELETED | DH1100 |  |
| DC1-XFM-L3-CX-1980 | **DELETED** DC1-XFMR-E13 BMS/EPMS Programming | 1d | 2026-07-15 A | 2026-07-15 A | DC1-XFM-L3-CX-1970, QTS-1020 | 100% | 2026-08-13 | 2026-08-13 | PRM | Commissioning | DH1300 | L3 | XFMR | DELETED | DH1100 |  |
| DC1-XFM-L3-CX-1990 | **DELETED** DC1-XFMR-F13 FTE | 1d | 2026-07-15 A | 2026-07-15 A | QTS-1020 | 100% | 2026-08-11 | 2026-08-11 | ROS | Commissioning | DH1300 | L3 | XFMR | DELETED | DH1100 | MVG FTE Pred |
| DC1-XFM-L3-CX-2000 | **DELETED** DC1-XFMR-F13 L3 Startup | 2d | 2026-07-15 A | 2026-07-15 A | DC1-XFM-L3-CX-1990, QTS-1020 | 100% | 2026-08-12 | 2026-08-13 | VTC | Commissioning | DH1300 | L3 | XFMR | DELETED | DH1100 |  |
| DC1-XFM-L3-CX-2010 | **DELETED** DC1-XFMR-F13 BMS/EPMS Programming | 1d | 2026-07-15 A | 2026-07-15 A | DC1-XFM-L3-CX-2000, QTS-1020 | 100% | 2026-08-14 | 2026-08-14 | PRM | Commissioning | DH1300 | L3 | XFMR | DELETED | DH1100 |  |
| DC1-XFM-L3-CX-2020 | **DELETED** DC1-XFMR-R13 FTE | 1d | 2026-07-15 A | 2026-07-15 A | QTS-1020 | 100% | 2026-07-29 | 2026-07-29 | ROS | Commissioning | DH1300 | L3 | XFMR | DELETED | DH1100 | MVG FTE Pred |
| DC1-XFM-L3-CX-2030 | **DELETED** DC1-XFMR-R13 L3 Startup | 2d | 2026-07-15 A | 2026-07-15 A | DC1-XFM-L3-CX-2020, QTS-1020 | 100% | 2026-07-30 | 2026-07-31 | VTC | Commissioning | DH1300 | L3 | XFMR | DELETED | DH1100 |  |
| DC1-XFM-L3-CX-2040 | **DELETED** DC1-XFMR-R13 BMS/EPMS Programming | 1d | 2026-07-15 A | 2026-07-15 A | DC1-XFM-L3-CX-2030, QTS-1020 | 100% | 2026-08-03 | 2026-08-03 | PRM | Commissioning | DH1300 | L3 | XFMR | DELETED | DH1100 |  |
| DC1-XFMR-L2-2290 | **DELETED** DH1300 XFMR-B13 L2 Checklist | 3d | 2026-07-15 A | 2026-07-15 A | QTS-1020 | 100% | 2026-07-23 | 2026-07-27 | VTC | Commissioning | DH1300 | L2 | XFMR | DELETED | DH1100 |  |
| DC1-CHLR-L3-Cx-2490 | **DELETED** DC1-CHLR-1RT40-A12 FTE | 1d | 2026-07-16 A | 2026-07-16 A | QTS-1020 | 100% |  |  | ROS | Commissioning | DH1200 | L3 | CHILLER | DELETED | DH1100 |  |
| DC1-CHLR-L3-Cx-2500 | **DELETED** DC1-CHLR-1RT40-A12 L3 Startup | 2d | 2026-07-16 A | 2026-07-16 A | QTS-1020 | 100% | 2026-07-21 | 2026-07-22 | TAS | Commissioning | DH1200 | L3 | CHILLER | DELETED | DH1100 |  |
| DC1-CHLR-L3-Cx-2510 | **DELETED** DC1-CHLR-1RT40-A12 BMS/EPMS Programming | 1d | 2026-07-16 A | 2026-07-16 A | QTS-1020 | 100% | 2026-07-23 | 2026-07-23 | PRM | Commissioning | DH1200 | L3 | CHILLER | DELETED | DH1100 |  |
| DC1-CHLR-L3-Cx-2520 | **DELETED** DC1-CHLR-1RT40-B12 FTE | 1d | 2026-07-16 A | 2026-07-16 A | QTS-1020 | 100% |  |  | ROS | Commissioning | DH1200 | L3 | CHILLER | DELETED | DH1100 |  |
| DC1-CHLR-L3-Cx-2530 | **DELETED** DC1-CHLR-1RT40-B12 L3 Startup | 2d | 2026-07-16 A | 2026-07-16 A | QTS-1020 | 100% | 2026-07-21 | 2026-07-22 | TAS | Commissioning | DH1200 | L3 | CHILLER | DELETED | DH1100 |  |
| DC1-CHLR-L3-Cx-2540 | **DELETED** DC1-CHLR-1RT40-B12 BMS/EPMS Programming | 1d | 2026-07-16 A | 2026-07-16 A | QTS-1020 | 100% | 2026-07-23 | 2026-07-23 | PRM | Commissioning | DH1200 | L3 | CHILLER | DELETED | DH1100 |  |
| DC1-CHLR-L3-Cx-2550 | **DELETED** DC1-CHLR-1RT40-C12 FTE | 1d | 2026-07-16 A | 2026-07-16 A | QTS-1020 | 100% |  |  | ROS | Commissioning | DH1200 | L3 | CHILLER | DELETED | DH1100 |  |
| DC1-CHLR-L3-Cx-2560 | **DELETED** DC1-CHLR-1RT40-C12 L3 Startup | 2d | 2026-07-16 A | 2026-07-16 A | QTS-1020 | 100% | 2026-07-21 | 2026-07-22 | TAS | Commissioning | DH1200 | L3 | CHILLER | DELETED | DH1100 |  |
| DC1-CHLR-L3-Cx-2570 | **DELETED** DC1-CHLR-1RT40-C12 BMS/EPMS Programming | 1d | 2026-07-16 A | 2026-07-16 A | QTS-1020 | 100% | 2026-07-23 | 2026-07-23 | PRM | Commissioning | DH1200 | L3 | CHILLER | DELETED | DH1100 |  |
| DC1-CHLR-L3-Cx-2580 | **DELETED** DC1-CHLR-1RT40-D12 FTE | 1d | 2026-07-16 A | 2026-07-16 A | QTS-1020 | 100% |  |  | ROS | Commissioning | DH1200 | L3 | CHILLER | DELETED | DH1100 |  |
| DC1-CHLR-L3-Cx-2590 | **DELETED** DC1-CHLR-1RT40-D12 L3 Startup | 2d | 2026-07-16 A | 2026-07-16 A | QTS-1020 | 100% | 2026-07-21 | 2026-07-22 | TAS | Commissioning | DH1200 | L3 | CHILLER | DELETED | DH1100 |  |
| DC1-CHLR-L3-Cx-2600 | **DELETED** DC1-CHLR-1RT40-D12 BMS/EPMS Programming | 1d | 2026-07-16 A | 2026-07-16 A | QTS-1020 | 100% | 2026-07-23 | 2026-07-23 | PRM | Commissioning | DH1200 | L3 | CHILLER | DELETED | DH1100 |  |
| DC1-CHLR-L3-Cx-2610 | **DELETED** DC1-CHLR-1RT40-E12 FTE | 1d | 2026-07-16 A | 2026-07-16 A | QTS-1020 | 100% |  |  | ROS | Commissioning | DH1200 | L3 | CHILLER | DELETED | DH1100 |  |

Notes:
- DC1-UPSM-L3-CX-2910: Steps: EC Startup Report; Vendor Startup
- DC1-UPSM-L3-CX-2940: Steps: EC Startup Report; Vendor Startup
- DC1-UPSM-L3-CX-2970: Steps: EC Startup Report; Vendor Startup
- DC1-UPSM-L3-CX-3000: Steps: EC Startup Report; Vendor Startup
- DC1-UPSM-L3-CX-3030: Steps: EC Startup Report; Vendor Startup
- DC1-XFM-L3-CX-1640: Steps: EC Startup Report; Vendor Startup
- DC1-XFM-L3-CX-1670: Steps: EC Startup Report; Vendor Startup
- DC1-XFM-L3-CX-1700: Steps: EC Startup Report; Vendor Startup
- DC1-XFM-L3-CX-1730: Steps: EC Startup Report; Vendor Startup
- DC1-XFM-L3-CX-1760: Steps: EC Startup Report; Vendor Startup
- DC1-XFM-L3-CX-1790: Steps: EC Startup Report; Vendor Startup
- DC1-XFM-L3-CX-1820: Steps: EC Startup Report; Vendor Startup
- DC1-XFM-L3-CX-1850: Steps: EC Startup Report; Vendor Startup
- DC1-XFM-L3-CX-1880: Steps: EC Startup Report; Vendor Startup
- DC1-XFM-L3-CX-1910: Steps: EC Startup Report; Vendor Startup
- DC1-XFM-L3-CX-1940: Steps: EC Startup Report; Vendor Startup
- DC1-XFM-L3-CX-1970: Steps: EC Startup Report; Vendor Startup
- DC1-XFM-L3-CX-2000: Steps: EC Startup Report; Vendor Startup
- DC1-XFM-L3-CX-2030: Steps: EC Startup Report; Vendor Startup
- DC1-XFMR-L2-2290: Steps: EC Installation Checklist; CC Installation Checklist; Vendor Pre-Energization Checklist; CXA Pre-Energization Inspection; PEI/Clean-Walk
- DC1-CHLR-L3-Cx-2500: Steps: EC Startup Report; MC Startup Report; Vendor Startup
- DC1-CHLR-L3-Cx-2530: Steps: EC Startup Report; MC Startup Report; Vendor Startup
- DC1-CHLR-L3-Cx-2560: Steps: EC Startup Report; MC Startup Report; Vendor Startup
- DC1-CHLR-L3-Cx-2590: Steps: EC Startup Report; MC Startup Report; Vendor Startup

| ID | Activity | Duration | Start | Finish | Predecessors | Complete | Planned start | Planned finish | Vendor Responsible Party | Layton Discipline | Location | CX Level | Equipment | DELETED | D | Notes |
| --- | --- | --- | --- | --- | --- | --- | --- | --- | --- | --- | --- | --- | --- | --- | --- | --- |
| DC1-CHLR-L3-Cx-2620 | **DELETED** DC1-CHLR-1RT40-E12 L3 Startup | 2d | 2026-07-16 A | 2026-07-16 A | QTS-1020 | 100% | 2026-07-21 | 2026-07-22 | TAS | Commissioning | DH1200 | L3 | CHILLER | DELETED | DH1100 |  |
| DC1-CHLR-L3-Cx-2630 | **DELETED** DC1-CHLR-1RT40-E12 BMS/EPMS Programming | 1d | 2026-07-16 A | 2026-07-16 A | QTS-1020 | 100% | 2026-07-23 | 2026-07-23 | PRM | Commissioning | DH1200 | L3 | CHILLER | DELETED | DH1100 |  |
| DC1-CHLR-L3-Cx-2640 | **DELETED** DC1-CHLR-1RT40-F12 FTE | 1d | 2026-07-16 A | 2026-07-16 A | QTS-1020 | 100% |  |  | ROS | Commissioning | DH1200 | L3 | CHILLER | DELETED | DH1100 |  |
| DC1-CHLR-L3-Cx-2650 | **DELETED** DC1-CHLR-1RT40-F12 L3 Startup | 2d | 2026-07-16 A | 2026-07-16 A | QTS-1020 | 100% | 2026-07-21 | 2026-07-22 | TAS | Commissioning | DH1200 | L3 | CHILLER | DELETED | DH1100 |  |
| DC1-CHLR-L3-Cx-2660 | **DELETED** DC1-CHLR-1RT40-F12 BMS/EPMS Programming | 1d | 2026-07-16 A | 2026-07-16 A | QTS-1020 | 100% | 2026-07-23 | 2026-07-23 | PRM | Commissioning | DH1200 | L3 | CHILLER | DELETED | DH1100 |  |
| DC1-CHLR-L3-Cx-2670 | **DELETED** DC1-CHLR-1RT40-R12 FTE | 1d | 2026-07-16 A | 2026-07-16 A | QTS-1020 | 100% |  |  | ROS | Commissioning | DH1200 | L3 | CHILLER | DELETED | DH1100 |  |
| DC1-CHLR-L3-Cx-2680 | **DELETED** DC1-CHLR-1RT40-R12 L3 Startup | 2d | 2026-07-16 A | 2026-07-16 A | QTS-1020 | 100% | 2026-07-21 | 2026-07-22 | TAS | Commissioning | DH1200 | L3 | CHILLER | DELETED | DH1100 |  |
| DC1-CHLR-L3-Cx-2690 | **DELETED** DC1-CHLR-1RT40-R12 BMS/EPMS Programming | 1d | 2026-07-16 A | 2026-07-16 A | QTS-1020 | 100% | 2026-07-23 | 2026-07-23 | PRM | Commissioning | DH1200 | L3 | CHILLER | DELETED | DH1100 |  |
| DC1-CHLR-L3-Cx-2700 | **DELETED** DC1-CHLR-1RT40-A12 Heat Up | 2d | 2026-07-16 A | 2026-07-16 A | QTS-1020 | 100% | 2026-07-17 | 2026-07-20 | LAY | Commissioning | DH1200 | L3 | CHILLER | DELETED | DH1100 |  |
| DC1-CHLR-L3-Cx-2710 | **DELETED** DC1-CHLR-1RT40-B12 Heat Up | 2d | 2026-07-16 A | 2026-07-16 A | QTS-1020 | 100% | 2026-07-17 | 2026-07-20 | LAY | Commissioning | DH1200 | L3 | CHILLER | DELETED | DH1100 |  |
| DC1-CHLR-L3-Cx-2720 | **DELETED** DC1-CHLR-1RT40-C12 Heat Up | 2d | 2026-07-16 A | 2026-07-16 A | QTS-1020 | 100% | 2026-07-17 | 2026-07-20 | LAY | Commissioning | DH1200 | L3 | CHILLER | DELETED | DH1100 |  |
| DC1-CHLR-L3-Cx-2730 | **DELETED** DC1-CHLR-1RT40-D12 Heat Up | 2d | 2026-07-16 A | 2026-07-16 A | QTS-1020 | 100% | 2026-07-17 | 2026-07-20 | LAY | Commissioning | DH1200 | L3 | CHILLER | DELETED | DH1100 |  |
| DC1-CHLR-L3-Cx-2740 | **DELETED** DC1-CHLR-1RT40-E12 Heat Up | 2d | 2026-07-16 A | 2026-07-16 A | QTS-1020 | 100% | 2026-07-17 | 2026-07-20 | LAY | Commissioning | DH1200 | L3 | CHILLER | DELETED | DH1100 |  |
| DC1-CHLR-L3-Cx-2750 | **DELETED** DC1-CHLR-1RT40-F12 Heat Up | 2d | 2026-07-16 A | 2026-07-16 A | QTS-1020 | 100% | 2026-07-17 | 2026-07-20 | LAY | Commissioning | DH1200 | L3 | CHILLER | DELETED | DH1100 |  |
| DC1-CHLR-L3-Cx-2760 | **DELETED** DC1-CHLR-1RT40-R12 Heat Up | 2d | 2026-07-16 A | 2026-07-16 A | QTS-1020 | 100% | 2026-07-17 | 2026-07-20 | LAY | Commissioning | DH1200 | L3 | CHILLER | DELETED | DH1100 |  |
| DC1-CHWP-L3-Cx-2210 | **DELETED** DC1-CHWP-1RT40-A22 FTE | 1d | 2026-07-16 A | 2026-07-16 A | QTS-1020 | 100% |  |  | ROS | Commissioning | DH2200 | L3 | CHWP | DELETED | DH1100 | CFCI |
| DC1-CHWP-L3-Cx-2220 | **DELETED** DC1-CHWP1RT40-A22 L3 Startup | 2d | 2026-07-16 A | 2026-07-16 A | QTS-1020 | 100% | 2026-07-17 | 2026-07-20 | LAY | Commissioning | DH2200 | L3 | CHWP | DELETED | DH1100 | CFCI |
| DC1-CHWP-L3-Cx-2230 | **DELETED** DC1-CHWP-1RT40-A22 BMS/EPMS Programming | 1d | 2026-07-16 A | 2026-07-16 A | QTS-1020 | 100% | 2026-07-21 | 2026-07-21 | PRM | Commissioning | DH2200 | L3 | CHWP | DELETED | DH1100 | CFCI |
| DC1-CHWP-L3-Cx-2240 | **DELETED** DC1-CHWP-1RT40-B22 FTE | 1d | 2026-07-16 A | 2026-07-16 A | QTS-1020 | 100% |  |  | ROS | Commissioning | DH2200 | L3 | CHWP | DELETED | DH1100 | CFCI |
| DC1-CHWP-L3-Cx-2250 | **DELETED** DC1-CHWP-1RT40-B22 L3 Startup | 2d | 2026-07-16 A | 2026-07-16 A | QTS-1020 | 100% | 2026-07-17 | 2026-07-20 | LAY | Commissioning | DH2200 | L3 | CHWP | DELETED | DH1100 | CFCI |
| DC1-CHWP-L3-Cx-2260 | **DELETED** DC1-CHWP-1RT40-B22 BMS/EPMS Programming | 1d | 2026-07-16 A | 2026-07-16 A | QTS-1020 | 100% | 2026-07-21 | 2026-07-21 | PRM | Commissioning | DH2200 | L3 | CHWP | DELETED | DH1100 | CFCI |
| DC1-CHWP-L3-Cx-2270 | **DELETED** DC1-CHWP-1RT40-C22 FTE | 1d | 2026-07-16 A | 2026-07-16 A | QTS-1020 | 100% |  |  | ROS | Commissioning | DH2200 | L3 | CHWP | DELETED | DH1100 | CFCI |
| DC1-CHWP-L3-Cx-2280 | **DELETED** DC1-CHWP-1RT40-C22 L3 Startup | 2d | 2026-07-16 A | 2026-07-16 A | QTS-1020 | 100% | 2026-07-17 | 2026-07-20 | LAY | Commissioning | DH2200 | L3 | CHWP | DELETED | DH1100 | CFCI |
| DC1-CHWP-L3-Cx-2290 | **DELETED** DC1-CHWP-1RT40-C22 BMS/EPMS Programming | 1d | 2026-07-16 A | 2026-07-16 A | QTS-1020 | 100% | 2026-07-21 | 2026-07-21 | PRM | Commissioning | DH2200 | L3 | CHWP | DELETED | DH1100 | CFCI |
| DC1-CHWP-L3-Cx-2300 | **DELETED** DC1-CHWP-1RT40-D22 FTE | 1d | 2026-07-16 A | 2026-07-16 A | QTS-1020 | 100% |  |  | ROS | Commissioning | DH2200 | L3 | CHWP | DELETED | DH1100 | CFCI |
| DC1-CHWP-L3-Cx-2310 | **DELETED** DC1-CHWP-1RT40-D22 L3 Startup | 2d | 2026-07-16 A | 2026-07-16 A | QTS-1020 | 100% | 2026-07-17 | 2026-07-20 | LAY | Commissioning | DH2200 | L3 | CHWP | DELETED | DH1100 | CFCI |
| DC1-CHWP-L3-Cx-2320 | **DELETED** DC1-CHWP-1RT40-D22 BMS/EPMS Programming | 1d | 2026-07-16 A | 2026-07-16 A | QTS-1020 | 100% | 2026-07-21 | 2026-07-21 | PRM | Commissioning | DH2200 | L3 | CHWP | DELETED | DH1100 | CFCI |
| DC1-CHWP-L3-Cx-2330 | **DELETED** DC1-CHWP-1RT40-E22 FTE | 1d | 2026-07-16 A | 2026-07-16 A | QTS-1020 | 100% |  |  | ROS | Commissioning | DH2200 | L3 | CHWP | DELETED | DH1100 | CFCI |
| DC1-CHWP-L3-Cx-2340 | **DELETED** C1-CHWP-1RT40-E22 L3 Startup | 2d | 2026-07-16 A | 2026-07-16 A | QTS-1020 | 100% | 2026-07-17 | 2026-07-20 | LAY | Commissioning | DH2200 | L3 | CHWP | DELETED | DH1100 | CFCI |
| DC1-CHWP-L3-Cx-2350 | **DELETED** DC1-CHWP-1RT40-E22 BMS/EPMS Programming | 1d | 2026-07-16 A | 2026-07-16 A | QTS-1020 | 100% | 2026-07-21 | 2026-07-21 | PRM | Commissioning | DH2200 | L3 | CHWP | DELETED | DH1100 | CFCI |
| DC1-CHWP-L3-Cx-2360 | **DELETED** DC1-CHWP-1RT40-F22 FTE | 1d | 2026-07-16 A | 2026-07-16 A | QTS-1020 | 100% |  |  | ROS | Commissioning | DH2200 | L3 | CHWP | DELETED | DH1100 |  |
| DC1-CHWP-L3-Cx-2370 | **DELETED** DC1-CHWP-1RT40-F22 L3 Startup | 2d | 2026-07-16 A | 2026-07-16 A | QTS-1020 | 100% | 2026-07-17 | 2026-07-20 | LAY | Commissioning | DH2200 | L3 | CHWP | DELETED | DH1100 |  |
| DC1-CHWP-L3-Cx-2380 | **DELETED** DC1-CHWP-1RT40-F22 BMS/EPMS Programming | 1d | 2026-07-16 A | 2026-07-16 A | QTS-1020 | 100% | 2026-07-21 | 2026-07-21 | PRM | Commissioning | DH2200 | L3 | CHWP | DELETED | DH1100 |  |
| DC1-CHWP-L3-Cx-2390 | **DELETED** DC1-CHWP-1RT40-R22 FTE | 1d | 2026-07-16 A | 2026-07-16 A | QTS-1020 | 100% |  |  | ROS | Commissioning | DH2200 | L3 | CHWP | DELETED | DH1100 | CFCI |
| DC1-CHWP-L3-Cx-2400 | **DELETED** DC1-CHWP-1RT40-R22 L3 Startup | 2d | 2026-07-16 A | 2026-07-16 A | QTS-1020 | 100% | 2026-07-17 | 2026-07-20 | LAY | Commissioning | DH2200 | L3 | CHWP | DELETED | DH1100 | CFCI |
| DC1-CHWP-L3-Cx-2410 | **DELETED** DC1-CHWP-1RT40-R22 BMS/EPMS Programming | 1d | 2026-07-16 A | 2026-07-16 A | QTS-1020 | 100% | 2026-07-21 | 2026-07-21 | PRM | Commissioning | DH2200 | L3 | CHWP | DELETED | DH1100 | CFCI |
| DC1-CHWP-L3-Cx-2420 | **DELETED** DC1-CHWP-1RT40-A12 FTE | 1d | 2026-07-16 A | 2026-07-16 A | QTS-1020 | 100% | 2026-07-17 | 2026-07-17 | ROS | Commissioning | DH1200 | L3 | CHWP | DELETED | DH1100 | CFCI |
| DC1-CHWP-L3-Cx-2430 | **DELETED** DC1-CHWP1RT40-A12 L3 Startup | 2d | 2026-07-16 A | 2026-07-16 A | QTS-1020 | 100% | 2026-07-20 | 2026-07-21 | LAY | Commissioning | DH1200 | L3 | CHWP | DELETED | DH1100 | CFCI |
| DC1-CHWP-L3-Cx-2440 | **DELETED** DC1-CHWP-1RT40-A12 BMS/EPMS Programming | 1d | 2026-07-16 A | 2026-07-16 A | QTS-1020 | 100% | 2026-07-22 | 2026-07-22 | PRM | Commissioning | DH1200 | L3 | CHWP | DELETED | DH1100 | CFCI |
| DC1-CHWP-L3-Cx-2450 | **DELETED** DC1-CHWP-1RT40-B12 FTE | 1d | 2026-07-16 A | 2026-07-16 A | QTS-1020 | 100% | 2026-07-17 | 2026-07-17 | ROS | Commissioning | DH1200 | L3 | CHWP | DELETED | DH1100 | CFCI |
| DC1-CHWP-L3-Cx-2460 | **DELETED** DC1-CHWP-1RT40-B12 L3 Startup | 2d | 2026-07-16 A | 2026-07-16 A | QTS-1020 | 100% | 2026-07-20 | 2026-07-21 | LAY | Commissioning | DH1200 | L3 | CHWP | DELETED | DH1100 | CFCI |
| DC1-CHWP-L3-Cx-2470 | **DELETED** DC1-CHWP-1RT40-B12 BMS/EPMS Programming | 1d | 2026-07-16 A | 2026-07-16 A | QTS-1020 | 100% | 2026-07-22 | 2026-07-22 | PRM | Commissioning | DH1200 | L3 | CHWP | DELETED | DH1100 | CFCI |
| DC1-CHWP-L3-Cx-2480 | **DELETED** DC1-CHWP-1RT40-C12 FTE | 1d | 2026-07-16 A | 2026-07-16 A | QTS-1020 | 100% | 2026-07-17 | 2026-07-17 | ROS | Commissioning | DH1200 | L3 | CHWP | DELETED | DH1100 | CFCI |
| DC1-CHWP-L3-Cx-2490 | **DELETED** DC1-CHWP-1RT40-C12 L3 Startup | 2d | 2026-07-16 A | 2026-07-16 A | QTS-1020 | 100% | 2026-07-20 | 2026-07-21 | LAY | Commissioning | DH1200 | L3 | CHWP | DELETED | DH1100 | CFCI |
| DC1-CHWP-L3-Cx-2500 | **DELETED** DC1-CHWP-1RT40-C12 BMS/EPMS Programming | 1d | 2026-07-16 A | 2026-07-16 A | QTS-1020 | 100% | 2026-07-22 | 2026-07-22 | PRM | Commissioning | DH1200 | L3 | CHWP | DELETED | DH1100 | CFCI |
| DC1-CHWP-L3-Cx-2510 | **DELETED** DC1-CHWP-1RT40-D12 FTE | 1d | 2026-07-16 A | 2026-07-16 A | QTS-1020 | 100% | 2026-07-17 | 2026-07-17 | ROS | Commissioning | DH1200 | L3 | CHWP | DELETED | DH1100 | CFCI |
| DC1-CHWP-L3-Cx-2520 | **DELETED** DC1-CHWP-1RT40-D12 L3 Startup | 2d | 2026-07-16 A | 2026-07-16 A | QTS-1020 | 100% | 2026-07-20 | 2026-07-21 | LAY | Commissioning | DH1200 | L3 | CHWP | DELETED | DH1100 | CFCI |
| DC1-CHWP-L3-Cx-2530 | **DELETED** DC1-CHWP-1RT40-D12 BMS/EPMS Programming | 1d | 2026-07-16 A | 2026-07-16 A | QTS-1020 | 100% | 2026-07-22 | 2026-07-22 | PRM | Commissioning | DH1200 | L3 | CHWP | DELETED | DH1100 | CFCI |
| DC1-CHWP-L3-Cx-2540 | **DELETED** DC1-CHWP-1RT40-E12 FTE | 1d | 2026-07-16 A | 2026-07-16 A | QTS-1020 | 100% | 2026-07-17 | 2026-07-17 | ROS | Commissioning | DH1200 | L3 | CHWP | DELETED | DH1100 | CFCI |
| DC1-CHWP-L3-Cx-2550 | **DELETED** DC1-CHWP-1RT40-E12 L3 Startup | 2d | 2026-07-16 A | 2026-07-16 A | QTS-1020 | 100% | 2026-07-20 | 2026-07-21 | LAY | Commissioning | DH1200 | L3 | CHWP | DELETED | DH1100 | CFCI |
| DC1-CHWP-L3-Cx-2560 | **DELETED** DC1-CHWP-1RT40-E12 BMS/EPMS Programming | 1d | 2026-07-16 A | 2026-07-16 A | QTS-1020 | 100% | 2026-07-22 | 2026-07-22 | PRM | Commissioning | DH1200 | L3 | CHWP | DELETED | DH1100 | CFCI |
| DC1-CHWP-L3-Cx-2570 | **DELETED** DC1-CHWP-1RT40-F12 FTE | 1d | 2026-07-16 A | 2026-07-16 A | QTS-1020 | 100% |  |  | ROS | Commissioning | DH1200 | L3 | CHWP | DELETED | DH1100 | CFCI |
| DC1-CHWP-L3-Cx-2580 | **DELETED** DC1-CHWP-1RT40-F12 L3 Startup | 2d | 2026-07-16 A | 2026-07-16 A | QTS-1020 | 100% | 2026-07-17 | 2026-07-20 | LAY | Commissioning | DH1200 | L3 | CHWP | DELETED | DH1100 | CFCI |
| DC1-CHWP-L3-Cx-2590 | **DELETED** DC1-CHWP-1RT40-F12 BMS/EPMS Programming | 1d | 2026-07-16 A | 2026-07-16 A | QTS-1020 | 100% | 2026-07-21 | 2026-07-21 | PRM | Commissioning | DH1200 | L3 | CHWP | DELETED | DH1100 | CFCI |
| DC1-CHWP-L3-Cx-2600 | **DELETED** DC1-CHWP-1RT40-R12 FTE | 1d | 2026-07-16 A | 2026-07-16 A | QTS-1020 | 100% | 2026-07-17 | 2026-07-17 | ROS | Commissioning | DH1200 | L3 | CHWP | DELETED | DH1100 | CFCI |
| DC1-CHWP-L3-Cx-2610 | **DELETED** DC1-CHWP-1RT40-R12 L3 Startup | 2d | 2026-07-16 A | 2026-07-16 A | QTS-1020 | 100% | 2026-07-20 | 2026-07-21 | LAY | Commissioning | DH1200 | L3 | CHWP | DELETED | DH1100 | CFCI |
| DC1-CHWP-L3-Cx-2620 | **DELETED** DC1-CHWP-1RT40-R12 BMS/EPMS Programming | 1d | 2026-07-16 A | 2026-07-16 A | QTS-1020 | 100% | 2026-07-22 | 2026-07-22 | PRM | Commissioning | DH1200 | L3 | CHWP | DELETED | DH1100 | CFCI |
| DC1-CRAH-L3-Cx-3920 | **DELETED** DC1-DH1200-CRAH-DH-01 FTE | 1d | 2026-07-16 A | 2026-07-16 A | QTS-1020 | 100% | 2026-07-21 | 2026-07-21 | ROS | Commissioning | DH1200 | L3 | DH CRAH | DELETED | DH1100 |  |
| DC1-CRAH-L3-Cx-3930 | **DELETED** DC1-DH1200-CRAH-DH-01 L3 Startup | 2d | 2026-07-16 A | 2026-07-16 A | QTS-1020 | 100% | 2026-07-22 | 2026-07-23 | UMAS | Commissioning | DH1200 | L3 | DH CRAH | DELETED | DH1100 |  |
| DC1-CRAH-L3-Cx-3940 | **DELETED** DC1-DH1200-CRAH-DH-01 BMS/EPMS Programming | 1d | 2026-07-16 A | 2026-07-16 A | QTS-1020 | 100% | 2026-07-24 | 2026-07-24 | PRM | Commissioning | DH1200 | L3 | DH CRAH | DELETED | DH1100 |  |
| DC1-CRAH-L3-Cx-3950 | **DELETED** DC1-DH1200-CRAH-DH-02 FTE | 1d | 2026-07-16 A | 2026-07-16 A | QTS-1020 | 100% | 2026-07-21 | 2026-07-21 | ROS | Commissioning | DH1200 | L3 | DH CRAH | DELETED | DH1100 |  |
| DC1-CRAH-L3-Cx-3960 | **DELETED** DC1-DH1200-CRAH-DH-02 L3 Startup | 2d | 2026-07-16 A | 2026-07-16 A | QTS-1020 | 100% | 2026-07-22 | 2026-07-23 | UMAS | Commissioning | DH1200 | L3 | DH CRAH | DELETED | DH1100 |  |
| DC1-CRAH-L3-Cx-3970 | **DELETED** DC1-DH1200-CRAH-DH-02 BMS/EPMS Programming | 1d | 2026-07-16 A | 2026-07-16 A | QTS-1020 | 100% | 2026-07-24 | 2026-07-24 | PRM | Commissioning | DH1200 | L3 | DH CRAH | DELETED | DH1100 |  |
| DC1-CRAH-L3-Cx-3980 | **DELETED** DC1-DH1200-CRAH-DH-03 FTE | 1d | 2026-07-16 A | 2026-07-16 A | QTS-1020 | 100% | 2026-07-21 | 2026-07-21 | ROS | Commissioning | DH1200 | L3 | DH CRAH | DELETED | DH1100 |  |
| DC1-CRAH-L3-Cx-3990 | **DELETED** DC1-DH1200-CRAH-DH-03 L3 Startup | 2d | 2026-07-16 A | 2026-07-16 A | QTS-1020 | 100% | 2026-07-22 | 2026-07-23 | UMAS | Commissioning | DH1200 | L3 | DH CRAH | DELETED | DH1100 |  |
| DC1-CRAH-L3-Cx-4000 | **DELETED** DC1-DH1200-CRAH-DH-03 BMS/EPMS Programming | 1d | 2026-07-16 A | 2026-07-16 A | QTS-1020 | 100% | 2026-07-24 | 2026-07-24 | PRM | Commissioning | DH1200 | L3 | DH CRAH | DELETED | DH1100 |  |
| DC1-CRAH-L3-Cx-4010 | **DELETED** DC1-DH1200-CRAH-DH-04 FTE | 1d | 2026-07-16 A | 2026-07-16 A | QTS-1020 | 100% | 2026-07-21 | 2026-07-21 | ROS | Commissioning | DH1200 | L3 | DH CRAH | DELETED | DH1100 |  |
| DC1-CRAH-L3-Cx-4020 | **DELETED** DC1-DH1200-CRAH-DH-04 L3 Startup | 2d | 2026-07-16 A | 2026-07-16 A | QTS-1020 | 100% | 2026-07-22 | 2026-07-23 | UMAS | Commissioning | DH1200 | L3 | DH CRAH | DELETED | DH1100 |  |
| DC1-CRAH-L3-Cx-4030 | **DELETED** DC1-DH1200-CRAH-DH-04 BMS/EPMS Programming | 1d | 2026-07-16 A | 2026-07-16 A | QTS-1020 | 100% | 2026-07-24 | 2026-07-24 | PRM | Commissioning | DH1200 | L3 | DH CRAH | DELETED | DH1100 |  |
| DC1-CRAH-L3-Cx-4040 | **DELETED** DC1-DH1200-CRAH-DH-05 FTE | 1d | 2026-07-16 A | 2026-07-16 A | QTS-1020 | 100% | 2026-07-21 | 2026-07-21 | ROS | Commissioning | DH1200 | L3 | DH CRAH | DELETED | DH1100 |  |

Notes:
- DC1-CHLR-L3-Cx-2620: Steps: EC Startup Report; MC Startup Report; Vendor Startup
- DC1-CHLR-L3-Cx-2650: Steps: EC Startup Report; MC Startup Report; Vendor Startup
- DC1-CHLR-L3-Cx-2680: Steps: EC Startup Report; MC Startup Report; Vendor Startup
- DC1-CHWP-L3-Cx-2220: Steps: EC Startup Report; MC Startup Report; Vendor Startup
- DC1-CHWP-L3-Cx-2250: Steps: EC Startup Report; MC Startup Report; Vendor Startup
- DC1-CHWP-L3-Cx-2280: Steps: EC Startup Report; MC Startup Report; Vendor Startup
- DC1-CHWP-L3-Cx-2310: Steps: EC Startup Report; MC Startup Report; Vendor Startup
- DC1-CHWP-L3-Cx-2340: Steps: EC Startup Report; MC Startup Report; Vendor Startup
- DC1-CHWP-L3-Cx-2370: Steps: EC Startup Report; MC Startup Report; Vendor Startup
- DC1-CHWP-L3-Cx-2400: Steps: EC Startup Report; MC Startup Report; Vendor Startup
- DC1-CHWP-L3-Cx-2430: Steps: EC Startup Report; MC Startup Report; Vendor Startup
- DC1-CHWP-L3-Cx-2460: Steps: EC Startup Report; MC Startup Report; Vendor Startup
- DC1-CHWP-L3-Cx-2490: Steps: EC Startup Report; MC Startup Report; Vendor Startup
- DC1-CHWP-L3-Cx-2520: Steps: EC Startup Report; MC Startup Report; Vendor Startup
- DC1-CHWP-L3-Cx-2550: Steps: EC Startup Report; MC Startup Report; Vendor Startup
- DC1-CHWP-L3-Cx-2580: Steps: EC Startup Report; MC Startup Report; Vendor Startup
- DC1-CHWP-L3-Cx-2610: Steps: EC Startup Report; MC Startup Report; Vendor Startup
- DC1-CRAH-L3-Cx-3930: Steps: EC Startup Checklist; MC Startup Checklist; Vendor Startup
- DC1-CRAH-L3-Cx-3960: Steps: EC Startup Checklist; MC Startup Checklist; Vendor Startup
- DC1-CRAH-L3-Cx-3990: Steps: EC Startup Checklist; MC Startup Checklist; Vendor Startup
- DC1-CRAH-L3-Cx-4020: Steps: EC Startup Checklist; MC Startup Checklist; Vendor Startup

| ID | Activity | Duration | Start | Finish | Predecessors | Complete | Planned start | Planned finish | Vendor Responsible Party | Layton Discipline | Location | CX Level | Equipment | DELETED | D |
| --- | --- | --- | --- | --- | --- | --- | --- | --- | --- | --- | --- | --- | --- | --- | --- |
| DC1-CRAH-L3-Cx-4050 | **DELETED** DC1-DH1200-CRAH-DH-05 L3 Startup | 2d | 2026-07-16 A | 2026-07-16 A | QTS-1020 | 100% | 2026-07-22 | 2026-07-23 | UMAS | Commissioning | DH1200 | L3 | DH CRAH | DELETED | DH1100 |
| DC1-CRAH-L3-Cx-4060 | **DELETED** DC1-DH1200-CRAH-DH-05 BMS/EPMS Programming | 1d | 2026-07-16 A | 2026-07-16 A | QTS-1020 | 100% | 2026-07-24 | 2026-07-24 | PRM | Commissioning | DH1200 | L3 | DH CRAH | DELETED | DH1100 |
| DC1-CRAH-L3-Cx-4070 | **DELETED** DC1-DH1200-CRAH-DH-06 FTE | 1d | 2026-07-16 A | 2026-07-16 A | QTS-1020 | 100% | 2026-07-21 | 2026-07-21 | ROS | Commissioning | DH1200 | L3 | DH CRAH | DELETED | DH1100 |
| DC1-CRAH-L3-Cx-4080 | **DELETED** DC1-DH1200-CRAH-DH-06 L3 Startup | 2d | 2026-07-16 A | 2026-07-16 A | QTS-1020 | 100% | 2026-07-22 | 2026-07-23 | UMAS | Commissioning | DH1200 | L3 | DH CRAH | DELETED | DH1100 |
| DC1-CRAH-L3-Cx-4090 | **DELETED** DC1-DH1200-CRAH-DH-06 BMS/EPMS Programming | 1d | 2026-07-16 A | 2026-07-16 A | QTS-1020 | 100% | 2026-07-24 | 2026-07-24 | PRM | Commissioning | DH1200 | L3 | DH CRAH | DELETED | DH1100 |
| DC1-CRAH-L3-Cx-4100 | **DELETED** DC1-DH1200-CRAH-DH-07 FTE | 1d | 2026-07-16 A | 2026-07-16 A | QTS-1020 | 100% | 2026-07-21 | 2026-07-21 | ROS | Commissioning | DH1200 | L3 | DH CRAH | DELETED | DH1100 |
| DC1-CRAH-L3-Cx-4110 | **DELETED** DC1-DH1200-CRAH-DH-07 L3 Startup | 2d | 2026-07-16 A | 2026-07-16 A | QTS-1020 | 100% | 2026-07-22 | 2026-07-23 | UMAS | Commissioning | DH1200 | L3 | DH CRAH | DELETED | DH1100 |
| DC1-CRAH-L3-Cx-4120 | **DELETED** DC1-DH1200-CRAH-DH-07 BMS/EPMS Programming | 1d | 2026-07-16 A | 2026-07-16 A | QTS-1020 | 100% | 2026-07-24 | 2026-07-24 | PRM | Commissioning | DH1200 | L3 | DH CRAH | DELETED | DH1100 |
| DC1-CRAH-L3-Cx-4130 | **DELETED** DC1-DH1200-CRAH-DH-08 FTE | 1d | 2026-07-16 A | 2026-07-16 A | QTS-1020 | 100% | 2026-07-21 | 2026-07-21 | ROS | Commissioning | DH1200 | L3 | DH CRAH | DELETED | DH1100 |
| DC1-CRAH-L3-Cx-4140 | **DELETED** DC1-DH1200-CRAH-DH-08 L3 Startup | 2d | 2026-07-16 A | 2026-07-16 A | QTS-1020 | 100% | 2026-07-22 | 2026-07-23 | UMAS | Commissioning | DH1200 | L3 | DH CRAH | DELETED | DH1100 |
| DC1-CRAH-L3-Cx-4150 | **DELETED** DC1-DH1200-CRAH-DH-08 BMS/EPMS Programming | 1d | 2026-07-16 A | 2026-07-16 A | QTS-1020 | 100% | 2026-07-24 | 2026-07-24 | PRM | Commissioning | DH1200 | L3 | DH CRAH | DELETED | DH1100 |
| DC1-CRAH-L3-Cx-4160 | **DELETED** DC1-DH1200-CRAH-DH-09 FTE | 1d | 2026-07-16 A | 2026-07-16 A | QTS-1020 | 100% | 2026-07-21 | 2026-07-21 | ROS | Commissioning | DH1200 | L3 | DH CRAH | DELETED | DH1100 |
| DC1-CRAH-L3-Cx-4170 | **DELETED** DC1-DH1200-CRAH-DH-09 L3 Startup | 2d | 2026-07-16 A | 2026-07-16 A | QTS-1020 | 100% | 2026-07-22 | 2026-07-23 | UMAS | Commissioning | DH1200 | L3 | DH CRAH | DELETED | DH1100 |
| DC1-CRAH-L3-Cx-4180 | **DELETED** DC1-DH1200-CRAH-DH-09 BMS/EPMS Programming | 1d | 2026-07-16 A | 2026-07-16 A | QTS-1020 | 100% | 2026-07-24 | 2026-07-24 | PRM | Commissioning | DH1200 | L3 | DH CRAH | DELETED | DH1100 |
| DC1-CRAH-L3-Cx-4190 | **DELETED** DC1-DH1200-CRAH-DH-10 FTE | 1d | 2026-07-16 A | 2026-07-16 A | QTS-1020 | 100% | 2026-07-21 | 2026-07-21 | ROS | Commissioning | DH1200 | L3 | DH CRAH | DELETED | DH1100 |
| DC1-CRAH-L3-Cx-4200 | **DELETED** DC1-DH1200-CRAH-DH-10 L3 Startup | 2d | 2026-07-16 A | 2026-07-16 A | QTS-1020 | 100% | 2026-07-22 | 2026-07-23 | UMAS | Commissioning | DH1200 | L3 | DH CRAH | DELETED | DH1100 |
| DC1-CRAH-L3-Cx-4210 | **DELETED** DC1-DH1200-CRAH-DH-10 BMS/EPMS Programming | 1d | 2026-07-16 A | 2026-07-16 A | QTS-1020 | 100% | 2026-07-24 | 2026-07-24 | PRM | Commissioning | DH1200 | L3 | DH CRAH | DELETED | DH1100 |
| DC1-CRAH-L3-Cx-4220 | **DELETED** DC1-DH1200-CRAH-DH-11 FTE | 1d | 2026-07-16 A | 2026-07-16 A | QTS-1020 | 100% | 2026-07-21 | 2026-07-21 | ROS | Commissioning | DH1200 | L3 | DH CRAH | DELETED | DH1100 |
| DC1-CRAH-L3-Cx-4230 | **DELETED** DC1-DH1200-CRAH-DH-11 L3 Startup | 2d | 2026-07-16 A | 2026-07-16 A | QTS-1020 | 100% | 2026-07-22 | 2026-07-23 | UMAS | Commissioning | DH1200 | L3 | DH CRAH | DELETED | DH1100 |
| DC1-CRAH-L3-Cx-4240 | **DELETED** DC1-DH1200-CRAH-DH-11 BMS/EPMS Programming | 1d | 2026-07-16 A | 2026-07-16 A | QTS-1020 | 100% | 2026-07-24 | 2026-07-24 | PRM | Commissioning | DH1200 | L3 | DH CRAH | DELETED | DH1100 |
| DC1-CRAH-L3-Cx-4250 | **DELETED** DC1-DH1200-CRAH-DH-12 FTE | 1d | 2026-07-16 A | 2026-07-16 A | QTS-1020 | 100% | 2026-07-21 | 2026-07-21 | ROS | Commissioning | DH1200 | L3 | DH CRAH | DELETED | DH1100 |
| DC1-CRAH-L3-Cx-4260 | **DELETED** DC1-DH1200-CRAH-DH-12 L3 Startup | 2d | 2026-07-16 A | 2026-07-16 A | QTS-1020 | 100% | 2026-07-22 | 2026-07-23 | UMAS | Commissioning | DH1200 | L3 | DH CRAH | DELETED | DH1100 |
| DC1-CRAH-L3-Cx-4270 | **DELETED** DC1-DH1200-CRAH-DH-12 BMS/EPMS Programming | 1d | 2026-07-16 A | 2026-07-16 A | QTS-1020 | 100% | 2026-07-24 | 2026-07-24 | PRM | Commissioning | DH1200 | L3 | DH CRAH | DELETED | DH1100 |
| DC1-CRAH-L3-Cx-4280 | **DELETED** DC1-DH1200-CRAH-DH-13 FTE | 1d | 2026-07-16 A | 2026-07-16 A | QTS-1020 | 100% | 2026-07-21 | 2026-07-21 | ROS | Commissioning | DH1200 | L3 | DH CRAH | DELETED | DH1100 |
| DC1-CRAH-L3-Cx-4290 | **DELETED** DC1-DH1200-CRAH-DH-13 L3 Startup | 2d | 2026-07-16 A | 2026-07-16 A | QTS-1020 | 100% | 2026-07-22 | 2026-07-23 | UMAS | Commissioning | DH1200 | L3 | DH CRAH | DELETED | DH1100 |
| DC1-CRAH-L3-Cx-4300 | **DELETED** DC1-DH1200-CRAH-DH-13 BMS/EPMS Programming | 1d | 2026-07-16 A | 2026-07-16 A | QTS-1020 | 100% | 2026-07-24 | 2026-07-24 | PRM | Commissioning | DH1200 | L3 | DH CRAH | DELETED | DH1100 |
| DC1-CRAH-L3-Cx-4310 | **DELETED** DC1-DH1200-CRAH-DH-14 FTE | 1d | 2026-07-16 A | 2026-07-16 A | QTS-1020 | 100% | 2026-07-20 | 2026-07-20 | ROS | Commissioning | DH1200 | L3 | DH CRAH | DELETED | DH1100 |
| DC1-CRAH-L3-Cx-4320 | **DELETED** DC1-DH1200-CRAH-DH-14 L3 Startup | 2d | 2026-07-16 A | 2026-07-16 A | QTS-1020 | 100% | 2026-07-21 | 2026-07-22 | UMAS | Commissioning | DH1200 | L3 | DH CRAH | DELETED | DH1100 |
| DC1-CRAH-L3-Cx-4330 | **DELETED** DC1-DH1200-CRAH-DH-14 BMS/EPMS Programming | 1d | 2026-07-16 A | 2026-07-16 A | QTS-1020 | 100% | 2026-07-23 | 2026-07-23 | PRM | Commissioning | DH1200 | L3 | DH CRAH | DELETED | DH1100 |
| DC1-CRAH-L3-Cx-4340 | **DELETED** DC1-DH1200-CRAH-DH-15 FTE | 1d | 2026-07-16 A | 2026-07-16 A | QTS-1020 | 100% | 2026-07-21 | 2026-07-21 | ROS | Commissioning | DH1200 | L3 | DH CRAH | DELETED | DH1100 |
| DC1-CRAH-L3-Cx-4350 | **DELETED** DC1-DH1200-CRAH-DH-15 L3 Startup | 2d | 2026-07-16 A | 2026-07-16 A | QTS-1020 | 100% | 2026-07-22 | 2026-07-23 | UMAS | Commissioning | DH1200 | L3 | DH CRAH | DELETED | DH1100 |
| DC1-CRAH-L3-Cx-4360 | **DELETED** DC1-DH1200-CRAH-DH-15 BMS/EPMS Programming | 1d | 2026-07-16 A | 2026-07-16 A | QTS-1020 | 100% | 2026-07-24 | 2026-07-24 | PRM | Commissioning | DH1200 | L3 | DH CRAH | DELETED | DH1100 |
| DC1-CRAH-L3-Cx-4370 | **DELETED** DC1-DH1200-CRAH-DH-16 FTE | 1d | 2026-07-16 A | 2026-07-16 A | QTS-1020 | 100% | 2026-07-21 | 2026-07-21 | ROS | Commissioning | DH1200 | L3 | DH CRAH | DELETED | DH1100 |
| DC1-CRAH-L3-Cx-4380 | **DELETED** DC1-DH1200-CRAH-DH-16 L3 Startup | 2d | 2026-07-16 A | 2026-07-16 A | QTS-1020 | 100% | 2026-07-22 | 2026-07-23 | UMAS | Commissioning | DH1200 | L3 | DH CRAH | DELETED | DH1100 |
| DC1-CRAH-L3-Cx-4390 | **DELETED** DC1-DH1200-CRAH-DH-16 BMS/EPMS Programming | 1d | 2026-07-16 A | 2026-07-16 A | QTS-1020 | 100% | 2026-07-24 | 2026-07-24 | PRM | Commissioning | DH1200 | L3 | DH CRAH | DELETED | DH1100 |
| DC1-CRAH-L3-Cx-4400 | **DELETED** DC1-DH1200-CRAH-DH-17 FTE | 1d | 2026-07-16 A | 2026-07-16 A | QTS-1020 | 100% | 2026-07-21 | 2026-07-21 | ROS | Commissioning | DH1200 | L3 | DH CRAH | DELETED | DH1100 |
| DC1-CRAH-L3-Cx-4410 | **DELETED** DC1-DH1200-CRAH-DH-17 L3 Startup | 2d | 2026-07-16 A | 2026-07-16 A | QTS-1020 | 100% | 2026-07-22 | 2026-07-23 | UMAS | Commissioning | DH1200 | L3 | DH CRAH | DELETED | DH1100 |
| DC1-CRAH-L3-Cx-4420 | **DELETED** DC1-DH1200-CRAH-DH-17 BMS/EPMS Programming | 1d | 2026-07-16 A | 2026-07-16 A | QTS-1020 | 100% | 2026-07-24 | 2026-07-24 | PRM | Commissioning | DH1200 | L3 | DH CRAH | DELETED | DH1100 |
| DC1-CRAH-L3-Cx-4430 | **DELETED** DC1-DH1200-CRAH-DH-18 FTE | 1d | 2026-07-16 A | 2026-07-16 A | QTS-1020 | 100% | 2026-07-21 | 2026-07-21 | ROS | Commissioning | DH1200 | L3 | DH CRAH | DELETED | DH1100 |
| DC1-CRAH-L3-Cx-4440 | **DELETED** DC1-DH1200-CRAH-DH-18 L3 Startup | 2d | 2026-07-16 A | 2026-07-16 A | QTS-1020 | 100% | 2026-07-22 | 2026-07-23 | UMAS | Commissioning | DH1200 | L3 | DH CRAH | DELETED | DH1100 |
| DC1-CRAH-L3-Cx-4450 | **DELETED** DC1-DH1200-CRAH-DH-18 BMS/EPMS Programming | 1d | 2026-07-16 A | 2026-07-16 A | QTS-1020 | 100% | 2026-07-24 | 2026-07-24 | PRM | Commissioning | DH1200 | L3 | DH CRAH | DELETED | DH1100 |
| DC1-CRAH-L3-Cx-4460 | **DELETED** DC1-DH1200-CRAH-DH-19 FTE | 1d | 2026-07-16 A | 2026-07-16 A | QTS-1020 | 100% | 2026-07-21 | 2026-07-21 | ROS | Commissioning | DH1200 | L3 | DH CRAH | DELETED | DH1100 |
| DC1-CRAH-L3-Cx-4470 | **DELETED** DC1-DH1200-CRAH-DH-19 L3 Startup | 2d | 2026-07-16 A | 2026-07-16 A | QTS-1020 | 100% | 2026-07-22 | 2026-07-23 | UMAS | Commissioning | DH1200 | L3 | DH CRAH | DELETED | DH1100 |
| DC1-CRAH-L3-Cx-4480 | **DELETED** DC1-DH1200-CRAH-DH-19 BMS/EPMS Programming | 1d | 2026-07-16 A | 2026-07-16 A | QTS-1020 | 100% | 2026-07-24 | 2026-07-24 | PRM | Commissioning | DH1200 | L3 | DH CRAH | DELETED | DH1100 |
| DC1-CRAH-L3-Cx-4490 | **DELETED** DC1-DH1200-CRAH-DH-20 FTE | 1d | 2026-07-16 A | 2026-07-16 A | QTS-1020 | 100% | 2026-07-21 | 2026-07-21 | ROS | Commissioning | DH1200 | L3 | DH CRAH | DELETED | DH1100 |
| DC1-CRAH-L3-Cx-4500 | **DELETED** DC1-DH1200-CRAH-DH-20 L3 Startup | 2d | 2026-07-16 A | 2026-07-16 A | QTS-1020 | 100% | 2026-07-22 | 2026-07-23 | UMAS | Commissioning | DH1200 | L3 | DH CRAH | DELETED | DH1100 |
| DC1-CRAH-L3-Cx-4510 | **DELETED** DC1-DH1200-CRAH-DH-20 BMS/EPMS Programming | 1d | 2026-07-16 A | 2026-07-16 A | QTS-1020 | 100% | 2026-07-24 | 2026-07-24 | PRM | Commissioning | DH1200 | L3 | DH CRAH | DELETED | DH1100 |
| DC1-CRAH-L3-Cx-4520 | **DELETED** DC1-DH1200-CRAH-DH-21 FTE | 1d | 2026-07-16 A | 2026-07-16 A | QTS-1020 | 100% | 2026-07-21 | 2026-07-21 | ROS | Commissioning | DH1200 | L3 | DH CRAH | DELETED | DH1100 |
| DC1-CRAH-L3-Cx-4530 | **DELETED** DC1-DH1200-CRAH-DH-21 L3 Startup | 2d | 2026-07-16 A | 2026-07-16 A | QTS-1020 | 100% | 2026-07-22 | 2026-07-23 | UMAS | Commissioning | DH1200 | L3 | DH CRAH | DELETED | DH1100 |
| DC1-CRAH-L3-Cx-4540 | **DELETED** DC1-DH1200-CRAH-DH-21 BMS/EPMS Programming | 1d | 2026-07-16 A | 2026-07-16 A | QTS-1020 | 100% | 2026-07-24 | 2026-07-24 | PRM | Commissioning | DH1200 | L3 | DH CRAH | DELETED | DH1100 |
| DC1-CRAH-L3-Cx-4550 | **DELETED** DC1-DH1200-CRAH-DH-22 FTE | 1d | 2026-07-16 A | 2026-07-16 A | QTS-1020 | 100% | 2026-07-21 | 2026-07-21 | ROS | Commissioning | DH1200 | L3 | DH CRAH | DELETED | DH1100 |
| DC1-CRAH-L3-Cx-4560 | **DELETED** DC1-DH1200-CRAH-DH-22 L3 Startup | 2d | 2026-07-16 A | 2026-07-16 A | QTS-1020 | 100% | 2026-07-22 | 2026-07-23 | UMAS | Commissioning | DH1200 | L3 | DH CRAH | DELETED | DH1100 |
| DC1-CRAH-L3-Cx-4570 | **DELETED** DC1-DH1200-CRAH-DH-22 BMS/EPMS Programming | 1d | 2026-07-16 A | 2026-07-16 A | QTS-1020 | 100% | 2026-07-24 | 2026-07-24 | PRM | Commissioning | DH1200 | L3 | DH CRAH | DELETED | DH1100 |
| DC1-CRAH-L3-Cx-4580 | **DELETED** DC1-DH1200-CRAH-DH-23 FTE | 1d | 2026-07-16 A | 2026-07-16 A | QTS-1020 | 100% | 2026-07-21 | 2026-07-21 | ROS | Commissioning | DH1200 | L3 | DH CRAH | DELETED | DH1100 |
| DC1-CRAH-L3-Cx-4590 | **DELETED** DC1-DH1200-CRAH-DH-23 L3 Startup | 2d | 2026-07-16 A | 2026-07-16 A | QTS-1020 | 100% | 2026-07-22 | 2026-07-23 | UMAS | Commissioning | DH1200 | L3 | DH CRAH | DELETED | DH1100 |
| DC1-CRAH-L3-Cx-4600 | **DELETED** DC1-DH1200-CRAH-DH-23 BMS/EPMS Programming | 1d | 2026-07-16 A | 2026-07-16 A | QTS-1020 | 100% | 2026-07-24 | 2026-07-24 | PRM | Commissioning | DH1200 | L3 | DH CRAH | DELETED | DH1100 |
| DC1-CRAH-L3-Cx-4610 | **DELETED** DC1-DH1200-CRAH-DH-24 FTE | 1d | 2026-07-16 A | 2026-07-16 A | QTS-1020 | 100% | 2026-07-21 | 2026-07-21 | ROS | Commissioning | DH1200 | L3 | DH CRAH | DELETED | DH1100 |
| DC1-CRAH-L3-Cx-4620 | **DELETED** DC1-DH1200-CRAH-DH-24 L3 Startup | 2d | 2026-07-16 A | 2026-07-16 A | QTS-1020 | 100% | 2026-07-22 | 2026-07-23 | UMAS | Commissioning | DH1200 | L3 | DH CRAH | DELETED | DH1100 |
| DC1-CRAH-L3-Cx-4630 | **DELETED** DC1-DH1200-CRAH-DH-24 BMS/EPMS Programming | 1d | 2026-07-16 A | 2026-07-16 A | QTS-1020 | 100% | 2026-07-24 | 2026-07-24 | PRM | Commissioning | DH1200 | L3 | DH CRAH | DELETED | DH1100 |
| DC1-CRAH-L3-Cx-4640 | **DELETED** DC1-DH1200-CRAH-DH-25 FTE | 1d | 2026-07-16 A | 2026-07-16 A | QTS-1020 | 100% | 2026-07-21 | 2026-07-21 | ROS | Commissioning | DH1200 | L3 | DH CRAH | DELETED | DH1100 |
| DC1-CRAH-L3-Cx-4650 | **DELETED** DC1-DH1200-CRAH-DH-25 L3 Startup | 2d | 2026-07-16 A | 2026-07-16 A | QTS-1020 | 100% | 2026-07-22 | 2026-07-23 | UMAS | Commissioning | DH1200 | L3 | DH CRAH | DELETED | DH1100 |
| DC1-CRAH-L3-Cx-4660 | **DELETED** DC1-DH1200-CRAH-DH-25 BMS/EPMS Programming | 1d | 2026-07-16 A | 2026-07-16 A | QTS-1020 | 100% | 2026-07-24 | 2026-07-24 | PRM | Commissioning | DH1200 | L3 | DH CRAH | DELETED | DH1100 |
| DC1-CRAH-L3-Cx-4670 | **DELETED** DC1-DH1200-CRAH-DH-26 FTE | 1d | 2026-07-16 A | 2026-07-16 A | QTS-1020 | 100% | 2026-07-21 | 2026-07-21 | ROS | Commissioning | DH1200 | L3 | DH CRAH | DELETED | DH1100 |
| DC1-CRAH-L3-Cx-4680 | **DELETED** DC1-DH1200-CRAH-DH-26 L3 Startup | 2d | 2026-07-16 A | 2026-07-16 A | QTS-1020 | 100% | 2026-07-22 | 2026-07-23 | UMAS | Commissioning | DH1200 | L3 | DH CRAH | DELETED | DH1100 |
| DC1-CRAH-L3-Cx-4690 | **DELETED** DC1-DH1200-CRAH-DH-26 BMS/EPMS Programming | 1d | 2026-07-16 A | 2026-07-16 A | QTS-1020 | 100% | 2026-07-24 | 2026-07-24 | PRM | Commissioning | DH1200 | L3 | DH CRAH | DELETED | DH1100 |
| DC1-CRAH-L3-Cx-4700 | **DELETED** DC1-DH1200-CRAH-DH-27 FTE | 1d | 2026-07-16 A | 2026-07-16 A | QTS-1020 | 100% | 2026-07-21 | 2026-07-21 | ROS | Commissioning | DH1200 | L3 | DH CRAH | DELETED | DH1100 |
| DC1-CRAH-L3-Cx-4710 | **DELETED** DC1-DH1200-CRAH-DH-27 L3 Startup | 2d | 2026-07-16 A | 2026-07-16 A | QTS-1020 | 100% | 2026-07-22 | 2026-07-23 | UMAS | Commissioning | DH1200 | L3 | DH CRAH | DELETED | DH1100 |
| DC1-CRAH-L3-Cx-4720 | **DELETED** DC1-DH1200-CRAH-DH-27 BMS/EPMS Programming | 1d | 2026-07-16 A | 2026-07-16 A | QTS-1020 | 100% | 2026-07-24 | 2026-07-24 | PRM | Commissioning | DH1200 | L3 | DH CRAH | DELETED | DH1100 |
| DC1-CRAH-L3-Cx-4730 | **DELETED** DC1-DH1200-CRAH-DH-28 FTE | 1d | 2026-07-16 A | 2026-07-16 A | QTS-1020 | 100% | 2026-07-21 | 2026-07-21 | ROS | Commissioning | DH1200 | L3 | DH CRAH | DELETED | DH1100 |
| DC1-CRAH-L3-Cx-4740 | **DELETED** DC1-DH1200-CRAH-DH-28 L3 Startup | 2d | 2026-07-16 A | 2026-07-16 A | QTS-1020 | 100% | 2026-07-22 | 2026-07-23 | UMAS | Commissioning | DH1200 | L3 | DH CRAH | DELETED | DH1100 |

Notes:
- DC1-CRAH-L3-Cx-4050: Steps: EC Startup Checklist; MC Startup Checklist; Vendor Startup
- DC1-CRAH-L3-Cx-4080: Steps: EC Startup Checklist; MC Startup Checklist; Vendor Startup
- DC1-CRAH-L3-Cx-4110: Steps: EC Startup Checklist; MC Startup Checklist; Vendor Startup
- DC1-CRAH-L3-Cx-4140: Steps: EC Startup Checklist; MC Startup Checklist; Vendor Startup
- DC1-CRAH-L3-Cx-4170: Steps: EC Startup Checklist; MC Startup Checklist; Vendor Startup
- DC1-CRAH-L3-Cx-4200: Steps: EC Startup Checklist; MC Startup Checklist; Vendor Startup
- DC1-CRAH-L3-Cx-4230: Steps: EC Startup Checklist; MC Startup Checklist; Vendor Startup
- DC1-CRAH-L3-Cx-4260: Steps: EC Startup Checklist; MC Startup Checklist; Vendor Startup
- DC1-CRAH-L3-Cx-4290: Steps: EC Startup Checklist; MC Startup Checklist; Vendor Startup
- DC1-CRAH-L3-Cx-4320: Steps: EC Startup Checklist; MC Startup Checklist; Vendor Startup
- DC1-CRAH-L3-Cx-4350: Steps: EC Startup Checklist; MC Startup Checklist; Vendor Startup
- DC1-CRAH-L3-Cx-4380: Steps: EC Startup Checklist; MC Startup Checklist; Vendor Startup
- DC1-CRAH-L3-Cx-4410: Steps: EC Startup Checklist; MC Startup Checklist; Vendor Startup
- DC1-CRAH-L3-Cx-4440: Steps: EC Startup Checklist; MC Startup Checklist; Vendor Startup
- DC1-CRAH-L3-Cx-4470: Steps: EC Startup Checklist; MC Startup Checklist; Vendor Startup
- DC1-CRAH-L3-Cx-4500: Steps: EC Startup Checklist; MC Startup Checklist; Vendor Startup
- DC1-CRAH-L3-Cx-4530: Steps: EC Startup Checklist; MC Startup Checklist; Vendor Startup
- DC1-CRAH-L3-Cx-4560: Steps: EC Startup Checklist; MC Startup Checklist; Vendor Startup
- DC1-CRAH-L3-Cx-4590: Steps: EC Startup Checklist; MC Startup Checklist; Vendor Startup
- DC1-CRAH-L3-Cx-4620: Steps: EC Startup Checklist; MC Startup Checklist; Vendor Startup
- DC1-CRAH-L3-Cx-4650: Steps: EC Startup Checklist; MC Startup Checklist; Vendor Startup
- DC1-CRAH-L3-Cx-4680: Steps: EC Startup Checklist; MC Startup Checklist; Vendor Startup
- DC1-CRAH-L3-Cx-4710: Steps: EC Startup Checklist; MC Startup Checklist; Vendor Startup
- DC1-CRAH-L3-Cx-4740: Steps: EC Startup Checklist; MC Startup Checklist; Vendor Startup

| ID | Activity | Duration | Start | Finish | Predecessors | Complete | Planned start | Planned finish | Vendor Responsible Party | Layton Discipline | Location | CX Level | Equipment | DELETED | D | NICK | Fragnet | Fragnet Responsible Party |
| --- | --- | --- | --- | --- | --- | --- | --- | --- | --- | --- | --- | --- | --- | --- | --- | --- | --- | --- |
| DC1-CRAH-L3-Cx-4750 | **DELETED** DC1-DH1200-CRAH-DH-28 BMS/EPMS Programming | 1d | 2026-07-16 A | 2026-07-16 A | QTS-1020 | 100% | 2026-07-24 | 2026-07-24 | PRM | Commissioning | DH1200 | L3 | DH CRAH | DELETED | DH1100 |  |  |  |
| DC1-CRAH-L3-Cx-4760 | **DELETED** DC1-DH1200-CRAH-EG-1202-01 FTE | 1d | 2026-07-16 A | 2026-07-16 A | QTS-1020 | 100% | 2026-07-21 | 2026-07-21 | ROS | Commissioning | DH1200 | L3 | EG CRAH | DELETED | DH1100 |  |  |  |
| DC1-CRAH-L3-Cx-4770 | **DELETED** DC1-DH1200-CRAH-EG-1202-01 L3 Startup | 2d | 2026-07-16 A | 2026-07-16 A | QTS-1020 | 100% | 2026-07-22 | 2026-07-23 | VER | Commissioning | DH1200 | L3 | EG CRAH | DELETED | DH1100 |  |  |  |
| DC1-CRAH-L3-Cx-4780 | **DELETED** DC1-DH1200-CRAH-EG-1202-01 BMS/EPMS Programming | 1d | 2026-07-16 A | 2026-07-16 A | QTS-1020 | 100% | 2026-07-24 | 2026-07-24 | PRM | Commissioning | DH1200 | L3 | EG CRAH | DELETED | DH1100 |  |  |  |
| DC1-CRAH-L3-Cx-4790 | **DELETED** DC1-DH1200-CRAH-EG-1202-02 FTE | 1d | 2026-07-16 A | 2026-07-16 A | QTS-1020 | 100% | 2026-07-21 | 2026-07-21 | ROS | Commissioning | DH1200 | L3 | EG CRAH | DELETED | DH1100 |  |  |  |
| DC1-CRAH-L3-Cx-4800 | **DELETED** DC1-DH1200-CRAH-EG-1202-02 L3 Startup | 2d | 2026-07-16 A | 2026-07-16 A | QTS-1020 | 100% | 2026-07-22 | 2026-07-23 | VER | Commissioning | DH1200 | L3 | EG CRAH | DELETED | DH1100 |  |  |  |
| DC1-CRAH-L3-Cx-4810 | **DELETED** DC1-DH1200-CRAH-EG-1202-02 BMS/EPMS Programming | 1d | 2026-07-16 A | 2026-07-16 A | QTS-1020 | 100% | 2026-07-24 | 2026-07-24 | PRM | Commissioning | DH1200 | L3 | EG CRAH | DELETED | DH1100 |  |  |  |
| DC1-CRAH-L3-Cx-4820 | **DELETED** DC1-DH1200-CRAH-EG-1202-03 FTE | 1d | 2026-07-16 A | 2026-07-16 A | QTS-1020 | 100% | 2026-07-21 | 2026-07-21 | ROS | Commissioning | DH1200 | L3 | EG CRAH | DELETED | DH1100 |  |  |  |
| DC1-CRAH-L3-Cx-4830 | **DELETED** DC1-DH1200-CRAH-EG-1202-03 L3 Startup | 2d | 2026-07-16 A | 2026-07-16 A | QTS-1020 | 100% | 2026-07-22 | 2026-07-23 | VER | Commissioning | DH1200 | L3 | EG CRAH | DELETED | DH1100 |  |  |  |
| DC1-CRAH-L3-Cx-4840 | **DELETED** DC1-DH1200-CRAH-EG-1202-03 BMS/EPMS Programming | 1d | 2026-07-16 A | 2026-07-16 A | QTS-1020 | 100% | 2026-07-24 | 2026-07-24 | PRM | Commissioning | DH1200 | L3 | EG CRAH | DELETED | DH1100 |  |  |  |
| DC1-CRAH-L3-Cx-4850 | **DELETED** DC1-DH1200-CRAH-EG-1202-04 FTE | 1d | 2026-07-16 A | 2026-07-16 A | QTS-1020 | 100% | 2026-07-21 | 2026-07-21 | ROS | Commissioning | DH1200 | L3 | EG CRAH | DELETED | DH1100 |  |  |  |
| DC1-CRAH-L3-Cx-4860 | **DELETED** DC1-DH1200-CRAH-EG-1202-04 L3 Startup | 2d | 2026-07-16 A | 2026-07-16 A | QTS-1020 | 100% | 2026-07-22 | 2026-07-23 | VER | Commissioning | DH1200 | L3 | EG CRAH | DELETED | DH1100 |  |  |  |
| DC1-CRAH-L3-Cx-4870 | **DELETED** DC1-DH1200-CRAH-EG-1202-04 BMS/EPMS Programming | 1d | 2026-07-16 A | 2026-07-16 A | QTS-1020 | 100% | 2026-07-24 | 2026-07-24 | PRM | Commissioning | DH1200 | L3 | EG CRAH | DELETED | DH1100 |  |  |  |
| DC1-DH1200-LB-1000 | **DELETED** DC1-DH1200 Connect Air Cooled Load Banks at RPPs | 5d | 2026-07-16 A | 2026-07-16 A | QTS-1020 | 100% | 2026-07-21 | 2026-07-27 | PHE | Commissioning | DH1200 | L3 | COD | DELETED | DH1100 | NICK |  |  |
| DC1-DH1200-LB-1010 | **DELETED** DC1-DH1200 Burn in Chillers | 5d | 2026-07-16 A | 2026-07-16 A | QTS-1020 | 100% | 2026-07-21 | 2026-07-27 | LAY | Commissioning | DH1200 | L3 | CHILLER | DELETED | DH1100 | NICK |  |  |
| DC1-DH1200-LB-1030 | **DELETED** DC1-DH1200 10% Continuity Testing RPP Whips | 2d | 2026-07-16 A | 2026-07-16 A | QTS-1020 | 100% | 2026-07-15 | 2026-07-16 | PHE | Commissioning | DH1200 | L3 | RPP | DELETED | DH1100 |  |  |  |
| DC1-DH1200-LB-1040 | **DELETED** DC1-DH1200 Liquid Cooled Load Bank (Secondary Side) | 12d | 2026-07-16 A | 2026-07-16 A | QTS-1020 | 100% | 2026-09-02 | 2026-09-18 | LAY | Commissioning | DH1200 | L3 |  | DELETED | DH1100 | NICK |  |  |
| DC1-DH1200-LB-1050 | **DELETED** DC1-DH1200 Install DanFoss Connectors | 2d | 2026-07-16 A | 2026-07-16 A | QTS-1020 | 100% | 2026-09-21 | 2026-09-22 | PHE | Commissioning | DH1200 | L3 |  | DELETED | DH1100 |  |  |  |
| DC1-DH1200-LB-1060 | Fragnet / **DELETED** DC1-DH1200 40% Load Bank Testing RPP Whips | 2d | 2026-07-16 A | 2026-07-16 A | QTS-1020 | 100% | 2026-07-21 | 2026-07-22 | PHE | Commissioning | DH1200 | L3 |  | DELETED | DH1100 | NICK | Fragnet | Parrish-Hare Electrical Supply |
| DC1-DH1200-TAB-1000 | **DELETED** DC1-DH1200 Water Tab (Industrial Loop) | 5d | 2026-07-16 A | 2026-07-16 A | QTS-1020 | 100% | 2026-07-23 | 2026-07-29 | LAY | Commissioning | DH1200 | L3 |  | DELETED | DH1100 | NICK |  |  |
| DC1-DH1200-TAB-1010 | **DELETED** DC1-DH1200 Air Tab | 5d | 2026-07-16 A | 2026-07-16 A | QTS-1020 | 100% | 2026-07-27 | 2026-07-31 | LAY | Commissioning | DH1200 | L3 |  | DELETED | DH1100 | NICK |  |  |
| DC1-DOAS-L2-2020 | **DELETED** DH2200 DOAS-01 L2 Checklist | 3d | 2026-07-16 A | 2026-07-16 A | QTS-1020 | 100% | 2026-07-20 | 2026-07-22 | TAS | Commissioning | DH2200 | L2 | DOAS | DELETED | DH1100 |  |  |  |
| DC1-DOAS-L2-2030 | **DELETED** DH2200 DOAS-02 L2 Checklist | 3d | 2026-07-16 A | 2026-07-16 A | QTS-1020 | 100% | 2026-07-20 | 2026-07-22 | TAS | Commissioning | DH2200 | L2 | DOAS | DELETED | DH1100 |  |  |  |
| DC1-DOAS-L3-Cx-2120 | **DELETED** DC1-DH1200-DOAS-RT-01 FTE | 1d | 2026-07-16 A | 2026-07-16 A | QTS-1020 | 100% | 2026-07-24 | 2026-07-24 | ROS | Commissioning | DH1200 | L3 | DOAS | DELETED | DH1100 |  |  |  |
| DC1-DOAS-L3-Cx-2130 | **DELETED** DC1-DH1200-DOAS-RT-01 L3 Startup | 2d | 2026-07-16 A | 2026-07-16 A | QTS-1020 | 100% | 2026-07-27 | 2026-07-28 | TAS | Commissioning | DH1200 | L3 | DOAS | DELETED | DH1100 |  |  |  |
| DC1-DOAS-L3-Cx-2140 | **DELETED** DC1-DH1200-DOAS-RT-01 BMS/EPMS Programming | 1d | 2026-07-16 A | 2026-07-16 A | QTS-1020 | 100% | 2026-07-29 | 2026-07-29 | PRM | Commissioning | DH1200 | L3 | DOAS | DELETED | DH1100 |  |  |  |
| DC1-DOAS-L3-Cx-2150 | **DELETED** DC1-DH1200-DOAS-RT-02 FTE | 1d | 2026-07-16 A | 2026-07-16 A | QTS-1020 | 100% | 2026-07-24 | 2026-07-24 | ROS | Commissioning | DH1200 | L3 | DOAS | DELETED | DH1100 |  |  |  |
| DC1-DOAS-L3-Cx-2160 | **DELETED** DC1-DH1200-DOAS-RT-02 L3 Startup | 2d | 2026-07-16 A | 2026-07-16 A | QTS-1020 | 100% | 2026-07-27 | 2026-07-28 | TAS | Commissioning | DH1200 | L3 | DOAS | DELETED | DH1100 |  |  |  |
| DC1-DOAS-L3-Cx-2170 | **DELETED** DC1-DH1200-DOAS-RT-02 BMS/EPMS Programming | 1d | 2026-07-16 A | 2026-07-16 A | QTS-1020 | 100% | 2026-07-29 | 2026-07-29 | PRM | Commissioning | DH1200 | L3 | DOAS | DELETED | DH1100 |  |  |  |
| DC1-ELEC-L4-Cx-1030 | **DELETED** DC1 Data Hall 1200 Air Cooled L4 | 15d | 2026-07-16 A | 2026-07-16 A | QTS-1020 | 100% | 2026-08-10 | 2026-08-28 | LAY | Commissioning | DH1200 | L4 |  | DELETED | DH1100 | NICK |  |  |
| DC1-ELEC-L4-Cx-1080 | **DELETED** DC1 Data Hall 1200 Liquid Cooled L4 | 15d | 2026-07-16 A | 2026-07-16 A | QTS-1020 | 100% | 2026-07-31 | 2026-08-20 | LAY | Commissioning | DH1200 | L4 |  | DELETED | DH1100 | NICK |  |  |
| DC1-IST-2020 | **DELETED** DC1 Data Hall 1200 IST (6/1/26) | 2d | 2026-07-16 A | 2026-07-16 A | QTS-1020 | 100% | 2026-08-31 | 2026-09-01 | LAY | Commissioning | DH1200 | L5 |  | DELETED | DH1100 |  |  |  |
| DC1-L4-Cx-1230 | **DELETED** DC1 Data Hall 1200 Generator Burns A12 & B12 | 1d | 2026-07-16 A | 2026-07-16 A | QTS-1020 | 100% | 2026-07-22 | 2026-07-22 | HLT | Commissioning | DH1200 | L4 | GEN | DELETED | DH1100 | NICK |  |  |
| DC1-L4-Cx-1240 | **DELETED** DC1 Data Hall 1200 Generator Burns C12 & D12 | 1d | 2026-07-16 A | 2026-07-16 A | QTS-1020 | 100% | 2026-07-23 | 2026-07-23 | HLT | Commissioning | DH1200 | L4 | GEN | DELETED | DH1100 | NICK |  |  |
| DC1-L4-Cx-1250 | **DELETED** DC1 Data Hall 1200 Generator Burns E12 & F12 | 1d | 2026-07-16 A | 2026-07-16 A | QTS-1020 | 100% | 2026-07-24 | 2026-07-24 | HLT | Commissioning | DH1200 | L4 | GEN | DELETED | DH1100 | NICK |  |  |
| DC1-L4-Cx-1260 | **DELETED** DC1 Data Hall 1200 Generator Burns R12 | 1d | 2026-07-16 A | 2026-07-16 A | QTS-1020 | 100% | 2026-07-27 | 2026-07-27 | HLT | Commissioning | DH1200 | L4 | GEN | DELETED | DH1100 | NICK |  |  |
| DC1-MECH-L4-Cx-1130 | **DELETED** DC1 Data Hall 1200 BMS/EPMS Integration | 5d | 2026-07-16 A | 2026-07-16 A | QTS-1020 | 100% | 2026-07-30 | 2026-08-05 |  | Commissioning | DH1200 | L4 |  | DELETED | DH1100 |  |  |  |
| DC1-CRAH-L3-Cx-2960 | **DELETED** DC1-DH2200-CRAH-DH-01 FTE | 1d | 2026-07-17 A | 2026-07-17 A | QTS-1020 | 100% |  |  | ROS | Commissioning | DH2200 | L3 | DH CRAH | DELETED | DH1100 |  |  |  |
| DC1-CRAH-L3-Cx-2970 | **DELETED** DC1-DH2200-CRAH-DH-01 L3 Startup | 2d | 2026-07-17 A | 2026-07-17 A | QTS-1020 | 100% | 2026-07-20 | 2026-07-21 | UMAS | Commissioning | DH2200 | L3 | DH CRAH | DELETED | DH1100 |  |  |  |
| DC1-CRAH-L3-Cx-2980 | **DELETED** DC1-DH2200-CRAH-DH-01 BMS/EPMS Programming | 1d | 2026-07-17 A | 2026-07-17 A | QTS-1020 | 100% | 2026-07-22 | 2026-07-22 | PRM | Commissioning | DH2200 | L3 | DH CRAH | DELETED | DH1100 |  |  |  |
| DC1-CRAH-L3-Cx-2990 | **DELETED** DC1-DH2200-CRAH-DH-02 FTE | 1d | 2026-07-17 A | 2026-07-17 A | QTS-1020 | 100% |  |  | ROS | Commissioning | DH2200 | L3 | DH CRAH | DELETED | DH1100 |  |  |  |
| DC1-CRAH-L3-Cx-3000 | **DELETED** DC1-DH2200-CRAH-DH-02 L3 Startup | 2d | 2026-07-17 A | 2026-07-17 A | QTS-1020 | 100% | 2026-07-20 | 2026-07-21 | UMAS | Commissioning | DH2200 | L3 | DH CRAH | DELETED | DH1100 |  |  |  |
| DC1-CRAH-L3-Cx-3010 | **DELETED** DC1-DH2200-CRAH-DH-02 BMS/EPMS Programming | 1d | 2026-07-17 A | 2026-07-17 A | QTS-1020 | 100% | 2026-07-22 | 2026-07-22 | PRM | Commissioning | DH2200 | L3 | DH CRAH | DELETED | DH1100 |  |  |  |
| DC1-CRAH-L3-Cx-3020 | **DELETED** DC1-DH2200-CRAH-DH-03 FTE | 1d | 2026-07-17 A | 2026-07-17 A | QTS-1020 | 100% |  |  | ROS | Commissioning | DH2200 | L3 | DH CRAH | DELETED | DH1100 |  |  |  |
| DC1-CRAH-L3-Cx-3030 | **DELETED** DC1-DH2200-CRAH-DH-03 L3 Startup | 2d | 2026-07-17 A | 2026-07-17 A | QTS-1020 | 100% | 2026-07-20 | 2026-07-21 | UMAS | Commissioning | DH2200 | L3 | DH CRAH | DELETED | DH1100 |  |  |  |
| DC1-CRAH-L3-Cx-3040 | **DELETED** DC1-DH2200-CRAH-DH-03 BMS/EPMS Programming | 1d | 2026-07-17 A | 2026-07-17 A | QTS-1020 | 100% | 2026-07-22 | 2026-07-22 | PRM | Commissioning | DH2200 | L3 | DH CRAH | DELETED | DH1100 |  |  |  |
| DC1-CRAH-L3-Cx-3050 | **DELETED** DC1-DH2200-CRAH-DH-04 FTE | 1d | 2026-07-17 A | 2026-07-17 A | QTS-1020 | 100% |  |  | ROS | Commissioning | DH2200 | L3 | DH CRAH | DELETED | DH1100 |  |  |  |
| DC1-CRAH-L3-Cx-3060 | **DELETED** DC1-DH2200-CRAH-DH-04 L3 Startup | 2d | 2026-07-17 A | 2026-07-17 A | QTS-1020 | 100% | 2026-07-20 | 2026-07-21 | UMAS | Commissioning | DH2200 | L3 | DH CRAH | DELETED | DH1100 |  |  |  |
| DC1-CRAH-L3-Cx-3070 | **DELETED** DC1-DH2200-CRAH-DH-04 BMS/EPMS Programming | 1d | 2026-07-17 A | 2026-07-17 A | QTS-1020 | 100% | 2026-07-22 | 2026-07-22 | PRM | Commissioning | DH2200 | L3 | DH CRAH | DELETED | DH1100 |  |  |  |
| DC1-CRAH-L3-Cx-3080 | **DELETED** DC1-DH2200-CRAH-DH-05 FTE | 1d | 2026-07-17 A | 2026-07-17 A | QTS-1020 | 100% |  |  | ROS | Commissioning | DH2200 | L3 | DH CRAH | DELETED | DH1100 |  |  |  |
| DC1-CRAH-L3-Cx-3090 | **DELETED** DC1-DH2200-CRAH-DH-05 L3 Startup | 2d | 2026-07-17 A | 2026-07-17 A | QTS-1020 | 100% | 2026-07-20 | 2026-07-21 | UMAS | Commissioning | DH2200 | L3 | DH CRAH | DELETED | DH1100 |  |  |  |
| DC1-CRAH-L3-Cx-3100 | **DELETED** DC1-DH2200-CRAH-DH-05 BMS/EPMS Programming | 1d | 2026-07-17 A | 2026-07-17 A | QTS-1020 | 100% | 2026-07-22 | 2026-07-22 | PRM | Commissioning | DH2200 | L3 | DH CRAH | DELETED | DH1100 |  |  |  |
| DC1-CRAH-L3-Cx-3110 | **DELETED** DC1-DH2200-CRAH-DH-06 FTE | 1d | 2026-07-17 A | 2026-07-17 A | QTS-1020 | 100% |  |  | ROS | Commissioning | DH2200 | L3 | DH CRAH | DELETED | DH1100 |  |  |  |
| DC1-CRAH-L3-Cx-3120 | **DELETED** DC1-DH2200-CRAH-DH-06 L3 Startup | 2d | 2026-07-17 A | 2026-07-17 A | QTS-1020 | 100% | 2026-07-20 | 2026-07-21 | UMAS | Commissioning | DH2200 | L3 | DH CRAH | DELETED | DH1100 |  |  |  |
| DC1-CRAH-L3-Cx-3130 | **DELETED** DC1-DH2200-CRAH-DH-06 BMS/EPMS Programming | 1d | 2026-07-17 A | 2026-07-17 A | QTS-1020 | 100% | 2026-07-22 | 2026-07-22 | PRM | Commissioning | DH2200 | L3 | DH CRAH | DELETED | DH1100 |  |  |  |
| DC1-CRAH-L3-Cx-3140 | **DELETED** DC1-DH2200-CRAH-DH-07 FTE | 1d | 2026-07-17 A | 2026-07-17 A | QTS-1020 | 100% |  |  | ROS | Commissioning | DH2200 | L3 | DH CRAH | DELETED | DH1100 |  |  |  |
| DC1-CRAH-L3-Cx-3150 | **DELETED** DC1-DH2200-CRAH-DH-07 L3 Startup | 2d | 2026-07-17 A | 2026-07-17 A | QTS-1020 | 100% | 2026-07-20 | 2026-07-21 | UMAS | Commissioning | DH2200 | L3 | DH CRAH | DELETED | DH1100 |  |  |  |
| DC1-CRAH-L3-Cx-3160 | **DELETED** DC1-DH2200-CRAH-DH-07 BMS/EPMS Programming | 1d | 2026-07-17 A | 2026-07-17 A | QTS-1020 | 100% | 2026-07-22 | 2026-07-22 | PRM | Commissioning | DH2200 | L3 | DH CRAH | DELETED | DH1100 |  |  |  |
| DC1-CRAH-L3-Cx-3170 | **DELETED** DC1-DH2200-CRAH-DH-08 FTE | 1d | 2026-07-17 A | 2026-07-17 A | QTS-1020 | 100% |  |  | ROS | Commissioning | DH2200 | L3 | DH CRAH | DELETED | DH1100 |  |  |  |
| DC1-CRAH-L3-Cx-3180 | **DELETED** DC1-DH2200-CRAH-DH-08 L3 Startup | 2d | 2026-07-17 A | 2026-07-17 A | QTS-1020 | 100% | 2026-07-20 | 2026-07-21 | UMAS | Commissioning | DH2200 | L3 | DH CRAH | DELETED | DH1100 |  |  |  |
| DC1-CRAH-L3-Cx-3190 | **DELETED** DC1-DH2200-CRAH-DH-08 BMS/EPMS Programming | 1d | 2026-07-17 A | 2026-07-17 A | QTS-1020 | 100% | 2026-07-22 | 2026-07-22 | PRM | Commissioning | DH2200 | L3 | DH CRAH | DELETED | DH1100 |  |  |  |
| DC1-CRAH-L3-Cx-3200 | **DELETED** DC1-DH2200-CRAH-DH-09 FTE | 1d | 2026-07-17 A | 2026-07-17 A | QTS-1020 | 100% |  |  | ROS | Commissioning | DH2200 | L3 | DH CRAH | DELETED | DH1100 |  |  |  |
| DC1-CRAH-L3-Cx-3210 | **DELETED** DC1-DH2200-CRAH-DH-09 L3 Startup | 2d | 2026-07-17 A | 2026-07-17 A | QTS-1020 | 100% | 2026-07-20 | 2026-07-21 | UMAS | Commissioning | DH2200 | L3 | DH CRAH | DELETED | DH1100 |  |  |  |
| DC1-CRAH-L3-Cx-3220 | **DELETED** DC1-DH2200-CRAH-DH-09 BMS/EPMS Programming | 1d | 2026-07-17 A | 2026-07-17 A | QTS-1020 | 100% | 2026-07-22 | 2026-07-22 | PRM | Commissioning | DH2200 | L3 | DH CRAH | DELETED | DH1100 |  |  |  |
| DC1-CRAH-L3-Cx-3230 | **DELETED** DC1-DH2200-CRAH-DH-10 FTE | 1d | 2026-07-17 A | 2026-07-17 A | QTS-1020 | 100% |  |  | ROS | Commissioning | DH2200 | L3 | DH CRAH | DELETED | DH1100 |  |  |  |
| DC1-CRAH-L3-Cx-3240 | **DELETED** DC1-DH2200-CRAH-DH-10 L3 Startup | 2d | 2026-07-17 A | 2026-07-17 A | QTS-1020 | 100% | 2026-07-20 | 2026-07-21 | UMAS | Commissioning | DH2200 | L3 | DH CRAH | DELETED | DH1100 |  |  |  |
| DC1-CRAH-L3-Cx-3250 | **DELETED** DC1-DH2200-CRAH-DH-10 BMS/EPMS Programming | 1d | 2026-07-17 A | 2026-07-17 A | QTS-1020 | 100% | 2026-07-22 | 2026-07-22 | PRM | Commissioning | DH2200 | L3 | DH CRAH | DELETED | DH1100 |  |  |  |
| DC1-CRAH-L3-Cx-3260 | **DELETED** DC1-DH2200-CRAH-DH-11 FTE | 1d | 2026-07-17 A | 2026-07-17 A | QTS-1020 | 100% |  |  | ROS | Commissioning | DH2200 | L3 | DH CRAH | DELETED | DH1100 |  |  |  |
| DC1-CRAH-L3-Cx-3270 | **DELETED** DC1-DH2200-CRAH-DH-11 L3 Startup | 2d | 2026-07-17 A | 2026-07-17 A | QTS-1020 | 100% | 2026-07-20 | 2026-07-21 | UMAS | Commissioning | DH2200 | L3 | DH CRAH | DELETED | DH1100 |  |  |  |
| DC1-CRAH-L3-Cx-3280 | **DELETED** DC1-DH2200-CRAH-DH-11 BMS/EPMS Programming | 1d | 2026-07-17 A | 2026-07-17 A | QTS-1020 | 100% | 2026-07-22 | 2026-07-22 | PRM | Commissioning | DH2200 | L3 | DH CRAH | DELETED | DH1100 |  |  |  |

Notes:
- DC1-CRAH-L3-Cx-4770: Steps: EC Startup Checklist; MC Startup Checklist; Vendor Startup
- DC1-CRAH-L3-Cx-4800: Steps: EC Startup Checklist; MC Startup Checklist; Vendor Startup
- DC1-CRAH-L3-Cx-4830: Steps: EC Startup Checklist; MC Startup Checklist; Vendor Startup
- DC1-CRAH-L3-Cx-4860: Steps: EC Startup Checklist; MC Startup Checklist; Vendor Startup
- DC1-DOAS-L2-2020: Steps: EC Installation Checklist; MC Installation Checklist; CC Installation Checklist; Vendor Pre-Energization Checklist; CXA Pre-Energization Inspection; PEI/Clean-Walk
- DC1-DOAS-L2-2030: Steps: EC Installation Checklist; MC Installation Checklist; CC Installation Checklist; Vendor Pre-Energization Checklist; CXA Pre-Energization Inspection; PEI/Clean-Walk
- DC1-DOAS-L3-Cx-2130: Steps: EC Startup Checklist; MC Startup Checklist; Vendor Startup
- DC1-DOAS-L3-Cx-2160: Steps: EC Startup Checklist; MC Startup Checklist; Vendor Startup
- DC1-CRAH-L3-Cx-2970: Steps: EC Startup Checklist; MC Startup Checklist; Vendor Startup
- DC1-CRAH-L3-Cx-3000: Steps: EC Startup Checklist; MC Startup Checklist; Vendor Startup
- DC1-CRAH-L3-Cx-3030: Steps: EC Startup Checklist; MC Startup Checklist; Vendor Startup
- DC1-CRAH-L3-Cx-3060: Steps: EC Startup Checklist; MC Startup Checklist; Vendor Startup
- DC1-CRAH-L3-Cx-3090: Steps: EC Startup Checklist; MC Startup Checklist; Vendor Startup
- DC1-CRAH-L3-Cx-3120: Steps: EC Startup Checklist; MC Startup Checklist; Vendor Startup
- DC1-CRAH-L3-Cx-3150: Steps: EC Startup Checklist; MC Startup Checklist; Vendor Startup
- DC1-CRAH-L3-Cx-3180: Steps: EC Startup Checklist; MC Startup Checklist; Vendor Startup
- DC1-CRAH-L3-Cx-3210: Steps: EC Startup Checklist; MC Startup Checklist; Vendor Startup
- DC1-CRAH-L3-Cx-3240: Steps: EC Startup Checklist; MC Startup Checklist; Vendor Startup
- DC1-CRAH-L3-Cx-3270: Steps: EC Startup Checklist; MC Startup Checklist; Vendor Startup

| ID | Activity | Duration | Start | Finish | Predecessors | Complete | Planned start | Planned finish | Vendor Responsible Party | Layton Discipline | Location | CX Level | Equipment | DELETED | D | Notes |
| --- | --- | --- | --- | --- | --- | --- | --- | --- | --- | --- | --- | --- | --- | --- | --- | --- |
| DC1-CRAH-L3-Cx-3290 | **DELETED** DC1-DH2200-CRAH-DH-12 FTE | 1d | 2026-07-17 A | 2026-07-17 A | QTS-1020 | 100% |  |  | ROS | Commissioning | DH2200 | L3 | DH CRAH | DELETED | DH1100 |  |
| DC1-CRAH-L3-Cx-3300 | **DELETED** DC1-DH2200-CRAH-DH-12 L3 Startup | 2d | 2026-07-17 A | 2026-07-17 A | QTS-1020 | 100% | 2026-07-20 | 2026-07-21 | UMAS | Commissioning | DH2200 | L3 | DH CRAH | DELETED | DH1100 |  |
| DC1-CRAH-L3-Cx-3310 | **DELETED** DC1-DH2200-CRAH-DH-12 BMS/EPMS Programming | 1d | 2026-07-17 A | 2026-07-17 A | QTS-1020 | 100% | 2026-07-22 | 2026-07-22 | PRM | Commissioning | DH2200 | L3 | DH CRAH | DELETED | DH1100 |  |
| DC1-CRAH-L3-Cx-3320 | **DELETED** DC1-DH2200-CRAH-DH-13 FTE | 1d | 2026-07-17 A | 2026-07-17 A | QTS-1020 | 100% |  |  | ROS | Commissioning | DH2200 | L3 | DH CRAH | DELETED | DH1100 |  |
| DC1-CRAH-L3-Cx-3330 | **DELETED** DC1-DH2200-CRAH-DH-13 L3 Startup | 2d | 2026-07-17 A | 2026-07-17 A | QTS-1020 | 100% | 2026-07-20 | 2026-07-21 | UMAS | Commissioning | DH2200 | L3 | DH CRAH | DELETED | DH1100 |  |
| DC1-CRAH-L3-Cx-3340 | **DELETED** DC1-DH2200-CRAH-DH-13 BMS/EPMS Programming | 1d | 2026-07-17 A | 2026-07-17 A | QTS-1020 | 100% | 2026-07-22 | 2026-07-22 | PRM | Commissioning | DH2200 | L3 | DH CRAH | DELETED | DH1100 |  |
| DC1-CRAH-L3-Cx-3350 | **DELETED** DC1-DH2200-CRAH-DH-14 FTE | 1d | 2026-07-17 A | 2026-07-17 A | QTS-1020 | 100% |  |  | ROS | Commissioning | DH2200 | L3 | DH CRAH | DELETED | DH1100 |  |
| DC1-CRAH-L3-Cx-3360 | **DELETED** DC1-DH2200-CRAH-DH-14 L3 Startup | 2d | 2026-07-17 A | 2026-07-17 A | QTS-1020 | 100% | 2026-07-20 | 2026-07-21 | UMAS | Commissioning | DH2200 | L3 | DH CRAH | DELETED | DH1100 |  |
| DC1-CRAH-L3-Cx-3370 | **DELETED** DC1-DH2200-CRAH-DH-14 BMS/EPMS Programming | 1d | 2026-07-17 A | 2026-07-17 A | QTS-1020 | 100% | 2026-07-22 | 2026-07-22 | PRM | Commissioning | DH2200 | L3 | DH CRAH | DELETED | DH1100 |  |
| DC1-CRAH-L3-Cx-3380 | **DELETED** DC1-DH2200-CRAH-DH-15 FTE | 1d | 2026-07-17 A | 2026-07-17 A | QTS-1020 | 100% | 2026-07-20 | 2026-07-20 | ROS | Commissioning | DH2200 | L3 | DH CRAH | DELETED | DH1100 |  |
| DC1-CRAH-L3-Cx-3390 | **DELETED** DC1-DH2200-CRAH-DH-15 L3 Startup | 2d | 2026-07-17 A | 2026-07-17 A | QTS-1020 | 100% | 2026-07-21 | 2026-07-22 | UMAS | Commissioning | DH2200 | L3 | DH CRAH | DELETED | DH1100 |  |
| DC1-CRAH-L3-Cx-3400 | **DELETED** DC1-DH2200-CRAH-DH-15 BMS/EPMS Programming | 1d | 2026-07-17 A | 2026-07-17 A | QTS-1020 | 100% | 2026-07-23 | 2026-07-23 | PRM | Commissioning | DH2200 | L3 | DH CRAH | DELETED | DH1100 |  |
| DC1-CRAH-L3-Cx-3410 | **DELETED** DC1-DH2200-CRAH-DH-16 FTE | 1d | 2026-07-17 A | 2026-07-17 A | QTS-1020 | 100% | 2026-07-20 | 2026-07-20 | ROS | Commissioning | DH2200 | L3 | DH CRAH | DELETED | DH1100 |  |
| DC1-CRAH-L3-Cx-3420 | **DELETED** DC1-DH2200-CRAH-DH-16 L3 Startup | 2d | 2026-07-17 A | 2026-07-17 A | QTS-1020 | 100% | 2026-07-21 | 2026-07-22 | UMAS | Commissioning | DH2200 | L3 | DH CRAH | DELETED | DH1100 |  |
| DC1-CRAH-L3-Cx-3430 | **DELETED** DC1-DH2200-CRAH-DH-16 BMS/EPMS Programming | 1d | 2026-07-17 A | 2026-07-17 A | QTS-1020 | 100% | 2026-07-23 | 2026-07-23 | PRM | Commissioning | DH2200 | L3 | DH CRAH | DELETED | DH1100 |  |
| DC1-CRAH-L3-Cx-3440 | **DELETED** DC1-DH2200-CRAH-DH-17 FTE | 1d | 2026-07-17 A | 2026-07-17 A | QTS-1020 | 100% | 2026-07-20 | 2026-07-20 | ROS | Commissioning | DH2200 | L3 | DH CRAH | DELETED | DH1100 |  |
| DC1-CRAH-L3-Cx-3450 | **DELETED** DC1-DH2200-CRAH-DH-17 L3 Startup | 2d | 2026-07-17 A | 2026-07-17 A | QTS-1020 | 100% | 2026-07-21 | 2026-07-22 | UMAS | Commissioning | DH2200 | L3 | DH CRAH | DELETED | DH1100 |  |
| DC1-CRAH-L3-Cx-3460 | **DELETED** DC1-DH2200-CRAH-DH-17 BMS/EPMS Programming | 1d | 2026-07-17 A | 2026-07-17 A | QTS-1020 | 100% | 2026-07-23 | 2026-07-23 | PRM | Commissioning | DH2200 | L3 | DH CRAH | DELETED | DH1100 |  |
| DC1-CRAH-L3-Cx-3470 | **DELETED** DC1-DH2200-CRAH-DH-18 FTE | 1d | 2026-07-17 A | 2026-07-17 A | QTS-1020 | 100% | 2026-07-20 | 2026-07-20 | ROS | Commissioning | DH2200 | L3 | DH CRAH | DELETED | DH1100 |  |
| DC1-CRAH-L3-Cx-3480 | **DELETED** DC1-DH2200-CRAH-DH-18 L3 Startup | 2d | 2026-07-17 A | 2026-07-17 A | QTS-1020 | 100% | 2026-07-21 | 2026-07-22 | UMAS | Commissioning | DH2200 | L3 | DH CRAH | DELETED | DH1100 |  |
| DC1-CRAH-L3-Cx-3490 | **DELETED** DC1-DH2200-CRAH-DH-18 BMS/EPMS Programming | 1d | 2026-07-17 A | 2026-07-17 A | QTS-1020 | 100% | 2026-07-23 | 2026-07-23 | PRM | Commissioning | DH2200 | L3 | DH CRAH | DELETED | DH1100 |  |
| DC1-CRAH-L3-Cx-3500 | **DELETED** DC1-DH2200-CRAH-DH-19 FTE | 1d | 2026-07-17 A | 2026-07-17 A | QTS-1020 | 100% | 2026-07-20 | 2026-07-20 | ROS | Commissioning | DH2200 | L3 | DH CRAH | DELETED | DH1100 |  |
| DC1-CRAH-L3-Cx-3510 | **DELETED** DC1-DH2200-CRAH-DH-19 L3 Startup | 2d | 2026-07-17 A | 2026-07-17 A | QTS-1020 | 100% | 2026-07-21 | 2026-07-22 | UMAS | Commissioning | DH2200 | L3 | DH CRAH | DELETED | DH1100 |  |
| DC1-CRAH-L3-Cx-3520 | **DELETED** DC1-DH2200-CRAH-DH-19 BMS/EPMS Programming | 1d | 2026-07-17 A | 2026-07-17 A | QTS-1020 | 100% | 2026-07-23 | 2026-07-23 | PRM | Commissioning | DH2200 | L3 | DH CRAH | DELETED | DH1100 |  |
| DC1-CRAH-L3-Cx-3530 | **DELETED** DC1-DH2200-CRAH-DH-20 FTE | 1d | 2026-07-17 A | 2026-07-17 A | QTS-1020 | 100% | 2026-07-20 | 2026-07-20 | ROS | Commissioning | DH2200 | L3 | DH CRAH | DELETED | DH1100 |  |
| DC1-CRAH-L3-Cx-3540 | **DELETED** DC1-DH2200-CRAH-DH-20 L3 Startup | 2d | 2026-07-17 A | 2026-07-17 A | QTS-1020 | 100% | 2026-07-21 | 2026-07-22 | UMAS | Commissioning | DH2200 | L3 | DH CRAH | DELETED | DH1100 |  |
| DC1-CRAH-L3-Cx-3550 | **DELETED** DC1-DH2200-CRAH-DH-20 BMS/EPMS Programming | 1d | 2026-07-17 A | 2026-07-17 A | QTS-1020 | 100% | 2026-07-23 | 2026-07-23 | PRM | Commissioning | DH2200 | L3 | DH CRAH | DELETED | DH1100 |  |
| DC1-CRAH-L3-Cx-3560 | **DELETED** DC1-DH2200-CRAH-DH-21 FTE | 1d | 2026-07-17 A | 2026-07-17 A | QTS-1020 | 100% | 2026-07-20 | 2026-07-20 | ROS | Commissioning | DH2200 | L3 | DH CRAH | DELETED | DH1100 |  |
| DC1-CRAH-L3-Cx-3570 | **DELETED** DC1-DH2200-CRAH-DH-21 L3 Startup | 2d | 2026-07-17 A | 2026-07-17 A | QTS-1020 | 100% | 2026-07-21 | 2026-07-22 | UMAS | Commissioning | DH2200 | L3 | DH CRAH | DELETED | DH1100 |  |
| DC1-CRAH-L3-Cx-3580 | **DELETED** DC1-DH2200-CRAH-DH-21 BMS/EPMS Programming | 1d | 2026-07-17 A | 2026-07-17 A | QTS-1020 | 100% | 2026-07-23 | 2026-07-23 | PRM | Commissioning | DH2200 | L3 | DH CRAH | DELETED | DH1100 |  |
| DC1-CRAH-L3-Cx-3590 | **DELETED** DC1-DH2200-CRAH-DH-22 FTE | 1d | 2026-07-17 A | 2026-07-17 A | QTS-1020 | 100% | 2026-07-20 | 2026-07-20 | ROS | Commissioning | DH2200 | L3 | DH CRAH | DELETED | DH1100 |  |
| DC1-CRAH-L3-Cx-3600 | **DELETED** DC1-DH2200-CRAH-DH-22 L3 Startup | 2d | 2026-07-17 A | 2026-07-17 A | QTS-1020 | 100% | 2026-07-21 | 2026-07-22 | UMAS | Commissioning | DH2200 | L3 | DH CRAH | DELETED | DH1100 |  |
| DC1-CRAH-L3-Cx-3610 | **DELETED** DC1-DH2200-CRAH-DH-22 BMS/EPMS Programming | 1d | 2026-07-17 A | 2026-07-17 A | QTS-1020 | 100% | 2026-07-23 | 2026-07-23 | PRM | Commissioning | DH2200 | L3 | DH CRAH | DELETED | DH1100 |  |
| DC1-CRAH-L3-Cx-3620 | **DELETED** DC1-DH2200-CRAH-DH-23 FTE | 1d | 2026-07-17 A | 2026-07-17 A | QTS-1020 | 100% | 2026-07-20 | 2026-07-20 | ROS | Commissioning | DH2200 | L3 | DH CRAH | DELETED | DH1100 |  |
| DC1-CRAH-L3-Cx-3630 | **DELETED** DC1-DH2200-CRAH-DH-23 L3 Startup | 2d | 2026-07-17 A | 2026-07-17 A | QTS-1020 | 100% | 2026-07-21 | 2026-07-22 | UMAS | Commissioning | DH2200 | L3 | DH CRAH | DELETED | DH1100 |  |
| DC1-CRAH-L3-Cx-3640 | **DELETED** DC1-DH2200-CRAH-DH-23 BMS/EPMS Programming | 1d | 2026-07-17 A | 2026-07-17 A | QTS-1020 | 100% | 2026-07-23 | 2026-07-23 | PRM | Commissioning | DH2200 | L3 | DH CRAH | DELETED | DH1100 |  |
| DC1-CRAH-L3-Cx-3650 | **DELETED** DC1-DH2200-CRAH-DH-24 FTE | 1d | 2026-07-17 A | 2026-07-17 A | QTS-1020 | 100% | 2026-07-20 | 2026-07-20 | ROS | Commissioning | DH2200 | L3 | DH CRAH | DELETED | DH1100 |  |
| DC1-CRAH-L3-Cx-3660 | **DELETED** DC1-DH2200-CRAH-DH-24 L3 Startup | 2d | 2026-07-17 A | 2026-07-17 A | QTS-1020 | 100% | 2026-07-21 | 2026-07-22 | UMAS | Commissioning | DH2200 | L3 | DH CRAH | DELETED | DH1100 |  |
| DC1-CRAH-L3-Cx-3670 | **DELETED** DC1-DH2200-CRAH-DH-24 BMS/EPMS Programming | 1d | 2026-07-17 A | 2026-07-17 A | QTS-1020 | 100% | 2026-07-23 | 2026-07-23 | PRM | Commissioning | DH2200 | L3 | DH CRAH | DELETED | DH1100 |  |
| DC1-CRAH-L3-Cx-3680 | **DELETED** DC1-DH2200-CRAH-DH-25 FTE | 1d | 2026-07-17 A | 2026-07-17 A | QTS-1020 | 100% | 2026-07-20 | 2026-07-20 | ROS | Commissioning | DH2200 | L3 | DH CRAH | DELETED | DH1100 |  |
| DC1-CRAH-L3-Cx-3690 | **DELETED** DC1-DH2200-CRAH-DH-25 L3 Startup | 2d | 2026-07-17 A | 2026-07-17 A | QTS-1020 | 100% | 2026-07-21 | 2026-07-22 | UMAS | Commissioning | DH2200 | L3 | DH CRAH | DELETED | DH1100 |  |
| DC1-CRAH-L3-Cx-3700 | **DELETED** DC1-DH2200-CRAH-DH-25 BMS/EPMS Programming | 1d | 2026-07-17 A | 2026-07-17 A | QTS-1020 | 100% | 2026-07-23 | 2026-07-23 | PRM | Commissioning | DH2200 | L3 | DH CRAH | DELETED | DH1100 |  |
| DC1-CRAH-L3-Cx-3710 | **DELETED** DC1-DH2200-CRAH-DH-26 FTE | 1d | 2026-07-17 A | 2026-07-17 A | QTS-1020 | 100% | 2026-07-20 | 2026-07-20 | ROS | Commissioning | DH2200 | L3 | DH CRAH | DELETED | DH1100 |  |
| DC1-CRAH-L3-Cx-3720 | **DELETED** DC1-DH2200-CRAH-DH-26 L3 Startup | 2d | 2026-07-17 A | 2026-07-17 A | QTS-1020 | 100% | 2026-07-21 | 2026-07-22 | UMAS | Commissioning | DH2200 | L3 | DH CRAH | DELETED | DH1100 |  |
| DC1-CRAH-L3-Cx-3730 | **DELETED** DC1-DH2200-CRAH-DH-26 BMS/EPMS Programming | 1d | 2026-07-17 A | 2026-07-17 A | QTS-1020 | 100% | 2026-07-23 | 2026-07-23 | PRM | Commissioning | DH2200 | L3 | DH CRAH | DELETED | DH1100 |  |
| DC1-CRAH-L3-Cx-3740 | **DELETED** DC1-DH2200-CRAH-DH-27 FTE | 1d | 2026-07-17 A | 2026-07-17 A | QTS-1020 | 100% | 2026-07-20 | 2026-07-20 | ROS | Commissioning | DH2200 | L3 | DH CRAH | DELETED | DH1100 |  |
| DC1-CRAH-L3-Cx-3750 | **DELETED** DC1-DH2200-CRAH-DH-27 L3 Startup | 2d | 2026-07-17 A | 2026-07-17 A | QTS-1020 | 100% | 2026-07-21 | 2026-07-22 | UMAS | Commissioning | DH2200 | L3 | DH CRAH | DELETED | DH1100 |  |
| DC1-CRAH-L3-Cx-3760 | **DELETED** DC1-DH2200-CRAH-DH-27 BMS/EPMS Programming | 1d | 2026-07-17 A | 2026-07-17 A | QTS-1020 | 100% | 2026-07-23 | 2026-07-23 | PRM | Commissioning | DH2200 | L3 | DH CRAH | DELETED | DH1100 |  |
| DC1-CRAH-L3-Cx-3770 | **DELETED** DC1-DH2200-CRAH-DH-28 FTE | 1d | 2026-07-17 A | 2026-07-17 A | QTS-1020 | 100% | 2026-07-20 | 2026-07-20 | ROS | Commissioning | DH2200 | L3 | DH CRAH | DELETED | DH1100 |  |
| DC1-CRAH-L3-Cx-3780 | **DELETED** DC1-DH2200-CRAH-DH-28 L3 Startup | 2d | 2026-07-17 A | 2026-07-17 A | QTS-1020 | 100% | 2026-07-21 | 2026-07-22 | UMAS | Commissioning | DH2200 | L3 | DH CRAH | DELETED | DH1100 |  |
| DC1-CRAH-L3-Cx-3790 | **DELETED** DC1-DH2200-CRAH-DH-28 BMS/EPMS Programming | 1d | 2026-07-17 A | 2026-07-17 A | QTS-1020 | 100% | 2026-07-23 | 2026-07-23 | PRM | Commissioning | DH2200 | L3 | DH CRAH | DELETED | DH1100 |  |
| DC1-CRAH-L3-Cx-3800 | **DELETED** DC1-DH2200-CRAH-EG-2202-01 FTE | 1d | 2026-07-17 A | 2026-07-17 A | QTS-1020 | 100% | 2026-07-20 | 2026-07-20 | ROS | Commissioning | DH2200 | L3 | EG CRAH | DELETED | DH1100 |  |
| DC1-CRAH-L3-Cx-3810 | **DELETED** DC1-DH2200-CRAH-EG-2202-01 L3 Startup | 2d | 2026-07-17 A | 2026-07-17 A | QTS-1020 | 100% | 2026-07-21 | 2026-07-22 | VER | Commissioning | DH2200 | L3 | EG CRAH | DELETED | DH1100 |  |
| DC1-CRAH-L3-Cx-3820 | **DELETED** DC1-DH2200-CRAH-EG-2202-01 BMS/EPMS Programming | 1d | 2026-07-17 A | 2026-07-17 A | QTS-1020 | 100% | 2026-07-23 | 2026-07-23 | PRM | Commissioning | DH2200 | L3 | EG CRAH | DELETED | DH1100 |  |
| DC1-CRAH-L3-Cx-3830 | **DELETED** DC1-DH2200-CRAH-EG-2202-02 FTE | 1d | 2026-07-17 A | 2026-07-17 A | QTS-1020 | 100% | 2026-07-20 | 2026-07-20 | ROS | Commissioning | DH2200 | L3 | EG CRAH | DELETED | DH1100 |  |
| DC1-CRAH-L3-Cx-3840 | **DELETED** DC1-DH2200-CRAH-EG-2202-02 L3 Startup | 2d | 2026-07-17 A | 2026-07-17 A | QTS-1020 | 100% | 2026-07-21 | 2026-07-22 | VER | Commissioning | DH2200 | L3 | EG CRAH | DELETED | DH1100 |  |
| DC1-CRAH-L3-Cx-3850 | **DELETED** DC1-DH2200-CRAH-EG-2202-02 BMS/EPMS Programming | 1d | 2026-07-17 A | 2026-07-17 A | QTS-1020 | 100% | 2026-07-23 | 2026-07-23 | PRM | Commissioning | DH2200 | L3 | EG CRAH | DELETED | DH1100 |  |
| DC1-CRAH-L3-Cx-3860 | **DELETED** DC1-DH2200-CRAH-EG-2202-03 FTE | 1d | 2026-07-17 A | 2026-07-17 A | QTS-1020 | 100% | 2026-07-20 | 2026-07-20 | ROS | Commissioning | DH2200 | L3 | EG CRAH | DELETED | DH1100 |  |
| DC1-CRAH-L3-Cx-3870 | **DELETED** DC1-DH2200-CRAH-EG-2202-03 L3 Startup | 2d | 2026-07-17 A | 2026-07-17 A | QTS-1020 | 100% | 2026-07-21 | 2026-07-22 | VER | Commissioning | DH2200 | L3 | EG CRAH | DELETED | DH1100 |  |
| DC1-CRAH-L3-Cx-3880 | **DELETED** DC1-DH2200-CRAH-EG-2202-03 BMS/EPMS Programming | 1d | 2026-07-17 A | 2026-07-17 A | QTS-1020 | 100% | 2026-07-23 | 2026-07-23 | PRM | Commissioning | DH2200 | L3 | EG CRAH | DELETED | DH1100 |  |
| DC1-CRAH-L3-Cx-3890 | **DELETED** DC1-DH2200-CRAH-EG-2202-04 FTE | 1d | 2026-07-17 A | 2026-07-17 A | QTS-1020 | 100% | 2026-07-20 | 2026-07-20 | ROS | Commissioning | DH2200 | L3 | EG CRAH | DELETED | DH1100 |  |
| DC1-CRAH-L3-Cx-3900 | **DELETED** DC1-DH2200-CRAH-EG-2202-04 L3 Startup | 2d | 2026-07-17 A | 2026-07-17 A | QTS-1020 | 100% | 2026-07-21 | 2026-07-22 | VER | Commissioning | DH2200 | L3 | EG CRAH | DELETED | DH1100 |  |
| DC1-CRAH-L3-Cx-3910 | **DELETED** DC1-DH2200-CRAH-EG-2202-04 BMS/EPMS Programming | 1d | 2026-07-17 A | 2026-07-17 A | QTS-1020 | 100% | 2026-07-23 | 2026-07-23 | PRM | Commissioning | DH2200 | L3 | EG CRAH | DELETED | DH1100 |  |
| DC1-DOAS-L3-Cx-2060 | **DELETED** DC1-DH2200-DOAS-RT-01 FTE | 1d | 2026-07-17 A | 2026-07-17 A | QTS-1020 | 100% | 2026-07-23 | 2026-07-23 | ROS | Commissioning | DH2200 | L3 | DOAS | DELETED | DH1100 |  |
| DC1-DOAS-L3-Cx-2070 | **DELETED** DC1-DH2200-DOAS-RT-01 L3 Startup | 2d | 2026-07-17 A | 2026-07-17 A | QTS-1020 | 100% | 2026-07-24 | 2026-07-27 | TAS | Commissioning | DH2200 | L3 | DOAS | DELETED | DH1100 |  |
| DC1-DOAS-L3-Cx-2080 | **DELETED** DC1-DH2200-DOAS-RT-01 BMS/EPMS Programming | 1d | 2026-07-17 A | 2026-07-17 A | QTS-1020 | 100% | 2026-07-28 | 2026-07-28 | PRM | Commissioning | DH2200 | L3 | DOAS | DELETED | DH1100 |  |
| DC1-DOAS-L3-Cx-2090 | **DELETED** DC1-DH2200-DOAS-RT-02 FTE | 1d | 2026-07-17 A | 2026-07-17 A | QTS-1020 | 100% | 2026-07-23 | 2026-07-23 | ROS | Commissioning | DH2200 | L3 | DOAS | DELETED | DH1100 |  |
| DC1-DOAS-L3-Cx-2100 | **DELETED** DC1-DH2200-DOAS-RT-02 L3 Startup | 2d | 2026-07-17 A | 2026-07-17 A | QTS-1020 | 100% | 2026-07-24 | 2026-07-27 | TAS | Commissioning | DH2200 | L3 | DOAS | DELETED | DH1100 |  |
| DC1-DOAS-L3-Cx-2110 | **DELETED** DC1-DH2200-DOAS-RT-02 BMS/EPMS Programming | 1d | 2026-07-17 A | 2026-07-17 A | QTS-1020 | 100% | 2026-07-28 | 2026-07-28 | PRM | Commissioning | DH2200 | L3 | DOAS | DELETED | DH1100 |  |
| DC1-ATS-L3-CX-3625 | **DELETED** DC1-ATS-A12-01 FTE | 1d | 2026-07-20 A | 2026-07-20 A | QTS-1020 | 100% |  |  | ROS | Commissioning | DH1200 | L3 | ATS | DELETED | DH1100 | SWD - FS |

Notes:
- DC1-CRAH-L3-Cx-3300: Steps: EC Startup Checklist; MC Startup Checklist; Vendor Startup
- DC1-CRAH-L3-Cx-3330: Steps: EC Startup Checklist; MC Startup Checklist; Vendor Startup
- DC1-CRAH-L3-Cx-3360: Steps: EC Startup Checklist; MC Startup Checklist; Vendor Startup
- DC1-CRAH-L3-Cx-3390: Steps: EC Startup Checklist; MC Startup Checklist; Vendor Startup
- DC1-CRAH-L3-Cx-3420: Steps: EC Startup Checklist; MC Startup Checklist; Vendor Startup
- DC1-CRAH-L3-Cx-3450: Steps: EC Startup Checklist; MC Startup Checklist; Vendor Startup
- DC1-CRAH-L3-Cx-3480: Steps: EC Startup Checklist; MC Startup Checklist; Vendor Startup
- DC1-CRAH-L3-Cx-3510: Steps: EC Startup Checklist; MC Startup Checklist; Vendor Startup
- DC1-CRAH-L3-Cx-3540: Steps: EC Startup Checklist; MC Startup Checklist; Vendor Startup
- DC1-CRAH-L3-Cx-3570: Steps: EC Startup Checklist; MC Startup Checklist; Vendor Startup
- DC1-CRAH-L3-Cx-3600: Steps: EC Startup Checklist; MC Startup Checklist; Vendor Startup
- DC1-CRAH-L3-Cx-3630: Steps: EC Startup Checklist; MC Startup Checklist; Vendor Startup
- DC1-CRAH-L3-Cx-3660: Steps: EC Startup Checklist; MC Startup Checklist; Vendor Startup
- DC1-CRAH-L3-Cx-3690: Steps: EC Startup Checklist; MC Startup Checklist; Vendor Startup
- DC1-CRAH-L3-Cx-3720: Steps: EC Startup Checklist; MC Startup Checklist; Vendor Startup
- DC1-CRAH-L3-Cx-3750: Steps: EC Startup Checklist; MC Startup Checklist; Vendor Startup
- DC1-CRAH-L3-Cx-3780: Steps: EC Startup Checklist; MC Startup Checklist; Vendor Startup
- DC1-CRAH-L3-Cx-3810: Steps: EC Startup Checklist; MC Startup Checklist; Vendor Startup
- DC1-CRAH-L3-Cx-3840: Steps: EC Startup Checklist; MC Startup Checklist; Vendor Startup
- DC1-CRAH-L3-Cx-3870: Steps: EC Startup Checklist; MC Startup Checklist; Vendor Startup
- DC1-CRAH-L3-Cx-3900: Steps: EC Startup Checklist; MC Startup Checklist; Vendor Startup
- DC1-DOAS-L3-Cx-2070: Steps: EC Startup Checklist; MC Startup Checklist; Vendor Startup
- DC1-DOAS-L3-Cx-2100: Steps: EC Startup Checklist; MC Startup Checklist; Vendor Startup

| ID | Activity | Duration | Start | Finish | Predecessors | Complete | Planned start | Planned finish | Vendor Responsible Party | Layton Discipline | Location | CX Level | Equipment | DELETED | D | Notes |
| --- | --- | --- | --- | --- | --- | --- | --- | --- | --- | --- | --- | --- | --- | --- | --- | --- |
| DC1-ATS-L3-CX-3635 | **DELETED** DC1-ATS-A12-01 L3 Startup | 2d | 2026-07-20 A | 2026-07-20 A | QTS-1020 | 100% | 2026-07-21 | 2026-07-22 | MAV | Commissioning | DH1200 | L3 | ATS | DELETED | DH1100 |  |
| DC1-ATS-L3-CX-3645 | **DELETED** DC1-ATS-A12-01 BMS/EPMS Programming | 1d | 2026-07-20 A | 2026-07-20 A | QTS-1020 | 100% | 2026-07-23 | 2026-07-23 | PRM | Commissioning | DH1200 | L3 | ATS | DELETED | DH1100 |  |
| DC1-ATS-L3-CX-3655 | **DELETED** DC1-ATS-A12-02 FTE | 1d | 2026-07-20 A | 2026-07-20 A | QTS-1020 | 100% |  |  | ROS | Commissioning | DH1200 | L3 | ATS | DELETED | DH1100 | SWD - FS |
| DC1-ATS-L3-CX-3665 | **DELETED** DC1-ATS-A12-02 L3 Startup | 2d | 2026-07-20 A | 2026-07-20 A | QTS-1020 | 100% | 2026-07-21 | 2026-07-22 | MAV | Commissioning | DH1200 | L3 | ATS | DELETED | DH1100 |  |
| DC1-ATS-L3-CX-3675 | **DELETED** DC1-ATS-A12-02 BMS/EPMS Programming | 1d | 2026-07-20 A | 2026-07-20 A | QTS-1020 | 100% | 2026-07-23 | 2026-07-23 | PRM | Commissioning | DH1200 | L3 | ATS | DELETED | DH1100 |  |
| DC1-ATS-L3-CX-3685 | **DELETED** DC1-ATS-A12-03 FTE | 1d | 2026-07-20 A | 2026-07-20 A | QTS-1020 | 100% |  |  | ROS | Commissioning | DH1200 | L3 | ATS | DELETED | DH1100 | SWD - FS |
| DC1-ATS-L3-CX-3695 | **DELETED** DC1-ATS-A12-03 L3 Startup | 2d | 2026-07-20 A | 2026-07-20 A | QTS-1020 | 100% | 2026-07-21 | 2026-07-22 | MAV | Commissioning | DH1200 | L3 | ATS | DELETED | DH1100 |  |
| DC1-ATS-L3-CX-3705 | **DELETED** DC1-ATS-A12-03 BMS/EPMS Programming | 1d | 2026-07-20 A | 2026-07-20 A | QTS-1020 | 100% | 2026-07-23 | 2026-07-23 | PRM | Commissioning | DH1200 | L3 | ATS | DELETED | DH1100 |  |
| DC1-ATS-L3-CX-3715 | **DELETED** DC1-ATS-A12-04 FTE | 1d | 2026-07-20 A | 2026-07-20 A | QTS-1020 | 100% |  |  | ROS | Commissioning | DH1200 | L3 | ATS | DELETED | DH1100 | SWD - FS |
| DC1-ATS-L3-CX-3725 | **DELETED** DC1-ATS-A12-04 L3 Startup | 2d | 2026-07-20 A | 2026-07-20 A | QTS-1020 | 100% | 2026-07-21 | 2026-07-22 | MAV | Commissioning | DH1200 | L3 | ATS | DELETED | DH1100 |  |
| DC1-ATS-L3-CX-3735 | **DELETED** DC1-ATS-A12-04 BMS/EPMS Programming | 1d | 2026-07-20 A | 2026-07-20 A | QTS-1020 | 100% | 2026-07-23 | 2026-07-23 | PRM | Commissioning | DH1200 | L3 | ATS | DELETED | DH1100 |  |
| DC1-ATS-L3-CX-3745 | **DELETED** DC1-ATS-A12-05 FTE | 1d | 2026-07-20 A | 2026-07-20 A | QTS-1020 | 100% |  |  | ROS | Commissioning | DH1200 | L3 | ATS | DELETED | DH1100 | SWD - FS |
| DC1-ATS-L3-CX-3755 | **DELETED** DC1-ATS-A12-05 L3 Startup | 2d | 2026-07-20 A | 2026-07-20 A | QTS-1020 | 100% | 2026-07-21 | 2026-07-22 | MAV | Commissioning | DH1200 | L3 | ATS | DELETED | DH1100 |  |
| DC1-ATS-L3-CX-3765 | **DELETED** DC1-ATS-A12-05 BMS/EPMS Programming | 1d | 2026-07-20 A | 2026-07-20 A | QTS-1020 | 100% | 2026-07-23 | 2026-07-23 | PRM | Commissioning | DH1200 | L3 | ATS | DELETED | DH1100 |  |
| DC1-ATS-L3-CX-3775 | **DELETED** DC1-ATS-A12-06 FTE | 1d | 2026-07-20 A | 2026-07-20 A | QTS-1020 | 100% |  |  | ROS | Commissioning | DH1200 | L3 | ATS | DELETED | DH1100 | SWD - FS |
| DC1-ATS-L3-CX-3785 | **DELETED** DC1-ATS-A12-06 L3 Startup | 2d | 2026-07-20 A | 2026-07-20 A | QTS-1020 | 100% | 2026-07-21 | 2026-07-22 | MAV | Commissioning | DH1200 | L3 | ATS | DELETED | DH1100 |  |
| DC1-ATS-L3-CX-3795 | **DELETED** DC1-ATS-A12-06 BMS/EPMS Programming | 1d | 2026-07-20 A | 2026-07-20 A | QTS-1020 | 100% | 2026-07-23 | 2026-07-23 | PRM | Commissioning | DH1200 | L3 | ATS | DELETED | DH1100 |  |
| DC1-ATS-L3-CX-3805 | **DELETED** DC1-ATS-B12-01 FTE | 1d | 2026-07-20 A | 2026-07-20 A | QTS-1020 | 100% |  |  | ROS | Commissioning | DH1200 | L3 | ATS | DELETED | DH1100 |  |
| DC1-ATS-L3-CX-3815 | **DELETED** DC1-ATS-B12-01 L3 Startup | 2d | 2026-07-20 A | 2026-07-20 A | QTS-1020 | 100% | 2026-07-21 | 2026-07-22 | MAV | Commissioning | DH1200 | L3 | ATS | DELETED | DH1100 |  |
| DC1-ATS-L3-CX-3825 | **DELETED** DC1-ATS-B12-01 BMS/EPMS Programming | 1d | 2026-07-20 A | 2026-07-20 A | QTS-1020 | 100% | 2026-07-23 | 2026-07-23 | PRM | Commissioning | DH1200 | L3 | ATS | DELETED | DH1100 |  |
| DC1-ATS-L3-CX-3835 | **DELETED** DC1-ATS-B12-02 FTE | 1d | 2026-07-20 A | 2026-07-20 A | QTS-1020 | 100% | 2026-07-21 | 2026-07-21 | ROS | Commissioning | DH1200 | L3 | ATS | DELETED | DH1100 |  |
| DC1-ATS-L3-CX-3845 | **DELETED** DC1-ATS-B12-02 L3 Startup | 2d | 2026-07-20 A | 2026-07-20 A | QTS-1020 | 100% | 2026-07-22 | 2026-07-23 | MAV | Commissioning | DH1200 | L3 | ATS | DELETED | DH1100 |  |
| DC1-ATS-L3-CX-3855 | **DELETED** DC1-ATS-B12-02 BMS/EPMS Programming | 1d | 2026-07-20 A | 2026-07-20 A | QTS-1020 | 100% | 2026-07-24 | 2026-07-24 | PRM | Commissioning | DH1200 | L3 | ATS | DELETED | DH1100 |  |
| DC1-ATS-L3-CX-3865 | **DELETED** DC1-ATS-B12-03 FTE | 1d | 2026-07-20 A | 2026-07-20 A | QTS-1020 | 100% |  |  | ROS | Commissioning | DH1200 | L3 | ATS | DELETED | DH1100 |  |
| DC1-ATS-L3-CX-3875 | **DELETED** DC1-ATS-B12-03 L3 Startup | 2d | 2026-07-20 A | 2026-07-20 A | QTS-1020 | 100% | 2026-07-21 | 2026-07-22 | MAV | Commissioning | DH1200 | L3 | ATS | DELETED | DH1100 |  |
| DC1-ATS-L3-CX-3885 | **DELETED** DC1-ATS-B12-03 BMS/EPMS Programming | 1d | 2026-07-20 A | 2026-07-20 A | QTS-1020 | 100% | 2026-07-23 | 2026-07-23 | PRM | Commissioning | DH1200 | L3 | ATS | DELETED | DH1100 |  |
| DC1-ATS-L3-CX-3895 | **DELETED** DC1-ATS-B12-04 FTE | 1d | 2026-07-20 A | 2026-07-20 A | QTS-1020 | 100% | 2026-07-21 | 2026-07-21 | ROS | Commissioning | DH1200 | L3 | ATS | DELETED | DH1100 |  |
| DC1-ATS-L3-CX-3905 | **DELETED** DC1-ATS-B12-04 L3 Startup | 2d | 2026-07-20 A | 2026-07-20 A | QTS-1020 | 100% | 2026-07-22 | 2026-07-23 | MAV | Commissioning | DH1200 | L3 | ATS | DELETED | DH1100 |  |
| DC1-ATS-L3-CX-3915 | **DELETED** DC1-ATS-B12-04 BMS/EPMS Programming | 1d | 2026-07-20 A | 2026-07-20 A | QTS-1020 | 100% | 2026-07-24 | 2026-07-24 | PRM | Commissioning | DH1200 | L3 | ATS | DELETED | DH1100 |  |
| DC1-ATS-L3-CX-3925 | **DELETED** DC1-ATS-B12-05 FTE | 1d | 2026-07-20 A | 2026-07-20 A | QTS-1020 | 100% |  |  | ROS | Commissioning | DH1200 | L3 | ATS | DELETED | DH1100 |  |
| DC1-ATS-L3-CX-3935 | **DELETED** DC1-ATS-B12-05 L3 Startup | 2d | 2026-07-20 A | 2026-07-20 A | QTS-1020 | 100% | 2026-07-21 | 2026-07-22 | MAV | Commissioning | DH1200 | L3 | ATS | DELETED | DH1100 |  |
| DC1-ATS-L3-CX-3945 | **DELETED** DC1-ATS-B12-05 BMS/EPMS Programming | 1d | 2026-07-20 A | 2026-07-20 A | QTS-1020 | 100% | 2026-07-23 | 2026-07-23 | PRM | Commissioning | DH1200 | L3 | ATS | DELETED | DH1100 |  |
| DC1-ATS-L3-CX-3955 | **DELETED** DC1-ATS-B12-06 FTE | 1d | 2026-07-20 A | 2026-07-20 A | QTS-1020 | 100% | 2026-07-21 | 2026-07-21 | ROS | Commissioning | DH1200 | L3 | ATS | DELETED | DH1100 |  |
| DC1-ATS-L3-CX-3965 | **DELETED** DC1-ATS-B12-06 L3 Startup | 2d | 2026-07-20 A | 2026-07-20 A | QTS-1020 | 100% | 2026-07-22 | 2026-07-23 | MAV | Commissioning | DH1200 | L3 | ATS | DELETED | DH1100 |  |
| DC1-ATS-L3-CX-3975 | **DELETED** DC1-ATS-B12-06 BMS/EPMS Programming | 1d | 2026-07-20 A | 2026-07-20 A | QTS-1020 | 100% | 2026-07-24 | 2026-07-24 | PRM | Commissioning | DH1200 | L3 | ATS | DELETED | DH1100 |  |
| DC1-ATS-L3-CX-3985 | **DELETED** DC1-ATS-C12-01 FTE | 1d | 2026-07-20 A | 2026-07-20 A | QTS-1020 | 100% |  |  | ROS | Commissioning | DH1200 | L3 | ATS | DELETED | DH1100 |  |
| DC1-ATS-L3-CX-3995 | **DELETED** DC1-ATS-C12-01 L3 Startup | 2d | 2026-07-20 A | 2026-07-20 A | QTS-1020 | 100% | 2026-07-21 | 2026-07-22 | MAV | Commissioning | DH1200 | L3 | ATS | DELETED | DH1100 |  |
| DC1-ATS-L3-CX-4005 | **DELETED** DC1-ATS-C12-01 BMS/EPMS Programming | 1d | 2026-07-20 A | 2026-07-20 A | QTS-1020 | 100% | 2026-07-23 | 2026-07-23 | PRM | Commissioning | DH1200 | L3 | ATS | DELETED | DH1100 |  |
| DC1-ATS-L3-CX-4015 | **DELETED** DC1-ATS-C12-02 FTE | 1d | 2026-07-20 A | 2026-07-20 A | QTS-1020 | 100% | 2026-07-21 | 2026-07-21 | ROS | Commissioning | DH1200 | L3 | ATS | DELETED | DH1100 |  |
| DC1-ATS-L3-CX-4025 | **DELETED** DC1-ATS-C12-02 L3 Startup | 2d | 2026-07-20 A | 2026-07-20 A | QTS-1020 | 100% | 2026-07-22 | 2026-07-23 | MAV | Commissioning | DH1200 | L3 | ATS | DELETED | DH1100 |  |
| DC1-ATS-L3-CX-4035 | **DELETED** DC1-ATS-C12-02 BMS/EPMS Programming | 1d | 2026-07-20 A | 2026-07-20 A | QTS-1020 | 100% | 2026-07-24 | 2026-07-24 | PRM | Commissioning | DH1200 | L3 | ATS | DELETED | DH1100 |  |
| DC1-ATS-L3-CX-4045 | **DELETED** DC1-ATS-C12-03 FTE | 1d | 2026-07-20 A | 2026-07-20 A | QTS-1020 | 100% |  |  | ROS | Commissioning | DH1200 | L3 | ATS | DELETED | DH1100 |  |
| DC1-ATS-L3-CX-4055 | **DELETED** DC1-ATS-C12-03 L3 Startup | 2d | 2026-07-20 A | 2026-07-20 A | QTS-1020 | 100% | 2026-07-21 | 2026-07-22 | MAV | Commissioning | DH1200 | L3 | ATS | DELETED | DH1100 |  |
| DC1-ATS-L3-CX-4065 | **DELETED** DC1-ATS-C12-03 BMS/EPMS Programming | 1d | 2026-07-20 A | 2026-07-20 A | QTS-1020 | 100% | 2026-07-23 | 2026-07-23 | PRM | Commissioning | DH1200 | L3 | ATS | DELETED | DH1100 |  |
| DC1-ATS-L3-CX-4075 | **DELETED** DC1-ATS-C12-04 FTE | 1d | 2026-07-20 A | 2026-07-20 A | QTS-1020 | 100% | 2026-07-21 | 2026-07-21 | ROS | Commissioning | DH1200 | L3 | ATS | DELETED | DH1100 |  |
| DC1-ATS-L3-CX-4085 | **DELETED** DC1-ATS-C12-04 L3 Startup | 2d | 2026-07-20 A | 2026-07-20 A | QTS-1020 | 100% | 2026-07-22 | 2026-07-23 | MAV | Commissioning | DH1200 | L3 | ATS | DELETED | DH1100 |  |
| DC1-ATS-L3-CX-4095 | **DELETED** DC1-ATS-C12-04 BMS/EPMS Programming | 1d | 2026-07-20 A | 2026-07-20 A | QTS-1020 | 100% | 2026-07-24 | 2026-07-24 | PRM | Commissioning | DH1200 | L3 | ATS | DELETED | DH1100 |  |
| DC1-ATS-L3-CX-4105 | **DELETED** DC1-ATS-C12-05 FTE | 1d | 2026-07-20 A | 2026-07-20 A | QTS-1020 | 100% |  |  | ROS | Commissioning | DH1200 | L3 | ATS | DELETED | DH1100 |  |
| DC1-ATS-L3-CX-4115 | **DELETED** DC1-ATS-C12-05 L3 Startup | 2d | 2026-07-20 A | 2026-07-20 A | QTS-1020 | 100% | 2026-07-21 | 2026-07-22 | MAV | Commissioning | DH1200 | L3 | ATS | DELETED | DH1100 |  |
| DC1-ATS-L3-CX-4125 | **DELETED** DC1-ATS-C12-05 BMS/EPMS Programming | 1d | 2026-07-20 A | 2026-07-20 A | QTS-1020 | 100% | 2026-07-23 | 2026-07-23 | PRM | Commissioning | DH1200 | L3 | ATS | DELETED | DH1100 |  |
| DC1-ATS-L3-CX-4135 | **DELETED** DC1-ATS-C12-06 FTE | 1d | 2026-07-20 A | 2026-07-20 A | QTS-1020 | 100% | 2026-07-21 | 2026-07-21 | ROS | Commissioning | DH1200 | L3 | ATS | DELETED | DH1100 |  |
| DC1-ATS-L3-CX-4145 | **DELETED** DC1-ATS-C12-06 L3 Startup | 2d | 2026-07-20 A | 2026-07-20 A | QTS-1020 | 100% | 2026-07-22 | 2026-07-23 | MAV | Commissioning | DH1200 | L3 | ATS | DELETED | DH1100 |  |
| DC1-ATS-L3-CX-4155 | **DELETED** DC1-ATS-C12-06 BMS/EPMS Programming | 1d | 2026-07-20 A | 2026-07-20 A | QTS-1020 | 100% | 2026-07-24 | 2026-07-24 | PRM | Commissioning | DH1200 | L3 | ATS | DELETED | DH1100 |  |
| DC1-ATS-L3-CX-4165 | **DELETED** DC1-ATS-D12-01 FTE | 1d | 2026-07-20 A | 2026-07-20 A | QTS-1020 | 100% |  |  | ROS | Commissioning | DH1200 | L3 | ATS | DELETED | DH1100 |  |
| DC1-ATS-L3-CX-4175 | **DELETED** DC1-ATS-D12-01 L3 Startup | 2d | 2026-07-20 A | 2026-07-20 A | QTS-1020 | 100% | 2026-07-21 | 2026-07-22 | MAV | Commissioning | DH1200 | L3 | ATS | DELETED | DH1100 |  |
| DC1-ATS-L3-CX-4185 | **DELETED** DC1-ATS-D12-01 BMS/EPMS Programming | 1d | 2026-07-20 A | 2026-07-20 A | QTS-1020 | 100% | 2026-07-23 | 2026-07-23 | PRM | Commissioning | DH1200 | L3 | ATS | DELETED | DH1100 |  |
| DC1-ATS-L3-CX-4195 | **DELETED** DC1-ATS-D12-02 FTE | 1d | 2026-07-20 A | 2026-07-20 A | QTS-1020 | 100% | 2026-07-21 | 2026-07-21 | ROS | Commissioning | DH1200 | L3 | ATS | DELETED | DH1100 |  |
| DC1-ATS-L3-CX-4205 | **DELETED** DC1-ATS-D12-02 L3 Startup | 2d | 2026-07-20 A | 2026-07-20 A | QTS-1020 | 100% | 2026-07-22 | 2026-07-23 | MAV | Commissioning | DH1200 | L3 | ATS | DELETED | DH1100 |  |
| DC1-ATS-L3-CX-4215 | **DELETED** DC1-ATS-D12-02 BMS/EPMS Programming | 1d | 2026-07-20 A | 2026-07-20 A | QTS-1020 | 100% | 2026-07-24 | 2026-07-24 | PRM | Commissioning | DH1200 | L3 | ATS | DELETED | DH1100 |  |
| DC1-ATS-L3-CX-4225 | **DELETED** DC1-ATS-D12-03 FTE | 1d | 2026-07-20 A | 2026-07-20 A | QTS-1020 | 100% |  |  | ROS | Commissioning | DH1200 | L3 | ATS | DELETED | DH1100 |  |
| DC1-ATS-L3-CX-4235 | **DELETED** DC1-ATS-D12-03 L3 Startup | 2d | 2026-07-20 A | 2026-07-20 A | QTS-1020 | 100% | 2026-07-21 | 2026-07-22 | MAV | Commissioning | DH1200 | L3 | ATS | DELETED | DH1100 |  |
| DC1-ATS-L3-CX-4245 | **DELETED** DC1-ATS-D12-03 BMS/EPMS Programming | 1d | 2026-07-20 A | 2026-07-20 A | QTS-1020 | 100% | 2026-07-23 | 2026-07-23 | PRM | Commissioning | DH1200 | L3 | ATS | DELETED | DH1100 |  |
| DC1-ATS-L3-CX-4255 | **DELETED** DC1-ATS-D12-04 FTE | 1d | 2026-07-20 A | 2026-07-20 A | QTS-1020 | 100% | 2026-07-21 | 2026-07-21 | ROS | Commissioning | DH1200 | L3 | ATS | DELETED | DH1100 |  |
| DC1-ATS-L3-CX-4265 | **DELETED** DC1-ATS-D12-04 L3 Startup | 2d | 2026-07-20 A | 2026-07-20 A | QTS-1020 | 100% | 2026-07-22 | 2026-07-23 | MAV | Commissioning | DH1200 | L3 | ATS | DELETED | DH1100 |  |
| DC1-ATS-L3-CX-4275 | **DELETED** DC1-ATS-D12-04 BMS/EPMS Programming | 1d | 2026-07-20 A | 2026-07-20 A | QTS-1020 | 100% | 2026-07-24 | 2026-07-24 | PRM | Commissioning | DH1200 | L3 | ATS | DELETED | DH1100 |  |
| DC1-ATS-L3-CX-4285 | **DELETED** DC1-ATS-D12-05 FTE | 1d | 2026-07-20 A | 2026-07-20 A | QTS-1020 | 100% |  |  | ROS | Commissioning | DH1200 | L3 | ATS | DELETED | DH1100 |  |
| DC1-ATS-L3-CX-4295 | **DELETED** DC1-ATS-D12-05 L3 Startup | 2d | 2026-07-20 A | 2026-07-20 A | QTS-1020 | 100% | 2026-07-21 | 2026-07-22 | MAV | Commissioning | DH1200 | L3 | ATS | DELETED | DH1100 |  |
| DC1-ATS-L3-CX-4305 | **DELETED** DC1-ATS-D12-05 BMS/EPMS Programming | 1d | 2026-07-20 A | 2026-07-20 A | QTS-1020 | 100% | 2026-07-23 | 2026-07-23 | PRM | Commissioning | DH1200 | L3 | ATS | DELETED | DH1100 |  |
| DC1-ATS-L3-CX-4315 | **DELETED** DC1-ATS-D12-06 FTE | 1d | 2026-07-20 A | 2026-07-20 A | QTS-1020 | 100% | 2026-07-21 | 2026-07-21 | ROS | Commissioning | DH1200 | L3 | ATS | DELETED | DH1100 |  |
| DC1-ATS-L3-CX-4325 | **DELETED** DC1-ATS-D12-06 L3 Startup | 2d | 2026-07-20 A | 2026-07-20 A | QTS-1020 | 100% | 2026-07-22 | 2026-07-23 | MAV | Commissioning | DH1200 | L3 | ATS | DELETED | DH1100 |  |

Notes:
- DC1-ATS-L3-CX-3635: Steps: EC Startup Report; Vendor Startup
- DC1-ATS-L3-CX-3665: Steps: EC Startup Report; Vendor Startup
- DC1-ATS-L3-CX-3695: Steps: EC Startup Report; Vendor Startup
- DC1-ATS-L3-CX-3725: Steps: EC Startup Report; Vendor Startup
- DC1-ATS-L3-CX-3755: Steps: EC Startup Report; Vendor Startup
- DC1-ATS-L3-CX-3785: Steps: EC Startup Report; Vendor Startup
- DC1-ATS-L3-CX-3815: Steps: EC Startup Report; Vendor Startup
- DC1-ATS-L3-CX-3845: Steps: EC Startup Report; Vendor Startup
- DC1-ATS-L3-CX-3875: Steps: EC Startup Report; Vendor Startup
- DC1-ATS-L3-CX-3905: Steps: EC Startup Report; Vendor Startup
- DC1-ATS-L3-CX-3935: Steps: EC Startup Report; Vendor Startup
- DC1-ATS-L3-CX-3965: Steps: EC Startup Report; Vendor Startup
- DC1-ATS-L3-CX-3995: Steps: EC Startup Report; Vendor Startup
- DC1-ATS-L3-CX-4025: Steps: EC Startup Report; Vendor Startup
- DC1-ATS-L3-CX-4055: Steps: EC Startup Report; Vendor Startup
- DC1-ATS-L3-CX-4085: Steps: EC Startup Report; Vendor Startup
- DC1-ATS-L3-CX-4115: Steps: EC Startup Report; Vendor Startup
- DC1-ATS-L3-CX-4145: Steps: EC Startup Report; Vendor Startup
- DC1-ATS-L3-CX-4175: Steps: EC Startup Report; Vendor Startup
- DC1-ATS-L3-CX-4205: Steps: EC Startup Report; Vendor Startup
- DC1-ATS-L3-CX-4235: Steps: EC Startup Report; Vendor Startup
- DC1-ATS-L3-CX-4265: Steps: EC Startup Report; Vendor Startup
- DC1-ATS-L3-CX-4295: Steps: EC Startup Report; Vendor Startup
- DC1-ATS-L3-CX-4325: Steps: EC Startup Report; Vendor Startup

| ID | Activity | Duration | Start | Finish | Predecessors | Complete | Planned start | Planned finish | Vendor Responsible Party | Layton Discipline | Location | CX Level | Equipment | DELETED | D | Notes |
| --- | --- | --- | --- | --- | --- | --- | --- | --- | --- | --- | --- | --- | --- | --- | --- | --- |
| DC1-ATS-L3-CX-4335 | **DELETED** DC1-ATS-D12-06 BMS/EPMS Programming | 1d | 2026-07-20 A | 2026-07-20 A | QTS-1020 | 100% | 2026-07-24 | 2026-07-24 | PRM | Commissioning | DH1200 | L3 | ATS | DELETED | DH1100 |  |
| DC1-ATS-L3-CX-4345 | **DELETED** DC1-ATS-E12-01 FTE | 1d | 2026-07-20 A | 2026-07-20 A | QTS-1020 | 100% |  |  | ROS | Commissioning | DH1200 | L3 | ATS | DELETED | DH1100 |  |
| DC1-ATS-L3-CX-4355 | **DELETED** DC1-ATS-E12-01 L3 Startup | 2d | 2026-07-20 A | 2026-07-20 A | QTS-1020 | 100% | 2026-07-21 | 2026-07-22 | MAV | Commissioning | DH1200 | L3 | ATS | DELETED | DH1100 |  |
| DC1-ATS-L3-CX-4365 | **DELETED** DC1-ATS-E12-01 BMS/EPMS Programming | 1d | 2026-07-20 A | 2026-07-20 A | QTS-1020 | 100% | 2026-07-23 | 2026-07-23 | PRM | Commissioning | DH1200 | L3 | ATS | DELETED | DH1100 |  |
| DC1-ATS-L3-CX-4375 | **DELETED** DC1-ATS-E12-02 FTE | 1d | 2026-07-20 A | 2026-07-20 A | QTS-1020 | 100% | 2026-07-21 | 2026-07-21 | ROS | Commissioning | DH1200 | L3 | ATS | DELETED | DH1100 |  |
| DC1-ATS-L3-CX-4385 | **DELETED** DC1-ATS-E12-02 L3 Startup | 2d | 2026-07-20 A | 2026-07-20 A | QTS-1020 | 100% | 2026-07-22 | 2026-07-23 | MAV | Commissioning | DH1200 | L3 | ATS | DELETED | DH1100 |  |
| DC1-ATS-L3-CX-4395 | **DELETED** DC1-ATS-E12-02 BMS/EPMS Programming | 1d | 2026-07-20 A | 2026-07-20 A | QTS-1020 | 100% | 2026-07-24 | 2026-07-24 | PRM | Commissioning | DH1200 | L3 | ATS | DELETED | DH1100 |  |
| DC1-ATS-L3-CX-4405 | **DELETED** DC1-ATS-E12-03 FTE | 1d | 2026-07-20 A | 2026-07-20 A | QTS-1020 | 100% |  |  | ROS | Commissioning | DH1200 | L3 | ATS | DELETED | DH1100 |  |
| DC1-ATS-L3-CX-4415 | **DELETED** DC1-ATS-E12-03 L3 Startup | 2d | 2026-07-20 A | 2026-07-20 A | QTS-1020 | 100% | 2026-07-21 | 2026-07-22 | MAV | Commissioning | DH1200 | L3 | ATS | DELETED | DH1100 |  |
| DC1-ATS-L3-CX-4425 | **DELETED** DC1-ATS-E12-03 BMS/EPMS Programming | 1d | 2026-07-20 A | 2026-07-20 A | QTS-1020 | 100% | 2026-07-23 | 2026-07-23 | PRM | Commissioning | DH1200 | L3 | ATS | DELETED | DH1100 |  |
| DC1-ATS-L3-CX-4435 | **DELETED** DC1-ATS-E12-04 FTE | 1d | 2026-07-20 A | 2026-07-20 A | QTS-1020 | 100% | 2026-07-21 | 2026-07-21 | ROS | Commissioning | DH1200 | L3 | ATS | DELETED | DH1100 |  |
| DC1-ATS-L3-CX-4445 | **DELETED** DC1-ATS-E12-04 L3 Startup | 2d | 2026-07-20 A | 2026-07-20 A | QTS-1020 | 100% | 2026-07-22 | 2026-07-23 | MAV | Commissioning | DH1200 | L3 | ATS | DELETED | DH1100 |  |
| DC1-ATS-L3-CX-4455 | **DELETED** DC1-ATS-E12-04 BMS/EPMS Programming | 1d | 2026-07-20 A | 2026-07-20 A | QTS-1020 | 100% | 2026-07-24 | 2026-07-24 | PRM | Commissioning | DH1200 | L3 | ATS | DELETED | DH1100 |  |
| DC1-ATS-L3-CX-4465 | **DELETED** DC1-ATS-E12-05 FTE | 1d | 2026-07-20 A | 2026-07-20 A | QTS-1020 | 100% |  |  | ROS | Commissioning | DH1200 | L3 | ATS | DELETED | DH1100 |  |
| DC1-ATS-L3-CX-4475 | **DELETED** DC1-ATS-E12-05 L3 Startup | 2d | 2026-07-20 A | 2026-07-20 A | QTS-1020 | 100% | 2026-07-21 | 2026-07-22 | MAV | Commissioning | DH1200 | L3 | ATS | DELETED | DH1100 |  |
| DC1-ATS-L3-CX-4485 | **DELETED** DC1-ATS-E12-05 BMS/EPMS Programming | 1d | 2026-07-20 A | 2026-07-20 A | QTS-1020 | 100% | 2026-07-23 | 2026-07-23 | PRM | Commissioning | DH1200 | L3 | ATS | DELETED | DH1100 |  |
| DC1-ATS-L3-CX-4495 | **DELETED** DC1-ATS-E12-06 FTE | 1d | 2026-07-20 A | 2026-07-20 A | QTS-1020 | 100% | 2026-07-21 | 2026-07-21 | ROS | Commissioning | DH1200 | L3 | ATS | DELETED | DH1100 |  |
| DC1-ATS-L3-CX-4505 | **DELETED** DC1-ATS-E12-06 L3 Startup | 2d | 2026-07-20 A | 2026-07-20 A | QTS-1020 | 100% | 2026-07-22 | 2026-07-23 | MAV | Commissioning | DH1200 | L3 | ATS | DELETED | DH1100 |  |
| DC1-ATS-L3-CX-4515 | **DELETED** DC1-ATS-E12-06 BMS/EPMS Programming | 1d | 2026-07-20 A | 2026-07-20 A | QTS-1020 | 100% | 2026-07-24 | 2026-07-24 | PRM | Commissioning | DH1200 | L3 | ATS | DELETED | DH1100 |  |
| DC1-ATS-L3-CX-4525 | **DELETED** DC1-ATS-F12-01 FTE | 1d | 2026-07-20 A | 2026-07-20 A | QTS-1020 | 100% |  |  | ROS | Commissioning | DH1200 | L3 | ATS | DELETED | DH1100 |  |
| DC1-ATS-L3-CX-4535 | **DELETED** DC1-ATS-F12-01 L3 Startup | 2d | 2026-07-20 A | 2026-07-20 A | QTS-1020 | 100% | 2026-07-21 | 2026-07-22 | MAV | Commissioning | DH1200 | L3 | ATS | DELETED | DH1100 |  |
| DC1-ATS-L3-CX-4545 | **DELETED** DC1-ATS-F12-01 BMS/EPMS Programming | 1d | 2026-07-20 A | 2026-07-20 A | QTS-1020 | 100% | 2026-07-23 | 2026-07-23 | PRM | Commissioning | DH1200 | L3 | ATS | DELETED | DH1100 |  |
| DC1-ATS-L3-CX-4555 | **DELETED** DC1-ATS-F12-02 FTE | 1d | 2026-07-20 A | 2026-07-20 A | QTS-1020 | 100% | 2026-07-21 | 2026-07-21 | ROS | Commissioning | DH1200 | L3 | ATS | DELETED | DH1100 |  |
| DC1-ATS-L3-CX-4565 | **DELETED** DC1-ATS-F12-02 L3 Startup | 2d | 2026-07-20 A | 2026-07-20 A | QTS-1020 | 100% | 2026-07-22 | 2026-07-23 | MAV | Commissioning | DH1200 | L3 | ATS | DELETED | DH1100 |  |
| DC1-ATS-L3-CX-4575 | **DELETED** DC1-ATS-F12-02 BMS/EPMS Programming | 1d | 2026-07-20 A | 2026-07-20 A | QTS-1020 | 100% | 2026-07-24 | 2026-07-24 | PRM | Commissioning | DH1200 | L3 | ATS | DELETED | DH1100 |  |
| DC1-ATS-L3-CX-4585 | **DELETED** DC1-ATS-F12-03 FTE | 1d | 2026-07-20 A | 2026-07-20 A | QTS-1020 | 100% |  |  | ROS | Commissioning | DH1200 | L3 | ATS | DELETED | DH1100 |  |
| DC1-ATS-L3-CX-4595 | **DELETED** DC1-ATS-F12-03 L3 Startup | 2d | 2026-07-20 A | 2026-07-20 A | QTS-1020 | 100% | 2026-07-21 | 2026-07-22 | MAV | Commissioning | DH1200 | L3 | ATS | DELETED | DH1100 |  |
| DC1-ATS-L3-CX-4605 | **DELETED** DC1-ATS-F12-03 BMS/EPMS Programming | 1d | 2026-07-20 A | 2026-07-20 A | QTS-1020 | 100% | 2026-07-23 | 2026-07-23 | PRM | Commissioning | DH1200 | L3 | ATS | DELETED | DH1100 |  |
| DC1-ATS-L3-CX-4615 | **DELETED** DC1-ATS-F12-04 FTE | 1d | 2026-07-20 A | 2026-07-20 A | QTS-1020 | 100% | 2026-07-21 | 2026-07-21 | ROS | Commissioning | DH1200 | L3 | ATS | DELETED | DH1100 |  |
| DC1-ATS-L3-CX-4625 | **DELETED** DC1-ATS-F12-04 L3 Startup | 2d | 2026-07-20 A | 2026-07-20 A | QTS-1020 | 100% | 2026-07-22 | 2026-07-23 | MAV | Commissioning | DH1200 | L3 | ATS | DELETED | DH1100 |  |
| DC1-ATS-L3-CX-4635 | **DELETED** DC1-ATS-F12-04 BMS/EPMS Programming | 1d | 2026-07-20 A | 2026-07-20 A | QTS-1020 | 100% | 2026-07-24 | 2026-07-24 | PRM | Commissioning | DH1200 | L3 | ATS | DELETED | DH1100 |  |
| DC1-ATS-L3-CX-4645 | **DELETED** DC1-ATS-F12-05 FTE | 1d | 2026-07-20 A | 2026-07-20 A | QTS-1020 | 100% |  |  | ROS | Commissioning | DH1200 | L3 | ATS | DELETED | DH1100 |  |
| DC1-ATS-L3-CX-4655 | **DELETED** DC1-ATS-F12-05 L3 Startup | 2d | 2026-07-20 A | 2026-07-20 A | QTS-1020 | 100% | 2026-07-21 | 2026-07-22 | MAV | Commissioning | DH1200 | L3 | ATS | DELETED | DH1100 |  |
| DC1-ATS-L3-CX-4665 | **DELETED** DC1-ATS-F12-05 BMS/EPMS Programming | 1d | 2026-07-20 A | 2026-07-20 A | QTS-1020 | 100% | 2026-07-23 | 2026-07-23 | PRM | Commissioning | DH1200 | L3 | ATS | DELETED | DH1100 |  |
| DC1-ATS-L3-CX-4675 | **DELETED** DC1-ATS-F12-06 FTE | 1d | 2026-07-20 A | 2026-07-20 A | QTS-1020 | 100% | 2026-07-21 | 2026-07-21 | ROS | Commissioning | DH1200 | L3 | ATS | DELETED | DH1100 |  |
| DC1-ATS-L3-CX-4685 | **DELETED** DC1-ATS-F12-06 L3 Startup | 2d | 2026-07-20 A | 2026-07-20 A | QTS-1020 | 100% | 2026-07-22 | 2026-07-23 | MAV | Commissioning | DH1200 | L3 | ATS | DELETED | DH1100 |  |
| DC1-ATS-L3-CX-4695 | **DELETED** DC1-ATS-F12-06 BMS/EPMS Programming | 1d | 2026-07-20 A | 2026-07-20 A | QTS-1020 | 100% | 2026-07-24 | 2026-07-24 | PRM | Commissioning | DH1200 | L3 | ATS | DELETED | DH1100 |  |
| DC1-BUS-L3-CX-2120 | **DELETED** DC1-DH1200-BUS-R1 (R22) CATCHER BUS FTE | 1d | 2026-07-20 A | 2026-07-20 A | QTS-1020 | 100% |  |  | ROS | Commissioning | DH1200 | L3 | BUS DUCT | DELETED | DH1100 | CFCI |
| DC1-BUS-L3-CX-2130 | **DELETED** DC1-DH1200-BUS-R1 (R22) CATCHER BUS L3 Startup | 2d | 2026-07-20 A | 2026-07-20 A | QTS-1020 | 100% | 2026-07-21 | 2026-07-22 | LAY | Commissioning | DH1200 | L3 | BUS DUCT | DELETED | DH1100 | CFCI |
| DC1-BUS-L3-CX-2140 | **DELETED** DC1-DH1200-BUS-R1 (R22) CATCHER BUS BMS/EPMS Programming | 1d | 2026-07-20 A | 2026-07-20 A | QTS-1020 | 100% | 2026-07-23 | 2026-07-23 | PRM | Commissioning | DH1200 | L3 | BUS DUCT | DELETED | DH1100 | CFCI |
| DC1-BUS-L3-CX-2150 | **DELETED** DC1-DH1200-BUS-R2 (R12) MAINTENANCE BUS FTE | 1d | 2026-07-20 A | 2026-07-20 A | QTS-1020 | 100% |  |  | ROS | Commissioning | DH1200 | L3 | BUS DUCT | DELETED | DH1100 | CFCI |
| DC1-BUS-L3-CX-2160 | **DELETED** DC1-DH1200-BUS-R2 (R12) MAINTENANCE BUS L3 Startup | 2d | 2026-07-20 A | 2026-07-20 A | QTS-1020 | 100% | 2026-07-21 | 2026-07-22 | LAY | Commissioning | DH1200 | L3 | BUS DUCT | DELETED | DH1100 | CFCI |
| DC1-BUS-L3-CX-2170 | **DELETED** DC1-DH1200-BUS-R2 (R12) MAINTENANCE BUS BMS/EPMS Programming | 1d | 2026-07-20 A | 2026-07-20 A | QTS-1020 | 100% | 2026-07-23 | 2026-07-23 | PRM | Commissioning | DH1200 | L3 | BUS DUCT | DELETED | DH1100 | CFCI |
| DC1-CDU-L3-CX-2725 | **DELETED** CDU-DH2200-01 FTE | 1d | 2026-07-20 A | 2026-07-20 A | QTS-1020 | 100% |  |  | ROS | Commissioning | DH2200 | L3 | CDU | DELETED | DH1100 |  |
| DC1-CDU-L3-CX-2735 | **DELETED** CDU-DH2200-01 L3 Startup | 2d | 2026-07-20 A | 2026-07-20 A | QTS-1020 | 100% | 2026-07-21 | 2026-07-22 | VER | Commissioning | DH2200 | L3 | CDU | DELETED | DH1100 |  |
| DC1-CDU-L3-CX-2745 | **DELETED** CDU-DH2200-01 BMS/EPMS Programming | 1d | 2026-07-20 A | 2026-07-20 A | QTS-1020 | 100% | 2026-07-23 | 2026-07-23 | PRM | Commissioning | DH2200 | L3 | CDU | DELETED | DH1100 |  |
| DC1-CDU-L3-CX-2755 | **DELETED** CDU-DH2200-02 FTE | 1d | 2026-07-20 A | 2026-07-20 A | QTS-1020 | 100% |  |  | ROS | Commissioning | DH2200 | L3 | CDU | DELETED | DH1100 |  |
| DC1-CDU-L3-CX-2765 | **DELETED** CDU-DH2200-02 L3 Startup | 2d | 2026-07-20 A | 2026-07-20 A | QTS-1020 | 100% | 2026-07-21 | 2026-07-22 | VER | Commissioning | DH2200 | L3 | CDU | DELETED | DH1100 |  |
| DC1-CDU-L3-CX-2775 | **DELETED** CDU-DH2200-02 BMS/EPMS Programming | 1d | 2026-07-20 A | 2026-07-20 A | QTS-1020 | 100% | 2026-07-23 | 2026-07-23 | PRM | Commissioning | DH2200 | L3 | CDU | DELETED | DH1100 |  |
| DC1-CDU-L3-CX-2785 | **DELETED** CDU-DH2200-03 FTE | 1d | 2026-07-20 A | 2026-07-20 A | QTS-1020 | 100% |  |  | ROS | Commissioning | DH2200 | L3 | CDU | DELETED | DH1100 |  |
| DC1-CDU-L3-CX-2795 | **DELETED** CDU-DH2200-03 L3 Startup | 2d | 2026-07-20 A | 2026-07-20 A | QTS-1020 | 100% | 2026-07-21 | 2026-07-22 | VER | Commissioning | DH2200 | L3 | CDU | DELETED | DH1100 |  |
| DC1-CDU-L3-CX-2805 | **DELETED** CDU-DH2200-03 BMS/EPMS Programming | 1d | 2026-07-20 A | 2026-07-20 A | QTS-1020 | 100% | 2026-07-23 | 2026-07-23 | PRM | Commissioning | DH2200 | L3 | CDU | DELETED | DH1100 |  |
| DC1-CDU-L3-CX-2815 | **DELETED** CDU-DH2200-04 FTE | 1d | 2026-07-20 A | 2026-07-20 A | QTS-1020 | 100% |  |  | ROS | Commissioning | DH2200 | L3 | CDU | DELETED | DH1100 |  |
| DC1-CDU-L3-CX-2825 | **DELETED** CDU-DH2200-04 L3 Startup | 2d | 2026-07-20 A | 2026-07-20 A | QTS-1020 | 100% | 2026-07-21 | 2026-07-22 | VER | Commissioning | DH2200 | L3 | CDU | DELETED | DH1100 |  |
| DC1-CDU-L3-CX-2835 | **DELETED** CDU-DH2200-04 BMS/EPMS Programming | 1d | 2026-07-20 A | 2026-07-20 A | QTS-1020 | 100% | 2026-07-23 | 2026-07-23 | PRM | Commissioning | DH2200 | L3 | CDU | DELETED | DH1100 |  |
| DC1-CDU-L3-CX-2845 | **DELETED** CDU-DH2200-05 FTE | 1d | 2026-07-20 A | 2026-07-20 A | QTS-1020 | 100% |  |  | ROS | Commissioning | DH2200 | L3 | CDU | DELETED | DH1100 |  |
| DC1-CDU-L3-CX-2855 | **DELETED** CDU-DH2200-05 L3 Startup | 2d | 2026-07-20 A | 2026-07-20 A | QTS-1020 | 100% | 2026-07-21 | 2026-07-22 | VER | Commissioning | DH2200 | L3 | CDU | DELETED | DH1100 |  |
| DC1-CDU-L3-CX-2865 | **DELETED** CDU-DH2200-05 BMS/EPMS Programming | 1d | 2026-07-20 A | 2026-07-20 A | QTS-1020 | 100% | 2026-07-23 | 2026-07-23 | PRM | Commissioning | DH2200 | L3 | CDU | DELETED | DH1100 |  |
| DC1-CDU-L3-CX-2875 | **DELETED** CDU-DH2200-06 FTE | 1d | 2026-07-20 A | 2026-07-20 A | QTS-1020 | 100% |  |  | ROS | Commissioning | DH2200 | L3 | CDU | DELETED | DH1100 |  |
| DC1-CDU-L3-CX-2885 | **DELETED** CDU-DH2200-06 L3 Startup | 2d | 2026-07-20 A | 2026-07-20 A | QTS-1020 | 100% | 2026-07-21 | 2026-07-22 | VER | Commissioning | DH2200 | L3 | CDU | DELETED | DH1100 |  |
| DC1-CDU-L3-CX-2895 | **DELETED** CDU-DH2200-06 BMS/EPMS Programming | 1d | 2026-07-20 A | 2026-07-20 A | QTS-1020 | 100% | 2026-07-23 | 2026-07-23 | PRM | Commissioning | DH2200 | L3 | CDU | DELETED | DH1100 |  |
| DC1-CDU-L3-CX-2905 | **DELETED** CDU-DH2200-07 FTE | 1d | 2026-07-20 A | 2026-07-20 A | QTS-1020 | 100% |  |  | ROS | Commissioning | DH2200 | L3 | CDU | DELETED | DH1100 |  |
| DC1-CDU-L3-CX-2915 | **DELETED** CDU-DH2200-07 L3 Startup | 2d | 2026-07-20 A | 2026-07-20 A | QTS-1020 | 100% | 2026-07-21 | 2026-07-22 | VER | Commissioning | DH2200 | L3 | CDU | DELETED | DH1100 |  |
| DC1-CDU-L3-CX-2925 | **DELETED** CDU-DH2200-07 BMS/EPMS Programming | 1d | 2026-07-20 A | 2026-07-20 A | QTS-1020 | 100% | 2026-07-23 | 2026-07-23 | PRM | Commissioning | DH2200 | L3 | CDU | DELETED | DH1100 |  |
| DC1-CDU-L3-CX-2935 | **DELETED** CDU-DH2200-08 FTE | 1d | 2026-07-20 A | 2026-07-20 A | QTS-1020 | 100% |  |  | ROS | Commissioning | DH2200 | L3 | CDU | DELETED | DH1100 |  |
| DC1-CDU-L3-CX-2945 | **DELETED** CDU-DH2200-08 L3 Startup | 2d | 2026-07-20 A | 2026-07-20 A | QTS-1020 | 100% | 2026-07-21 | 2026-07-22 | VER | Commissioning | DH2200 | L3 | CDU | DELETED | DH1100 |  |
| DC1-CDU-L3-CX-2955 | **DELETED** CDU-DH2200-08 BMS/EPMS Programming | 1d | 2026-07-20 A | 2026-07-20 A | QTS-1020 | 100% | 2026-07-23 | 2026-07-23 | PRM | Commissioning | DH2200 | L3 | CDU | DELETED | DH1100 |  |
| DC1-CDU-L3-CX-2965 | **DELETED** CDU-DH2200-09 FTE | 1d | 2026-07-20 A | 2026-07-20 A | QTS-1020 | 100% |  |  | ROS | Commissioning | DH2200 | L3 | CDU | DELETED | DH1100 |  |
| DC1-CDU-L3-CX-2975 | **DELETED** CDU-DH2200-09 L3 Startup | 2d | 2026-07-20 A | 2026-07-20 A | QTS-1020 | 100% | 2026-07-21 | 2026-07-22 | VER | Commissioning | DH2200 | L3 | CDU | DELETED | DH1100 |  |
| DC1-CDU-L3-CX-2985 | **DELETED** CDU-DH2200-09 BMS/EPMS Programming | 1d | 2026-07-20 A | 2026-07-20 A | QTS-1020 | 100% | 2026-07-23 | 2026-07-23 | PRM | Commissioning | DH2200 | L3 | CDU | DELETED | DH1100 |  |

Notes:
- DC1-ATS-L3-CX-4355: Steps: EC Startup Report; Vendor Startup
- DC1-ATS-L3-CX-4385: Steps: EC Startup Report; Vendor Startup
- DC1-ATS-L3-CX-4415: Steps: EC Startup Report; Vendor Startup
- DC1-ATS-L3-CX-4445: Steps: EC Startup Report; Vendor Startup
- DC1-ATS-L3-CX-4475: Steps: EC Startup Report; Vendor Startup
- DC1-ATS-L3-CX-4505: Steps: EC Startup Report; Vendor Startup
- DC1-ATS-L3-CX-4535: Steps: EC Startup Report; Vendor Startup
- DC1-ATS-L3-CX-4565: Steps: EC Startup Report; Vendor Startup
- DC1-ATS-L3-CX-4595: Steps: EC Startup Report; Vendor Startup
- DC1-ATS-L3-CX-4625: Steps: EC Startup Report; Vendor Startup
- DC1-ATS-L3-CX-4655: Steps: EC Startup Report; Vendor Startup
- DC1-ATS-L3-CX-4685: Steps: EC Startup Report; Vendor Startup
- DC1-BUS-L3-CX-2130: Steps: EC Startup Report; Vendor Startup
- DC1-BUS-L3-CX-2160: Steps: EC Startup Report; Vendor Startup
- DC1-CDU-L3-CX-2735: Steps: EC Startup Report; MC Installation Checklist; Vendor Startup
- DC1-CDU-L3-CX-2765: Steps: EC Startup Report; MC Installation Checklist; Vendor Startup
- DC1-CDU-L3-CX-2795: Steps: EC Startup Report; MC Installation Checklist; Vendor Startup
- DC1-CDU-L3-CX-2825: Steps: EC Startup Report; MC Installation Checklist; Vendor Startup
- DC1-CDU-L3-CX-2855: Steps: EC Startup Report; MC Installation Checklist; Vendor Startup
- DC1-CDU-L3-CX-2885: Steps: EC Startup Report; MC Installation Checklist; Vendor Startup
- DC1-CDU-L3-CX-2915: Steps: EC Startup Report; MC Installation Checklist; Vendor Startup
- DC1-CDU-L3-CX-2945: Steps: EC Startup Report; MC Installation Checklist; Vendor Startup
- DC1-CDU-L3-CX-2975: Steps: EC Startup Report; MC Installation Checklist; Vendor Startup

| ID | Activity | Duration | Start | Finish | Predecessors | Complete | Planned start | Planned finish | Vendor Responsible Party | Layton Discipline | Location | CX Level | Equipment | DELETED | D |
| --- | --- | --- | --- | --- | --- | --- | --- | --- | --- | --- | --- | --- | --- | --- | --- |
| DC1-CDU-L3-CX-2995 | **DELETED** CDU-DH2200-10 FTE | 1d | 2026-07-20 A | 2026-07-20 A | QTS-1020 | 100% |  |  | ROS | Commissioning | DH2200 | L3 | CDU | DELETED | DH1100 |
| DC1-CDU-L3-CX-3005 | **DELETED** CDU-DH2200-10 L3 Startup | 2d | 2026-07-20 A | 2026-07-20 A | QTS-1020 | 100% | 2026-07-21 | 2026-07-22 | VER | Commissioning | DH2200 | L3 | CDU | DELETED | DH1100 |
| DC1-CDU-L3-CX-3015 | **DELETED** CDU-DH2200-10 BMS/EPMS Programming | 1d | 2026-07-20 A | 2026-07-20 A | QTS-1020 | 100% | 2026-07-23 | 2026-07-23 | PRM | Commissioning | DH2200 | L3 | CDU | DELETED | DH1100 |
| DC1-CDU-L3-CX-3025 | **DELETED** CDU-DH2200-11 FTE | 1d | 2026-07-20 A | 2026-07-20 A | QTS-1020 | 100% |  |  | ROS | Commissioning | DH2200 | L3 | CDU | DELETED | DH1100 |
| DC1-CDU-L3-CX-3035 | **DELETED** CDU-DH2200-11 L3 Startup | 2d | 2026-07-20 A | 2026-07-20 A | QTS-1020 | 100% | 2026-07-21 | 2026-07-22 | VER | Commissioning | DH2200 | L3 | CDU | DELETED | DH1100 |
| DC1-CDU-L3-CX-3045 | **DELETED** CDU-DH2200-11 BMS/EPMS Programming | 1d | 2026-07-20 A | 2026-07-20 A | QTS-1020 | 100% | 2026-07-23 | 2026-07-23 | PRM | Commissioning | DH2200 | L3 | CDU | DELETED | DH1100 |
| DC1-CDU-L3-CX-3055 | **DELETED** CDU-DH2200-12 FTE | 1d | 2026-07-20 A | 2026-07-20 A | QTS-1020 | 100% |  |  | ROS | Commissioning | DH2200 | L3 | CDU | DELETED | DH1100 |
| DC1-CDU-L3-CX-3065 | **DELETED** CDU-DH2200-12 L3 Startup | 2d | 2026-07-20 A | 2026-07-20 A | QTS-1020 | 100% | 2026-07-21 | 2026-07-22 | VER | Commissioning | DH2200 | L3 | CDU | DELETED | DH1100 |
| DC1-CDU-L3-CX-3075 | **DELETED** CDU-DH2200-12 BMS/EPMS Programming | 1d | 2026-07-20 A | 2026-07-20 A | QTS-1020 | 100% | 2026-07-23 | 2026-07-23 | PRM | Commissioning | DH2200 | L3 | CDU | DELETED | DH1100 |
| DC1-CDU-L3-CX-3085 | **DELETED** CDU-DH2200-13 FTE | 1d | 2026-07-20 A | 2026-07-20 A | QTS-1020 | 100% |  |  | ROS | Commissioning | DH2200 | L3 | CDU | DELETED | DH1100 |
| DC1-CDU-L3-CX-3095 | **DELETED** CDU-DH2200-13 L3 Startup | 2d | 2026-07-20 A | 2026-07-20 A | QTS-1020 | 100% | 2026-07-21 | 2026-07-22 | VER | Commissioning | DH2200 | L3 | CDU | DELETED | DH1100 |
| DC1-CDU-L3-CX-3105 | **DELETED** CDU-DH2200-13 BMS/EPMS Programming | 1d | 2026-07-20 A | 2026-07-20 A | QTS-1020 | 100% | 2026-07-23 | 2026-07-23 | PRM | Commissioning | DH2200 | L3 | CDU | DELETED | DH1100 |
| DC1-CDU-L3-CX-3115 | **DELETED** CDU-DH2200-14 FTE | 1d | 2026-07-20 A | 2026-07-20 A | QTS-1020 | 100% |  |  | ROS | Commissioning | DH2200 | L3 | CDU | DELETED | DH1100 |
| DC1-CDU-L3-CX-3125 | **DELETED** CDU-DH2200-14 L3 Startup | 2d | 2026-07-20 A | 2026-07-20 A | QTS-1020 | 100% | 2026-07-21 | 2026-07-22 | VER | Commissioning | DH2200 | L3 | CDU | DELETED | DH1100 |
| DC1-CDU-L3-CX-3135 | **DELETED** CDU-DH2200-14 BMS/EPMS Programming | 1d | 2026-07-20 A | 2026-07-20 A | QTS-1020 | 100% | 2026-07-23 | 2026-07-23 | PRM | Commissioning | DH2200 | L3 | CDU | DELETED | DH1100 |
| DC1-CDU-L3-CX-3145 | **DELETED** CDU-DH2200-15 FTE | 1d | 2026-07-20 A | 2026-07-20 A | QTS-1020 | 100% |  |  | ROS | Commissioning | DH2200 | L3 | CDU | DELETED | DH1100 |
| DC1-CDU-L3-CX-3155 | **DELETED** CDU-DH2200-15 L3 Startup | 2d | 2026-07-20 A | 2026-07-20 A | QTS-1020 | 100% | 2026-07-21 | 2026-07-22 | VER | Commissioning | DH2200 | L3 | CDU | DELETED | DH1100 |
| DC1-CDU-L3-CX-3165 | **DELETED** CDU-DH2200-15 BMS/EPMS Programming | 1d | 2026-07-20 A | 2026-07-20 A | QTS-1020 | 100% | 2026-07-23 | 2026-07-23 | PRM | Commissioning | DH2200 | L3 | CDU | DELETED | DH1100 |
| DC1-CDU-L3-CX-3175 | **DELETED** CDU-DH2200-16 FTE | 1d | 2026-07-20 A | 2026-07-20 A | QTS-1020 | 100% |  |  | ROS | Commissioning | DH2200 | L3 | CDU | DELETED | DH1100 |
| DC1-CDU-L3-CX-3185 | **DELETED** CDU-DH2200-16 L3 Startup | 2d | 2026-07-20 A | 2026-07-20 A | QTS-1020 | 100% | 2026-07-21 | 2026-07-22 | VER | Commissioning | DH2200 | L3 | CDU | DELETED | DH1100 |
| DC1-CDU-L3-CX-3195 | **DELETED** CDU-DH2200-16 BMS/EPMS Programming | 1d | 2026-07-20 A | 2026-07-20 A | QTS-1020 | 100% | 2026-07-23 | 2026-07-23 | PRM | Commissioning | DH2200 | L3 | CDU | DELETED | DH1100 |
| DC1-CDU-L3-CX-3205 | **DELETED** CDU-DH2200-17 FTE | 1d | 2026-07-20 A | 2026-07-20 A | QTS-1020 | 100% |  |  | ROS | Commissioning | DH2200 | L3 | CDU | DELETED | DH1100 |
| DC1-CDU-L3-CX-3215 | **DELETED** CDU-DH2200-17 L3 Startup | 2d | 2026-07-20 A | 2026-07-20 A | QTS-1020 | 100% | 2026-07-21 | 2026-07-22 | VER | Commissioning | DH2200 | L3 | CDU | DELETED | DH1100 |
| DC1-CDU-L3-CX-3225 | **DELETED** CDU-DH2200-17 BMS/EPMS Programming | 1d | 2026-07-20 A | 2026-07-20 A | QTS-1020 | 100% | 2026-07-23 | 2026-07-23 | PRM | Commissioning | DH2200 | L3 | CDU | DELETED | DH1100 |
| DC1-CDU-L3-CX-3235 | **DELETED** CDU-DH2200-18 FTE | 1d | 2026-07-20 A | 2026-07-20 A | QTS-1020 | 100% |  |  | ROS | Commissioning | DH2200 | L3 | CDU | DELETED | DH1100 |
| DC1-CDU-L3-CX-3245 | **DELETED** CDU-DH2200-18 L3 Startup | 2d | 2026-07-20 A | 2026-07-20 A | QTS-1020 | 100% | 2026-07-21 | 2026-07-22 | VER | Commissioning | DH2200 | L3 | CDU | DELETED | DH1100 |
| DC1-CDU-L3-CX-3255 | **DELETED** CDU-DH2200-18 BMS/EPMS Programming | 1d | 2026-07-20 A | 2026-07-20 A | QTS-1020 | 100% | 2026-07-23 | 2026-07-23 | PRM | Commissioning | DH2200 | L3 | CDU | DELETED | DH1100 |
| DC1-CDU-L3-CX-4165 | **DELETED** CDU-DH1200-01 FTE | 1d | 2026-07-20 A | 2026-07-20 A | QTS-1020 | 100% | 2026-07-21 | 2026-07-21 | ROS | Commissioning | DH1200 | L3 | CDU | DELETED | DH1100 |
| DC1-CDU-L3-CX-4175 | **DELETED** CDU-DH1200-01 L3 Startup | 2d | 2026-07-20 A | 2026-07-20 A | QTS-1020 | 100% | 2026-07-22 | 2026-07-23 | VER | Commissioning | DH1200 | L3 | CDU | DELETED | DH1100 |
| DC1-CDU-L3-CX-4185 | **DELETED** CDU-DH1200-01 BMS/EPMS Programming | 1d | 2026-07-20 A | 2026-07-20 A | QTS-1020 | 100% | 2026-07-24 | 2026-07-24 | PRM | Commissioning | DH1200 | L3 | CDU | DELETED | DH1100 |
| DC1-CDU-L3-CX-4195 | **DELETED** CDU-DH1200-02 FTE | 1d | 2026-07-20 A | 2026-07-20 A | QTS-1020 | 100% | 2026-07-21 | 2026-07-21 | ROS | Commissioning | DH1200 | L3 | CDU | DELETED | DH1100 |
| DC1-CDU-L3-CX-4205 | **DELETED** CDU-DH1200-02 L3 Startup | 2d | 2026-07-20 A | 2026-07-20 A | QTS-1020 | 100% | 2026-07-22 | 2026-07-23 | VER | Commissioning | DH1200 | L3 | CDU | DELETED | DH1100 |
| DC1-CDU-L3-CX-4215 | **DELETED** CDU-DH1200-02 BMS/EPMS Programming | 1d | 2026-07-20 A | 2026-07-20 A | QTS-1020 | 100% | 2026-07-24 | 2026-07-24 | PRM | Commissioning | DH1200 | L3 | CDU | DELETED | DH1100 |
| DC1-CDU-L3-CX-4225 | **DELETED** CDU-DH1200-03 FTE | 1d | 2026-07-20 A | 2026-07-20 A | QTS-1020 | 100% | 2026-07-21 | 2026-07-21 | ROS | Commissioning | DH1200 | L3 | CDU | DELETED | DH1100 |
| DC1-CDU-L3-CX-4235 | **DELETED** CDU-DH1200-03 L3 Startup | 2d | 2026-07-20 A | 2026-07-20 A | QTS-1020 | 100% | 2026-07-22 | 2026-07-23 | VER | Commissioning | DH1200 | L3 | CDU | DELETED | DH1100 |
| DC1-CDU-L3-CX-4245 | **DELETED** CDU-DH1200-03 BMS/EPMS Programming | 1d | 2026-07-20 A | 2026-07-20 A | QTS-1020 | 100% | 2026-07-24 | 2026-07-24 | PRM | Commissioning | DH1200 | L3 | CDU | DELETED | DH1100 |
| DC1-CDU-L3-CX-4255 | **DELETED** CDU-DH1200-04 FTE | 1d | 2026-07-20 A | 2026-07-20 A | QTS-1020 | 100% | 2026-07-21 | 2026-07-21 | ROS | Commissioning | DH1200 | L3 | CDU | DELETED | DH1100 |
| DC1-CDU-L3-CX-4265 | **DELETED** CDU-DH1200-04 L3 Startup | 2d | 2026-07-20 A | 2026-07-20 A | QTS-1020 | 100% | 2026-07-22 | 2026-07-23 | VER | Commissioning | DH1200 | L3 | CDU | DELETED | DH1100 |
| DC1-CDU-L3-CX-4275 | **DELETED** CDU-DH1200-04 BMS/EPMS Programming | 1d | 2026-07-20 A | 2026-07-20 A | QTS-1020 | 100% | 2026-07-24 | 2026-07-24 | PRM | Commissioning | DH1200 | L3 | CDU | DELETED | DH1100 |
| DC1-CDU-L3-CX-4285 | **DELETED** CDU-DH1200-05 FTE | 1d | 2026-07-20 A | 2026-07-20 A | QTS-1020 | 100% | 2026-07-21 | 2026-07-21 | ROS | Commissioning | DH1200 | L3 | CDU | DELETED | DH1100 |
| DC1-CDU-L3-CX-4295 | **DELETED** CDU-DH1200-05 L3 Startup | 2d | 2026-07-20 A | 2026-07-20 A | QTS-1020 | 100% | 2026-07-22 | 2026-07-23 | VER | Commissioning | DH1200 | L3 | CDU | DELETED | DH1100 |
| DC1-CDU-L3-CX-4305 | **DELETED** CDU-DH1200-05 BMS/EPMS Programming | 1d | 2026-07-20 A | 2026-07-20 A | QTS-1020 | 100% | 2026-07-24 | 2026-07-24 | PRM | Commissioning | DH1200 | L3 | CDU | DELETED | DH1100 |
| DC1-CDU-L3-CX-4315 | **DELETED** CDU-DH1200-06 FTE | 1d | 2026-07-20 A | 2026-07-20 A | QTS-1020 | 100% | 2026-07-21 | 2026-07-21 | ROS | Commissioning | DH1200 | L3 | CDU | DELETED | DH1100 |
| DC1-CDU-L3-CX-4325 | **DELETED** CDU-DH1200-06 L3 Startup | 2d | 2026-07-20 A | 2026-07-20 A | QTS-1020 | 100% | 2026-07-22 | 2026-07-23 | VER | Commissioning | DH1200 | L3 | CDU | DELETED | DH1100 |
| DC1-CDU-L3-CX-4335 | **DELETED** CDU-DH1200-06 BMS/EPMS Programming | 1d | 2026-07-20 A | 2026-07-20 A | QTS-1020 | 100% | 2026-07-24 | 2026-07-24 | PRM | Commissioning | DH1200 | L3 | CDU | DELETED | DH1100 |
| DC1-CDU-L3-CX-4345 | **DELETED** CDU-DH1200-07 FTE | 1d | 2026-07-20 A | 2026-07-20 A | QTS-1020 | 100% | 2026-07-21 | 2026-07-21 | ROS | Commissioning | DH1200 | L3 | CDU | DELETED | DH1100 |
| DC1-CDU-L3-CX-4355 | **DELETED** CDU-DH1200-07 L3 Startup | 2d | 2026-07-20 A | 2026-07-20 A | QTS-1020 | 100% | 2026-07-22 | 2026-07-23 | VER | Commissioning | DH1200 | L3 | CDU | DELETED | DH1100 |
| DC1-CDU-L3-CX-4365 | **DELETED** CDU-DH1200-07 BMS/EPMS Programming | 1d | 2026-07-20 A | 2026-07-20 A | QTS-1020 | 100% | 2026-07-24 | 2026-07-24 | PRM | Commissioning | DH1200 | L3 | CDU | DELETED | DH1100 |
| DC1-CDU-L3-CX-4375 | **DELETED** CDU-DH1200-08 FTE | 1d | 2026-07-20 A | 2026-07-20 A | QTS-1020 | 100% | 2026-07-21 | 2026-07-21 | ROS | Commissioning | DH1200 | L3 | CDU | DELETED | DH1100 |
| DC1-CDU-L3-CX-4385 | **DELETED** CDU-DH1200-08 L3 Startup | 2d | 2026-07-20 A | 2026-07-20 A | QTS-1020 | 100% | 2026-07-22 | 2026-07-23 | VER | Commissioning | DH1200 | L3 | CDU | DELETED | DH1100 |
| DC1-CDU-L3-CX-4395 | **DELETED** CDU-DH1200-08 BMS/EPMS Programming | 1d | 2026-07-20 A | 2026-07-20 A | QTS-1020 | 100% | 2026-07-24 | 2026-07-24 | PRM | Commissioning | DH1200 | L3 | CDU | DELETED | DH1100 |
| DC1-CDU-L3-CX-4405 | **DELETED** CDU-DH1200-09 FTE | 1d | 2026-07-20 A | 2026-07-20 A | QTS-1020 | 100% | 2026-07-21 | 2026-07-21 | ROS | Commissioning | DH1200 | L3 | CDU | DELETED | DH1100 |
| DC1-CDU-L3-CX-4415 | **DELETED** CDU-DH1200-09 L3 Startup | 2d | 2026-07-20 A | 2026-07-20 A | QTS-1020 | 100% | 2026-07-22 | 2026-07-23 | VER | Commissioning | DH1200 | L3 | CDU | DELETED | DH1100 |
| DC1-CDU-L3-CX-4425 | **DELETED** CDU-DH1200-09 BMS/EPMS Programming | 1d | 2026-07-20 A | 2026-07-20 A | QTS-1020 | 100% | 2026-07-24 | 2026-07-24 | PRM | Commissioning | DH1200 | L3 | CDU | DELETED | DH1100 |
| DC1-CDU-L3-CX-4435 | **DELETED** CDU-DH1200-10 FTE | 1d | 2026-07-20 A | 2026-07-20 A | QTS-1020 | 100% | 2026-07-21 | 2026-07-21 | ROS | Commissioning | DH1200 | L3 | CDU | DELETED | DH1100 |
| DC1-CDU-L3-CX-4445 | **DELETED** CDU-DH1200-10 L3 Startup | 2d | 2026-07-20 A | 2026-07-20 A | QTS-1020 | 100% | 2026-07-22 | 2026-07-23 | VER | Commissioning | DH1200 | L3 | CDU | DELETED | DH1100 |
| DC1-CDU-L3-CX-4455 | **DELETED** CDU-DH1200-10 BMS/EPMS Programming | 1d | 2026-07-20 A | 2026-07-20 A | QTS-1020 | 100% | 2026-07-24 | 2026-07-24 | PRM | Commissioning | DH1200 | L3 | CDU | DELETED | DH1100 |
| DC1-CDU-L3-CX-4465 | **DELETED** CDU-DH1200-11 FTE | 1d | 2026-07-20 A | 2026-07-20 A | QTS-1020 | 100% | 2026-07-21 | 2026-07-21 | ROS | Commissioning | DH1200 | L3 | CDU | DELETED | DH1100 |
| DC1-CDU-L3-CX-4475 | **DELETED** CDU-DH1200-11 L3 Startup | 2d | 2026-07-20 A | 2026-07-20 A | QTS-1020 | 100% | 2026-07-22 | 2026-07-23 | VER | Commissioning | DH1200 | L3 | CDU | DELETED | DH1100 |
| DC1-CDU-L3-CX-4485 | **DELETED** CDU-DH1200-11 BMS/EPMS Programming | 1d | 2026-07-20 A | 2026-07-20 A | QTS-1020 | 100% | 2026-07-24 | 2026-07-24 | PRM | Commissioning | DH1200 | L3 | CDU | DELETED | DH1100 |
| DC1-CDU-L3-CX-4495 | **DELETED** CDU-DH1200-12 FTE | 1d | 2026-07-20 A | 2026-07-20 A | QTS-1020 | 100% | 2026-07-21 | 2026-07-21 | ROS | Commissioning | DH1200 | L3 | CDU | DELETED | DH1100 |
| DC1-CDU-L3-CX-4505 | **DELETED** CDU-DH1200-12 L3 Startup | 2d | 2026-07-20 A | 2026-07-20 A | QTS-1020 | 100% | 2026-07-22 | 2026-07-23 | VER | Commissioning | DH1200 | L3 | CDU | DELETED | DH1100 |
| DC1-CDU-L3-CX-4515 | **DELETED** CDU-DH1200-12 BMS/EPMS Programming | 1d | 2026-07-20 A | 2026-07-20 A | QTS-1020 | 100% | 2026-07-24 | 2026-07-24 | PRM | Commissioning | DH1200 | L3 | CDU | DELETED | DH1100 |
| DC1-CDU-L3-CX-4525 | **DELETED** CDU-DH1200-13 FTE | 1d | 2026-07-20 A | 2026-07-20 A | QTS-1020 | 100% | 2026-07-21 | 2026-07-21 | ROS | Commissioning | DH1200 | L3 | CDU | DELETED | DH1100 |
| DC1-CDU-L3-CX-4535 | **DELETED** CDU-DH1200-13 L3 Startup | 2d | 2026-07-20 A | 2026-07-20 A | QTS-1020 | 100% | 2026-07-22 | 2026-07-23 | VER | Commissioning | DH1200 | L3 | CDU | DELETED | DH1100 |
| DC1-CDU-L3-CX-4545 | **DELETED** CDU-DH1200-13 BMS/EPMS Programming | 1d | 2026-07-20 A | 2026-07-20 A | QTS-1020 | 100% | 2026-07-24 | 2026-07-24 | PRM | Commissioning | DH1200 | L3 | CDU | DELETED | DH1100 |
| DC1-CDU-L3-CX-4555 | **DELETED** CDU-DH1200-14 FTE | 1d | 2026-07-20 A | 2026-07-20 A | QTS-1020 | 100% | 2026-07-21 | 2026-07-21 | ROS | Commissioning | DH1200 | L3 | CDU | DELETED | DH1100 |
| DC1-CDU-L3-CX-4565 | **DELETED** CDU-DH1200-14 L3 Startup | 2d | 2026-07-20 A | 2026-07-20 A | QTS-1020 | 100% | 2026-07-22 | 2026-07-23 | VER | Commissioning | DH1200 | L3 | CDU | DELETED | DH1100 |
| DC1-CDU-L3-CX-4575 | **DELETED** CDU-DH1200-14 BMS/EPMS Programming | 1d | 2026-07-20 A | 2026-07-20 A | QTS-1020 | 100% | 2026-07-24 | 2026-07-24 | PRM | Commissioning | DH1200 | L3 | CDU | DELETED | DH1100 |
| DC1-CDU-L3-CX-4585 | **DELETED** CDU-DH1200-15 FTE | 1d | 2026-07-20 A | 2026-07-20 A | QTS-1020 | 100% | 2026-07-21 | 2026-07-21 | ROS | Commissioning | DH1200 | L3 | CDU | DELETED | DH1100 |

Notes:
- DC1-CDU-L3-CX-3005: Steps: EC Startup Report; MC Installation Checklist; Vendor Startup
- DC1-CDU-L3-CX-3035: Steps: EC Startup Report; MC Installation Checklist; Vendor Startup
- DC1-CDU-L3-CX-3065: Steps: EC Startup Report; MC Installation Checklist; Vendor Startup
- DC1-CDU-L3-CX-3095: Steps: EC Startup Report; MC Installation Checklist; Vendor Startup
- DC1-CDU-L3-CX-3125: Steps: EC Startup Report; MC Installation Checklist; Vendor Startup
- DC1-CDU-L3-CX-3155: Steps: EC Startup Report; MC Installation Checklist; Vendor Startup
- DC1-CDU-L3-CX-3185: Steps: EC Startup Report; MC Installation Checklist; Vendor Startup
- DC1-CDU-L3-CX-3215: Steps: EC Startup Report; MC Installation Checklist; Vendor Startup
- DC1-CDU-L3-CX-3245: Steps: EC Startup Report; MC Installation Checklist; Vendor Startup
- DC1-CDU-L3-CX-4175: Steps: EC Startup Report; MC Installation Checklist; Vendor Startup
- DC1-CDU-L3-CX-4205: Steps: EC Startup Report; MC Installation Checklist; Vendor Startup
- DC1-CDU-L3-CX-4235: Steps: EC Startup Report; MC Installation Checklist; Vendor Startup
- DC1-CDU-L3-CX-4265: Steps: EC Startup Report; MC Installation Checklist; Vendor Startup
- DC1-CDU-L3-CX-4295: Steps: EC Startup Report; MC Installation Checklist; Vendor Startup
- DC1-CDU-L3-CX-4325: Steps: EC Startup Report; MC Installation Checklist; Vendor Startup
- DC1-CDU-L3-CX-4355: Steps: EC Startup Report; MC Installation Checklist; Vendor Startup
- DC1-CDU-L3-CX-4385: Steps: EC Startup Report; MC Installation Checklist; Vendor Startup
- DC1-CDU-L3-CX-4415: Steps: EC Startup Report; MC Installation Checklist; Vendor Startup
- DC1-CDU-L3-CX-4445: Steps: EC Startup Report; MC Installation Checklist; Vendor Startup
- DC1-CDU-L3-CX-4475: Steps: EC Startup Report; MC Installation Checklist; Vendor Startup
- DC1-CDU-L3-CX-4505: Steps: EC Startup Report; MC Installation Checklist; Vendor Startup
- DC1-CDU-L3-CX-4535: Steps: EC Startup Report; MC Installation Checklist; Vendor Startup
- DC1-CDU-L3-CX-4565: Steps: EC Startup Report; MC Installation Checklist; Vendor Startup

| ID | Activity | Duration | Start | Finish | Predecessors | Complete | Planned start | Planned finish | Vendor Responsible Party | Layton Discipline | Location | CX Level | Equipment | DELETED | D |
| --- | --- | --- | --- | --- | --- | --- | --- | --- | --- | --- | --- | --- | --- | --- | --- |
| DC1-CDU-L3-CX-4595 | **DELETED** CDU-DH1200-15 L3 Startup | 2d | 2026-07-20 A | 2026-07-20 A | QTS-1020 | 100% | 2026-07-22 | 2026-07-23 | VER | Commissioning | DH1200 | L3 | CDU | DELETED | DH1100 |
| DC1-CDU-L3-CX-4605 | **DELETED** CDU-DH1200-15 BMS/EPMS Programming | 1d | 2026-07-20 A | 2026-07-20 A | QTS-1020 | 100% | 2026-07-24 | 2026-07-24 | PRM | Commissioning | DH1200 | L3 | CDU | DELETED | DH1100 |
| DC1-CDU-L3-CX-4615 | **DELETED** CDU-DH1200-16 FTE | 1d | 2026-07-20 A | 2026-07-20 A | QTS-1020 | 100% | 2026-07-21 | 2026-07-21 | ROS | Commissioning | DH1200 | L3 | CDU | DELETED | DH1100 |
| DC1-CDU-L3-CX-4625 | **DELETED** CDU-DH1200-16 L3 Startup | 2d | 2026-07-20 A | 2026-07-20 A | QTS-1020 | 100% | 2026-07-22 | 2026-07-23 | VER | Commissioning | DH1200 | L3 | CDU | DELETED | DH1100 |
| DC1-CDU-L3-CX-4635 | **DELETED** CDU-DH1200-16 BMS/EPMS Programming | 1d | 2026-07-20 A | 2026-07-20 A | QTS-1020 | 100% | 2026-07-24 | 2026-07-24 | PRM | Commissioning | DH1200 | L3 | CDU | DELETED | DH1100 |
| DC1-CDU-L3-CX-4645 | **DELETED** CDU-DH1200-17 FTE | 1d | 2026-07-20 A | 2026-07-20 A | QTS-1020 | 100% | 2026-07-21 | 2026-07-21 | ROS | Commissioning | DH1200 | L3 | CDU | DELETED | DH1100 |
| DC1-CDU-L3-CX-4655 | **DELETED** CDU-DH1200-17 L3 Startup | 2d | 2026-07-20 A | 2026-07-20 A | QTS-1020 | 100% | 2026-07-22 | 2026-07-23 | VER | Commissioning | DH1200 | L3 | CDU | DELETED | DH1100 |
| DC1-CDU-L3-CX-4665 | **DELETED** CDU-DH1200-17 BMS/EPMS Programming | 1d | 2026-07-20 A | 2026-07-20 A | QTS-1020 | 100% | 2026-07-24 | 2026-07-24 | PRM | Commissioning | DH1200 | L3 | CDU | DELETED | DH1100 |
| DC1-CDU-L3-CX-4675 | **DELETED** CDU-DH1200-18 FTE | 1d | 2026-07-20 A | 2026-07-20 A | QTS-1020 | 100% | 2026-07-21 | 2026-07-21 | ROS | Commissioning | DH1200 | L3 | CDU | DELETED | DH1100 |
| DC1-CDU-L3-CX-4685 | **DELETED** CDU-DH1200-18 L3 Startup | 2d | 2026-07-20 A | 2026-07-20 A | QTS-1020 | 100% | 2026-07-22 | 2026-07-23 | VER | Commissioning | DH1200 | L3 | CDU | DELETED | DH1100 |
| DC1-CDU-L3-CX-4695 | **DELETED** CDU-DH1200-18 BMS/EPMS Programming | 1d | 2026-07-20 A | 2026-07-20 A | QTS-1020 | 100% | 2026-07-24 | 2026-07-24 | PRM | Commissioning | DH1200 | L3 | CDU | DELETED | DH1100 |
| DC1-CHLR-L3-Cx-2210 | **DELETED** DC1-CHLR-1RT40-A22 FTE | 1d | 2026-07-20 A | 2026-07-20 A | QTS-1020 | 100% | 2026-07-16 | 2026-07-16 | ROS | Commissioning | DH2200 | L3 | CHILLER | DELETED | DH1100 |
| DC1-CHLR-L3-Cx-2220 | **DELETED** DC1-CHLR-1RT40-A22 L3 Startup | 2d | 2026-07-20 A | 2026-07-20 A | QTS-1020 | 100% | 2026-07-21 | 2026-07-22 | TAS | Commissioning | DH2200 | L3 | CHILLER | DELETED | DH1100 |
| DC1-CHLR-L3-Cx-2230 | **DELETED** DC1-CHLR-1RT40-A22 BMS/EPMS Programming | 1d | 2026-07-20 A | 2026-07-20 A | QTS-1020 | 100% | 2026-07-23 | 2026-07-23 | PRM | Commissioning | DH2200 | L3 | CHILLER | DELETED | DH1100 |
| DC1-CHLR-L3-Cx-2240 | **DELETED** DC1-CHLR-1RT40-B22 FTE | 1d | 2026-07-20 A | 2026-07-20 A | QTS-1020 | 100% | 2026-07-16 | 2026-07-16 | ROS | Commissioning | DH2200 | L3 | CHILLER | DELETED | DH1100 |
| DC1-CHLR-L3-Cx-2250 | **DELETED** DC1-CHLR-1RT40-B22 L3 Startup | 2d | 2026-07-20 A | 2026-07-20 A | QTS-1020 | 100% | 2026-07-21 | 2026-07-22 | TAS | Commissioning | DH2200 | L3 | CHILLER | DELETED | DH1100 |
| DC1-CHLR-L3-Cx-2260 | **DELETED** DC1-CHLR-1RT40-B22 BMS/EPMS Programming | 1d | 2026-07-20 A | 2026-07-20 A | QTS-1020 | 100% | 2026-07-23 | 2026-07-23 | PRM | Commissioning | DH2200 | L3 | CHILLER | DELETED | DH1100 |
| DC1-CHLR-L3-Cx-2270 | **DELETED** DC1-CHLR-1RT40-C22 FTE | 1d | 2026-07-20 A | 2026-07-20 A | QTS-1020 | 100% | 2026-07-16 | 2026-07-16 | ROS | Commissioning | DH2200 | L3 | CHILLER | DELETED | DH1100 |
| DC1-CHLR-L3-Cx-2280 | **DELETED** DC1-CHLR-1RT40-C22 L3 Startup | 2d | 2026-07-20 A | 2026-07-20 A | QTS-1020 | 100% | 2026-07-21 | 2026-07-22 | TAS | Commissioning | DH2200 | L3 | CHILLER | DELETED | DH1100 |
| DC1-CHLR-L3-Cx-2290 | **DELETED** DC1-CHLR-1RT40-C22 BMS/EPMS Programming | 1d | 2026-07-20 A | 2026-07-20 A | QTS-1020 | 100% | 2026-07-23 | 2026-07-23 | PRM | Commissioning | DH2200 | L3 | CHILLER | DELETED | DH1100 |
| DC1-CHLR-L3-Cx-2300 | **DELETED** DC1-CHLR-1RT40-D22 FTE | 1d | 2026-07-20 A | 2026-07-20 A | QTS-1020 | 100% | 2026-07-16 | 2026-07-16 | ROS | Commissioning | DH2200 | L3 | CHILLER | DELETED | DH1100 |
| DC1-CHLR-L3-Cx-2310 | **DELETED** DC1-CHLR-1RT40-D22 L3 Startup | 2d | 2026-07-20 A | 2026-07-20 A | QTS-1020 | 100% | 2026-07-21 | 2026-07-22 | TAS | Commissioning | DH2200 | L3 | CHILLER | DELETED | DH1100 |
| DC1-CHLR-L3-Cx-2320 | **DELETED** DC1-CHLR-1RT40-D22 BMS/EPMS Programming | 1d | 2026-07-20 A | 2026-07-20 A | QTS-1020 | 100% | 2026-07-23 | 2026-07-23 | PRM | Commissioning | DH2200 | L3 | CHILLER | DELETED | DH1100 |
| DC1-CHLR-L3-Cx-2330 | **DELETED** DC1-CHLR-1RT40-E22 FTE | 1d | 2026-07-20 A | 2026-07-20 A | QTS-1020 | 100% | 2026-07-16 | 2026-07-16 | ROS | Commissioning | DH2200 | L3 | CHILLER | DELETED | DH1100 |
| DC1-CHLR-L3-Cx-2340 | **DELETED** DC1-CHLR-1RT40-E22 L3 Startup | 2d | 2026-07-20 A | 2026-07-20 A | QTS-1020 | 100% | 2026-07-21 | 2026-07-22 | TAS | Commissioning | DH2200 | L3 | CHILLER | DELETED | DH1100 |
| DC1-CHLR-L3-Cx-2350 | **DELETED** DC1-CHLR-1RT40-E22 BMS/EPMS Programming | 1d | 2026-07-20 A | 2026-07-20 A | QTS-1020 | 100% | 2026-07-23 | 2026-07-23 | PRM | Commissioning | DH2200 | L3 | CHILLER | DELETED | DH1100 |
| DC1-CHLR-L3-Cx-2360 | **DELETED** DC1-CHLR-1RT40-F22 FTE | 1d | 2026-07-20 A | 2026-07-20 A | QTS-1020 | 100% | 2026-07-16 | 2026-07-16 | ROS | Commissioning | DH2200 | L3 | CHILLER | DELETED | DH1100 |
| DC1-CHLR-L3-Cx-2370 | **DELETED** DC1-CHLR-1RT40-F22 L3 Startup | 2d | 2026-07-20 A | 2026-07-20 A | QTS-1020 | 100% | 2026-07-21 | 2026-07-22 | TAS | Commissioning | DH2200 | L3 | CHILLER | DELETED | DH1100 |
| DC1-CHLR-L3-Cx-2380 | **DELETED** DC1-CHLR-1RT40-F22 BMS/EPMS Programming | 1d | 2026-07-20 A | 2026-07-20 A | QTS-1020 | 100% | 2026-07-23 | 2026-07-23 | PRM | Commissioning | DH2200 | L3 | CHILLER | DELETED | DH1100 |
| DC1-CHLR-L3-Cx-2390 | **DELETED** DC1-CHLR-1RT40-R22 FTE | 1d | 2026-07-20 A | 2026-07-20 A | QTS-1020 | 100% | 2026-07-16 | 2026-07-16 | ROS | Commissioning | DH2200 | L3 | CHILLER | DELETED | DH1100 |
| DC1-CHLR-L3-Cx-2400 | **DELETED** DC1-CHLR-1RT40-R22 L3 Startup | 2d | 2026-07-20 A | 2026-07-20 A | QTS-1020 | 100% | 2026-07-21 | 2026-07-22 | TAS | Commissioning | DH2200 | L3 | CHILLER | DELETED | DH1100 |
| DC1-CHLR-L3-Cx-2410 | **DELETED** DC1-CHLR-1RT40-R22 BMS/EPMS Programming | 1d | 2026-07-20 A | 2026-07-20 A | QTS-1020 | 100% | 2026-07-23 | 2026-07-23 | PRM | Commissioning | DH2200 | L3 | CHILLER | DELETED | DH1100 |
| DC1-CHLR-L3-Cx-2420 | **DELETED** DC1-CHLR-1RT40-A22 Heat Up | 2d | 2026-07-20 A | 2026-07-20 A | QTS-1020 | 100% | 2026-07-17 | 2026-07-20 | LAY | Commissioning | DH2200 | L3 | CHILLER | DELETED | DH1100 |
| DC1-CHLR-L3-Cx-2430 | **DELETED** DC1-CHLR-1RT40-B22 Heat Up | 2d | 2026-07-20 A | 2026-07-20 A | QTS-1020 | 100% | 2026-07-17 | 2026-07-20 | LAY | Commissioning | DH2200 | L3 | CHILLER | DELETED | DH1100 |
| DC1-CHLR-L3-Cx-2440 | **DELETED** DC1-CHLR-1RT40-C22 Heat Up | 2d | 2026-07-20 A | 2026-07-20 A | QTS-1020 | 100% | 2026-07-17 | 2026-07-20 | LAY | Commissioning | DH2200 | L3 | CHILLER | DELETED | DH1100 |
| DC1-CHLR-L3-Cx-2450 | **DELETED** DC1-CHLR-1RT40-D22 Heat Up | 2d | 2026-07-20 A | 2026-07-20 A | QTS-1020 | 100% | 2026-07-17 | 2026-07-20 | LAY | Commissioning | DH2200 | L3 | CHILLER | DELETED | DH1100 |
| DC1-CHLR-L3-Cx-2460 | **DELETED** DC1-CHLR-1RT40-E22 Heat Up | 2d | 2026-07-20 A | 2026-07-20 A | QTS-1020 | 100% | 2026-07-17 | 2026-07-20 | LAY | Commissioning | DH2200 | L3 | CHILLER | DELETED | DH1100 |
| DC1-CHLR-L3-Cx-2470 | **DELETED** DC1-CHLR-1RT40-F22 Heat Up | 2d | 2026-07-20 A | 2026-07-20 A | QTS-1020 | 100% | 2026-07-17 | 2026-07-20 | LAY | Commissioning | DH2200 | L3 | CHILLER | DELETED | DH1100 |
| DC1-CHLR-L3-Cx-2480 | **DELETED** DC1-CHLR-1RT40-R22 Heat Up | 2d | 2026-07-20 A | 2026-07-20 A | QTS-1020 | 100% | 2026-07-17 | 2026-07-20 | LAY | Commissioning | DH2200 | L3 | CHILLER | DELETED | DH1100 |
| DC1-COD-L3-CX-3625 | **DELETED** DC1-COD-A12-01 FTE | 1d | 2026-07-20 A | 2026-07-20 A | QTS-1020 | 100% |  |  | ROS | Commissioning | DH1200 | L3 | COD | DELETED | DH1100 |
| DC1-COD-L3-CX-3635 | **DELETED** DC1-COD-A12-01 L3 Startup | 2d | 2026-07-20 A | 2026-07-20 A | QTS-1020 | 100% | 2026-07-21 | 2026-07-22 | SIE | Commissioning | DH1200 | L3 | COD | DELETED | DH1100 |
| DC1-COD-L3-CX-3645 | **DELETED** DC1-COD-A12-01 BMS/EPMS Programming | 1d | 2026-07-20 A | 2026-07-20 A | QTS-1020 | 100% | 2026-07-23 | 2026-07-23 | PRM | Commissioning | DH1200 | L3 | COD | DELETED | DH1100 |
| DC1-COD-L3-CX-3655 | **DELETED** DC1-COD-A12-02 FTE | 1d | 2026-07-20 A | 2026-07-20 A | QTS-1020 | 100% |  |  | ROS | Commissioning | DH1200 | L3 | COD | DELETED | DH1100 |
| DC1-COD-L3-CX-3665 | **DELETED** DC1-COD-A12-02 L3 Startup | 2d | 2026-07-20 A | 2026-07-20 A | QTS-1020 | 100% | 2026-07-21 | 2026-07-22 | SIE | Commissioning | DH1200 | L3 | COD | DELETED | DH1100 |
| DC1-COD-L3-CX-3675 | **DELETED** DC1-COD-A12-02 BMS/EPMS Programming | 1d | 2026-07-20 A | 2026-07-20 A | QTS-1020 | 100% | 2026-07-23 | 2026-07-23 | PRM | Commissioning | DH1200 | L3 | COD | DELETED | DH1100 |
| DC1-COD-L3-CX-3685 | **DELETED** DC1-COD-A12-03 FTE | 1d | 2026-07-20 A | 2026-07-20 A | QTS-1020 | 100% |  |  | ROS | Commissioning | DH1200 | L3 | COD | DELETED | DH1100 |
| DC1-COD-L3-CX-3695 | **DELETED** DC1-COD-A12-03 L3 Startup | 2d | 2026-07-20 A | 2026-07-20 A | QTS-1020 | 100% | 2026-07-21 | 2026-07-22 | SIE | Commissioning | DH1200 | L3 | COD | DELETED | DH1100 |
| DC1-COD-L3-CX-3705 | **DELETED** DC1-COD-A12-03 BMS/EPMS Programming | 1d | 2026-07-20 A | 2026-07-20 A | QTS-1020 | 100% | 2026-07-23 | 2026-07-23 | PRM | Commissioning | DH1200 | L3 | COD | DELETED | DH1100 |
| DC1-COD-L3-CX-3715 | **DELETED** DC1-COD-A12-04 FTE | 1d | 2026-07-20 A | 2026-07-20 A | QTS-1020 | 100% |  |  | ROS | Commissioning | DH1200 | L3 | COD | DELETED | DH1100 |
| DC1-COD-L3-CX-3725 | **DELETED** DC1-COD-A12-04 L3 Startup | 2d | 2026-07-20 A | 2026-07-20 A | QTS-1020 | 100% | 2026-07-21 | 2026-07-22 | SIE | Commissioning | DH1200 | L3 | COD | DELETED | DH1100 |
| DC1-COD-L3-CX-3735 | **DELETED** DC1-COD-A12-04 BMS/EPMS Programming | 1d | 2026-07-20 A | 2026-07-20 A | QTS-1020 | 100% | 2026-07-23 | 2026-07-23 | PRM | Commissioning | DH1200 | L3 | COD | DELETED | DH1100 |
| DC1-COD-L3-CX-3745 | **DELETED** DC1-COD-A12-05 FTE | 1d | 2026-07-20 A | 2026-07-20 A | QTS-1020 | 100% |  |  | ROS | Commissioning | DH1200 | L3 | COD | DELETED | DH1100 |
| DC1-COD-L3-CX-3755 | **DELETED** DC1-COD-A12-05 L3 Startup | 2d | 2026-07-20 A | 2026-07-20 A | QTS-1020 | 100% | 2026-07-21 | 2026-07-22 | SIE | Commissioning | DH1200 | L3 | COD | DELETED | DH1100 |
| DC1-COD-L3-CX-3765 | **DELETED** DC1-COD-A12-05 BMS/EPMS Programming | 1d | 2026-07-20 A | 2026-07-20 A | QTS-1020 | 100% | 2026-07-23 | 2026-07-23 | PRM | Commissioning | DH1200 | L3 | COD | DELETED | DH1100 |
| DC1-COD-L3-CX-3775 | **DELETED** DC1-COD-A12-06 FTE | 1d | 2026-07-20 A | 2026-07-20 A | QTS-1020 | 100% |  |  | ROS | Commissioning | DH1200 | L3 | COD | DELETED | DH1100 |
| DC1-COD-L3-CX-3785 | **DELETED** DC1-COD-A12-06 L3 Startup | 2d | 2026-07-20 A | 2026-07-20 A | QTS-1020 | 100% | 2026-07-21 | 2026-07-22 | SIE | Commissioning | DH1200 | L3 | COD | DELETED | DH1100 |
| DC1-COD-L3-CX-3795 | **DELETED** DC1-COD-A12-06 BMS/EPMS Programming | 1d | 2026-07-20 A | 2026-07-20 A | QTS-1020 | 100% | 2026-07-23 | 2026-07-23 | PRM | Commissioning | DH1200 | L3 | COD | DELETED | DH1100 |
| DC1-COD-L3-CX-3805 | **DELETED** DC1-COD-B12-01 FTE | 1d | 2026-07-20 A | 2026-07-20 A | QTS-1020 | 100% |  |  | ROS | Commissioning | DH1200 | L3 | COD | DELETED | DH1100 |
| DC1-COD-L3-CX-3815 | **DELETED** DC1-COD-B12-01 L3 Startup | 2d | 2026-07-20 A | 2026-07-20 A | QTS-1020 | 100% | 2026-07-21 | 2026-07-22 | SIE | Commissioning | DH1200 | L3 | COD | DELETED | DH1100 |
| DC1-COD-L3-CX-3825 | **DELETED** DC1-COD-B12-01 BMS/EPMS Programming | 1d | 2026-07-20 A | 2026-07-20 A | QTS-1020 | 100% | 2026-07-23 | 2026-07-23 | PRM | Commissioning | DH1200 | L3 | COD | DELETED | DH1100 |
| DC1-COD-L3-CX-3835 | **DELETED** DC1-COD-B12-02 FTE | 1d | 2026-07-20 A | 2026-07-20 A | QTS-1020 | 100% |  |  | ROS | Commissioning | DH1200 | L3 | COD | DELETED | DH1100 |
| DC1-COD-L3-CX-3845 | **DELETED** DC1-COD-B12-02 L3 Startup | 2d | 2026-07-20 A | 2026-07-20 A | QTS-1020 | 100% | 2026-07-21 | 2026-07-22 | SIE | Commissioning | DH1200 | L3 | COD | DELETED | DH1100 |
| DC1-COD-L3-CX-3855 | **DELETED** DC1-COD-B12-02 BMS/EPMS Programming | 1d | 2026-07-20 A | 2026-07-20 A | QTS-1020 | 100% | 2026-07-23 | 2026-07-23 | PRM | Commissioning | DH1200 | L3 | COD | DELETED | DH1100 |
| DC1-COD-L3-CX-3865 | **DELETED** DC1-COD-B12-03 FTE | 1d | 2026-07-20 A | 2026-07-20 A | QTS-1020 | 100% |  |  | ROS | Commissioning | DH1200 | L3 | COD | DELETED | DH1100 |
| DC1-COD-L3-CX-3875 | **DELETED** DC1-COD-B12-03 L3 Startup | 2d | 2026-07-20 A | 2026-07-20 A | QTS-1020 | 100% | 2026-07-21 | 2026-07-22 | SIE | Commissioning | DH1200 | L3 | COD | DELETED | DH1100 |
| DC1-COD-L3-CX-3885 | **DELETED** DC1-COD-B12-03 BMS/EPMS Programming | 1d | 2026-07-20 A | 2026-07-20 A | QTS-1020 | 100% | 2026-07-23 | 2026-07-23 | PRM | Commissioning | DH1200 | L3 | COD | DELETED | DH1100 |
| DC1-COD-L3-CX-3895 | **DELETED** DC1-COD-B12-04 FTE | 1d | 2026-07-20 A | 2026-07-20 A | QTS-1020 | 100% |  |  | ROS | Commissioning | DH1200 | L3 | COD | DELETED | DH1100 |
| DC1-COD-L3-CX-3905 | **DELETED** DC1-COD-B12-04 L3 Startup | 2d | 2026-07-20 A | 2026-07-20 A | QTS-1020 | 100% | 2026-07-21 | 2026-07-22 | SIE | Commissioning | DH1200 | L3 | COD | DELETED | DH1100 |
| DC1-COD-L3-CX-3915 | **DELETED** DC1-COD-B12-04 BMS/EPMS Programming | 1d | 2026-07-20 A | 2026-07-20 A | QTS-1020 | 100% | 2026-07-23 | 2026-07-23 | PRM | Commissioning | DH1200 | L3 | COD | DELETED | DH1100 |
| DC1-COD-L3-CX-3925 | **DELETED** DC1-COD-B12-05 FTE | 1d | 2026-07-20 A | 2026-07-20 A | QTS-1020 | 100% |  |  | ROS | Commissioning | DH1200 | L3 | COD | DELETED | DH1100 |

Notes:
- DC1-CDU-L3-CX-4595: Steps: EC Startup Report; MC Installation Checklist; Vendor Startup
- DC1-CDU-L3-CX-4625: Steps: EC Startup Report; MC Installation Checklist; Vendor Startup
- DC1-CDU-L3-CX-4655: Steps: EC Startup Report; MC Installation Checklist; Vendor Startup
- DC1-CDU-L3-CX-4685: Steps: EC Startup Report; MC Installation Checklist; Vendor Startup
- DC1-CHLR-L3-Cx-2220: Steps: EC Startup Report; MC Startup Report; Vendor Startup
- DC1-CHLR-L3-Cx-2250: Steps: EC Startup Report; MC Startup Report; Vendor Startup
- DC1-CHLR-L3-Cx-2280: Steps: EC Startup Report; MC Startup Report; Vendor Startup
- DC1-CHLR-L3-Cx-2310: Steps: EC Startup Report; MC Startup Report; Vendor Startup
- DC1-CHLR-L3-Cx-2340: Steps: EC Startup Report; MC Startup Report; Vendor Startup
- DC1-CHLR-L3-Cx-2370: Steps: EC Startup Report; MC Startup Report; Vendor Startup
- DC1-CHLR-L3-Cx-2400: Steps: EC Startup Report; MC Startup Report; Vendor Startup
- DC1-COD-L3-CX-3635: Steps: EC Startup Report; Vendor Startup
- DC1-COD-L3-CX-3665: Steps: EC Startup Report; Vendor Startup
- DC1-COD-L3-CX-3695: Steps: EC Startup Report; Vendor Startup
- DC1-COD-L3-CX-3725: Steps: EC Startup Report; Vendor Startup
- DC1-COD-L3-CX-3755: Steps: EC Startup Report; Vendor Startup
- DC1-COD-L3-CX-3785: Steps: EC Startup Report; Vendor Startup
- DC1-COD-L3-CX-3815: Steps: EC Startup Report; Vendor Startup
- DC1-COD-L3-CX-3845: Steps: EC Startup Report; Vendor Startup
- DC1-COD-L3-CX-3875: Steps: EC Startup Report; Vendor Startup
- DC1-COD-L3-CX-3905: Steps: EC Startup Report; Vendor Startup

| ID | Activity | Duration | Start | Finish | Predecessors | Complete | Planned start | Planned finish | Vendor Responsible Party | Layton Discipline | Location | CX Level | Equipment | DELETED | D |
| --- | --- | --- | --- | --- | --- | --- | --- | --- | --- | --- | --- | --- | --- | --- | --- |
| DC1-COD-L3-CX-3935 | **DELETED** DC1-COD-B12-05 L3 Startup | 2d | 2026-07-20 A | 2026-07-20 A | QTS-1020 | 100% | 2026-07-21 | 2026-07-22 | SIE | Commissioning | DH1200 | L3 | COD | DELETED | DH1100 |
| DC1-COD-L3-CX-3945 | **DELETED** DC1-COD-B12-05 BMS/EPMS Programming | 1d | 2026-07-20 A | 2026-07-20 A | QTS-1020 | 100% | 2026-07-23 | 2026-07-23 | PRM | Commissioning | DH1200 | L3 | COD | DELETED | DH1100 |
| DC1-COD-L3-CX-3955 | **DELETED** DC1-COD-B12-06 FTE | 1d | 2026-07-20 A | 2026-07-20 A | QTS-1020 | 100% |  |  | ROS | Commissioning | DH1200 | L3 | COD | DELETED | DH1100 |
| DC1-COD-L3-CX-3965 | **DELETED** DC1-COD-B12-06 L3 Startup | 2d | 2026-07-20 A | 2026-07-20 A | QTS-1020 | 100% | 2026-07-21 | 2026-07-22 | SIE | Commissioning | DH1200 | L3 | COD | DELETED | DH1100 |
| DC1-COD-L3-CX-3975 | **DELETED** DC1-COD-B12-06 BMS/EPMS Programming | 1d | 2026-07-20 A | 2026-07-20 A | QTS-1020 | 100% | 2026-07-23 | 2026-07-23 | PRM | Commissioning | DH1200 | L3 | COD | DELETED | DH1100 |
| DC1-COD-L3-CX-3985 | **DELETED** DC1-COD-C12-01 FTE | 1d | 2026-07-20 A | 2026-07-20 A | QTS-1020 | 100% |  |  | ROS | Commissioning | DH1200 | L3 | COD | DELETED | DH1100 |
| DC1-COD-L3-CX-3995 | **DELETED** DC1-COD-C12-01 L3 Startup | 2d | 2026-07-20 A | 2026-07-20 A | QTS-1020 | 100% | 2026-07-21 | 2026-07-22 | SIE | Commissioning | DH1200 | L3 | COD | DELETED | DH1100 |
| DC1-COD-L3-CX-4005 | **DELETED** DC1-COD-C12-01 BMS/EPMS Programming | 1d | 2026-07-20 A | 2026-07-20 A | QTS-1020 | 100% | 2026-07-23 | 2026-07-23 | PRM | Commissioning | DH1200 | L3 | COD | DELETED | DH1100 |
| DC1-COD-L3-CX-4015 | **DELETED** DC1-COD-C12-02 FTE | 1d | 2026-07-20 A | 2026-07-20 A | QTS-1020 | 100% |  |  | ROS | Commissioning | DH1200 | L3 | COD | DELETED | DH1100 |
| DC1-COD-L3-CX-4025 | **DELETED** DC1-COD-C12-02 L3 Startup | 2d | 2026-07-20 A | 2026-07-20 A | QTS-1020 | 100% | 2026-07-21 | 2026-07-22 | SIE | Commissioning | DH1200 | L3 | COD | DELETED | DH1100 |
| DC1-COD-L3-CX-4035 | **DELETED** DC1-COD-C12-02 BMS/EPMS Programming | 1d | 2026-07-20 A | 2026-07-20 A | QTS-1020 | 100% | 2026-07-23 | 2026-07-23 | PRM | Commissioning | DH1200 | L3 | COD | DELETED | DH1100 |
| DC1-COD-L3-CX-4045 | **DELETED** DC1-COD-C12-03 FTE | 1d | 2026-07-20 A | 2026-07-20 A | QTS-1020 | 100% |  |  | ROS | Commissioning | DH1200 | L3 | COD | DELETED | DH1100 |
| DC1-COD-L3-CX-4055 | **DELETED** DC1-COD-C12-03 L3 Startup | 2d | 2026-07-20 A | 2026-07-20 A | QTS-1020 | 100% | 2026-07-21 | 2026-07-22 | SIE | Commissioning | DH1200 | L3 | COD | DELETED | DH1100 |
| DC1-COD-L3-CX-4065 | **DELETED** DC1-COD-C12-03 BMS/EPMS Programming | 1d | 2026-07-20 A | 2026-07-20 A | QTS-1020 | 100% | 2026-07-23 | 2026-07-23 | PRM | Commissioning | DH1200 | L3 | COD | DELETED | DH1100 |
| DC1-COD-L3-CX-4075 | **DELETED** DC1-COD-C12-04 FTE | 1d | 2026-07-20 A | 2026-07-20 A | QTS-1020 | 100% |  |  | ROS | Commissioning | DH1200 | L3 | COD | DELETED | DH1100 |
| DC1-COD-L3-CX-4085 | **DELETED** DC1-COD-C12-04 L3 Startup | 2d | 2026-07-20 A | 2026-07-20 A | QTS-1020 | 100% | 2026-07-21 | 2026-07-22 | SIE | Commissioning | DH1200 | L3 | COD | DELETED | DH1100 |
| DC1-COD-L3-CX-4095 | **DELETED** DC1-COD-C12-04 BMS/EPMS Programming | 1d | 2026-07-20 A | 2026-07-20 A | QTS-1020 | 100% | 2026-07-23 | 2026-07-23 | PRM | Commissioning | DH1200 | L3 | COD | DELETED | DH1100 |
| DC1-COD-L3-CX-4105 | **DELETED** DC1-COD-C12-05 FTE | 1d | 2026-07-20 A | 2026-07-20 A | QTS-1020 | 100% |  |  | ROS | Commissioning | DH1200 | L3 | COD | DELETED | DH1100 |
| DC1-COD-L3-CX-4115 | **DELETED** DC1-COD-C12-05 L3 Startup | 2d | 2026-07-20 A | 2026-07-20 A | QTS-1020 | 100% | 2026-07-21 | 2026-07-22 | SIE | Commissioning | DH1200 | L3 | COD | DELETED | DH1100 |
| DC1-COD-L3-CX-4125 | **DELETED** DC1-COD-C12-05 BMS/EPMS Programming | 1d | 2026-07-20 A | 2026-07-20 A | QTS-1020 | 100% | 2026-07-23 | 2026-07-23 | PRM | Commissioning | DH1200 | L3 | COD | DELETED | DH1100 |
| DC1-COD-L3-CX-4135 | **DELETED** DC1-COD-C12-06 FTE | 1d | 2026-07-20 A | 2026-07-20 A | QTS-1020 | 100% |  |  | ROS | Commissioning | DH1200 | L3 | COD | DELETED | DH1100 |
| DC1-COD-L3-CX-4145 | **DELETED** DC1-COD-C12-06 L3 Startup | 2d | 2026-07-20 A | 2026-07-20 A | QTS-1020 | 100% | 2026-07-21 | 2026-07-22 | SIE | Commissioning | DH1200 | L3 | COD | DELETED | DH1100 |
| DC1-COD-L3-CX-4155 | **DELETED** DC1-COD-C12-06 BMS/EPMS Programming | 1d | 2026-07-20 A | 2026-07-20 A | QTS-1020 | 100% | 2026-07-23 | 2026-07-23 | PRM | Commissioning | DH1200 | L3 | COD | DELETED | DH1100 |
| DC1-COD-L3-CX-4165 | **DELETED** DC1-COD-D12-01 FTE | 1d | 2026-07-20 A | 2026-07-20 A | QTS-1020 | 100% |  |  | ROS | Commissioning | DH1200 | L3 | COD | DELETED | DH1100 |
| DC1-COD-L3-CX-4175 | **DELETED** DC1-COD-D12-01 L3 Startup | 2d | 2026-07-20 A | 2026-07-20 A | QTS-1020 | 100% | 2026-07-21 | 2026-07-22 | SIE | Commissioning | DH1200 | L3 | COD | DELETED | DH1100 |
| DC1-COD-L3-CX-4185 | **DELETED** DC1-COD-D12-01 BMS/EPMS Programming | 1d | 2026-07-20 A | 2026-07-20 A | QTS-1020 | 100% | 2026-07-23 | 2026-07-23 | PRM | Commissioning | DH1200 | L3 | COD | DELETED | DH1100 |
| DC1-COD-L3-CX-4195 | **DELETED** DC1-COD-D12-02 FTE | 1d | 2026-07-20 A | 2026-07-20 A | QTS-1020 | 100% |  |  | ROS | Commissioning | DH1200 | L3 | COD | DELETED | DH1100 |
| DC1-COD-L3-CX-4205 | **DELETED** DC1-COD-D12-02 L3 Startup | 2d | 2026-07-20 A | 2026-07-20 A | QTS-1020 | 100% | 2026-07-21 | 2026-07-22 | SIE | Commissioning | DH1200 | L3 | COD | DELETED | DH1100 |
| DC1-COD-L3-CX-4215 | **DELETED** DC1-COD-D12-02 BMS/EPMS Programming | 1d | 2026-07-20 A | 2026-07-20 A | QTS-1020 | 100% | 2026-07-23 | 2026-07-23 | PRM | Commissioning | DH1200 | L3 | COD | DELETED | DH1100 |
| DC1-COD-L3-CX-4225 | **DELETED** DC1-COD-D12-03 FTE | 1d | 2026-07-20 A | 2026-07-20 A | QTS-1020 | 100% |  |  | ROS | Commissioning | DH1200 | L3 | COD | DELETED | DH1100 |
| DC1-COD-L3-CX-4235 | **DELETED** DC1-COD-D12-03 L3 Startup | 2d | 2026-07-20 A | 2026-07-20 A | QTS-1020 | 100% | 2026-07-21 | 2026-07-22 | SIE | Commissioning | DH1200 | L3 | COD | DELETED | DH1100 |
| DC1-COD-L3-CX-4245 | **DELETED** DC1-COD-D12-03 BMS/EPMS Programming | 1d | 2026-07-20 A | 2026-07-20 A | QTS-1020 | 100% | 2026-07-23 | 2026-07-23 | PRM | Commissioning | DH1200 | L3 | COD | DELETED | DH1100 |
| DC1-COD-L3-CX-4255 | **DELETED** DC1-COD-D12-04 FTE | 1d | 2026-07-20 A | 2026-07-20 A | QTS-1020 | 100% |  |  | ROS | Commissioning | DH1200 | L3 | COD | DELETED | DH1100 |
| DC1-COD-L3-CX-4265 | **DELETED** DC1-COD-D12-04 L3 Startup | 2d | 2026-07-20 A | 2026-07-20 A | QTS-1020 | 100% | 2026-07-21 | 2026-07-22 | SIE | Commissioning | DH1200 | L3 | COD | DELETED | DH1100 |
| DC1-COD-L3-CX-4275 | **DELETED** DC1-COD-D12-04 BMS/EPMS Programming | 1d | 2026-07-20 A | 2026-07-20 A | QTS-1020 | 100% | 2026-07-23 | 2026-07-23 | PRM | Commissioning | DH1200 | L3 | COD | DELETED | DH1100 |
| DC1-COD-L3-CX-4285 | **DELETED** DC1-COD-D12-05 FTE | 1d | 2026-07-20 A | 2026-07-20 A | QTS-1020 | 100% |  |  | ROS | Commissioning | DH1200 | L3 | COD | DELETED | DH1100 |
| DC1-COD-L3-CX-4295 | **DELETED** DC1-COD-D12-05 L3 Startup | 2d | 2026-07-20 A | 2026-07-20 A | QTS-1020 | 100% | 2026-07-21 | 2026-07-22 | SIE | Commissioning | DH1200 | L3 | COD | DELETED | DH1100 |
| DC1-COD-L3-CX-4305 | **DELETED** DC1-COD-D12-05 BMS/EPMS Programming | 1d | 2026-07-20 A | 2026-07-20 A | QTS-1020 | 100% | 2026-07-23 | 2026-07-23 | PRM | Commissioning | DH1200 | L3 | COD | DELETED | DH1100 |
| DC1-COD-L3-CX-4315 | **DELETED** DC1-COD-D12-06 FTE | 1d | 2026-07-20 A | 2026-07-20 A | QTS-1020 | 100% |  |  | ROS | Commissioning | DH1200 | L3 | COD | DELETED | DH1100 |
| DC1-COD-L3-CX-4325 | **DELETED** DC1-COD-D12-06 L3 Startup | 2d | 2026-07-20 A | 2026-07-20 A | QTS-1020 | 100% | 2026-07-21 | 2026-07-22 | SIE | Commissioning | DH1200 | L3 | COD | DELETED | DH1100 |
| DC1-COD-L3-CX-4335 | **DELETED** DC1-COD-D12-06 BMS/EPMS Programming | 1d | 2026-07-20 A | 2026-07-20 A | QTS-1020 | 100% | 2026-07-23 | 2026-07-23 | PRM | Commissioning | DH1200 | L3 | COD | DELETED | DH1100 |
| DC1-COD-L3-CX-4345 | **DELETED** DC1-COD-E12-01 FTE | 1d | 2026-07-20 A | 2026-07-20 A | QTS-1020 | 100% |  |  | ROS | Commissioning | DH1200 | L3 | COD | DELETED | DH1100 |
| DC1-COD-L3-CX-4355 | **DELETED** DC1-COD-E12-01 L3 Startup | 2d | 2026-07-20 A | 2026-07-20 A | QTS-1020 | 100% | 2026-07-21 | 2026-07-22 | SIE | Commissioning | DH1200 | L3 | COD | DELETED | DH1100 |
| DC1-COD-L3-CX-4365 | **DELETED** DC1-COD-E12-01 BMS/EPMS Programming | 1d | 2026-07-20 A | 2026-07-20 A | QTS-1020 | 100% | 2026-07-23 | 2026-07-23 | PRM | Commissioning | DH1200 | L3 | COD | DELETED | DH1100 |
| DC1-COD-L3-CX-4375 | **DELETED** DC1-COD-E12-02 FTE | 1d | 2026-07-20 A | 2026-07-20 A | QTS-1020 | 100% |  |  | ROS | Commissioning | DH1200 | L3 | COD | DELETED | DH1100 |
| DC1-COD-L3-CX-4385 | **DELETED** DC1-COD-E12-02 L3 Startup | 2d | 2026-07-20 A | 2026-07-20 A | QTS-1020 | 100% | 2026-07-21 | 2026-07-22 | SIE | Commissioning | DH1200 | L3 | COD | DELETED | DH1100 |
| DC1-COD-L3-CX-4395 | **DELETED** DC1-COD-E12-02 BMS/EPMS Programming | 1d | 2026-07-20 A | 2026-07-20 A | QTS-1020 | 100% | 2026-07-23 | 2026-07-23 | PRM | Commissioning | DH1200 | L3 | COD | DELETED | DH1100 |
| DC1-COD-L3-CX-4405 | **DELETED** DC1-COD-E12-03 FTE | 1d | 2026-07-20 A | 2026-07-20 A | QTS-1020 | 100% |  |  | ROS | Commissioning | DH1200 | L3 | COD | DELETED | DH1100 |
| DC1-COD-L3-CX-4415 | **DELETED** DC1-COD-E12-03 L3 Startup | 2d | 2026-07-20 A | 2026-07-20 A | QTS-1020 | 100% | 2026-07-21 | 2026-07-22 | SIE | Commissioning | DH1200 | L3 | COD | DELETED | DH1100 |
| DC1-COD-L3-CX-4425 | **DELETED** DC1-COD-E12-03 BMS/EPMS Programming | 1d | 2026-07-20 A | 2026-07-20 A | QTS-1020 | 100% | 2026-07-23 | 2026-07-23 | PRM | Commissioning | DH1200 | L3 | COD | DELETED | DH1100 |
| DC1-COD-L3-CX-4435 | **DELETED** DC1-COD-E12-04 FTE | 1d | 2026-07-20 A | 2026-07-20 A | QTS-1020 | 100% |  |  | ROS | Commissioning | DH1200 | L3 | COD | DELETED | DH1100 |
| DC1-COD-L3-CX-4445 | **DELETED** DC1-COD-E12-04 L3 Startup | 2d | 2026-07-20 A | 2026-07-20 A | QTS-1020 | 100% | 2026-07-21 | 2026-07-22 | SIE | Commissioning | DH1200 | L3 | COD | DELETED | DH1100 |
| DC1-COD-L3-CX-4455 | **DELETED** DC1-COD-E12-04 BMS/EPMS Programming | 1d | 2026-07-20 A | 2026-07-20 A | QTS-1020 | 100% | 2026-07-23 | 2026-07-23 | PRM | Commissioning | DH1200 | L3 | COD | DELETED | DH1100 |
| DC1-COD-L3-CX-4465 | **DELETED** DC1-COD-E12-05 FTE | 1d | 2026-07-20 A | 2026-07-20 A | QTS-1020 | 100% |  |  | ROS | Commissioning | DH1200 | L3 | COD | DELETED | DH1100 |
| DC1-COD-L3-CX-4475 | **DELETED** DC1-COD-E12-05 L3 Startup | 2d | 2026-07-20 A | 2026-07-20 A | QTS-1020 | 100% | 2026-07-21 | 2026-07-22 | SIE | Commissioning | DH1200 | L3 | COD | DELETED | DH1100 |
| DC1-COD-L3-CX-4485 | **DELETED** DC1-COD-E12-05 BMS/EPMS Programming | 1d | 2026-07-20 A | 2026-07-20 A | QTS-1020 | 100% | 2026-07-23 | 2026-07-23 | PRM | Commissioning | DH1200 | L3 | COD | DELETED | DH1100 |
| DC1-COD-L3-CX-4495 | **DELETED** DC1-COD-E12-06 FTE | 1d | 2026-07-20 A | 2026-07-20 A | QTS-1020 | 100% |  |  | ROS | Commissioning | DH1200 | L3 | COD | DELETED | DH1100 |
| DC1-COD-L3-CX-4505 | **DELETED** DC1-COD-E12-06 L3 Startup | 2d | 2026-07-20 A | 2026-07-20 A | QTS-1020 | 100% | 2026-07-21 | 2026-07-22 | SIE | Commissioning | DH1200 | L3 | COD | DELETED | DH1100 |
| DC1-COD-L3-CX-4515 | **DELETED** DC1-COD-E12-06 BMS/EPMS Programming | 1d | 2026-07-20 A | 2026-07-20 A | QTS-1020 | 100% | 2026-07-23 | 2026-07-23 | PRM | Commissioning | DH1200 | L3 | COD | DELETED | DH1100 |
| DC1-COD-L3-CX-4525 | **DELETED** DC1-COD-F12-01 FTE | 1d | 2026-07-20 A | 2026-07-20 A | QTS-1020 | 100% |  |  | ROS | Commissioning | DH1200 | L3 | COD | DELETED | DH1100 |
| DC1-COD-L3-CX-4535 | **DELETED** DC1-COD-F12-01 L3 Startup | 2d | 2026-07-20 A | 2026-07-20 A | QTS-1020 | 100% | 2026-07-21 | 2026-07-22 | SIE | Commissioning | DH1200 | L3 | COD | DELETED | DH1100 |
| DC1-COD-L3-CX-4545 | **DELETED** DC1-COD-F12-01 BMS/EPMS Programming | 1d | 2026-07-20 A | 2026-07-20 A | QTS-1020 | 100% | 2026-07-23 | 2026-07-23 | PRM | Commissioning | DH1200 | L3 | COD | DELETED | DH1100 |
| DC1-COD-L3-CX-4555 | **DELETED** DC1-COD-F12-02 FTE | 1d | 2026-07-20 A | 2026-07-20 A | QTS-1020 | 100% |  |  | ROS | Commissioning | DH1200 | L3 | COD | DELETED | DH1100 |
| DC1-COD-L3-CX-4565 | **DELETED** DC1-COD-F12-02 L3 Startup | 2d | 2026-07-20 A | 2026-07-20 A | QTS-1020 | 100% | 2026-07-21 | 2026-07-22 | SIE | Commissioning | DH1200 | L3 | COD | DELETED | DH1100 |
| DC1-COD-L3-CX-4575 | **DELETED** DC1-COD-F12-02 BMS/EPMS Programming | 1d | 2026-07-20 A | 2026-07-20 A | QTS-1020 | 100% | 2026-07-23 | 2026-07-23 | PRM | Commissioning | DH1200 | L3 | COD | DELETED | DH1100 |
| DC1-COD-L3-CX-4585 | **DELETED** DC1-COD-F12-03 FTE | 1d | 2026-07-20 A | 2026-07-20 A | QTS-1020 | 100% |  |  | ROS | Commissioning | DH1200 | L3 | COD | DELETED | DH1100 |
| DC1-COD-L3-CX-4595 | **DELETED** DC1-COD-F12-03 L3 Startup | 2d | 2026-07-20 A | 2026-07-20 A | QTS-1020 | 100% | 2026-07-21 | 2026-07-22 | SIE | Commissioning | DH1200 | L3 | COD | DELETED | DH1100 |
| DC1-COD-L3-CX-4605 | **DELETED** DC1-COD-F12-03 BMS/EPMS Programming | 1d | 2026-07-20 A | 2026-07-20 A | QTS-1020 | 100% | 2026-07-23 | 2026-07-23 | PRM | Commissioning | DH1200 | L3 | COD | DELETED | DH1100 |
| DC1-COD-L3-CX-4615 | **DELETED** DC1-COD-F12-04 FTE | 1d | 2026-07-20 A | 2026-07-20 A | QTS-1020 | 100% |  |  | ROS | Commissioning | DH1200 | L3 | COD | DELETED | DH1100 |
| DC1-COD-L3-CX-4625 | **DELETED** DC1-COD-F12-04 L3 Startup | 2d | 2026-07-20 A | 2026-07-20 A | QTS-1020 | 100% | 2026-07-21 | 2026-07-22 | SIE | Commissioning | DH1200 | L3 | COD | DELETED | DH1100 |

Notes:
- DC1-COD-L3-CX-3935: Steps: EC Startup Report; Vendor Startup
- DC1-COD-L3-CX-3965: Steps: EC Startup Report; Vendor Startup
- DC1-COD-L3-CX-3995: Steps: EC Startup Report; Vendor Startup
- DC1-COD-L3-CX-4025: Steps: EC Startup Report; Vendor Startup
- DC1-COD-L3-CX-4055: Steps: EC Startup Report; Vendor Startup
- DC1-COD-L3-CX-4085: Steps: EC Startup Report; Vendor Startup
- DC1-COD-L3-CX-4115: Steps: EC Startup Report; Vendor Startup
- DC1-COD-L3-CX-4145: Steps: EC Startup Report; Vendor Startup
- DC1-COD-L3-CX-4175: Steps: EC Startup Report; Vendor Startup
- DC1-COD-L3-CX-4205: Steps: EC Startup Report; Vendor Startup
- DC1-COD-L3-CX-4235: Steps: EC Startup Report; Vendor Startup
- DC1-COD-L3-CX-4265: Steps: EC Startup Report; Vendor Startup
- DC1-COD-L3-CX-4295: Steps: EC Startup Report; Vendor Startup
- DC1-COD-L3-CX-4325: Steps: EC Startup Report; Vendor Startup
- DC1-COD-L3-CX-4355: Steps: EC Startup Report; Vendor Startup
- DC1-COD-L3-CX-4385: Steps: EC Startup Report; Vendor Startup
- DC1-COD-L3-CX-4415: Steps: EC Startup Report; Vendor Startup
- DC1-COD-L3-CX-4445: Steps: EC Startup Report; Vendor Startup
- DC1-COD-L3-CX-4475: Steps: EC Startup Report; Vendor Startup
- DC1-COD-L3-CX-4505: Steps: EC Startup Report; Vendor Startup
- DC1-COD-L3-CX-4535: Steps: EC Startup Report; Vendor Startup
- DC1-COD-L3-CX-4565: Steps: EC Startup Report; Vendor Startup
- DC1-COD-L3-CX-4595: Steps: EC Startup Report; Vendor Startup
- DC1-COD-L3-CX-4625: Steps: EC Startup Report; Vendor Startup

| ID | Activity | Duration | Start | Finish | Predecessors | Complete | Planned start | Planned finish | Vendor Responsible Party | Layton Discipline | Location | CX Level | Equipment | DELETED | D | NICK |
| --- | --- | --- | --- | --- | --- | --- | --- | --- | --- | --- | --- | --- | --- | --- | --- | --- |
| DC1-COD-L3-CX-4635 | **DELETED** DC1-COD-F12-04 BMS/EPMS Programming | 1d | 2026-07-20 A | 2026-07-20 A | QTS-1020 | 100% | 2026-07-23 | 2026-07-23 | PRM | Commissioning | DH1200 | L3 | COD | DELETED | DH1100 |  |
| DC1-COD-L3-CX-4645 | **DELETED** DC1-COD-F12-05 FTE | 1d | 2026-07-20 A | 2026-07-20 A | QTS-1020 | 100% |  |  | ROS | Commissioning | DH1200 | L3 | COD | DELETED | DH1100 |  |
| DC1-COD-L3-CX-4655 | **DELETED** DC1-COD-F12-05 L3 Startup | 2d | 2026-07-20 A | 2026-07-20 A | QTS-1020 | 100% | 2026-07-21 | 2026-07-22 | SIE | Commissioning | DH1200 | L3 | COD | DELETED | DH1100 |  |
| DC1-COD-L3-CX-4665 | **DELETED** DC1-COD-F12-05 BMS/EPMS Programming | 1d | 2026-07-20 A | 2026-07-20 A | QTS-1020 | 100% | 2026-07-23 | 2026-07-23 | PRM | Commissioning | DH1200 | L3 | COD | DELETED | DH1100 |  |
| DC1-COD-L3-CX-4675 | **DELETED** DC1-COD-F12-06 FTE | 1d | 2026-07-20 A | 2026-07-20 A | QTS-1020 | 100% |  |  | ROS | Commissioning | DH1200 | L3 | COD | DELETED | DH1100 |  |
| DC1-COD-L3-CX-4685 | **DELETED** DC1-COD-F12-06 L3 Startup | 2d | 2026-07-20 A | 2026-07-20 A | QTS-1020 | 100% | 2026-07-21 | 2026-07-22 | SIE | Commissioning | DH1200 | L3 | COD | DELETED | DH1100 |  |
| DC1-COD-L3-CX-4695 | **DELETED** DC1-COD-F12-06 BMS/EPMS Programming | 1d | 2026-07-20 A | 2026-07-20 A | QTS-1020 | 100% | 2026-07-23 | 2026-07-23 | PRM | Commissioning | DH1200 | L3 | COD | DELETED | DH1100 |  |
| DC1-L4-Cx-1190 | **DELETED** DC1 Data Hall 2200 Generator Burns A22 & B22 | 1d | 2026-07-20 A | 2026-07-20 A | QTS-1020 | 100% |  |  | HLT | Commissioning | DH2200 | L4 | GEN | DELETED | DH1100 | NICK |
| DC1-L4-Cx-1200 | **DELETED** DC1 Data Hall 2200 Generator Burns C22 & D22 | 1d | 2026-07-20 A | 2026-07-20 A | QTS-1020 | 100% | 2026-07-21 | 2026-07-21 | HLT | Commissioning | DH2200 | L4 | GEN | DELETED | DH1100 | NICK |
| DC1-L4-Cx-1210 | **DELETED** DC1 Data Hall 2200 Generator Burns E22 & F22 | 1d | 2026-07-20 A | 2026-07-20 A | QTS-1020 | 100% | 2026-07-22 | 2026-07-22 | HLT | Commissioning | DH2200 | L4 | GEN | DELETED | DH1100 | NICK |
| DC1-L4-Cx-1220 | **DELETED** DC1 Data Hall 2200 Generator Burns R22 | 1d | 2026-07-20 A | 2026-07-20 A | QTS-1020 | 100% | 2026-07-23 | 2026-07-23 | HLT | Commissioning | DH2200 | L4 | GEN | DELETED | DH1100 | NICK |
| DC1-MOD2-L3-Cx-2420 | **DELETED** DC1-MOD-A12-02 FTE | 1d | 2026-07-20 A | 2026-07-20 A | QTS-1020 | 100% | 2026-07-16 | 2026-07-16 | ROS | Commissioning | DH1200 | L3 | MOD-02 | DELETED | DH1100 |  |
| DC1-MOD2-L3-Cx-2430 | **DELETED** DC1-MOD-A12-02 L3 Startup | 2d | 2026-07-20 A | 2026-07-20 A | QTS-1020 | 100% | 2026-07-17 | 2026-07-20 | PHE | Commissioning | DH1200 | L3 | MOD-02 | DELETED | DH1100 |  |
| DC1-MOD2-L3-Cx-2440 | **DELETED** DC1-MOD-A12-02 BMS/EPMS Programming | 1d | 2026-07-20 A | 2026-07-20 A | QTS-1020 | 100% | 2026-07-21 | 2026-07-21 | PRM | Commissioning | DH1200 | L3 | MOD-02 | DELETED | DH1100 |  |
| DC1-MOD2-L3-Cx-2450 | **DELETED** DC1-MOD-B12-02 FTE | 1d | 2026-07-20 A | 2026-07-20 A | QTS-1020 | 100% | 2026-07-16 | 2026-07-16 | ROS | Commissioning | DH1200 | L3 | MOD-02 | DELETED | DH1100 |  |
| DC1-MOD2-L3-Cx-2460 | **DELETED** DC1-MOD-B12-02 L3 Startup | 2d | 2026-07-20 A | 2026-07-20 A | QTS-1020 | 100% | 2026-07-17 | 2026-07-20 | PHE | Commissioning | DH1200 | L3 | MOD-02 | DELETED | DH1100 |  |
| DC1-MOD2-L3-Cx-2470 | **DELETED** DC1-MOD-B12-02 BMS/EPMS Programming | 1d | 2026-07-20 A | 2026-07-20 A | QTS-1020 | 100% | 2026-07-21 | 2026-07-21 | PRM | Commissioning | DH1200 | L3 | MOD-02 | DELETED | DH1100 |  |
| DC1-MOD2-L3-Cx-2480 | **DELETED** DC1-MOD-C12-02 FTE | 1d | 2026-07-20 A | 2026-07-20 A | QTS-1020 | 100% | 2026-07-16 | 2026-07-16 | ROS | Commissioning | DH1200 | L3 | MOD-02 | DELETED | DH1100 |  |
| DC1-MOD2-L3-Cx-2490 | **DELETED** DC1-MOD-C12-02 L3 Startup | 2d | 2026-07-20 A | 2026-07-20 A | QTS-1020 | 100% | 2026-07-17 | 2026-07-20 | PHE | Commissioning | DH1200 | L3 | MOD-02 | DELETED | DH1100 |  |
| DC1-MOD2-L3-Cx-2500 | **DELETED** DC1-MOD-C12-02 BMS/EPMS Programming | 1d | 2026-07-20 A | 2026-07-20 A | QTS-1020 | 100% | 2026-07-21 | 2026-07-21 | PRM | Commissioning | DH1200 | L3 | MOD-02 | DELETED | DH1100 |  |
| DC1-MOD2-L3-Cx-2510 | **DELETED** DC1-MOD-D12-02 FTE | 1d | 2026-07-20 A | 2026-07-20 A | QTS-1020 | 100% | 2026-07-16 | 2026-07-16 | ROS | Commissioning | DH1200 | L3 | MOD-02 | DELETED | DH1100 |  |
| DC1-MOD2-L3-Cx-2520 | **DELETED** DC1-MOD-D12-02 L3 Startup | 2d | 2026-07-20 A | 2026-07-20 A | QTS-1020 | 100% | 2026-07-17 | 2026-07-20 | PHE | Commissioning | DH1200 | L3 | MOD-02 | DELETED | DH1100 |  |
| DC1-MOD2-L3-Cx-2530 | **DELETED** DC1-MOD-D12-02 BMS/EPMS Programming | 1d | 2026-07-20 A | 2026-07-20 A | QTS-1020 | 100% | 2026-07-21 | 2026-07-21 | PRM | Commissioning | DH1200 | L3 | MOD-02 | DELETED | DH1100 |  |
| DC1-MOD2-L3-Cx-2540 | **DELETED** DC1-MOD-E12-02 FTE | 1d | 2026-07-20 A | 2026-07-20 A | QTS-1020 | 100% | 2026-07-16 | 2026-07-16 | ROS | Commissioning | DH1200 | L3 | MOD-02 | DELETED | DH1100 |  |
| DC1-MOD2-L3-Cx-2550 | **DELETED** DC1-MOD-E12-02 L3 Startup | 2d | 2026-07-20 A | 2026-07-20 A | QTS-1020 | 100% | 2026-07-17 | 2026-07-20 | PHE | Commissioning | DH1200 | L3 | MOD-02 | DELETED | DH1100 |  |
| DC1-MOD2-L3-Cx-2560 | **DELETED** DC1-MOD-E12-02 BMS/EPMS Programming | 1d | 2026-07-20 A | 2026-07-20 A | QTS-1020 | 100% | 2026-07-21 | 2026-07-21 | PRM | Commissioning | DH1200 | L3 | MOD-02 | DELETED | DH1100 |  |
| DC1-MOD2-L3-Cx-2570 | **DELETED** DC1-MOD-F12-02 FTE | 1d | 2026-07-20 A | 2026-07-20 A | QTS-1020 | 100% | 2026-07-16 | 2026-07-16 | ROS | Commissioning | DH1200 | L3 | MOD-02 | DELETED | DH1100 |  |
| DC1-MOD2-L3-Cx-2580 | **DELETED** DC1-MOD-F12-02 L3 Startup | 2d | 2026-07-20 A | 2026-07-20 A | QTS-1020 | 100% | 2026-07-17 | 2026-07-20 | PHE | Commissioning | DH1200 | L3 | MOD-02 | DELETED | DH1100 |  |
| DC1-MOD2-L3-Cx-2590 | **DELETED** DC1-MOD-F12-02 BMS/EPMS Programming | 1d | 2026-07-20 A | 2026-07-20 A | QTS-1020 | 100% | 2026-07-21 | 2026-07-21 | PRM | Commissioning | DH1200 | L3 | MOD-02 | DELETED | DH1100 |  |
| DC1-MOD2-L3-Cx-2600 | **DELETED** DC1-MOD-R12-02 FTE | 1d | 2026-07-20 A | 2026-07-20 A | QTS-1020 | 100% | 2026-07-16 | 2026-07-16 | ROS | Commissioning | DH1200 | L3 | MOD-02 | DELETED | DH1100 |  |
| DC1-MOD2-L3-Cx-2610 | **DELETED** DC1-MOD-R12-02 L3 Startup | 2d | 2026-07-20 A | 2026-07-20 A | QTS-1020 | 100% | 2026-07-17 | 2026-07-20 | PHE | Commissioning | DH1200 | L3 | MOD-02 | DELETED | DH1100 |  |
| DC1-MOD2-L3-Cx-2620 | **DELETED** DC1-MOD-R12-02 BMS/EPMS Programming | 1d | 2026-07-20 A | 2026-07-20 A | QTS-1020 | 100% | 2026-07-21 | 2026-07-21 | PRM | Commissioning | DH1200 | L3 | MOD-02 | DELETED | DH1100 |  |
| DC1-MOD3-L3-Cx-2420 | **DELETED** DC1-MOD-A12-03 FTE | 1d | 2026-07-20 A | 2026-07-20 A | QTS-1020 | 100% |  |  | ROS | Commissioning | DH1200 | L3 | MOD-03 | DELETED | DH1100 |  |
| DC1-MOD3-L3-Cx-2430 | **DELETED** DC1-MOD-A12-03 L3 Startup | 2d | 2026-07-20 A | 2026-07-20 A | QTS-1020 | 100% | 2026-07-21 | 2026-07-22 | PHE | Commissioning | DH1200 | L3 | MOD-03 | DELETED | DH1100 |  |
| DC1-MOD3-L3-Cx-2440 | **DELETED** DC1-MOD-A12-03 BMS/EPMS Programming | 1d | 2026-07-20 A | 2026-07-20 A | QTS-1020 | 100% | 2026-07-23 | 2026-07-23 | PRM | Commissioning | DH1200 | L3 | MOD-03 | DELETED | DH1100 |  |
| DC1-MOD3-L3-Cx-2450 | **DELETED** DC1-MOD-B12-03 FTE | 1d | 2026-07-20 A | 2026-07-20 A | QTS-1020 | 100% |  |  | ROS | Commissioning | DH1200 | L3 | MOD-03 | DELETED | DH1100 |  |
| DC1-MOD3-L3-Cx-2460 | **DELETED** DC1-MOD-B12-03 L3 Startup | 2d | 2026-07-20 A | 2026-07-20 A | QTS-1020 | 100% | 2026-07-21 | 2026-07-22 | PHE | Commissioning | DH1200 | L3 | MOD-03 | DELETED | DH1100 |  |
| DC1-MOD3-L3-Cx-2470 | **DELETED** DC1-MOD-B12-03 BMS/EPMS Programming | 1d | 2026-07-20 A | 2026-07-20 A | QTS-1020 | 100% | 2026-07-23 | 2026-07-23 | PRM | Commissioning | DH1200 | L3 | MOD-03 | DELETED | DH1100 |  |
| DC1-MOD3-L3-Cx-2480 | **DELETED** DC1-MOD-C12-03 FTE | 1d | 2026-07-20 A | 2026-07-20 A | QTS-1020 | 100% |  |  | ROS | Commissioning | DH1200 | L3 | MOD-03 | DELETED | DH1100 |  |
| DC1-MOD3-L3-Cx-2490 | **DELETED** DC1-MOD-C12-03 L3 Startup | 2d | 2026-07-20 A | 2026-07-20 A | QTS-1020 | 100% | 2026-07-21 | 2026-07-22 | PHE | Commissioning | DH1200 | L3 | MOD-03 | DELETED | DH1100 |  |
| DC1-MOD3-L3-Cx-2500 | **DELETED** DC1-MOD-C12-03 BMS/EPMS Programming | 1d | 2026-07-20 A | 2026-07-20 A | QTS-1020 | 100% | 2026-07-23 | 2026-07-23 | PRM | Commissioning | DH1200 | L3 | MOD-03 | DELETED | DH1100 |  |
| DC1-MOD3-L3-Cx-2510 | **DELETED** DC1-MOD-D12-03 FTE | 1d | 2026-07-20 A | 2026-07-20 A | QTS-1020 | 100% |  |  | ROS | Commissioning | DH1200 | L3 | MOD-03 | DELETED | DH1100 |  |
| DC1-MOD3-L3-Cx-2520 | **DELETED** DC1-MOD-D12-03 L3 Startup | 2d | 2026-07-20 A | 2026-07-20 A | QTS-1020 | 100% | 2026-07-21 | 2026-07-22 | PHE | Commissioning | DH1200 | L3 | MOD-03 | DELETED | DH1100 |  |
| DC1-MOD3-L3-Cx-2530 | **DELETED** DC1-MOD-D12-03 BMS/EPMS Programming | 1d | 2026-07-20 A | 2026-07-20 A | QTS-1020 | 100% | 2026-07-23 | 2026-07-23 | PRM | Commissioning | DH1200 | L3 | MOD-03 | DELETED | DH1100 |  |
| DC1-MOD3-L3-Cx-2540 | **DELETED** DC1-MOD-E12-03 FTE | 1d | 2026-07-20 A | 2026-07-20 A | QTS-1020 | 100% |  |  | ROS | Commissioning | DH1200 | L3 | MOD-03 | DELETED | DH1100 |  |
| DC1-MOD3-L3-Cx-2550 | **DELETED** DC1-MOD-E12-03 L3 Startup | 2d | 2026-07-20 A | 2026-07-20 A | QTS-1020 | 100% | 2026-07-21 | 2026-07-22 | PHE | Commissioning | DH1200 | L3 | MOD-03 | DELETED | DH1100 |  |
| DC1-MOD3-L3-Cx-2560 | **DELETED** DC1-MOD-E12-03 BMS/EPMS Programming | 1d | 2026-07-20 A | 2026-07-20 A | QTS-1020 | 100% | 2026-07-23 | 2026-07-23 | PRM | Commissioning | DH1200 | L3 | MOD-03 | DELETED | DH1100 |  |
| DC1-MOD3-L3-Cx-2570 | **DELETED** DC1-MOD-F12-03 FTE | 1d | 2026-07-20 A | 2026-07-20 A | QTS-1020 | 100% | 2026-07-16 | 2026-07-16 | ROS | Commissioning | DH1200 | L3 | MOD-03 | DELETED | DH1100 |  |
| DC1-MOD3-L3-Cx-2580 | **DELETED** DC1-MOD-F12-03 L3 Startup | 2d | 2026-07-20 A | 2026-07-20 A | QTS-1020 | 100% | 2026-07-17 | 2026-07-20 | PHE | Commissioning | DH1200 | L3 | MOD-03 | DELETED | DH1100 |  |
| DC1-MOD3-L3-Cx-2590 | **DELETED** DC1-MOD-F12-03 BMS/EPMS Programming | 1d | 2026-07-20 A | 2026-07-20 A | QTS-1020 | 100% | 2026-07-21 | 2026-07-21 | PRM | Commissioning | DH1200 | L3 | MOD-03 | DELETED | DH1100 |  |
| DC1-MOD3-L3-Cx-2600 | **DELETED** DC1-MOD-R12-03 FTE | 1d | 2026-07-20 A | 2026-07-20 A | QTS-1020 | 100% |  |  | ROS | Commissioning | DH1200 | L3 | MOD-03 | DELETED | DH1100 |  |
| DC1-MOD3-L3-Cx-2610 | **DELETED** DC1-MOD-R12-03 L3 Startup | 2d | 2026-07-20 A | 2026-07-20 A | QTS-1020 | 100% | 2026-07-21 | 2026-07-22 | PHE | Commissioning | DH1200 | L3 | MOD-03 | DELETED | DH1100 |  |
| DC1-MOD3-L3-Cx-2620 | **DELETED** DC1-MOD-R12-03 BMS/EPMS Programming | 1d | 2026-07-20 A | 2026-07-20 A | QTS-1020 | 100% | 2026-07-23 | 2026-07-23 | PRM | Commissioning | DH1200 | L3 | MOD-03 | DELETED | DH1100 |  |
| DC1-RPP-L3-CX-3625 | **DELETED** DC1-RPP-A12-01 A/B FTE | 1d | 2026-07-20 A | 2026-07-20 A | QTS-1020 | 100% | 2026-07-27 | 2026-07-27 | ROS | Commissioning | DH1200 | L3 | RPP | DELETED | DH1100 |  |
| DC1-RPP-L3-CX-3635 | **DELETED** DC1-RPP-A12-01 A/B L3 Startup | 2d | 2026-07-20 A | 2026-07-20 A | QTS-1020 | 100% | 2026-07-28 | 2026-07-29 | SQD | Commissioning | DH1200 | L3 | RPP | DELETED | DH1100 |  |
| DC1-RPP-L3-CX-3645 | **DELETED** DC1-RPP-A12-01 A/B BMS/EPMS Programming | 1d | 2026-07-20 A | 2026-07-20 A | QTS-1020 | 100% | 2026-07-30 | 2026-07-30 | PRM | Commissioning | DH1200 | L3 | RPP | DELETED | DH1100 |  |
| DC1-RPP-L3-CX-3655 | **DELETED** DC1-RPP-A12-02 A/B FTE | 1d | 2026-07-20 A | 2026-07-20 A | QTS-1020 | 100% | 2026-07-27 | 2026-07-27 | ROS | Commissioning | DH1200 | L3 | RPP | DELETED | DH1100 |  |
| DC1-RPP-L3-CX-3665 | **DELETED** DC1-RPP-A12-02 A/B L3 Startup | 2d | 2026-07-20 A | 2026-07-20 A | QTS-1020 | 100% | 2026-07-28 | 2026-07-29 | SQD | Commissioning | DH1200 | L3 | RPP | DELETED | DH1100 |  |
| DC1-RPP-L3-CX-3675 | **DELETED** DC1-RPP-A12-02 A/B BMS/EPMS Programming | 1d | 2026-07-20 A | 2026-07-20 A | QTS-1020 | 100% | 2026-07-30 | 2026-07-30 | PRM | Commissioning | DH1200 | L3 | RPP | DELETED | DH1100 |  |
| DC1-RPP-L3-CX-3685 | **DELETED** DC1-RPP-A12-03 A/B FTE | 1d | 2026-07-20 A | 2026-07-20 A | QTS-1020 | 100% | 2026-07-27 | 2026-07-27 | ROS | Commissioning | DH1200 | L3 | RPP | DELETED | DH1100 |  |
| DC1-RPP-L3-CX-3695 | **DELETED** DC1-RPP-A12-03 A/B L3 Startup | 2d | 2026-07-20 A | 2026-07-20 A | QTS-1020 | 100% | 2026-07-28 | 2026-07-29 | SQD | Commissioning | DH1200 | L3 | RPP | DELETED | DH1100 |  |
| DC1-RPP-L3-CX-3705 | **DELETED** DC1-RPP-A12-03 A/B BMS/EPMS Programming | 1d | 2026-07-20 A | 2026-07-20 A | QTS-1020 | 100% | 2026-07-30 | 2026-07-30 | PRM | Commissioning | DH1200 | L3 | RPP | DELETED | DH1100 |  |
| DC1-RPP-L3-CX-3715 | **DELETED** DC1-RPP-A12-04 A/B FTE | 1d | 2026-07-20 A | 2026-07-20 A | QTS-1020 | 100% | 2026-07-27 | 2026-07-27 | ROS | Commissioning | DH1200 | L3 | RPP | DELETED | DH1100 |  |
| DC1-RPP-L3-CX-3725 | **DELETED** DC1-RPP-A12-04 A/B L3 Startup | 2d | 2026-07-20 A | 2026-07-20 A | QTS-1020 | 100% | 2026-07-28 | 2026-07-29 | SQD | Commissioning | DH1200 | L3 | RPP | DELETED | DH1100 |  |
| DC1-RPP-L3-CX-3735 | **DELETED** DC1-RPP-A12-04 A/B BMS/EPMS Programming | 1d | 2026-07-20 A | 2026-07-20 A | QTS-1020 | 100% | 2026-07-30 | 2026-07-30 | PRM | Commissioning | DH1200 | L3 | RPP | DELETED | DH1100 |  |
| DC1-RPP-L3-CX-3745 | **DELETED** DC1-RPP-A12-05 A/B FTE | 1d | 2026-07-20 A | 2026-07-20 A | QTS-1020 | 100% | 2026-07-27 | 2026-07-27 | ROS | Commissioning | DH1200 | L3 | RPP | DELETED | DH1100 |  |
| DC1-RPP-L3-CX-3755 | **DELETED** DC1-RPP-A12-05 A/B L3 Startup | 2d | 2026-07-20 A | 2026-07-20 A | QTS-1020 | 100% | 2026-07-28 | 2026-07-29 | SQD | Commissioning | DH1200 | L3 | RPP | DELETED | DH1100 |  |
| DC1-RPP-L3-CX-3765 | **DELETED** DC1-RPP-A12-05 A/B BMS/EPMS Programming | 1d | 2026-07-20 A | 2026-07-20 A | QTS-1020 | 100% | 2026-07-30 | 2026-07-30 | PRM | Commissioning | DH1200 | L3 | RPP | DELETED | DH1100 |  |
| DC1-RPP-L3-CX-3775 | **DELETED** DC1-RPP-A12-06 A/B FTE | 1d | 2026-07-20 A | 2026-07-20 A | QTS-1020 | 100% | 2026-07-27 | 2026-07-27 | ROS | Commissioning | DH1200 | L3 | RPP | DELETED | DH1100 |  |
| DC1-RPP-L3-CX-3785 | **DELETED** DC1-RPP-A12-06 A/B L3 Startup | 2d | 2026-07-20 A | 2026-07-20 A | QTS-1020 | 100% | 2026-07-28 | 2026-07-29 | SQD | Commissioning | DH1200 | L3 | RPP | DELETED | DH1100 |  |

Notes:
- DC1-COD-L3-CX-4655: Steps: EC Startup Report; Vendor Startup
- DC1-COD-L3-CX-4685: Steps: EC Startup Report; Vendor Startup
- DC1-MOD2-L3-Cx-2430: Steps: EC Startup Report; Vendor Startup
- DC1-MOD2-L3-Cx-2460: Steps: EC Startup Report; Vendor Startup
- DC1-MOD2-L3-Cx-2490: Steps: EC Startup Report; Vendor Startup
- DC1-MOD2-L3-Cx-2520: Steps: EC Startup Report; Vendor Startup
- DC1-MOD2-L3-Cx-2550: Steps: EC Startup Report; Vendor Startup
- DC1-MOD2-L3-Cx-2580: Steps: EC Startup Report; Vendor Startup
- DC1-MOD2-L3-Cx-2610: Steps: EC Startup Report; Vendor Startup
- DC1-MOD3-L3-Cx-2430: Steps: EC Startup Report; Vendor Startup
- DC1-MOD3-L3-Cx-2460: Steps: EC Startup Report; Vendor Startup
- DC1-MOD3-L3-Cx-2490: Steps: EC Startup Report; Vendor Startup
- DC1-MOD3-L3-Cx-2520: Steps: EC Startup Report; Vendor Startup
- DC1-MOD3-L3-Cx-2550: Steps: EC Startup Report; Vendor Startup
- DC1-MOD3-L3-Cx-2580: Steps: EC Startup Report; Vendor Startup
- DC1-MOD3-L3-Cx-2610: Steps: EC Startup Report; Vendor Startup
- DC1-RPP-L3-CX-3635: Steps: EC Startup Report; Vendor Startup
- DC1-RPP-L3-CX-3665: Steps: EC Startup Report; Vendor Startup
- DC1-RPP-L3-CX-3695: Steps: EC Startup Report; Vendor Startup
- DC1-RPP-L3-CX-3725: Steps: EC Startup Report; Vendor Startup
- DC1-RPP-L3-CX-3755: Steps: EC Startup Report; Vendor Startup
- DC1-RPP-L3-CX-3785: Steps: EC Startup Report; Vendor Startup

| ID | Activity | Duration | Start | Finish | Predecessors | Complete | Planned start | Planned finish | Vendor Responsible Party | Layton Discipline | Location | CX Level | Equipment | DELETED | D |
| --- | --- | --- | --- | --- | --- | --- | --- | --- | --- | --- | --- | --- | --- | --- | --- |
| DC1-RPP-L3-CX-3795 | **DELETED** DC1-RPP-A12-06 A/B BMS/EPMS Programming | 1d | 2026-07-20 A | 2026-07-20 A | QTS-1020 | 100% | 2026-07-30 | 2026-07-30 | PRM | Commissioning | DH1200 | L3 | RPP | DELETED | DH1100 |
| DC1-RPP-L3-CX-3805 | **DELETED** DC1-RPP-B12-01 A/B FTE | 1d | 2026-07-20 A | 2026-07-20 A | QTS-1020 | 100% | 2026-07-27 | 2026-07-27 | ROS | Commissioning | DH1200 | L3 | RPP | DELETED | DH1100 |
| DC1-RPP-L3-CX-3815 | **DELETED** DC1-RPP-B12-01 A/B L3 Startup | 2d | 2026-07-20 A | 2026-07-20 A | QTS-1020 | 100% | 2026-07-28 | 2026-07-29 | SQD | Commissioning | DH1200 | L3 | RPP | DELETED | DH1100 |
| DC1-RPP-L3-CX-3825 | **DELETED** DC1-RPP-B12-01 A/B BMS/EPMS Programming | 1d | 2026-07-20 A | 2026-07-20 A | QTS-1020 | 100% | 2026-07-30 | 2026-07-30 | PRM | Commissioning | DH1200 | L3 | RPP | DELETED | DH1100 |
| DC1-RPP-L3-CX-3835 | **DELETED** DC1-RPP-B12-02 A/B FTE | 1d | 2026-07-20 A | 2026-07-20 A | QTS-1020 | 100% | 2026-07-27 | 2026-07-27 | ROS | Commissioning | DH1200 | L3 | RPP | DELETED | DH1100 |
| DC1-RPP-L3-CX-3845 | **DELETED** DC1-RPP-B12-02 A/B L3 Startup | 2d | 2026-07-20 A | 2026-07-20 A | QTS-1020 | 100% | 2026-07-28 | 2026-07-29 | SQD | Commissioning | DH1200 | L3 | RPP | DELETED | DH1100 |
| DC1-RPP-L3-CX-3855 | **DELETED** DC1-RPP-B12-02 A/B BMS/EPMS Programming | 1d | 2026-07-20 A | 2026-07-20 A | QTS-1020 | 100% | 2026-07-30 | 2026-07-30 | PRM | Commissioning | DH1200 | L3 | RPP | DELETED | DH1100 |
| DC1-RPP-L3-CX-3865 | **DELETED** DC1-RPP-B12-03 A/B FTE | 1d | 2026-07-20 A | 2026-07-20 A | QTS-1020 | 100% | 2026-07-27 | 2026-07-27 | ROS | Commissioning | DH1200 | L3 | RPP | DELETED | DH1100 |
| DC1-RPP-L3-CX-3875 | **DELETED** DC1-RPP-B12-03 A/B L3 Startup | 2d | 2026-07-20 A | 2026-07-20 A | QTS-1020 | 100% | 2026-07-28 | 2026-07-29 | SQD | Commissioning | DH1200 | L3 | RPP | DELETED | DH1100 |
| DC1-RPP-L3-CX-3885 | **DELETED** DC1-RPP-B12-03 A/B BMS/EPMS Programming | 1d | 2026-07-20 A | 2026-07-20 A | QTS-1020 | 100% | 2026-07-30 | 2026-07-30 | PRM | Commissioning | DH1200 | L3 | RPP | DELETED | DH1100 |
| DC1-RPP-L3-CX-3895 | **DELETED** DC1-RPP-B12-04 A/B FTE | 1d | 2026-07-20 A | 2026-07-20 A | QTS-1020 | 100% | 2026-07-27 | 2026-07-27 | ROS | Commissioning | DH1200 | L3 | RPP | DELETED | DH1100 |
| DC1-RPP-L3-CX-3905 | **DELETED** DC1-RPP-B12-04 A/B L3 Startup | 2d | 2026-07-20 A | 2026-07-20 A | QTS-1020 | 100% | 2026-07-28 | 2026-07-29 | SQD | Commissioning | DH1200 | L3 | RPP | DELETED | DH1100 |
| DC1-RPP-L3-CX-3915 | **DELETED** DC1-RPP-B12-04 A/B BMS/EPMS Programming | 1d | 2026-07-20 A | 2026-07-20 A | QTS-1020 | 100% | 2026-07-30 | 2026-07-30 | PRM | Commissioning | DH1200 | L3 | RPP | DELETED | DH1100 |
| DC1-RPP-L3-CX-3925 | **DELETED** DC1-RPP-B12-05 A/B FTE | 1d | 2026-07-20 A | 2026-07-20 A | QTS-1020 | 100% | 2026-07-27 | 2026-07-27 | ROS | Commissioning | DH1200 | L3 | RPP | DELETED | DH1100 |
| DC1-RPP-L3-CX-3935 | **DELETED** DC1-RPP-B12-05 A/B L3 Startup | 2d | 2026-07-20 A | 2026-07-20 A | QTS-1020 | 100% | 2026-07-28 | 2026-07-29 | SQD | Commissioning | DH1200 | L3 | RPP | DELETED | DH1100 |
| DC1-RPP-L3-CX-3945 | **DELETED** DC1-RPP-B12-05 A/B BMS/EPMS Programming | 1d | 2026-07-20 A | 2026-07-20 A | QTS-1020 | 100% | 2026-07-30 | 2026-07-30 | PRM | Commissioning | DH1200 | L3 | RPP | DELETED | DH1100 |
| DC1-RPP-L3-CX-3955 | **DELETED** DC1-RPP-B12-06 A/B FTE | 1d | 2026-07-20 A | 2026-07-20 A | QTS-1020 | 100% | 2026-07-27 | 2026-07-27 | ROS | Commissioning | DH1200 | L3 | RPP | DELETED | DH1100 |
| DC1-RPP-L3-CX-3965 | **DELETED** DC1-RPP-B12-06 A/B L3 Startup | 2d | 2026-07-20 A | 2026-07-20 A | QTS-1020 | 100% | 2026-07-28 | 2026-07-29 | SQD | Commissioning | DH1200 | L3 | RPP | DELETED | DH1100 |
| DC1-RPP-L3-CX-3975 | **DELETED** DC1-RPP-B12-06 A/B BMS/EPMS Programming | 1d | 2026-07-20 A | 2026-07-20 A | QTS-1020 | 100% | 2026-07-30 | 2026-07-30 | PRM | Commissioning | DH1200 | L3 | RPP | DELETED | DH1100 |
| DC1-RPP-L3-CX-3985 | **DELETED** DC1-RPP-C12-01 A/B FTE | 1d | 2026-07-20 A | 2026-07-20 A | QTS-1020 | 100% | 2026-07-27 | 2026-07-27 | ROS | Commissioning | DH1200 | L3 | RPP | DELETED | DH1100 |
| DC1-RPP-L3-CX-3995 | **DELETED** DC1-RPP-C12-01 A/B L3 Startup | 2d | 2026-07-20 A | 2026-07-20 A | QTS-1020 | 100% | 2026-07-28 | 2026-07-29 | SQD | Commissioning | DH1200 | L3 | RPP | DELETED | DH1100 |
| DC1-RPP-L3-CX-4005 | **DELETED** DC1-RPP-C12-01 A/B BMS/EPMS Programming | 1d | 2026-07-20 A | 2026-07-20 A | QTS-1020 | 100% | 2026-07-30 | 2026-07-30 | PRM | Commissioning | DH1200 | L3 | RPP | DELETED | DH1100 |
| DC1-RPP-L3-CX-4015 | **DELETED** DC1-RPP-C12-02 A/B FTE | 1d | 2026-07-20 A | 2026-07-20 A | QTS-1020 | 100% | 2026-07-27 | 2026-07-27 | ROS | Commissioning | DH1200 | L3 | RPP | DELETED | DH1100 |
| DC1-RPP-L3-CX-4025 | **DELETED** DC1-RPP-C12-02 A/B L3 Startup | 2d | 2026-07-20 A | 2026-07-20 A | QTS-1020 | 100% | 2026-07-28 | 2026-07-29 | SQD | Commissioning | DH1200 | L3 | RPP | DELETED | DH1100 |
| DC1-RPP-L3-CX-4035 | **DELETED** DC1-RPP-C12-02 A/B BMS/EPMS Programming | 1d | 2026-07-20 A | 2026-07-20 A | QTS-1020 | 100% | 2026-07-30 | 2026-07-30 | PRM | Commissioning | DH1200 | L3 | RPP | DELETED | DH1100 |
| DC1-RPP-L3-CX-4045 | **DELETED** DC1-RPP-C12-03 A/B FTE | 1d | 2026-07-20 A | 2026-07-20 A | QTS-1020 | 100% | 2026-07-27 | 2026-07-27 | ROS | Commissioning | DH1200 | L3 | RPP | DELETED | DH1100 |
| DC1-RPP-L3-CX-4055 | **DELETED** DC1-RPP-C12-03 A/B L3 Startup | 2d | 2026-07-20 A | 2026-07-20 A | QTS-1020 | 100% | 2026-07-28 | 2026-07-29 | SQD | Commissioning | DH1200 | L3 | RPP | DELETED | DH1100 |
| DC1-RPP-L3-CX-4065 | **DELETED** DC1-RPP-C12-03 A/B BMS/EPMS Programming | 1d | 2026-07-20 A | 2026-07-20 A | QTS-1020 | 100% | 2026-07-30 | 2026-07-30 | PRM | Commissioning | DH1200 | L3 | RPP | DELETED | DH1100 |
| DC1-RPP-L3-CX-4075 | **DELETED** DC1-RPP-C12-04 A/B FTE | 1d | 2026-07-20 A | 2026-07-20 A | QTS-1020 | 100% | 2026-07-27 | 2026-07-27 | ROS | Commissioning | DH1200 | L3 | RPP | DELETED | DH1100 |
| DC1-RPP-L3-CX-4085 | **DELETED** DC1-RPP-C12-04 A/B L3 Startup | 2d | 2026-07-20 A | 2026-07-20 A | QTS-1020 | 100% | 2026-07-28 | 2026-07-29 | SQD | Commissioning | DH1200 | L3 | RPP | DELETED | DH1100 |
| DC1-RPP-L3-CX-4095 | **DELETED** DC1-RPP-C12-04 A/B BMS/EPMS Programming | 1d | 2026-07-20 A | 2026-07-20 A | QTS-1020 | 100% | 2026-07-30 | 2026-07-30 | PRM | Commissioning | DH1200 | L3 | RPP | DELETED | DH1100 |
| DC1-RPP-L3-CX-4105 | **DELETED** DC1-RPP-C12-05 A/B FTE | 1d | 2026-07-20 A | 2026-07-20 A | QTS-1020 | 100% | 2026-07-27 | 2026-07-27 | ROS | Commissioning | DH1200 | L3 | RPP | DELETED | DH1100 |
| DC1-RPP-L3-CX-4115 | **DELETED** DC1-RPP-C12-05 A/B L3 Startup | 2d | 2026-07-20 A | 2026-07-20 A | QTS-1020 | 100% | 2026-07-28 | 2026-07-29 | SQD | Commissioning | DH1200 | L3 | RPP | DELETED | DH1100 |
| DC1-RPP-L3-CX-4125 | **DELETED** DC1-RPP-C12-05 A/B BMS/EPMS Programming | 1d | 2026-07-20 A | 2026-07-20 A | QTS-1020 | 100% | 2026-07-30 | 2026-07-30 | PRM | Commissioning | DH1200 | L3 | RPP | DELETED | DH1100 |
| DC1-RPP-L3-CX-4135 | **DELETED** DC1-RPP-C12-06 A/B FTE | 1d | 2026-07-20 A | 2026-07-20 A | QTS-1020 | 100% | 2026-07-27 | 2026-07-27 | ROS | Commissioning | DH1200 | L3 | RPP | DELETED | DH1100 |
| DC1-RPP-L3-CX-4145 | **DELETED** DC1-RPP-C12-06 A/B L3 Startup | 2d | 2026-07-20 A | 2026-07-20 A | QTS-1020 | 100% | 2026-07-28 | 2026-07-29 | SQD | Commissioning | DH1200 | L3 | RPP | DELETED | DH1100 |
| DC1-RPP-L3-CX-4155 | **DELETED** DC1-RPP-C12-06 A/B BMS/EPMS Programming | 1d | 2026-07-20 A | 2026-07-20 A | QTS-1020 | 100% | 2026-07-30 | 2026-07-30 | PRM | Commissioning | DH1200 | L3 | RPP | DELETED | DH1100 |
| DC1-RPP-L3-CX-4165 | **DELETED** DC1-RPP-D12-01 A/B FTE | 1d | 2026-07-20 A | 2026-07-20 A | QTS-1020 | 100% | 2026-07-21 | 2026-07-21 | ROS | Commissioning | DH1200 | L3 | RPP | DELETED | DH1100 |
| DC1-RPP-L3-CX-4175 | **DELETED** DC1-RPP-D12-01 A/B L3 Startup | 2d | 2026-07-20 A | 2026-07-20 A | QTS-1020 | 100% | 2026-07-22 | 2026-07-23 | SQD | Commissioning | DH1200 | L3 | RPP | DELETED | DH1100 |
| DC1-RPP-L3-CX-4185 | **DELETED** DC1-RPP-D12-01 A/B BMS/EPMS Programming | 1d | 2026-07-20 A | 2026-07-20 A | QTS-1020 | 100% | 2026-07-24 | 2026-07-24 | PRM | Commissioning | DH1200 | L3 | RPP | DELETED | DH1100 |
| DC1-RPP-L3-CX-4195 | **DELETED** DC1-RPP-D12-02 A/B FTE | 1d | 2026-07-20 A | 2026-07-20 A | QTS-1020 | 100% | 2026-07-21 | 2026-07-21 | ROS | Commissioning | DH1200 | L3 | RPP | DELETED | DH1100 |
| DC1-RPP-L3-CX-4205 | **DELETED** DC1-RPP-D12-02 A/B L3 Startup | 2d | 2026-07-20 A | 2026-07-20 A | QTS-1020 | 100% | 2026-07-22 | 2026-07-23 | SQD | Commissioning | DH1200 | L3 | RPP | DELETED | DH1100 |
| DC1-RPP-L3-CX-4215 | **DELETED** DC1-RPP-D12-02 A/B BMS/EPMS Programming | 1d | 2026-07-20 A | 2026-07-20 A | QTS-1020 | 100% | 2026-07-24 | 2026-07-24 | PRM | Commissioning | DH1200 | L3 | RPP | DELETED | DH1100 |
| DC1-RPP-L3-CX-4225 | **DELETED** DC1-RPP-D12-03 A/B FTE | 1d | 2026-07-20 A | 2026-07-20 A | QTS-1020 | 100% | 2026-07-21 | 2026-07-21 | ROS | Commissioning | DH1200 | L3 | RPP | DELETED | DH1100 |
| DC1-RPP-L3-CX-4235 | **DELETED** DC1-RPP-D12-03 A/B L3 Startup | 2d | 2026-07-20 A | 2026-07-20 A | QTS-1020 | 100% | 2026-07-22 | 2026-07-23 | SQD | Commissioning | DH1200 | L3 | RPP | DELETED | DH1100 |
| DC1-RPP-L3-CX-4245 | **DELETED** DC1-RPP-D12-03 A/B BMS/EPMS Programming | 1d | 2026-07-20 A | 2026-07-20 A | QTS-1020 | 100% | 2026-07-24 | 2026-07-24 | PRM | Commissioning | DH1200 | L3 | RPP | DELETED | DH1100 |
| DC1-RPP-L3-CX-4255 | **DELETED** DC1-RPP-D12-04 A/B FTE | 1d | 2026-07-20 A | 2026-07-20 A | QTS-1020 | 100% | 2026-07-21 | 2026-07-21 | ROS | Commissioning | DH1200 | L3 | RPP | DELETED | DH1100 |
| DC1-RPP-L3-CX-4265 | **DELETED** DC1-RPP-D12-04 A/B L3 Startup | 2d | 2026-07-20 A | 2026-07-20 A | QTS-1020 | 100% | 2026-07-22 | 2026-07-23 | SQD | Commissioning | DH1200 | L3 | RPP | DELETED | DH1100 |
| DC1-RPP-L3-CX-4275 | **DELETED** DC1-RPP-D12-04 A/B BMS/EPMS Programming | 1d | 2026-07-20 A | 2026-07-20 A | QTS-1020 | 100% | 2026-07-24 | 2026-07-24 | PRM | Commissioning | DH1200 | L3 | RPP | DELETED | DH1100 |
| DC1-RPP-L3-CX-4285 | **DELETED** DC1-RPP-D12-05 A/B FTE | 1d | 2026-07-20 A | 2026-07-20 A | QTS-1020 | 100% | 2026-07-21 | 2026-07-21 | ROS | Commissioning | DH1200 | L3 | RPP | DELETED | DH1100 |
| DC1-RPP-L3-CX-4295 | **DELETED** DC1-RPP-D12-05 A/B L3 Startup | 2d | 2026-07-20 A | 2026-07-20 A | QTS-1020 | 100% | 2026-07-22 | 2026-07-23 | SQD | Commissioning | DH1200 | L3 | RPP | DELETED | DH1100 |
| DC1-RPP-L3-CX-4305 | **DELETED** DC1-RPP-D12-05 A/B BMS/EPMS Programming | 1d | 2026-07-20 A | 2026-07-20 A | QTS-1020 | 100% | 2026-07-24 | 2026-07-24 | PRM | Commissioning | DH1200 | L3 | RPP | DELETED | DH1100 |
| DC1-RPP-L3-CX-4315 | **DELETED** DC1-RPP-D12-06 A/B FTE | 1d | 2026-07-20 A | 2026-07-20 A | QTS-1020 | 100% | 2026-07-21 | 2026-07-21 | ROS | Commissioning | DH1200 | L3 | RPP | DELETED | DH1100 |
| DC1-RPP-L3-CX-4325 | **DELETED** DC1-RPP-D12-06 A/B L3 Startup | 2d | 2026-07-20 A | 2026-07-20 A | QTS-1020 | 100% | 2026-07-22 | 2026-07-23 | SQD | Commissioning | DH1200 | L3 | RPP | DELETED | DH1100 |
| DC1-RPP-L3-CX-4335 | **DELETED** DC1-RPP-D12-06 A/B BMS/EPMS Programming | 1d | 2026-07-20 A | 2026-07-20 A | QTS-1020 | 100% | 2026-07-24 | 2026-07-24 | PRM | Commissioning | DH1200 | L3 | RPP | DELETED | DH1100 |
| DC1-RPP-L3-CX-4345 | **DELETED** DC1-RPP-E12-01 A/B FTE | 1d | 2026-07-20 A | 2026-07-20 A | QTS-1020 | 100% | 2026-07-21 | 2026-07-21 | ROS | Commissioning | DH1200 | L3 | RPP | DELETED | DH1100 |
| DC1-RPP-L3-CX-4355 | **DELETED** DC1-RPP-E12-01 A/B L3 Startup | 2d | 2026-07-20 A | 2026-07-20 A | QTS-1020 | 100% | 2026-07-22 | 2026-07-23 | SQD | Commissioning | DH1200 | L3 | RPP | DELETED | DH1100 |
| DC1-RPP-L3-CX-4365 | **DELETED** DC1-RPP-E12-01 A/B BMS/EPMS Programming | 1d | 2026-07-20 A | 2026-07-20 A | QTS-1020 | 100% | 2026-07-24 | 2026-07-24 | PRM | Commissioning | DH1200 | L3 | RPP | DELETED | DH1100 |
| DC1-RPP-L3-CX-4375 | **DELETED** DC1-RPP-E12-02 A/B FTE | 1d | 2026-07-20 A | 2026-07-20 A | QTS-1020 | 100% | 2026-07-21 | 2026-07-21 | ROS | Commissioning | DH1200 | L3 | RPP | DELETED | DH1100 |
| DC1-RPP-L3-CX-4385 | **DELETED** DC1-RPP-E12-02 A/B L3 Startup | 2d | 2026-07-20 A | 2026-07-20 A | QTS-1020 | 100% | 2026-07-22 | 2026-07-23 | SQD | Commissioning | DH1200 | L3 | RPP | DELETED | DH1100 |
| DC1-RPP-L3-CX-4395 | **DELETED** DC1-RPP-E12-02 A/B BMS/EPMS Programming | 1d | 2026-07-20 A | 2026-07-20 A | QTS-1020 | 100% | 2026-07-24 | 2026-07-24 | PRM | Commissioning | DH1200 | L3 | RPP | DELETED | DH1100 |
| DC1-RPP-L3-CX-4405 | **DELETED** DC1-RPP-E12-03 A/B FTE | 1d | 2026-07-20 A | 2026-07-20 A | QTS-1020 | 100% | 2026-07-21 | 2026-07-21 | ROS | Commissioning | DH1200 | L3 | RPP | DELETED | DH1100 |
| DC1-RPP-L3-CX-4415 | **DELETED** DC1-RPP-E12-03 A/B L3 Startup | 2d | 2026-07-20 A | 2026-07-20 A | QTS-1020 | 100% | 2026-07-22 | 2026-07-23 | SQD | Commissioning | DH1200 | L3 | RPP | DELETED | DH1100 |
| DC1-RPP-L3-CX-4425 | **DELETED** DC1-RPP-E12-03 A/B BMS/EPMS Programming | 1d | 2026-07-20 A | 2026-07-20 A | QTS-1020 | 100% | 2026-07-24 | 2026-07-24 | PRM | Commissioning | DH1200 | L3 | RPP | DELETED | DH1100 |
| DC1-RPP-L3-CX-4435 | **DELETED** DC1-RPP-E12-04 A/B FTE | 1d | 2026-07-20 A | 2026-07-20 A | QTS-1020 | 100% | 2026-07-21 | 2026-07-21 | ROS | Commissioning | DH1200 | L3 | RPP | DELETED | DH1100 |
| DC1-RPP-L3-CX-4445 | **DELETED** DC1-RPP-E12-04 A/B L3 Startup | 2d | 2026-07-20 A | 2026-07-20 A | QTS-1020 | 100% | 2026-07-22 | 2026-07-23 | SQD | Commissioning | DH1200 | L3 | RPP | DELETED | DH1100 |
| DC1-RPP-L3-CX-4455 | **DELETED** DC1-RPP-E12-04 A/B BMS/EPMS Programming | 1d | 2026-07-20 A | 2026-07-20 A | QTS-1020 | 100% | 2026-07-24 | 2026-07-24 | PRM | Commissioning | DH1200 | L3 | RPP | DELETED | DH1100 |
| DC1-RPP-L3-CX-4465 | **DELETED** DC1-RPP-E12-05 A/B FTE | 1d | 2026-07-20 A | 2026-07-20 A | QTS-1020 | 100% | 2026-07-21 | 2026-07-21 | ROS | Commissioning | DH1200 | L3 | RPP | DELETED | DH1100 |
| DC1-RPP-L3-CX-4475 | **DELETED** DC1-RPP-E12-05 A/B L3 Startup | 2d | 2026-07-20 A | 2026-07-20 A | QTS-1020 | 100% | 2026-07-22 | 2026-07-23 | SQD | Commissioning | DH1200 | L3 | RPP | DELETED | DH1100 |
| DC1-RPP-L3-CX-4485 | **DELETED** DC1-RPP-E12-05 A/B BMS/EPMS Programming | 1d | 2026-07-20 A | 2026-07-20 A | QTS-1020 | 100% | 2026-07-24 | 2026-07-24 | PRM | Commissioning | DH1200 | L3 | RPP | DELETED | DH1100 |

Notes:
- DC1-RPP-L3-CX-3815: Steps: EC Startup Report; Vendor Startup
- DC1-RPP-L3-CX-3845: Steps: EC Startup Report; Vendor Startup
- DC1-RPP-L3-CX-3875: Steps: EC Startup Report; Vendor Startup
- DC1-RPP-L3-CX-3905: Steps: EC Startup Report; Vendor Startup
- DC1-RPP-L3-CX-3935: Steps: EC Startup Report; Vendor Startup
- DC1-RPP-L3-CX-3965: Steps: EC Startup Report; Vendor Startup
- DC1-RPP-L3-CX-3995: Steps: EC Startup Report; Vendor Startup
- DC1-RPP-L3-CX-4025: Steps: EC Startup Report; Vendor Startup
- DC1-RPP-L3-CX-4055: Steps: EC Startup Report; Vendor Startup
- DC1-RPP-L3-CX-4085: Steps: EC Startup Report; Vendor Startup
- DC1-RPP-L3-CX-4115: Steps: EC Startup Report; Vendor Startup
- DC1-RPP-L3-CX-4145: Steps: EC Startup Report; Vendor Startup
- DC1-RPP-L3-CX-4175: Steps: EC Startup Report; Vendor Startup
- DC1-RPP-L3-CX-4205: Steps: EC Startup Report; Vendor Startup
- DC1-RPP-L3-CX-4235: Steps: EC Startup Report; Vendor Startup
- DC1-RPP-L3-CX-4265: Steps: EC Startup Report; Vendor Startup
- DC1-RPP-L3-CX-4295: Steps: EC Startup Report; Vendor Startup
- DC1-RPP-L3-CX-4325: Steps: EC Startup Report; Vendor Startup
- DC1-RPP-L3-CX-4355: Steps: EC Startup Report; Vendor Startup
- DC1-RPP-L3-CX-4385: Steps: EC Startup Report; Vendor Startup
- DC1-RPP-L3-CX-4415: Steps: EC Startup Report; Vendor Startup
- DC1-RPP-L3-CX-4445: Steps: EC Startup Report; Vendor Startup
- DC1-RPP-L3-CX-4475: Steps: EC Startup Report; Vendor Startup

| ID | Activity | Duration | Start | Finish | Predecessors | Complete | Planned start | Planned finish | Calendar | Vendor Responsible Party | Layton Discipline | Location | CX Level | Equipment | DELETED | D | Notes | Allucent CSI Group | Project Section | Phase-1 | Baseline | Level | Layton Super | Contract | Trade Partner | Phase-1-1 | Project Section-1 | Fragnet Responsible Party | TFO-CONST ONLY | Layton PM |
| --- | --- | --- | --- | --- | --- | --- | --- | --- | --- | --- | --- | --- | --- | --- | --- | --- | --- | --- | --- | --- | --- | --- | --- | --- | --- | --- | --- | --- | --- | --- |
| DC1-RPP-L3-CX-4495 | **DELETED** DC1-RPP-E12-06 A/B FTE | 1d | 2026-07-20 A | 2026-07-20 A | QTS-1020 | 100% | 2026-07-21 | 2026-07-21 |  | ROS | Commissioning | DH1200 | L3 | RPP | DELETED | DH1100 |  |  |  |  |  |  |  |  |  |  |  |  |  |  |
| DC1-RPP-L3-CX-4505 | **DELETED** DC1-RPP-E12-06 A/B L3 Startup | 2d | 2026-07-20 A | 2026-07-20 A | QTS-1020 | 100% | 2026-07-22 | 2026-07-23 |  | SQD | Commissioning | DH1200 | L3 | RPP | DELETED | DH1100 |  |  |  |  |  |  |  |  |  |  |  |  |  |  |
| DC1-RPP-L3-CX-4515 | **DELETED** DC1-RPP-E12-06 A/B BMS/EPMS Programming | 1d | 2026-07-20 A | 2026-07-20 A | QTS-1020 | 100% | 2026-07-24 | 2026-07-24 |  | PRM | Commissioning | DH1200 | L3 | RPP | DELETED | DH1100 |  |  |  |  |  |  |  |  |  |  |  |  |  |  |
| DC1-RPP-L3-CX-4525 | **DELETED** DC1-RPP-F12-01 A/B FTE | 1d | 2026-07-20 A | 2026-07-20 A | QTS-1020 | 100% | 2026-07-21 | 2026-07-21 |  | ROS | Commissioning | DH1200 | L3 | RPP | DELETED | DH1100 |  |  |  |  |  |  |  |  |  |  |  |  |  |  |
| DC1-RPP-L3-CX-4535 | **DELETED** DC1-RPP-F12-01 A/B L3 Startup | 2d | 2026-07-20 A | 2026-07-20 A | QTS-1020 | 100% | 2026-07-22 | 2026-07-23 |  | SQD | Commissioning | DH1200 | L3 | RPP | DELETED | DH1100 |  |  |  |  |  |  |  |  |  |  |  |  |  |  |
| DC1-RPP-L3-CX-4545 | **DELETED** DC1-RPP-F12-01 A/B BMS/EPMS Programming | 1d | 2026-07-20 A | 2026-07-20 A | QTS-1020 | 100% | 2026-07-24 | 2026-07-24 |  | PRM | Commissioning | DH1200 | L3 | RPP | DELETED | DH1100 |  |  |  |  |  |  |  |  |  |  |  |  |  |  |
| DC1-RPP-L3-CX-4555 | **DELETED** DC1-RPP-F12-02 A/B FTE | 1d | 2026-07-20 A | 2026-07-20 A | QTS-1020 | 100% | 2026-07-21 | 2026-07-21 |  | ROS | Commissioning | DH1200 | L3 | RPP | DELETED | DH1100 |  |  |  |  |  |  |  |  |  |  |  |  |  |  |
| DC1-RPP-L3-CX-4565 | **DELETED** DC1-RPP-F12-02 A/B L3 Startup | 2d | 2026-07-20 A | 2026-07-20 A | QTS-1020 | 100% | 2026-07-22 | 2026-07-23 |  | SQD | Commissioning | DH1200 | L3 | RPP | DELETED | DH1100 |  |  |  |  |  |  |  |  |  |  |  |  |  |  |
| DC1-RPP-L3-CX-4575 | **DELETED** DC1-RPP-F12-02 A/B BMS/EPMS Programming | 1d | 2026-07-20 A | 2026-07-20 A | QTS-1020 | 100% | 2026-07-24 | 2026-07-24 |  | PRM | Commissioning | DH1200 | L3 | RPP | DELETED | DH1100 |  |  |  |  |  |  |  |  |  |  |  |  |  |  |
| DC1-RPP-L3-CX-4585 | **DELETED** DC1-RPP-F12-03 A/B FTE | 1d | 2026-07-20 A | 2026-07-20 A | QTS-1020 | 100% | 2026-07-21 | 2026-07-21 |  | ROS | Commissioning | DH1200 | L3 | RPP | DELETED | DH1100 |  |  |  |  |  |  |  |  |  |  |  |  |  |  |
| DC1-RPP-L3-CX-4595 | **DELETED** DC1-RPP-F12-03 A/B L3 Startup | 2d | 2026-07-20 A | 2026-07-20 A | QTS-1020 | 100% | 2026-07-22 | 2026-07-23 |  | SQD | Commissioning | DH1200 | L3 | RPP | DELETED | DH1100 |  |  |  |  |  |  |  |  |  |  |  |  |  |  |
| DC1-RPP-L3-CX-4605 | **DELETED** DC1-RPP-F12-03 A/B BMS/EPMS Programming | 1d | 2026-07-20 A | 2026-07-20 A | QTS-1020 | 100% | 2026-07-24 | 2026-07-24 |  | PRM | Commissioning | DH1200 | L3 | RPP | DELETED | DH1100 |  |  |  |  |  |  |  |  |  |  |  |  |  |  |
| DC1-RPP-L3-CX-4615 | **DELETED** DC1-RPP-F12-04 A/B FTE | 1d | 2026-07-20 A | 2026-07-20 A | QTS-1020 | 100% | 2026-07-21 | 2026-07-21 |  | ROS | Commissioning | DH1200 | L3 | RPP | DELETED | DH1100 |  |  |  |  |  |  |  |  |  |  |  |  |  |  |
| DC1-RPP-L3-CX-4625 | **DELETED** DC1-RPP-F12-04 A/B L3 Startup | 2d | 2026-07-20 A | 2026-07-20 A | QTS-1020 | 100% | 2026-07-22 | 2026-07-23 |  | SQD | Commissioning | DH1200 | L3 | RPP | DELETED | DH1100 |  |  |  |  |  |  |  |  |  |  |  |  |  |  |
| DC1-RPP-L3-CX-4635 | **DELETED** DC1-RPP-F12-04 A/B BMS/EPMS Programming | 1d | 2026-07-20 A | 2026-07-20 A | QTS-1020 | 100% | 2026-07-24 | 2026-07-24 |  | PRM | Commissioning | DH1200 | L3 | RPP | DELETED | DH1100 |  |  |  |  |  |  |  |  |  |  |  |  |  |  |
| DC1-RPP-L3-CX-4645 | **DELETED** DC1-RPP-F12-05 A/B FTE | 1d | 2026-07-20 A | 2026-07-20 A | QTS-1020 | 100% | 2026-07-21 | 2026-07-21 |  | ROS | Commissioning | DH1200 | L3 | RPP | DELETED | DH1100 |  |  |  |  |  |  |  |  |  |  |  |  |  |  |
| DC1-RPP-L3-CX-4655 | **DELETED** DC1-RPP-F12-05 A/B L3 Startup | 2d | 2026-07-20 A | 2026-07-20 A | QTS-1020 | 100% | 2026-07-22 | 2026-07-23 |  | SQD | Commissioning | DH1200 | L3 | RPP | DELETED | DH1100 |  |  |  |  |  |  |  |  |  |  |  |  |  |  |
| DC1-RPP-L3-CX-4665 | **DELETED** DC1-RPP-F12-05 A/B BMS/EPMS Programming | 1d | 2026-07-20 A | 2026-07-20 A | QTS-1020 | 100% | 2026-07-24 | 2026-07-24 |  | PRM | Commissioning | DH1200 | L3 | RPP | DELETED | DH1100 |  |  |  |  |  |  |  |  |  |  |  |  |  |  |
| DC1-RPP-L3-CX-4675 | **DELETED** DC1-RPP-F12-06 A/B FTE | 1d | 2026-07-20 A | 2026-07-20 A | QTS-1020 | 100% | 2026-07-21 | 2026-07-21 |  | ROS | Commissioning | DH1200 | L3 | RPP | DELETED | DH1100 |  |  |  |  |  |  |  |  |  |  |  |  |  |  |
| DC1-RPP-L3-CX-4685 | **DELETED** DC1-RPP-F12-06 A/B L3 Startup | 2d | 2026-07-20 A | 2026-07-20 A | QTS-1020 | 100% | 2026-07-22 | 2026-07-23 |  | SQD | Commissioning | DH1200 | L3 | RPP | DELETED | DH1100 |  |  |  |  |  |  |  |  |  |  |  |  |  |  |
| DC1-RPP-L3-CX-4695 | **DELETED** DC1-RPP-F12-06 A/B BMS/EPMS Programming | 1d | 2026-07-20 A | 2026-07-20 A | QTS-1020 | 100% | 2026-07-24 | 2026-07-24 |  | PRM | Commissioning | DH1200 | L3 | RPP | DELETED | DH1100 |  |  |  |  |  |  |  |  |  |  |  |  |  |  |
| QTS-1008580 | **DELETED** Zone 3 / Rooftop // Pull Wire From VFD to Pumps | 7d | 2026-07-21 A | 2026-07-21 A | QTS-1020 | 100% | 2026-07-22 | 2026-07-29 | QTS-PHX3 DC1 - 6 day w/ Holidays |  | Electrical | DH2200 |  |  | DELETED | DH1100 | Manpower | 01ADMIN | Construction | Phase 2 | IGMP | Roof | Electrical | BAB | REI |  |  |  |  |  |
| QTS-1011990 | **DELETED** Board Room #0102 // Rulon Ceiling | 4d | 2026-07-21 A | 2026-07-21 A | QTS-1020 | 100% | 2026-07-22 | 2026-07-25 | QTS-PHX3 DC1 - 6 day w/ Holidays |  | Build Out | FOH |  |  | DELETED | DH1100 |  |  | Construction |  | IGMP | Level 1 | Ed Carter | BAB |  | Phase 1 | Construction |  |  |  |
| QTS-1008590 | **DELETED** Zone 3 / Rooftop // Terminate Wire at Zone 2 CHWPs | 2d | 2026-07-22 A | 2026-07-22 A | QTS-1020 | 100% | 2026-07-30 | 2026-07-31 | QTS-PHX3 DC1 - 6 day w/ Holidays |  | Electrical | DH2200 |  |  | DELETED | DH1100 |  | 01ADMIN | Construction | Phase 2 | IGMP | Roof | Electrical | BAB | REI |  |  |  |  |  |
| QTS-1008600 | **DELETED** Zone 3 / Rooftop // Terminate Wire at Zone 2 Chillers | 2d | 2026-07-22 A | 2026-07-22 A | QTS-1020 | 100% | 2026-07-30 | 2026-07-31 | QTS-PHX3 DC1 - 6 day w/ Holidays |  | Electrical | DH2200 |  |  | DELETED | DH1100 |  | 01ADMIN | Construction | Phase 2 | IGMP | Roof | Electrical | BAB | REI |  |  |  |  |  |
| QTS-1008650 | **DELETED** Zone 3 / Rooftop // Terminate Wire at Zone 2 VFDs | 1d | 2026-07-22 A | 2026-07-22 A | QTS-1020 | 100% | 2026-07-30 | 2026-07-30 | QTS-PHX3 DC1 - 6 day w/ Holidays |  | Electrical | DH2200 |  |  | DELETED | DH1100 |  | 01ADMIN | Construction | Phase 2 | IGMP | Roof | Electrical | BAB | REI |  |  |  |  |  |
| A1050 | **DELETE** Material Delivery | 25d | 2026-07-28 A | 2026-07-28 A | QTS-1020 | 100% | 2026-07-29 | 2026-09-01 | **GLOBAL - 5 Day Workweek w/ Basic Holidays |  |  |  |  |  | DELETED | DH1100 |  |  |  |  |  |  | Andrew Melis | TFO |  |  |  | AZ Custom Designs | TFO CONST |  |
| QTS-1009750 | **DELETE** Freight Elevator E3 // Install Elevator Flooring | 1d | 2026-07-28 A | 2026-07-28 A | QTS-1020 | 100% | 2026-08-29 | 2026-08-29 | QTS-PHX3 DC1 - 6 day w/ Holidays |  | Build Out | FOH |  |  | DELETED |  |  |  | Construction |  | IGMP | Level 1 | Ben Ribble | BAB | Wholesale Flooring | Phase 1 | Construction |  |  |  |
| QTS-11001 | **DELETED** DH 2300 / Closeout // Turnover Float | 5d | 2026-07-28 A | 2026-07-28 A | QTS-1020 | 100% | 2026-09-17 | 2026-09-23 |  |  | Closeout |  |  |  | DELETED | DH1100 |  |  | Close Out |  | IGMP | Level 2 |  | BAB | Layton | Phase 3 | Close Out |  |  | TTodaro |
| QTS-11011 | **DELETED** DH 1300 / Closeout // Turnover Float | 7d | 2026-07-28 A | 2026-07-28 A | QTS-1020 | 100% | 2026-07-29 | 2026-08-06 |  |  | Closeout |  |  |  | DELETED | DH1100 |  |  | Close Out |  | IGMP | Level 1 |  | BAB | Layton | Phase 3 | Close Out |  |  | TTodaro |
| QTS-28811 | **DELETED** DH 1100 / Closeout // Remove & Repair Temporary Hot Aisle Containment | 1d | 2026-07-28 A | 2026-07-28 A | QTS-1020 | 100% | 2026-08-12 | 2026-08-12 |  |  | Closeout |  |  |  | DELETED | DH1100 |  |  | Close Out | Phase 1 | IGMP | Level 1 |  | BAB | Layton |  |  |  |  | TTodaro |
| QTS-30851 | **DELETED** DH 1200 / Closeout // Remove & Repair Temporary Hot Aisle Containment | 10d | 2026-07-28 A | 2026-07-28 A | QTS-1020 | 100% | 2026-09-02 | 2026-09-16 |  |  | Closeout |  |  |  | DELETED | DH1100 |  |  | Close Out | Phase 2 | IGMP | Level 1 |  | BAB | Layton |  |  |  |  | TTodaro |
| QTS-30881 | **DELETED** DH 2100 / Closeout // Turnover Float | 0d | 2026-07-28 A | 2026-07-28 A | QTS-1020 | 100% | 2026-07-29 | 2026-07-29 |  |  | Closeout |  |  |  | DELETED | DH1100 |  |  | Close Out |  | IGMP | Level 2 |  | BAB | Layton | Phase 1 | Close Out |  |  | TTodaro |
| QTS-30891 | **DELETED** DH 1200 / Closeout // Turnover Float | 7d | 2026-07-28 A | 2026-07-28 A | QTS-1020 | 100% | 2026-09-17 | 2026-09-25 |  |  | Closeout |  |  |  | DELETED | DH1100 |  |  | Close Out |  | IGMP | Level 1 |  | BAB | Layton | Phase 2 | Close Out |  |  | TTodaro |
| QTS-30981 | **DELETED** DH 2200 / Closeout // Remove & Repair Temporary Hot Aisle Containment | 10d | 2026-07-28 A | 2026-07-28 A | QTS-1020 | 100% | 2026-09-18 | 2026-10-01 |  |  | Closeout |  |  |  | DELETED | DH1100 |  |  | Close Out | Phase 2 | IGMP | Level 2 |  | BAB | Layton |  |  |  |  | TTodaro |
| QTS-31001 | **DELETED** DH 2200 / Closeout // Turnover Float | 9d | 2026-07-28 A | 2026-07-28 A | QTS-1020 | 100% | 2026-10-02 | 2026-10-14 |  |  | Closeout |  |  |  | DELETED | DH1100 |  |  | Close Out |  | IGMP | Level 2 |  | BAB | Layton | Phase 2 | Close Out |  |  | TTodaro |
| QTS-7781 | **DELETED** DH 2300 / Closeout // Remove & Repair Temporary Hot Aisle Containment | 10d | 2026-07-28 A | 2026-07-28 A | QTS-1020 | 100% | 2026-09-02 | 2026-09-16 |  |  | Closeout |  |  |  | DELETED | DH1100 |  |  | Close Out |  | IGMP | Level 2 |  | BAB | Layton | Phase 3 | Close Out |  |  | TTodaro |
| QTS-7791 | **DELETED** DH 1300 / Closeout // Remove & Repair Temporary Hot Aisle Containment | 10d | 2026-07-28 A | 2026-07-28 A | QTS-1020 | 100% | 2026-07-29 | 2026-08-11 |  |  | Closeout |  |  |  | DELETED | DH1100 |  |  | Close Out |  | IGMP | Level 1 |  | BAB | Layton | Phase 3 | Close Out |  |  | TTodaro |
| QTS-1009170 | **DELETED** Zone 3 / Mechanical Yard // Fire Inspection by City on Generators | 2d | 2026-07-29 A | 2026-07-29 A | QTS-1020 | 100% | 2026-08-15 | 2026-08-17 | QTS-PHX3 DC1 - 6 day w/ Holidays |  | Electrical | Gen Yard |  | GEN | DELETED |  |  |  | Construction |  | IGMP | Level 1 | Electrical | BAB | Layton | Phase 2 | Construction |  |  |  |
| DC1-COMP-L3-CX-2630 | **DELETED** DC1-COMP-A23-01 FTE (2) | 1d | 2026-08-04 A | 2026-08-04 A | QTS-1020 | 100% | 2026-08-05 | 2026-08-05 |  | ROS | Commissioning | DH2300 | L3 | POD AC | DELETED |  |  |  |  |  |  |  |  | BAB |  |  |  |  |  |  |
| DC1-COMP-L3-CX-2640 | **DELETED** DC1-COMP-A23-01 L3 Startup (2) | 2d | 2026-08-04 A | 2026-08-04 A | DC1-COMP-L3-CX-2630, QTS-1020 | 100% | 2026-08-06 | 2026-08-07 |  | CAP | Commissioning | DH2300 | L3 | POD AC | DELETED |  | Vendor Only |  |  |  |  |  |  | BAB |  |  |  |  |  |  |
| DC1-COMP-L3-CX-2650 | **DELETED** DC1-COMP-A23-01 BMS/EPMS Programming (2) | 1d | 2026-08-04 A | 2026-08-04 A | DC1-COMP-L3-CX-2640, QTS-1020 | 100% | 2026-08-10 | 2026-08-10 |  | PRM | Commissioning | DH2300 | L3 | POD AC | DELETED |  |  |  |  |  |  |  |  | BAB |  |  |  |  |  |  |
| DC1-COMP-L3-CX-2660 | **DELETED** DC1-COMP-B23-01 FTE (2) | 1d | 2026-08-04 A | 2026-08-04 A | QTS-1020 | 100% | 2026-08-05 | 2026-08-05 |  | ROS | Commissioning | DH2300 | L3 | POD AC | DELETED |  |  |  |  |  |  |  |  | BAB |  |  |  |  |  |  |
| DC1-COMP-L3-CX-2670 | **DELETED** DC1-COMP-B23-01 L3 Startup (2) | 2d | 2026-08-04 A | 2026-08-04 A | DC1-COMP-L3-CX-2660, QTS-1020 | 100% | 2026-08-06 | 2026-08-07 |  | CAP | Commissioning | DH2300 | L3 | POD AC | DELETED |  | Vendor Only |  |  |  |  |  |  | BAB |  |  |  |  |  |  |
| DC1-COMP-L3-CX-2680 | **DELETED** DC1-COMP-B23-01 BMS/EPMS Programming (2) | 1d | 2026-08-04 A | 2026-08-04 A | DC1-COMP-L3-CX-2670, QTS-1020 | 100% | 2026-08-10 | 2026-08-10 |  | PRM | Commissioning | DH2300 | L3 | POD AC | DELETED |  |  |  |  |  |  |  |  | BAB |  |  |  |  |  |  |
| DC1-COMP-L3-CX-2690 | **DELETED** DC1-COMP-C23-01 FTE (2) | 1d | 2026-08-04 A | 2026-08-04 A | QTS-1020 | 100% | 2026-08-05 | 2026-08-05 |  | ROS | Commissioning | DH2300 | L3 | POD AC | DELETED |  |  |  |  |  |  |  |  | BAB |  |  |  |  |  |  |
| DC1-COMP-L3-CX-2700 | **DELETED** DC1-COMP-C23-01 L3 Startup (2) | 2d | 2026-08-04 A | 2026-08-04 A | DC1-COMP-L3-CX-2690, QTS-1020 | 100% | 2026-08-06 | 2026-08-07 |  | CAP | Commissioning | DH2300 | L3 | POD AC | DELETED |  | Vendor Only |  |  |  |  |  |  | BAB |  |  |  |  |  |  |
| DC1-COMP-L3-CX-2710 | **DELETED** DC1-COMP-C23-01 BMS/EPMS Programming (2) | 1d | 2026-08-04 A | 2026-08-04 A | DC1-COMP-L3-CX-2700, QTS-1020 | 100% | 2026-08-10 | 2026-08-10 |  | PRM | Commissioning | DH2300 | L3 | POD AC | DELETED |  |  |  |  |  |  |  |  | BAB |  |  |  |  |  |  |
| DC1-COMP-L3-CX-2720 | **DELETED** DC1-COMP-D23-01 FTE (2) | 1d | 2026-08-04 A | 2026-08-04 A | QTS-1020 | 100% | 2026-08-05 | 2026-08-05 |  | ROS | Commissioning | DH2300 | L3 | POD AC | DELETED |  |  |  |  |  |  |  |  | BAB |  |  |  |  |  |  |
| DC1-COMP-L3-CX-2730 | **DELETED** DC1-COMP-D23-01 L3 Startup (2) | 2d | 2026-08-04 A | 2026-08-04 A | DC1-COMP-L3-CX-2720, QTS-1020 | 100% | 2026-08-06 | 2026-08-07 |  | CAP | Commissioning | DH2300 | L3 | POD AC | DELETED |  | Vendor Only |  |  |  |  |  |  | BAB |  |  |  |  |  |  |
| DC1-COMP-L3-CX-2740 | **DELETED** DC1-COMP-D23-01 BMS/EPMS Programming (2) | 1d | 2026-08-04 A | 2026-08-04 A | DC1-COMP-L3-CX-2730, QTS-1020 | 100% | 2026-08-10 | 2026-08-10 |  | PRM | Commissioning | DH2300 | L3 | POD AC | DELETED |  |  |  |  |  |  |  |  | BAB |  |  |  |  |  |  |
| DC1-COMP-L3-CX-2750 | **DELETED** DC1-COMP-E23-01 FTE (2) | 1d | 2026-08-04 A | 2026-08-04 A | QTS-1020 | 100% | 2026-08-05 | 2026-08-05 |  | ROS | Commissioning | DH2300 | L3 | POD AC | DELETED |  |  |  |  |  |  |  |  | BAB |  |  |  |  |  |  |
| DC1-COMP-L3-CX-2760 | **DELETED** DC1-COMP-E23-01 L3 Startup (2) | 2d | 2026-08-04 A | 2026-08-04 A | DC1-COMP-L3-CX-2750, QTS-1020 | 100% | 2026-08-06 | 2026-08-07 |  | CAP | Commissioning | DH2300 | L3 | POD AC | DELETED |  | Vendor Only |  |  |  |  |  |  | BAB |  |  |  |  |  |  |
| DC1-COMP-L3-CX-2770 | **DELETED** DC1-COMP-E23-01 BMS/EPMS Programming (2) | 1d | 2026-08-04 A | 2026-08-04 A | DC1-COMP-L3-CX-2760, QTS-1020 | 100% | 2026-08-10 | 2026-08-10 |  | PRM | Commissioning | DH2300 | L3 | POD AC | DELETED |  |  |  |  |  |  |  |  | BAB |  |  |  |  |  |  |
| DC1-COMP-L3-CX-2780 | **DELETED** DC1-COMP-F23-01 FTE (2) | 1d | 2026-08-04 A | 2026-08-04 A | QTS-1020 | 100% | 2026-08-05 | 2026-08-05 |  | ROS | Commissioning | DH2300 | L3 | POD AC | DELETED |  |  |  |  |  |  |  |  | BAB |  |  |  |  |  |  |
| DC1-COMP-L3-CX-2790 | **DELETED** DC1-COMP-F23-01 L3 Startup (2) | 2d | 2026-08-04 A | 2026-08-04 A | DC1-COMP-L3-CX-2780, QTS-1020 | 100% | 2026-08-06 | 2026-08-07 |  | CAP | Commissioning | DH2300 | L3 | POD AC | DELETED |  | Vendor Only |  |  |  |  |  |  | BAB |  |  |  |  |  |  |
| DC1-COMP-L3-CX-2800 | **DELETED** DC1-COMP-F23-01 BMS/EPMS Programming (2) | 1d | 2026-08-04 A | 2026-08-04 A | DC1-COMP-L3-CX-2790, QTS-1020 | 100% | 2026-08-10 | 2026-08-10 |  | PRM | Commissioning | DH2300 | L3 | POD AC | DELETED |  |  |  |  |  |  |  |  | BAB |  |  |  |  |  |  |
| DC1-COMP-L3-CX-2810 | **DELETED** DC1-COMP-R23-01 FTE (2) | 1d | 2026-08-04 A | 2026-08-04 A | QTS-1020 | 100% | 2026-08-05 | 2026-08-05 |  | ROS | Commissioning | DH2300 | L3 | POD AC | DELETED |  |  |  |  |  |  |  |  | BAB |  |  |  |  |  |  |
| DC1-COMP-L3-CX-2820 | **DELETED** DC1-COMP-R23-01 L3 Startup (2) | 2d | 2026-08-04 A | 2026-08-04 A | DC1-COMP-L3-CX-2810, QTS-1020 | 100% | 2026-08-06 | 2026-08-07 |  | CAP | Commissioning | DH2300 | L3 | POD AC | DELETED |  | Vendor Only |  |  |  |  |  |  | BAB |  |  |  |  |  |  |
| DC1-COMP-L3-CX-2830 | **DELETED** DC1-COMP-R23-01 BMS/EPMS Programming (2) | 1d | 2026-08-04 A | 2026-08-04 A | DC1-COMP-L3-CX-2820, QTS-1020 | 100% | 2026-08-10 | 2026-08-10 |  | PRM | Commissioning | DH2300 | L3 | POD AC | DELETED |  |  |  |  |  |  |  |  | BAB |  |  |  |  |  |  |
| DC1-COMP-L3-CX-2840 | **DELETED** DC1-COMP-A13-01 FTE (2) | 1d | 2026-08-04 A | 2026-08-04 A | DC1-MOD1-L3-CX-2840, QTS-1020 | 100% | 2026-08-05 | 2026-08-05 |  | ROS | Commissioning | DH1300 | L3 | POD AC | DELETED |  |  |  |  |  |  |  |  | BAB |  |  |  |  |  |  |
| DC1-COMP-L3-CX-2850 | **DELETED** DC1-COMP-A13-01 L3 Startup (2) | 2d | 2026-08-04 A | 2026-08-04 A | DC1-COMP-L3-CX-2840, QTS-1020 | 100% | 2026-08-06 | 2026-08-07 |  | CAP | Commissioning | DH1300 | L3 | POD AC | DELETED |  | Vendor Only |  |  |  |  |  |  | BAB |  |  |  |  |  |  |
| DC1-COMP-L3-CX-2860 | **DELETED** DC1-COMP-A13-01 BMS/EPMS Programming (2) | 1d | 2026-08-04 A | 2026-08-04 A | DC1-COMP-L3-CX-2850, QTS-1020 | 100% | 2026-08-10 | 2026-08-10 |  | PRM | Commissioning | DH1300 | L3 | POD AC | DELETED |  |  |  |  |  |  |  |  | BAB |  |  |  |  |  |  |
| DC1-COMP-L3-CX-2870 | **DELETED** DC1-COMP-B13-01 FTE (2) | 1d | 2026-08-04 A | 2026-08-04 A | DC1-MOD1-L3-CX-2870, QTS-1020 | 100% | 2026-08-05 | 2026-08-05 |  | ROS | Commissioning | DH1300 | L3 | POD AC | DELETED |  |  |  |  |  |  |  |  | BAB |  |  |  |  |  |  |
| DC1-COMP-L3-CX-2880 | **DELETED** DC1-COMP-B13-01 L3 Startup (2) | 2d | 2026-08-04 A | 2026-08-04 A | DC1-COMP-L3-CX-2870, QTS-1020 | 100% | 2026-08-06 | 2026-08-07 |  | CAP | Commissioning | DH1300 | L3 | POD AC | DELETED |  | Vendor Only |  |  |  |  |  |  | BAB |  |  |  |  |  |  |
| DC1-COMP-L3-CX-2890 | **DELETED** DC1-COMP-B13-01 BMS/EPMS Programming (2) | 1d | 2026-08-04 A | 2026-08-04 A | DC1-COMP-L3-CX-2880, QTS-1020 | 100% | 2026-08-10 | 2026-08-10 |  | PRM | Commissioning | DH1300 | L3 | POD AC | DELETED |  |  |  |  |  |  |  |  | BAB |  |  |  |  |  |  |
| DC1-COMP-L3-CX-2900 | **DELETED** DC1-COMP-C13-01 FTE (2) | 1d | 2026-08-04 A | 2026-08-04 A | DC1-MOD1-L3-CX-2900, QTS-1020 | 100% | 2026-08-05 | 2026-08-05 |  | ROS | Commissioning | DH1300 | L3 | POD AC | DELETED |  |  |  |  |  |  |  |  | BAB |  |  |  |  |  |  |
| DC1-COMP-L3-CX-2910 | **DELETED** DC1-COMP-C13-01 L3 Startup (2) | 2d | 2026-08-04 A | 2026-08-04 A | DC1-COMP-L3-CX-2900, QTS-1020 | 100% | 2026-08-06 | 2026-08-07 |  | CAP | Commissioning | DH1300 | L3 | POD AC | DELETED |  | Vendor Only |  |  |  |  |  |  | BAB |  |  |  |  |  |  |
| DC1-COMP-L3-CX-2920 | **DELETED** DC1-COMP-C13-01 BMS/EPMS Programming (2) | 1d | 2026-08-04 A | 2026-08-04 A | DC1-COMP-L3-CX-2910, QTS-1020 | 100% | 2026-08-10 | 2026-08-10 |  | PRM | Commissioning | DH1300 | L3 | POD AC | DELETED |  |  |  |  |  |  |  |  | BAB |  |  |  |  |  |  |
| DC1-COMP-L3-CX-2930 | **DELETED** DC1-COMP-D13-01 FTE (2) | 1d | 2026-08-04 A | 2026-08-04 A | DC1-MOD1-L3-CX-2930, QTS-1020 | 100% | 2026-08-05 | 2026-08-05 |  | ROS | Commissioning | DH1300 | L3 | POD AC | DELETED |  |  |  |  |  |  |  |  | BAB |  |  |  |  |  |  |

Notes:
- DC1-RPP-L3-CX-4505: Steps: EC Startup Report; Vendor Startup
- DC1-RPP-L3-CX-4535: Steps: EC Startup Report; Vendor Startup
- DC1-RPP-L3-CX-4565: Steps: EC Startup Report; Vendor Startup
- DC1-RPP-L3-CX-4595: Steps: EC Startup Report; Vendor Startup
- DC1-RPP-L3-CX-4625: Steps: EC Startup Report; Vendor Startup
- DC1-RPP-L3-CX-4655: Steps: EC Startup Report; Vendor Startup
- DC1-RPP-L3-CX-4685: Steps: EC Startup Report; Vendor Startup
- QTS-1008580: allucent_notes_20251014_152335: David Wiltberger on 2025-08-19 09:08: changed pick order / David Wiltberger on 2025-09-02 10:09: Moving to accommodate roofing in Zone 1 / David Wiltberger on 2025-09-24 04:09: BAM not completed Potential Delay / David Wiltberger on 2025-09-30 12:09: BAM did not complete / David Wiltberger on 2025-10-14 10:10: set on recovery schedule / allucent_notes: David Wiltberger on 2025-08-19 09:08: changed pick order / allucent_notes: 2025-08-19 09:08 - User: David Wiltberger - Date Added: 2025-08-19 09:08 - Note: changed pick order / 2025-09-02 10:09 - User: David Wiltberger - Date Added: 2025-09-02 10:09 - Note: Moving to accommodate roofing in Zone 1 / 2025-09-24 04:09 - User: Dav
- QTS-1011990: Scheduler Notes: No Rulon
- QTS-1008590: allucent_notes_20251014_152335: David Wiltberger on 2025-08-19 09:08: changed pick order / David Wiltberger on 2025-09-02 10:09: Moving to accommodate roofing in Zone 1 / David Wiltberger on 2025-09-24 04:09: BAM not completed Potential Delay / David Wiltberger on 2025-09-30 12:09: BAM did not complete / David Wiltberger on 2025-10-14 10:10: set on recovery schedule / allucent_notes: David Wiltberger on 2025-08-19 09:08: changed pick order / allucent_notes: 2025-08-19 09:08 - User: David Wiltberger - Date Added: 2025-08-19 09:08 - Note: changed pick order / 2025-09-02 10:09 - User: David Wiltberger - Date Added: 2025-09-02 10:09 - Note: Moving to accommodate roofing in Zone 1 / 2025-09-24 04:09 - User: Dav
- QTS-1008600: allucent_notes_20251014_152335: David Wiltberger on 2025-08-19 09:08: changed pick order / David Wiltberger on 2025-09-02 10:09: Moving to accommodate roofing in Zone 1 / David Wiltberger on 2025-09-24 04:09: BAM not completed Potential Delay / David Wiltberger on 2025-09-30 12:09: BAM did not complete / David Wiltberger on 2025-10-14 10:10: set on recovery schedule / allucent_notes: David Wiltberger on 2025-08-19 09:08: changed pick order / allucent_notes: 2025-08-19 09:08 - User: David Wiltberger - Date Added: 2025-08-19 09:08 - Note: changed pick order / 2025-09-02 10:09 - User: David Wiltberger - Date Added: 2025-09-02 10:09 - Note: Moving to accommodate roofing in Zone 1 / 2025-09-24 04:09 - User: Dav
- QTS-1008650: allucent_notes_20251014_152335: David Wiltberger on 2025-08-19 09:08: changed pick order / David Wiltberger on 2025-09-02 10:09: Moving to accommodate roofing in Zone 1 / David Wiltberger on 2025-09-24 04:09: BAM not completed Potential Delay / David Wiltberger on 2025-09-30 12:09: BAM did not complete / David Wiltberger on 2025-10-14 10:10: set on recovery schedule / allucent_notes: David Wiltberger on 2025-08-19 09:08: changed pick order / allucent_notes: 2025-08-19 09:08 - User: David Wiltberger - Date Added: 2025-08-19 09:08 - Note: changed pick order / 2025-09-02 10:09 - User: David Wiltberger - Date Added: 2025-09-02 10:09 - Note: Moving to accommodate roofing in Zone 1 / 2025-09-24 04:09 - User: Dav

| ID | Activity | Duration | Start | Finish | Predecessors | Complete | Planned start | Planned finish | Notes | Vendor Responsible Party | Layton Discipline | Location | CX Level | Equipment | DELETED | Contract |
| --- | --- | --- | --- | --- | --- | --- | --- | --- | --- | --- | --- | --- | --- | --- | --- | --- |
| DC1-COMP-L3-CX-2940 | **DELETED** DC1-COMP-D13-01 L3 Startup (2) | 2d | 2026-08-04 A | 2026-08-04 A | DC1-COMP-L3-CX-2930, QTS-1020 | 100% | 2026-08-06 | 2026-08-07 | Vendor Only | CAP | Commissioning | DH1300 | L3 | POD AC | DELETED | BAB |
| DC1-COMP-L3-CX-2950 | **DELETED** DC1-COMP-D13-01 BMS/EPMS Programming (2) | 1d | 2026-08-04 A | 2026-08-04 A | DC1-COMP-L3-CX-2940, QTS-1020 | 100% | 2026-08-10 | 2026-08-10 |  | PRM | Commissioning | DH1300 | L3 | POD AC | DELETED | BAB |
| DC1-COMP-L3-CX-2960 | **DELETED** DC1-COMP-E13-01 FTE (2) | 1d | 2026-08-04 A | 2026-08-04 A | DC1-MOD1-L3-CX-2960, QTS-1020 | 100% | 2026-08-05 | 2026-08-05 |  | ROS | Commissioning | DH1300 | L3 | POD AC | DELETED | BAB |
| DC1-COMP-L3-CX-2970 | **DELETED** DC1-COMP-E13-01 L3 Startup (2) | 2d | 2026-08-04 A | 2026-08-04 A | DC1-COMP-L3-CX-2960, QTS-1020 | 100% | 2026-08-06 | 2026-08-07 | Vendor Only | CAP | Commissioning | DH1300 | L3 | POD AC | DELETED | BAB |
| DC1-COMP-L3-CX-2980 | **DELETED** DC1-COMP-E13-01 BMS/EPMS Programming (2) | 1d | 2026-08-04 A | 2026-08-04 A | DC1-COMP-L3-CX-2970, QTS-1020 | 100% | 2026-08-10 | 2026-08-10 |  | PRM | Commissioning | DH1300 | L3 | POD AC | DELETED | BAB |
| DC1-COMP-L3-CX-2990 | **DELETED** DC1-COMP-F13-01 FTE (2) | 1d | 2026-08-04 A | 2026-08-04 A | DC1-MOD1-L3-CX-2990, QTS-1020 | 100% | 2026-08-05 | 2026-08-05 |  | ROS | Commissioning | DH1300 | L3 | POD AC | DELETED | BAB |
| DC1-COMP-L3-CX-3000 | **DELETED** DC1-COMP-F13-01 L3 Startup (2) | 2d | 2026-08-04 A | 2026-08-04 A | DC1-COMP-L3-CX-2990, QTS-1020 | 100% | 2026-08-06 | 2026-08-07 | Vendor Only | CAP | Commissioning | DH1300 | L3 | POD AC | DELETED | BAB |
| DC1-COMP-L3-CX-3010 | **DELETED** DC1-COMP-F13-01 BMS/EPMS Programming (2) | 1d | 2026-08-04 A | 2026-08-04 A | DC1-COMP-L3-CX-3000, QTS-1020 | 100% | 2026-08-10 | 2026-08-10 |  | PRM | Commissioning | DH1300 | L3 | POD AC | DELETED | BAB |
| DC1-COMP-L3-CX-3020 | **DELETED** DC1-COMP-R13-01 FTE (2) | 1d | 2026-08-04 A | 2026-08-04 A | DC1-MOD1-L3-CX-3020, QTS-1020 | 100% | 2026-08-05 | 2026-08-05 |  | ROS | Commissioning | DH1300 | L3 | POD AC | DELETED | BAB |
| DC1-COMP-L3-CX-3030 | **DELETED** DC1-COMP-R13-01 L3 Startup (2) | 2d | 2026-08-04 A | 2026-08-04 A | DC1-COMP-L3-CX-3020, QTS-1020 | 100% | 2026-08-06 | 2026-08-07 | Vendor Only | CAP | Commissioning | DH1300 | L3 | POD AC | DELETED | BAB |
| DC1-COMP-L3-CX-3040 | **DELETED** DC1-COMP-R13-01 BMS/EPMS Programming (2) | 1d | 2026-08-04 A | 2026-08-04 A | DC1-COMP-L3-CX-3030, QTS-1020 | 100% | 2026-08-10 | 2026-08-10 |  | PRM | Commissioning | DH1300 | L3 | POD AC | DELETED | BAB |
| DC1-FAN-L3-CX-2630 | **DELETED** DC1-FAN-A23-01 FTE (2) | 1d | 2026-08-04 A | 2026-08-04 A | QTS-1020 | 100% | 2026-08-05 | 2026-08-05 |  | ROS | Commissioning | DH2300 | L3 | POD AC | DELETED | BAB |
| DC1-FAN-L3-CX-2640 | **DELETED** DC1-FAN-A23-01 L3 Startup (2) | 2d | 2026-08-04 A | 2026-08-04 A | DC1-FAN-L3-CX-2630, QTS-1020 | 100% | 2026-08-06 | 2026-08-07 | Vendor Only | FBB | Commissioning | DH2300 | L3 | POD AC | DELETED | BAB |
| DC1-FAN-L3-CX-2650 | **DELETED** DC1-FAN-A23-01 BMS/EPMS Programming (2) | 1d | 2026-08-04 A | 2026-08-04 A | DC1-FAN-L3-CX-2640, QTS-1020 | 100% | 2026-08-10 | 2026-08-10 |  | PRM | Commissioning | DH2300 | L3 | POD AC | DELETED | BAB |
| DC1-FAN-L3-CX-2660 | **DELETED** DC1-FAN-B23-01 FTE (2) | 1d | 2026-08-04 A | 2026-08-04 A | QTS-1020 | 100% | 2026-08-05 | 2026-08-05 |  | ROS | Commissioning | DH2300 | L3 | POD AC | DELETED | BAB |
| DC1-FAN-L3-CX-2670 | **DELETED** DC1-FAN-B23-01 L3 Startup (2) | 2d | 2026-08-04 A | 2026-08-04 A | DC1-FAN-L3-CX-2660, QTS-1020 | 100% | 2026-08-06 | 2026-08-07 | Vendor Only | FBB | Commissioning | DH2300 | L3 | POD AC | DELETED | BAB |
| DC1-FAN-L3-CX-2680 | **DELETED** DC1-FAN-B23-01 BMS/EPMS Programming (2) | 1d | 2026-08-04 A | 2026-08-04 A | DC1-FAN-L3-CX-2670, QTS-1020 | 100% | 2026-08-10 | 2026-08-10 |  | PRM | Commissioning | DH2300 | L3 | POD AC | DELETED | BAB |
| DC1-FAN-L3-CX-2690 | **DELETED** DC1-FAN-C23-01 FTE (2) | 1d | 2026-08-04 A | 2026-08-04 A | QTS-1020 | 100% | 2026-08-05 | 2026-08-05 |  | ROS | Commissioning | DH2300 | L3 | POD AC | DELETED | BAB |
| DC1-FAN-L3-CX-2700 | **DELETED** DC1-FAN-C23-01 L3 Startup (2) | 2d | 2026-08-04 A | 2026-08-04 A | DC1-FAN-L3-CX-2690, QTS-1020 | 100% | 2026-08-06 | 2026-08-07 | Vendor Only | FBB | Commissioning | DH2300 | L3 | POD AC | DELETED | BAB |
| DC1-FAN-L3-CX-2710 | **DELETED** DC1-FAN-C23-01 BMS/EPMS Programming (2) | 1d | 2026-08-04 A | 2026-08-04 A | DC1-FAN-L3-CX-2700, QTS-1020 | 100% | 2026-08-10 | 2026-08-10 |  | PRM | Commissioning | DH2300 | L3 | POD AC | DELETED | BAB |
| DC1-FAN-L3-CX-2720 | **DELETED** DC1-FAN-D23-01 FTE (2) | 1d | 2026-08-04 A | 2026-08-04 A | QTS-1020 | 100% | 2026-08-05 | 2026-08-05 |  | ROS | Commissioning | DH2300 | L3 | POD AC | DELETED | BAB |
| DC1-FAN-L3-CX-2730 | **DELETED** DC1-FAN-D23-01 L3 Startup (2) | 2d | 2026-08-04 A | 2026-08-04 A | DC1-FAN-L3-CX-2720, QTS-1020 | 100% | 2026-08-06 | 2026-08-07 | Vendor Only | FBB | Commissioning | DH2300 | L3 | POD AC | DELETED | BAB |
| DC1-FAN-L3-CX-2740 | **DELETED** DC1-FAN-D23-01 BMS/EPMS Programming (2) | 1d | 2026-08-04 A | 2026-08-04 A | DC1-FAN-L3-CX-2730, QTS-1020 | 100% | 2026-08-10 | 2026-08-10 |  | PRM | Commissioning | DH2300 | L3 | POD AC | DELETED | BAB |
| DC1-FAN-L3-CX-2750 | **DELETED** DC1-FAN-E23-01 FTE (2) | 1d | 2026-08-04 A | 2026-08-04 A | QTS-1020 | 100% | 2026-08-05 | 2026-08-05 |  | ROS | Commissioning | DH2300 | L3 | POD AC | DELETED | BAB |
| DC1-FAN-L3-CX-2760 | **DELETED** DC1-FAN-E23-01 L3 Startup (2) | 2d | 2026-08-04 A | 2026-08-04 A | DC1-FAN-L3-CX-2750, QTS-1020 | 100% | 2026-08-06 | 2026-08-07 | Vendor Only | FBB | Commissioning | DH2300 | L3 | POD AC | DELETED | BAB |
| DC1-FAN-L3-CX-2770 | **DELETED** DC1-FAN-E23-01 BMS/EPMS Programming (2) | 1d | 2026-08-04 A | 2026-08-04 A | DC1-FAN-L3-CX-2760, QTS-1020 | 100% | 2026-08-10 | 2026-08-10 |  | PRM | Commissioning | DH2300 | L3 | POD AC | DELETED | BAB |
| DC1-FAN-L3-CX-2780 | **DELETED** DC1-FAN-F23-01 FTE (2) | 1d | 2026-08-04 A | 2026-08-04 A | QTS-1020 | 100% | 2026-08-05 | 2026-08-05 |  | ROS | Commissioning | DH2300 | L3 | POD AC | DELETED | BAB |
| DC1-FAN-L3-CX-2790 | **DELETED** DC1-FAN-F23-01 L3 Startup (2) | 2d | 2026-08-04 A | 2026-08-04 A | DC1-FAN-L3-CX-2780, QTS-1020 | 100% | 2026-08-06 | 2026-08-07 | Vendor Only | FBB | Commissioning | DH2300 | L3 | POD AC | DELETED | BAB |
| DC1-FAN-L3-CX-2800 | **DELETED** DC1-FAN-F23-01 BMS/EPMS Programming (2) | 1d | 2026-08-04 A | 2026-08-04 A | DC1-FAN-L3-CX-2790, QTS-1020 | 100% | 2026-08-10 | 2026-08-10 |  | PRM | Commissioning | DH2300 | L3 | POD AC | DELETED | BAB |
| DC1-FAN-L3-CX-2810 | **DELETED** DC1-FAN-R23-01 FTE (2) | 1d | 2026-08-04 A | 2026-08-04 A | QTS-1020 | 100% | 2026-08-05 | 2026-08-05 |  | ROS | Commissioning | DH2300 | L3 | POD AC | DELETED | BAB |
| DC1-FAN-L3-CX-2820 | **DELETED** DC1-FAN-R23-01 L3 Startup (2) | 2d | 2026-08-04 A | 2026-08-04 A | DC1-FAN-L3-CX-2810, QTS-1020 | 100% | 2026-08-06 | 2026-08-07 | Vendor Only | FBB | Commissioning | DH2300 | L3 | POD AC | DELETED | BAB |
| DC1-FAN-L3-CX-2830 | **DELETED** DC1-FAN-R23-01 BMS/EPMS Programming (2) | 1d | 2026-08-04 A | 2026-08-04 A | DC1-FAN-L3-CX-2820, QTS-1020 | 100% | 2026-08-10 | 2026-08-10 |  | PRM | Commissioning | DH2300 | L3 | POD AC | DELETED | BAB |
| DC1-FAN-L3-CX-2840 | **DELETED** DC1-FAN-A13-01 FTE (2) | 1d | 2026-08-04 A | 2026-08-04 A | DC1-MOD1-L3-CX-2840, QTS-1020 | 100% | 2026-08-05 | 2026-08-05 |  | ROS | Commissioning | DH1300 | L3 | POD AC | DELETED | BAB |
| DC1-FAN-L3-CX-2850 | **DELETED** DC1-FAN-A13-01 L3 Startup (2) | 2d | 2026-08-04 A | 2026-08-04 A | DC1-FAN-L3-CX-2840, QTS-1020 | 100% | 2026-08-06 | 2026-08-07 | Vendor Only | FBB | Commissioning | DH1300 | L3 | POD AC | DELETED | BAB |
| DC1-FAN-L3-CX-2860 | **DELETED** DC1-FAN-A13-01 BMS/EPMS Programming (2) | 1d | 2026-08-04 A | 2026-08-04 A | DC1-FAN-L3-CX-2850, QTS-1020 | 100% | 2026-08-10 | 2026-08-10 |  | PRM | Commissioning | DH1300 | L3 | POD AC | DELETED | BAB |
| DC1-FAN-L3-CX-2870 | **DELETED** DC1-FAN-B13-01 FTE (2) | 1d | 2026-08-04 A | 2026-08-04 A | DC1-MOD1-L3-CX-2870, QTS-1020 | 100% | 2026-08-05 | 2026-08-05 |  | ROS | Commissioning | DH1300 | L3 | POD AC | DELETED | BAB |
| DC1-FAN-L3-CX-2880 | **DELETED** DC1-FAN-B13-01 L3 Startup (2) | 2d | 2026-08-04 A | 2026-08-04 A | DC1-FAN-L3-CX-2870, QTS-1020 | 100% | 2026-08-06 | 2026-08-07 | Vendor Only | FBB | Commissioning | DH1300 | L3 | POD AC | DELETED | BAB |
| DC1-FAN-L3-CX-2890 | **DELETED** DC1-FAN-B13-01 BMS/EPMS Programming (2) | 1d | 2026-08-04 A | 2026-08-04 A | DC1-FAN-L3-CX-2880, QTS-1020 | 100% | 2026-08-10 | 2026-08-10 |  | PRM | Commissioning | DH1300 | L3 | POD AC | DELETED | BAB |
| DC1-FAN-L3-CX-2900 | **DELETED** DC1-FAN-C13-01 FTE (2) | 1d | 2026-08-04 A | 2026-08-04 A | DC1-MOD1-L3-CX-2900, QTS-1020 | 100% | 2026-08-05 | 2026-08-05 |  | ROS | Commissioning | DH1300 | L3 | POD AC | DELETED | BAB |
| DC1-FAN-L3-CX-2910 | **DELETED** DC1-FAN-C13-01 L3 Startup (2) | 2d | 2026-08-04 A | 2026-08-04 A | DC1-FAN-L3-CX-2900, QTS-1020 | 100% | 2026-08-06 | 2026-08-07 | Vendor Only | FBB | Commissioning | DH1300 | L3 | POD AC | DELETED | BAB |
| DC1-FAN-L3-CX-2920 | **DELETED** DC1-FAN-C13-01 BMS/EPMS Programming (2) | 1d | 2026-08-04 A | 2026-08-04 A | DC1-FAN-L3-CX-2910, QTS-1020 | 100% | 2026-08-10 | 2026-08-10 |  | PRM | Commissioning | DH1300 | L3 | POD AC | DELETED | BAB |
| DC1-FAN-L3-CX-2930 | **DELETED** DC1-FAN-D13-01 FTE (2) | 1d | 2026-08-04 A | 2026-08-04 A | DC1-MOD1-L3-CX-2930, QTS-1020 | 100% | 2026-08-05 | 2026-08-05 |  | ROS | Commissioning | DH1300 | L3 | POD AC | DELETED | BAB |
| DC1-FAN-L3-CX-2940 | **DELETED** DC1-FAN-D13-01 L3 Startup (2) | 2d | 2026-08-04 A | 2026-08-04 A | DC1-FAN-L3-CX-2930, QTS-1020 | 100% | 2026-08-06 | 2026-08-07 | Vendor Only | FBB | Commissioning | DH1300 | L3 | POD AC | DELETED | BAB |
| DC1-FAN-L3-CX-2950 | **DELETED** DC1-FAN-D13-01 BMS/EPMS Programming (2) | 1d | 2026-08-04 A | 2026-08-04 A | DC1-FAN-L3-CX-2940, QTS-1020 | 100% | 2026-08-10 | 2026-08-10 |  | PRM | Commissioning | DH1300 | L3 | POD AC | DELETED | BAB |
| DC1-FAN-L3-CX-2960 | **DELETED** DC1-FAN-E13-01 FTE (2) | 1d | 2026-08-04 A | 2026-08-04 A | DC1-MOD1-L3-CX-2960, QTS-1020 | 100% | 2026-08-05 | 2026-08-05 |  | ROS | Commissioning | DH1300 | L3 | POD AC | DELETED | BAB |
| DC1-FAN-L3-CX-2970 | **DELETED** DC1-FAN-E13-01 L3 Startup (2) | 2d | 2026-08-04 A | 2026-08-04 A | DC1-FAN-L3-CX-2960, QTS-1020 | 100% | 2026-08-06 | 2026-08-07 | Vendor Only | FBB | Commissioning | DH1300 | L3 | POD AC | DELETED | BAB |
| DC1-FAN-L3-CX-2980 | **DELETED** DC1-FAN-E13-01 BMS/EPMS Programming (2) | 1d | 2026-08-04 A | 2026-08-04 A | DC1-FAN-L3-CX-2970, QTS-1020 | 100% | 2026-08-10 | 2026-08-10 |  | PRM | Commissioning | DH1300 | L3 | POD AC | DELETED | BAB |
| DC1-FAN-L3-CX-2990 | **DELETED** DC1-FAN-F13-01 FTE (2) | 1d | 2026-08-04 A | 2026-08-04 A | DC1-MOD1-L3-CX-2990, QTS-1020 | 100% | 2026-08-05 | 2026-08-05 |  | ROS | Commissioning | DH1300 | L3 | POD AC | DELETED | BAB |
| DC1-FAN-L3-CX-3000 | **DELETED** DC1-FAN-F13-01 L3 Startup (2) | 2d | 2026-08-04 A | 2026-08-04 A | DC1-FAN-L3-CX-2990, QTS-1020 | 100% | 2026-08-06 | 2026-08-07 | Vendor Only | FBB | Commissioning | DH1300 | L3 | POD AC | DELETED | BAB |
| DC1-FAN-L3-CX-3010 | **DELETED** DC1-FAN-F13-01 BMS/EPMS Programming (2) | 1d | 2026-08-04 A | 2026-08-04 A | DC1-FAN-L3-CX-3000, QTS-1020 | 100% | 2026-08-10 | 2026-08-10 |  | PRM | Commissioning | DH1300 | L3 | POD AC | DELETED | BAB |
| DC1-FAN-L3-CX-3020 | **DELETED** DC1-FAN-R13-01 FTE (2) | 1d | 2026-08-04 A | 2026-08-04 A | DC1-MOD1-L3-CX-3020, QTS-1020 | 100% | 2026-08-05 | 2026-08-05 |  | ROS | Commissioning | DH1300 | L3 | POD AC | DELETED | BAB |
| DC1-FAN-L3-CX-3030 | **DELETED** DC1-FAN-R13-01 L3 Startup (2) | 2d | 2026-08-04 A | 2026-08-04 A | DC1-FAN-L3-CX-3020, QTS-1020 | 100% | 2026-08-06 | 2026-08-07 | Vendor Only | FBB | Commissioning | DH1300 | L3 | POD AC | DELETED | BAB |
| DC1-FAN-L3-CX-3040 | **DELETED** DC1-FAN-R13-01 BMS/EPMS Programming (2) | 1d | 2026-08-04 A | 2026-08-04 A | DC1-FAN-L3-CX-3030, QTS-1020 | 100% | 2026-08-10 | 2026-08-10 |  | PRM | Commissioning | DH1300 | L3 | POD AC | DELETED | BAB |
| DC1-GEN-L2-2210 | **DELETED** DH2300 GEN-A23 L2 Checklist | 3d | 2026-08-04 A | 2026-08-04 A | QTS-1020 | 100% | 2026-08-05 | 2026-08-07 |  | HLT | Commissioning | DH2300 | L2 | GEN | DELETED | BAB |
| DC1-GEN-L2-2220 | **DELETED** DH2300 GEN-B23 L2 Checklist | 3d | 2026-08-04 A | 2026-08-04 A | QTS-1020 | 100% | 2026-08-05 | 2026-08-07 |  | HLT | Commissioning | DH2300 | L2 | GEN | DELETED | BAB |
| DC1-GEN-L2-2230 | **DELETED** DH2300 GEN-C23 L2 Checklist | 3d | 2026-08-04 A | 2026-08-04 A | QTS-1020 | 100% | 2026-08-05 | 2026-08-07 |  | HLT | Commissioning | DH2300 | L2 | GEN | DELETED | BAB |
| DC1-GEN-L2-2240 | **DELETED** DH2300 GEN-D23 L2 Checklist | 3d | 2026-08-04 A | 2026-08-04 A | QTS-1020 | 100% | 2026-08-05 | 2026-08-07 |  | HLT | Commissioning | DH2300 | L2 | GEN | DELETED | BAB |
| DC1-GEN-L2-2250 | **DELETED** DH2300 GEN-E23 L2 Checklist | 3d | 2026-08-04 A | 2026-08-04 A | QTS-1020 | 100% | 2026-08-05 | 2026-08-07 |  | HLT | Commissioning | DH2300 | L2 | GEN | DELETED | BAB |
| DC1-GEN-L2-2260 | **DELETED** DH2300 GEN-F23 L2 Checklist | 3d | 2026-08-04 A | 2026-08-04 A | QTS-1020 | 100% | 2026-08-05 | 2026-08-07 |  | HLT | Commissioning | DH2300 | L2 | GEN | DELETED | BAB |
| DC1-GEN-L2-2270 | **DELETED** DH2300 GEN-R23 L2 Checklist | 3d | 2026-08-04 A | 2026-08-04 A | QTS-1020 | 100% | 2026-08-05 | 2026-08-07 |  | HLT | Commissioning | DH2300 | L2 | GEN | DELETED | BAB |
| DC1-GEN-L2-2280 | **DELETED** DH1300 GEN-A13 L2 Checklist | 3d | 2026-08-04 A | 2026-08-04 A | QTS-1020 | 100% | 2026-08-05 | 2026-08-07 |  | HLT | Commissioning | DH1300 | L2 | GEN | DELETED | BAB |
| DC1-GEN-L2-2290 | **DELETED** DH1300 GEN-B13 L2 Checklist | 3d | 2026-08-04 A | 2026-08-04 A | QTS-1020 | 100% | 2026-08-05 | 2026-08-07 |  | HLT | Commissioning | DH1300 | L2 | GEN | DELETED | BAB |
| DC1-GEN-L2-2300 | **DELETED** DH1300 GEN-C13 L2 Checklist | 3d | 2026-08-04 A | 2026-08-04 A | QTS-1020 | 100% | 2026-08-05 | 2026-08-07 |  | HLT | Commissioning | DH1300 | L2 | GEN | DELETED | BAB |
| DC1-GEN-L2-2310 | **DELETED** DH1300 GEN-D13 L2 Checklist | 3d | 2026-08-04 A | 2026-08-04 A | QTS-1020 | 100% | 2026-08-10 | 2026-08-12 |  | HLT | Commissioning | DH1300 | L2 | GEN | DELETED | BAB |
| DC1-GEN-L2-2320 | **DELETED** DH1300 GEN-E13 L2 Checklist | 3d | 2026-08-04 A | 2026-08-04 A | QTS-1020 | 100% | 2026-08-13 | 2026-08-17 |  | HLT | Commissioning | DH1300 | L2 | GEN | DELETED | BAB |
| DC1-GEN-L2-2330 | **DELETED** DH1300 GEN-F13 L2 Checklist | 3d | 2026-08-04 A | 2026-08-04 A | QTS-1020 | 100% | 2026-08-18 | 2026-08-20 |  | HLT | Commissioning | DH1300 | L2 | GEN | DELETED | BAB |
| DC1-GEN-L2-2340 | **DELETED** DH1300 GEN-R13 L2 Checklist | 3d | 2026-08-04 A | 2026-08-04 A | QTS-1020 | 100% | 2026-08-21 | 2026-08-25 |  | HLT | Commissioning | DH1300 | L2 | GEN | DELETED | BAB |
| DC1-GEN-L3-CX-2630 | **DELETED** DC1-GEN-A23 FTE | 1d | 2026-08-04 A | 2026-08-04 A | QTS-1020 | 100% | 2026-08-05 | 2026-08-05 |  | ROS | Commissioning | DH2300 | L3 | GEN | DELETED | BAB |
| DC1-GEN-L3-CX-2640 | **DELETED** DC1-GEN-A23 L3 Startup | 2d | 2026-08-04 A | 2026-08-04 A | QTS-1020 | 100% | 2026-08-05 | 2026-08-06 |  | HLT | Commissioning | DH2300 | L3 | GEN | DELETED | BAB |
| DC1-GEN-L3-CX-2650 | **DELETED** DC1-GEN-A23 BMS/EPMS Programming | 1d | 2026-08-04 A | 2026-08-04 A | QTS-1020 | 100% | 2026-08-05 | 2026-08-05 |  | PRM | Commissioning | DH2300 | L3 | GEN | DELETED | BAB |

Notes:
- DC1-GEN-L2-2210: Steps: EC Installation Checklist; MC Installation Checklist; CC Installation Checklist; Vendor Pre-Energization Checklist; CXA Pre-Energization Inspection; PEI/Clean-Walk
- DC1-GEN-L2-2220: Steps: EC Installation Checklist; MC Installation Checklist; CC Installation Checklist; Vendor Pre-Energization Checklist; CXA Pre-Energization Inspection; PEI/Clean-Walk
- DC1-GEN-L2-2230: Steps: EC Installation Checklist; MC Installation Checklist; CC Installation Checklist; Vendor Pre-Energization Checklist; CXA Pre-Energization Inspection; PEI/Clean-Walk
- DC1-GEN-L2-2240: Steps: EC Installation Checklist; MC Installation Checklist; CC Installation Checklist; Vendor Pre-Energization Checklist; CXA Pre-Energization Inspection; PEI/Clean-Walk
- DC1-GEN-L2-2250: Steps: EC Installation Checklist; MC Installation Checklist; CC Installation Checklist; Vendor Pre-Energization Checklist; CXA Pre-Energization Inspection; PEI/Clean-Walk
- DC1-GEN-L2-2260: Steps: EC Installation Checklist; MC Installation Checklist; CC Installation Checklist; Vendor Pre-Energization Checklist; CXA Pre-Energization Inspection; PEI/Clean-Walk
- DC1-GEN-L2-2270: Steps: EC Installation Checklist; MC Installation Checklist; CC Installation Checklist; Vendor Pre-Energization Checklist; CXA Pre-Energization Inspection; PEI/Clean-Walk
- DC1-GEN-L2-2280: Steps: EC Installation Checklist; MC Installation Checklist; CC Installation Checklist; Vendor Pre-Energization Checklist; CXA Pre-Energization Inspection; PEI/Clean-Walk
- DC1-GEN-L2-2290: Steps: EC Installation Checklist; MC Installation Checklist; CC Installation Checklist; Vendor Pre-Energization Checklist; CXA Pre-Energization Inspection; PEI/Clean-Walk
- DC1-GEN-L2-2300: Steps: EC Installation Checklist; MC Installation Checklist; CC Installation Checklist; Vendor Pre-Energization Checklist; CXA Pre-Energization Inspection; PEI/Clean-Walk
- DC1-GEN-L2-2310: Steps: EC Installation Checklist; MC Installation Checklist; CC Installation Checklist; Vendor Pre-Energization Checklist; CXA Pre-Energization Inspection; PEI/Clean-Walk
- DC1-GEN-L2-2320: Steps: EC Installation Checklist; MC Installation Checklist; CC Installation Checklist; Vendor Pre-Energization Checklist; CXA Pre-Energization Inspection; PEI/Clean-Walk
- DC1-GEN-L2-2330: Steps: EC Installation Checklist; MC Installation Checklist; CC Installation Checklist; Vendor Pre-Energization Checklist; CXA Pre-Energization Inspection; PEI/Clean-Walk
- DC1-GEN-L2-2340: Steps: EC Installation Checklist; MC Installation Checklist; CC Installation Checklist; Vendor Pre-Energization Checklist; CXA Pre-Energization Inspection; PEI/Clean-Walk
- DC1-GEN-L3-CX-2640: Steps: EC Startup Report; Vendor Startup

| ID | Activity | Duration | Start | Finish | Predecessors | Complete | Planned start | Planned finish | Calendar | Vendor Responsible Party | Layton Discipline | Location | CX Level | Equipment | DELETED | Contract | Layton Super | Trade Partner | Owner Impact Analysis | Fragnet Responsible Party | TFO-CONST ONLY | NICK | D |
| --- | --- | --- | --- | --- | --- | --- | --- | --- | --- | --- | --- | --- | --- | --- | --- | --- | --- | --- | --- | --- | --- | --- | --- |
| DC1-GEN-L3-CX-2660 | **DELETED** DC1-GEN-B23 FTE | 1d | 2026-08-04 A | 2026-08-04 A | QTS-1020 | 100% | 2026-08-05 | 2026-08-05 |  | ROS | Commissioning | DH2300 | L3 | GEN | DELETED | BAB |  |  |  |  |  |  |  |
| DC1-GEN-L3-CX-2670 | **DELETED** DC1-GEN-B23 L3 Startup | 2d | 2026-08-04 A | 2026-08-04 A | QTS-1020 | 100% | 2026-08-06 | 2026-08-07 |  | HLT | Commissioning | DH2300 | L3 | GEN | DELETED | BAB |  |  |  |  |  |  |  |
| DC1-GEN-L3-CX-2680 | **DELETED** DC1-GEN-B23 BMS/EPMS Programming | 1d | 2026-08-04 A | 2026-08-04 A | QTS-1020 | 100% | 2026-08-10 | 2026-08-10 |  | PRM | Commissioning | DH2300 | L3 | GEN | DELETED | BAB |  |  |  |  |  |  |  |
| DC1-GEN-L3-CX-2690 | **DELETED** DC1-GEN-C23 FTE | 1d | 2026-08-04 A | 2026-08-04 A | QTS-1020 | 100% | 2026-08-05 | 2026-08-05 |  | ROS | Commissioning | DH2300 | L3 | GEN | DELETED | BAB |  |  |  |  |  |  |  |
| DC1-GEN-L3-CX-2700 | **DELETED** DC1-GEN-C23 L3 Startup | 2d | 2026-08-04 A | 2026-08-04 A | QTS-1020 | 100% | 2026-08-06 | 2026-08-07 |  | HLT | Commissioning | DH2300 | L3 | GEN | DELETED | BAB |  |  |  |  |  |  |  |
| DC1-GEN-L3-CX-2710 | **DELETED** DC1-GEN-C23 BMS/EPMS Programming | 1d | 2026-08-04 A | 2026-08-04 A | QTS-1020 | 100% | 2026-08-10 | 2026-08-10 |  | PRM | Commissioning | DH2300 | L3 | GEN | DELETED | BAB |  |  |  |  |  |  |  |
| DC1-GEN-L3-CX-2720 | **DELETED** DC1-GEN-D23 FTE | 1d | 2026-08-04 A | 2026-08-04 A | QTS-1020 | 100% | 2026-08-05 | 2026-08-05 |  | ROS | Commissioning | DH2300 | L3 | GEN | DELETED | BAB |  |  |  |  |  |  |  |
| DC1-GEN-L3-CX-2730 | **DELETED** DC1-GEN-D23 L3 Startup | 2d | 2026-08-04 A | 2026-08-04 A | QTS-1020 | 100% | 2026-08-06 | 2026-08-07 |  | HLT | Commissioning | DH2300 | L3 | GEN | DELETED | BAB |  |  |  |  |  |  |  |
| DC1-GEN-L3-CX-2740 | **DELETED** DC1-GEN-D23 BMS/EPMS Programming | 1d | 2026-08-04 A | 2026-08-04 A | QTS-1020 | 100% | 2026-08-10 | 2026-08-10 |  | PRM | Commissioning | DH2300 | L3 | GEN | DELETED | BAB |  |  |  |  |  |  |  |
| DC1-GEN-L3-CX-2750 | **DELETED** DC1-GEN-E23 FTE | 1d | 2026-08-04 A | 2026-08-04 A | QTS-1020 | 100% | 2026-08-05 | 2026-08-05 |  | ROS | Commissioning | DH2300 | L3 | GEN | DELETED | BAB |  |  |  |  |  |  |  |
| DC1-GEN-L3-CX-2760 | **DELETED** DC1-GEN-E23 L3 Startup | 2d | 2026-08-04 A | 2026-08-04 A | DC1-GEN-L3-CX-2750, QTS-1020 | 100% | 2026-08-06 | 2026-08-07 |  | HLT | Commissioning | DH2300 | L3 | GEN | DELETED | BAB |  |  |  |  |  |  |  |
| DC1-GEN-L3-CX-2770 | **DELETED** DC1-GEN-E23 BMS/EPMS Programming | 1d | 2026-08-04 A | 2026-08-04 A | DC1-GEN-L3-CX-2760, QTS-1020 | 100% | 2026-08-10 | 2026-08-10 |  | PRM | Commissioning | DH2300 | L3 | GEN | DELETED | BAB |  |  |  |  |  |  |  |
| DC1-GEN-L3-CX-2780 | **DELETED** DC1-GEN-F23 FTE | 1d | 2026-08-04 A | 2026-08-04 A | QTS-1020 | 100% | 2026-08-05 | 2026-08-05 |  | ROS | Commissioning | DH2300 | L3 | GEN | DELETED | BAB |  |  |  |  |  |  |  |
| DC1-GEN-L3-CX-2790 | **DELETED** DC1-GEN-F23 L3 Startup | 2d | 2026-08-04 A | 2026-08-04 A | DC1-GEN-L3-CX-2780, QTS-1020 | 100% | 2026-08-06 | 2026-08-07 |  | HLT | Commissioning | DH2300 | L3 | GEN | DELETED | BAB |  |  |  |  |  |  |  |
| DC1-GEN-L3-CX-2800 | **DELETED** DC1-GEN-F23 BMS/EPMS Programming | 1d | 2026-08-04 A | 2026-08-04 A | DC1-GEN-L3-CX-2790, QTS-1020 | 100% | 2026-08-10 | 2026-08-10 |  | PRM | Commissioning | DH2300 | L3 | GEN | DELETED | BAB |  |  |  |  |  |  |  |
| DC1-GEN-L3-CX-2810 | **DELETED** DC1-GEN-R23 FTE | 1d | 2026-08-04 A | 2026-08-04 A | QTS-1020 | 100% | 2026-08-05 | 2026-08-05 |  | ROS | Commissioning | DH2300 | L3 | GEN | DELETED | BAB |  |  |  |  |  |  |  |
| DC1-GEN-L3-CX-2820 | **DELETED** DC1-GEN-R23 L3 Startup | 2d | 2026-08-04 A | 2026-08-04 A | DC1-GEN-L3-CX-2810, QTS-1020 | 100% | 2026-08-06 | 2026-08-07 |  | HLT | Commissioning | DH2300 | L3 | GEN | DELETED | BAB |  |  |  |  |  |  |  |
| DC1-GEN-L3-CX-2830 | **DELETED** DC1-GEN-R23 BMS/EPMS Programming | 1d | 2026-08-04 A | 2026-08-04 A | DC1-GEN-L3-CX-2820, QTS-1020 | 100% | 2026-08-10 | 2026-08-10 |  | PRM | Commissioning | DH2300 | L3 | GEN | DELETED | BAB |  |  |  |  |  |  |  |
| DC1-GEN-L3-CX-2840 | **DELETED** DC1-GEN-A13 FTE | 1d | 2026-08-04 A | 2026-08-04 A | DC1-SWD-L3-CX-2840, QTS-1020 | 100% | 2026-08-05 | 2026-08-05 |  | ROS | Commissioning | DH1300 | L3 | GEN | DELETED | BAB |  |  |  |  |  |  |  |
| DC1-GEN-L3-CX-2850 | **DELETED** DC1-GEN-A13 L3 Startup | 2d | 2026-08-04 A | 2026-08-04 A | DC1-GEN-L3-CX-2840, QTS-1020 | 100% | 2026-08-06 | 2026-08-07 |  | HLT | Commissioning | DH1300 | L3 | GEN | DELETED | BAB |  |  |  |  |  |  |  |
| DC1-GEN-L3-CX-2860 | **DELETED** DC1-GEN-A13 BMS/EPMS Programming | 1d | 2026-08-04 A | 2026-08-04 A | DC1-GEN-L3-CX-2850, QTS-1020 | 100% | 2026-08-10 | 2026-08-10 |  | PRM | Commissioning | DH1300 | L3 | GEN | DELETED | BAB |  |  |  |  |  |  |  |
| DC1-GEN-L3-CX-2870 | **DELETED** DC1-GEN-B13 FTE | 1d | 2026-08-04 A | 2026-08-04 A | DC1-SWD-L3-CX-2870, QTS-1020 | 100% | 2026-08-10 | 2026-08-10 |  | ROS | Commissioning | DH1300 | L3 | GEN | DELETED | BAB |  |  |  |  |  |  |  |
| DC1-GEN-L3-CX-2880 | **DELETED** DC1-GEN-B13 L3 Startup | 2d | 2026-08-04 A | 2026-08-04 A | DC1-GEN-L3-CX-2870, QTS-1020 | 100% | 2026-08-11 | 2026-08-12 |  | HLT | Commissioning | DH1300 | L3 | GEN | DELETED | BAB |  |  |  |  |  |  |  |
| DC1-GEN-L3-CX-2890 | **DELETED** DC1-GEN-B13 BMS/EPMS Programming | 1d | 2026-08-04 A | 2026-08-04 A | DC1-GEN-L3-CX-2880, QTS-1020 | 100% | 2026-08-13 | 2026-08-13 |  | PRM | Commissioning | DH1300 | L3 | GEN | DELETED | BAB |  |  |  |  |  |  |  |
| DC1-GEN-L3-CX-2900 | **DELETED** DC1-GEN-C13 FTE | 1d | 2026-08-04 A | 2026-08-04 A | DC1-SWD-L3-CX-2900, QTS-1020 | 100% | 2026-08-10 | 2026-08-10 |  | ROS | Commissioning | DH1300 | L3 | GEN | DELETED | BAB |  |  |  |  |  |  |  |
| DC1-GEN-L3-CX-2910 | **DELETED** DC1-GEN-C13 L3 Startup | 2d | 2026-08-04 A | 2026-08-04 A | DC1-GEN-L3-CX-2900, QTS-1020 | 100% | 2026-08-11 | 2026-08-12 |  | HLT | Commissioning | DH1300 | L3 | GEN | DELETED | BAB |  |  |  |  |  |  |  |
| DC1-GEN-L3-CX-2920 | **DELETED** DC1-GEN-C13 BMS/EPMS Programming | 1d | 2026-08-04 A | 2026-08-04 A | DC1-GEN-L3-CX-2910, QTS-1020 | 100% | 2026-08-13 | 2026-08-13 |  | PRM | Commissioning | DH1300 | L3 | GEN | DELETED | BAB |  |  |  |  |  |  |  |
| DC1-GEN-L3-CX-2930 | **DELETED** DC1-GEN-D13 FTE | 1d | 2026-08-04 A | 2026-08-04 A | DC1-SWD-L3-CX-2930, QTS-1020 | 100% | 2026-08-13 | 2026-08-13 |  | ROS | Commissioning | DH1300 | L3 | GEN | DELETED | BAB |  |  |  |  |  |  |  |
| DC1-GEN-L3-CX-2940 | **DELETED** DC1-GEN-D13 L3 Startup | 2d | 2026-08-04 A | 2026-08-04 A | DC1-GEN-L3-CX-2930, QTS-1020 | 100% | 2026-08-14 | 2026-08-17 |  | HLT | Commissioning | DH1300 | L3 | GEN | DELETED | BAB |  |  |  |  |  |  |  |
| DC1-GEN-L3-CX-2950 | **DELETED** DC1-GEN-D13 BMS/EPMS Programming | 1d | 2026-08-04 A | 2026-08-04 A | DC1-GEN-L3-CX-2940, QTS-1020 | 100% | 2026-08-18 | 2026-08-18 |  | PRM | Commissioning | DH1300 | L3 | GEN | DELETED | BAB |  |  |  |  |  |  |  |
| DC1-GEN-L3-CX-2960 | **DELETED** DC1-GEN-E13 FTE | 1d | 2026-08-04 A | 2026-08-04 A | DC1-SWD-L3-CX-2960, DC1-GEN-L2-2320, QTS-1020 | 100% | 2026-08-18 | 2026-08-18 |  | ROS | Commissioning | DH1300 | L3 | GEN | DELETED | BAB |  |  |  |  |  |  |  |
| DC1-GEN-L3-CX-2970 | **DELETED** DC1-GEN-E13 L3 Startup | 2d | 2026-08-04 A | 2026-08-04 A | DC1-GEN-L3-CX-2960, QTS-1020 | 100% | 2026-08-19 | 2026-08-20 |  | HLT | Commissioning | DH1300 | L3 | GEN | DELETED | BAB |  |  |  |  |  |  |  |
| DC1-GEN-L3-CX-2980 | **DELETED** DC1-GEN-E13 BMS/EPMS Programming | 1d | 2026-08-04 A | 2026-08-04 A | DC1-GEN-L3-CX-2970, QTS-1020 | 100% | 2026-08-21 | 2026-08-21 |  | PRM | Commissioning | DH1300 | L3 | GEN | DELETED | BAB |  |  |  |  |  |  |  |
| DC1-GEN-L3-CX-2990 | **DELETED** DC1-GEN-F13 FTE | 1d | 2026-08-04 A | 2026-08-04 A | DC1-SWD-L3-CX-2990, QTS-1020 | 100% | 2026-08-21 | 2026-08-21 |  | ROS | Commissioning | DH1300 | L3 | GEN | DELETED | BAB |  |  |  |  |  |  |  |
| DC1-GEN-L3-CX-3000 | **DELETED** DC1-GEN-F13 L3 Startup | 2d | 2026-08-04 A | 2026-08-04 A | DC1-GEN-L3-CX-2990, QTS-1020 | 100% | 2026-08-24 | 2026-08-25 |  | HLT | Commissioning | DH1300 | L3 | GEN | DELETED | BAB |  |  |  |  |  |  |  |
| DC1-GEN-L3-CX-3010 | **DELETED** DC1-GEN-F13 BMS/EPMS Programming | 1d | 2026-08-04 A | 2026-08-04 A | DC1-GEN-L3-CX-3000, QTS-1020 | 100% | 2026-08-26 | 2026-08-26 |  | PRM | Commissioning | DH1300 | L3 | GEN | DELETED | BAB |  |  |  |  |  |  |  |
| DC1-GEN-L3-CX-3020 | **DELETED** DC1-GEN-R13 FTE | 1d | 2026-08-04 A | 2026-08-04 A | DC1-SWD-L3-CX-3020, DC1-GEN-L2-2340, QTS-1020 | 100% | 2026-08-26 | 2026-08-26 |  | ROS | Commissioning | DH1300 | L3 | GEN | DELETED | BAB |  |  |  |  |  |  |  |
| DC1-GEN-L3-CX-3030 | **DELETED** DC1-GEN-R13 L3 Startup | 2d | 2026-08-04 A | 2026-08-04 A | DC1-GEN-L3-CX-3020, QTS-1020 | 100% | 2026-08-27 | 2026-08-28 |  | HLT | Commissioning | DH1300 | L3 | GEN | DELETED | BAB |  |  |  |  |  |  |  |
| DC1-GEN-L3-CX-3040 | **DELETED** DC1-GEN-R13 BMS/EPMS Programming | 1d | 2026-08-04 A | 2026-08-04 A | DC1-GEN-L3-CX-3030, QTS-1020 | 100% | 2026-08-31 | 2026-08-31 |  | PRM | Commissioning | DH1300 | L3 | GEN | DELETED | BAB |  |  |  |  |  |  |  |
| QTS-7120 | **DELETED** DH 2300 / L2 Checklist DOAs | 1d | 2026-08-05 A | 2026-08-05 A | QTS-1020 | 100% | 2026-08-31 | 2026-08-31 | **GLOBAL - 5 Day Workweek w/ Basic Holidays |  | Commissioning |  |  |  | DELETED | BAB | Commissioning | REI/Layton |  |  |  |  |  |
| QTS-7130 | **DELETED** DH 2300 / Pre Energization Inspection DOAs | 1d | 2026-08-05 A | 2026-08-05 A | QTS-1020 | 100% | 2026-09-01 | 2026-09-01 | **GLOBAL - 5 Day Workweek w/ Basic Holidays |  | Commissioning |  |  |  | DELETED | BAB | Commissioning | REI/Layton |  |  |  |  |  |
| QTS-1014070 | **DELETED** Data Hall 1100 / Fragnet - IST Complete AHU | 3d | 2026-08-12 A | 2026-08-14 A | QTS-1020 | 100% |  |  | **GLOBAL - 7 Day Workweek w/ Basic Holidays |  | Mechanical |  |  |  | DELETED | TFO | Mechanical | ERS | Y | CAPS | TFO CONST | NICK | DH1100 |

Notes:
- DC1-GEN-L3-CX-2670: Steps: EC Startup Report; Vendor Startup
- DC1-GEN-L3-CX-2700: Steps: EC Startup Report; Vendor Startup
- DC1-GEN-L3-CX-2730: Steps: EC Startup Report; Vendor Startup
- DC1-GEN-L3-CX-2760: Steps: EC Startup Report; Vendor Startup
- DC1-GEN-L3-CX-2790: Steps: EC Startup Report; Vendor Startup
- DC1-GEN-L3-CX-2820: Steps: EC Startup Report; Vendor Startup
- DC1-GEN-L3-CX-2850: Steps: EC Startup Report; Vendor Startup
- DC1-GEN-L3-CX-2880: Steps: EC Startup Report; Vendor Startup
- DC1-GEN-L3-CX-2910: Steps: EC Startup Report; Vendor Startup
- DC1-GEN-L3-CX-2940: Steps: EC Startup Report; Vendor Startup
- DC1-GEN-L3-CX-2970: Steps: EC Startup Report; Vendor Startup
- DC1-GEN-L3-CX-3000: Steps: EC Startup Report; Vendor Startup
- DC1-GEN-L3-CX-3030: Steps: EC Startup Report; Vendor Startup
- QTS-1014070: Scheduler Notes: 7/24/26 - Delay due to AHU in PODs - Compressor Failures CAPS / troubleshooting R11, B11, E11 programming issue - may have to reset all units

| ID | WBS | Activity | Duration | Start | Finish | Predecessors | Complete | Planned start | Planned finish | Layton Discipline | DELETED | D | Update Notes | Allucent CSI Group | Project Section | Location | Layton Super | Baseline | Project Section-1 | Level | Phase-1-1 |
| --- | --- | --- | --- | --- | --- | --- | --- | --- | --- | --- | --- | --- | --- | --- | --- | --- | --- | --- | --- | --- | --- |
|  | 11 | **DELETED/ Site Improvements** |  | 2025-01-09 | 2026-06-16 |  |  |  |  |  |  |  |  |  |  |  |  |  |  |  |  |
|  | 14 | **Fragnet - EPCOR Approval Impact** |  | 2025-01-09 | 2026-06-16 |  |  |  |  |  |  |  |  |  |  |  |  |  |  |  |  |
| QTS-47500 |  | **DELETED** DC1 Civil/Wet Utility IFP Drawings Received/Completed by Kimley-Horn/Design Team | 1d | 2025-01-09 A | 2025-01-09 A | QTS-1371 SS | 100% |  |  | Site Improvements | DELETED | DH1100 |  |  |  |  |  |  |  |  |  |
| QTS-47510 |  | **DELETED** DC1 Civil/Wet Utility IFP Drawings Submitted to EPCOR by Kimley-Horn/Design Team | 94d | 2025-01-10 A | 2025-05-22 A | QTS-47500 | 100% |  |  | Site Improvements | DELETED | DH1100 |  |  |  |  |  |  |  |  |  |
| QTS-47520 |  | **DELETED** DC1 Civil/Wet Utility IFP Drawings EPCOR Approval | 48d | 2025-05-23 A | 2026-06-16 A | QTS-47510 | 100% | 2025-05-23 | 2025-07-31 | Site Improvements | DELETED | DH1100 | 5/19 - Move to Campus Schedule | 01ADMIN | Construction | Site Work | Freddy Arrizon |  |  |  |  |
| QTS-99010 |  | **DELETED** Public Water Line Drawing Review & Coordination | 10d | 2026-06-16 A | 2026-06-16 A | QTS-99020, QTS-47520 | 100% | 2026-07-15 | 2026-07-28 | Site Improvements | DELETED | DH1100 |  |  | Construction |  | Freddy Arrizon |  |  |  |  |
| QTS-99020 |  | **DELETED** DC1 Civil/Wet Utility IFP Drawings Maricopa County Approval | 15d | 2026-06-16 A | 2026-06-16 A | QTS-47520 | 100% | 2026-06-23 | 2026-07-14 | Site Improvements | DELETED | DH1100 | 5/19 - Move to Campus Schedule | 01ADMIN | Construction | Site Work | Freddy Arrizon |  |  |  |  |
|  | 5 | **Site Improvements / Zone 1 North - West** |  | 2025-08-14 | 2026-06-16 |  |  |  |  |  |  |  |  |  |  |  |  |  |  |  |  |
| QTS-47061 |  | **DELETED** Zone 1 North - West // Excavate, Install, & Backfill Storm B Line | 5d | 2025-08-14 A | 2025-08-20 A | QTS-14891, QTS-14381, QTS-47351, QTS-19811 | 100% |  |  | Site Improvements | DELETED | DH1100 |  |  | Construction | Site Work |  | IGMP | Construction | Level 1 |  |
| QTS-49661 |  | **DELETED** Zone 1 North - West // Inspection Storm B Line | 1d | 2025-08-29 A | 2025-08-29 A | QTS-47061, QTS-19811, QTS-47351 | 100% | 2025-09-15 | 2025-09-15 | Site Improvements | DELETED | DH1100 |  | 01ADMIN | Construction | Site Work |  | IGMP | Construction | Level 1 |  |
| QTS-47071 |  | **DELETED** Zone 1 North - West // Excavate, Install, & Backfill Domestic Water Line | 3d | 2026-06-16 A | 2026-06-16 A | QTS-99010, QTS-15701, QTS-15541, QTS-49671, QTS-47081 | 100% | 2026-08-04 | 2026-08-06 | Site Improvements | DELETED | DH1100 |  |  | Construction | Site Work | Freddy Arrizon | IGMP | Construction | Level 1 |  |
| QTS-47081 |  | **DELETED** Zone 1 North - West // Excavate, Install, & Backfill Fire Water Line | 3d | 2026-06-16 A | 2026-06-16 A | QTS-99010, QTS-49661, QTS-47061 | 100% | 2026-07-29 | 2026-07-31 | Site Improvements | DELETED | DH1100 |  | 01ADMIN | Construction | Site Work | Freddy Arrizon | IGMP | Construction | Level 1 |  |
| QTS-47091 |  | **DELETED** Zone 1 North - West // Rough Grade | 3d | 2026-06-16 A | 2026-06-16 A | QTS-48881, QTS-47071, QTS-47061 | 100% | 2026-08-18 | 2026-08-20 | Site Improvements | DELETED | DH1100 |  |  | Construction | Site Work | Freddy Arrizon | IGMP | Construction | Level 1 |  |
| QTS-47101 |  | **DELETED** Zone 1 North - West // Stake Curbs | 1d | 2026-06-16 A | 2026-06-16 A | QTS-47091 | 100% | 2026-08-21 | 2026-08-21 | Site Improvements | DELETED | DH1100 |  |  | Construction | Site Work | Freddy Arrizon | IGMP | Construction | Level 1 |  |
| QTS-47111 |  | **DELETED** Zone 1 North - West // Excavate, Install, & Backfill Electrical for Site Lighting | 3d | 2026-06-16 A | 2026-06-16 A | QTS-47141 SS, QTS-47121, QTS-47091 | 100% | 2026-08-26 | 2026-08-28 | Site Improvements | DELETED | DH1100 |  |  | Construction | Site Work | Freddy Arrizon | IGMP | Construction | Level 1 |  |
| QTS-47121 |  | **DELETED** Zone 1 North - West // Install Underground Grounding Ring | 3d | 2026-06-16 A | 2026-06-16 A | QTS-47091 | 100% | 2026-08-21 | 2026-08-25 | Site Improvements | DELETED | DH1100 |  |  | Construction | Site Work | Freddy Arrizon | IGMP | Construction | Underground | Phase 1 |
| QTS-47131 |  | **DELETED** Zone 1 North - West // Grade for Curb | 2d | 2026-06-16 A | 2026-06-16 A | QTS-47111, QTS-47101 | 100% | 2026-08-31 | 2026-09-01 | Site Improvements | DELETED | DH1100 |  |  | Construction | Site Work | Freddy Arrizon | IGMP | Construction | Level 1 |  |
| QTS-47141 |  | **DELETED** Zone 1 North - West // Install Irrigation Sleeves | 5d | 2026-06-16 A | 2026-06-16 A | QTS-47121, QTS-47101 | 100% | 2026-08-26 | 2026-09-01 | Site Improvements | DELETED | DH1100 |  |  | Construction | Site Work | Freddy Arrizon | IGMP | Construction | Level 1 |  |
| QTS-47151 |  | **DELETED** Zone 1 North - West // Stringline for Curb | 2d | 2026-06-16 A | 2026-06-16 A | QTS-47131 | 100% | 2026-09-02 | 2026-09-03 | Site Improvements | DELETED | DH1100 |  |  | Construction | Site Work | Freddy Arrizon | IGMP | Construction | Level 1 |  |
| QTS-47161 |  | **DELETED** Zone 1 North - West // Drill & Reinforce Light Pole Bases | 8d | 2026-06-16 A | 2026-06-16 A | QTS-47181, QTS-47111 | 100% | 2026-09-09 | 2026-09-18 | Site Improvements | DELETED | DH1100 |  |  | Construction | Site Work | Freddy Arrizon | IGMP | Construction | Level 1 |  |
| QTS-47171 |  | **DELETED** Zone 1 North - West // Machine Curb | 1d | 2026-06-16 A | 2026-06-16 A | QTS-47141, QTS-47151 | 100% | 2026-09-04 | 2026-09-04 | Site Improvements | DELETED | DH1100 |  |  | Construction | Site Work | Freddy Arrizon | IGMP | Construction | Level 1 |  |
| QTS-47181 |  | **DELETED** Zone 1 North - West // Form & Place Curb Tie Ins | 1d | 2026-06-16 A | 2026-06-16 A | QTS-47171 | 100% | 2026-09-08 | 2026-09-08 | Site Improvements | DELETED | DH1100 |  |  | Construction | Site Work | Freddy Arrizon | IGMP | Construction | Level 1 |  |
| QTS-47191 |  | **DELETED** Zone 1 North - West // Install Irrigation Main Lines | 4d | 2026-06-16 A | 2026-06-16 A | QTS-47181 | 100% | 2026-09-09 | 2026-09-14 | Site Improvements | DELETED | DH1100 |  |  | Construction | Site Work | Freddy Arrizon | IGMP | Construction | Level 1 |  |
| QTS-47201 |  | **DELETED** Zone 1 North - West // Prep & Place Sidewalks | 5d | 2026-06-16 A | 2026-06-16 A | QTS-47251, QTS-47211, QTS-47121, QTS-47171, QTS-47181 | 100% | 2026-09-28 | 2026-10-02 | Site Improvements | DELETED | DH1100 |  |  | Construction | Site Work | Freddy Arrizon | IGMP | Construction | Level 1 |  |
| QTS-47211 |  | **DELETED** Zone 1 North - West // Prep & Place Heavy Duty Concrete | 5d | 2026-06-16 A | 2026-06-16 A | QTS-47181 | 100% | 2026-09-09 | 2026-09-15 | Site Improvements | DELETED | DH1100 |  |  | Construction | Site Work | Freddy Arrizon | IGMP | Construction | Level 1 |  |
| QTS-47221 |  | **DELETED** Zone 1 North - West // Stub Up Electrical to Light Poles | 4d | 2026-06-16 A | 2026-06-16 A | QTS-47161 | 100% | 2026-09-21 | 2026-09-24 | Site Improvements | DELETED | DH1100 |  |  | Construction | Site Work | Freddy Arrizon | IGMP | Construction | Level 1 |  |
| QTS-47231 |  | **DELETED** Zone 1 North - West // Install Irrigation Laterals | 4d | 2026-06-16 A | 2026-06-16 A | QTS-47191 | 100% | 2026-09-15 | 2026-09-18 | Site Improvements | DELETED | DH1100 |  |  | Construction | Site Work | Freddy Arrizon | IGMP | Construction | Level 1 |  |
| QTS-47241 |  | **DELETED** Zone 1 North - West // Prep & Place Medium Duty Asphalt Pavement | 3d | 2026-06-16 A | 2026-06-16 A | QTS-47181, QTS-47171, QTS-47211 | 100% | 2026-09-16 | 2026-09-18 | Site Improvements | DELETED | DH1100 |  |  | Construction | Site Work | Freddy Arrizon | IGMP | Construction | Level 1 |  |
| QTS-47251 |  | **DELETED** Zone 1 North - West // Pour Light Pole Bases | 1d | 2026-06-16 A | 2026-06-16 A | QTS-47221 | 100% | 2026-09-25 | 2026-09-25 | Site Improvements | DELETED | DH1100 |  |  | Construction | Site Work | Freddy Arrizon | IGMP | Construction | Level 1 |  |
| QTS-47261 |  | **DELETED** Zone 1 North - West // Install Landscaping & Planting | 4d | 2026-06-16 A | 2026-06-16 A | QTS-47201, QTS-47231 | 100% | 2026-10-05 | 2026-10-08 | Site Improvements | DELETED | DH1100 |  |  | Construction | Site Work | Freddy Arrizon | IGMP | Construction | Level 1 |  |
| QTS-47271 |  | **DELETED** Zone 1 North - West // Utility Adjustments (Raise Cans & Collars) | 2d | 2026-06-16 A | 2026-06-16 A | QTS-47241 | 100% | 2026-09-21 | 2026-09-22 | Site Improvements | DELETED | DH1100 |  |  | Construction | Site Work | Freddy Arrizon | IGMP | Construction | Level 1 |  |
| QTS-47281 |  | **DELETED** Zone 1 North - West // Set Light Poles | 2d | 2026-06-16 A | 2026-06-16 A | QTS-47201, QTS-47251 | 100% | 2026-10-05 | 2026-10-06 | Site Improvements | DELETED | DH1100 |  |  | Construction | Site Work | Freddy Arrizon | IGMP | Construction | Level 1 |  |
| QTS-47291 |  | **DELETED** Zone 1 North - West // Pull Electrical Wire & Make Up to Light Poles | 3d | 2026-06-16 A | 2026-06-16 A | QTS-47281 | 100% | 2026-10-07 | 2026-10-09 | Site Improvements | DELETED | DH1100 |  |  | Construction | Site Work | Freddy Arrizon | IGMP | Construction | Level 1 |  |
| QTS-47301 |  | **DELETED** Zone 1 North - West // Sack & Patch Light Pole Bases | 2d | 2026-06-16 A | 2026-06-16 A | QTS-47291 | 100% | 2026-10-12 | 2026-10-13 | Site Improvements | DELETED | DH1100 |  |  | Construction | Site Work | Freddy Arrizon | IGMP | Construction | Level 1 |  |
| QTS-47311 |  | **DELETED** Zone 1 North - West // Site Striping | 1d | 2026-06-16 A | 2026-06-16 A | QTS-47271 | 100% | 2026-09-23 | 2026-09-23 | Site Improvements | DELETED | DH1100 |  |  | Construction | Site Work | Freddy Arrizon | IGMP | Construction | Level 1 |  |
| QTS-47321 |  | **DELETED** Zone 1 North - West // Install Signage | 1d | 2026-06-16 A | 2026-06-16 A | QTS-47201, QTS-47311 | 100% | 2026-10-05 | 2026-10-05 | Site Improvements | DELETED | DH1100 |  |  | Construction | Site Work | Freddy Arrizon | IGMP | Construction | Level 1 |  |
| QTS-47331 |  | **DELETED** Zone 1 North - West // Place DG | 3d | 2026-06-16 A | 2026-06-16 A | QTS-47321, QTS-47261 | 100% | 2026-10-09 | 2026-10-13 | Site Improvements | DELETED | DH1100 |  |  | Construction | Site Work | Freddy Arrizon | IGMP | Construction | Level 1 |  |
| QTS-48871 |  | **DELETED** Zone 1 North - West // Excavate & Pour CMU Footings | 3d | 2026-06-16 A | 2026-06-16 A | QTS-49681, QTS-47071 | 100% | 2026-08-10 | 2026-08-12 | Site Improvements | DELETED | DH1100 |  |  | Construction | Site Work | Freddy Arrizon | IGMP | Construction | Level 1 |  |
| QTS-48881 |  | **DELETED** Zone 1 North - West // Place CMU Block Wall | 3d | 2026-06-16 A | 2026-06-16 A | QTS-48871 | 100% | 2026-08-13 | 2026-08-17 | Site Improvements | DELETED | DH1100 |  |  | Construction | Site Work | Freddy Arrizon | IGMP | Construction | Level 1 |  |
| QTS-49671 |  | **DELETED** Zone 1 North - West // Inspection Fire Water Line | 1d | 2026-06-16 A | 2026-06-16 A | QTS-47081, QTS-49661 | 100% | 2026-08-03 | 2026-08-03 | Site Improvements | DELETED | DH1100 |  |  | Construction | Site Work | Freddy Arrizon | IGMP | Construction | Level 1 |  |
| QTS-49681 |  | **DELETED** Zone 1 North - West // Inspection Domestic Water Line | 1d | 2026-06-16 A | 2026-06-16 A | QTS-47071 | 100% | 2026-08-07 | 2026-08-07 | Site Improvements | DELETED | DH1100 |  |  | Construction | Site Work | Freddy Arrizon | IGMP | Construction | Level 1 |  |

Notes:
- QTS-47520: allucent_notes_20251216_165335: Jason Johnston on 2025-08-26 10:08: Received update from QTS that they submitted round 4 of comments and is now expected to approve 9/5. / Jason Johnston on 2025-10-07 14:10: Approval pushed again / Jason Johnston on 2025-10-21 08:10: Pushed another week. / Jason Johnston on 2025-10-27 11:10: Update per Chris Perales text on 10/24/25 / Jason Johnston on 2025-12-02 08:13: No EPCOR Approval / allucent_notes_20251209_203830: Jason Johnston on 2025-08-26 10:08: Received update from QTS that they submitted round 4 of comments and is now expected to approve 9/5. / Jason Johnston on 2025-10-07 14:10: Approval pushed again / Jason Johnston on 2025-10-21 08:10: Pushed another week. / Jason Johnston on 2025-10-27 11:10: Update per Chris Perales text on 10/24/25 / Jason Johnston on 2025-12-02 08:13: No EPCOR Approval / allucent_notes_20251202_153722: Jason Johnston on 2025-08-26 10:08: Received update from QTS that they submitted round 4 of comments and is now expected to approve 9/5. / Jason Johnston on 2025-10-07 14:10: Approval pushed again / Jason Johnston on 2025-10-21 08:10: Pushed another week. / Jason Johnston on 2025-10-27 11:10: Update per Chris Perales text on 10/24/25 / Jason Johnston on 2025-12-02 08:13: No EPCOR Approval / allucent_notes_20251118_192630: Jason Johnston on 2025-08-26 10:08: Received update from QTS that they submitted round 4 of comments and is now expected to approve 9/5. / Jason Johnston on 2025-10-07 14:10: Approval pushed again / Jason Johnston on 2025-10-21 08:10: Pushed another week. / Jason Johnston on 2025-10-27 11:10: Update per Chris Perales text on 10/24/25 / allucent_notes_20251111_182405: Jason Johnston on 2025-08-26 10:08: Received update from QTS that they submitted round 4 of comments and is now expected to approve 9/5. / Jason Johnston on 2025-10-07 14:10: Approval pushed again / Jason Johnston on 2025-10-21 08:10: Pushed another week. / Jason Johnston on 2025-10-27 11:10: Update per Chris Perales text on 10/24/25 / allucent_notes_20251104_160200: Jason Johnston on 2025-08-26 10:08: Received update from QTS that they submitted round 4 of comments and is now expected to approve 9/5. / Jason Johnston on 2025-10-07 14:10: Approval pushed again / Jason Johnston on 2025-10-21 08:10: Pushed another week. / Jason Johnston on 2025-10-27 11:10: Update per Chris Perales text on 10/24/25 / allucent_notes_20251028_163138: Jason Johnston on 2025-08-26 10:08: Received update from QTS that they submitted round 4 of comments and is now expected to approve 9/5. / Jason Johnston on 2025-10-07 14:10: Approval pushed again / Jason Johnston on 2025-10-21 08:10: Pushed another week. / Jason Johnston on 2025-10-27 11:10: Update per Chris Perales text on 10/24/25 / allucent_notes_20251027_224008: Jason Johnston on 2025-08-26 10:08: Received update from QTS that they submitted round 4 of comments and is now expected to approve 9/5. / Jason Johnston on 2025-10-07 14:10: Approval pushed again / Jason Johnston on 2025-10-21 08:10: Pushed another week. / Jason Johnston on 2025-10-27 11:10: Update per Chris Perales text on 10/24/25 / allucent_notes_20251021_145627: Jason Johnston on 2025-08-26 10:08: Received update from QTS that they submitted round 4 of comments and is now expected to approve 9/5. / Jason Johnston on 2025-10-07 14:10: Approval pushed again / Jason Johnston on 2025-10-21 08:10: Pushed another week. / allucent_notes_20251014_152335: Jason Johnston on 2025-08-26 10:08: Received update from QTS that they submitted round 4 of comments and is now expected to approve 9/5. / Jason Johnston on 2025-10-07 14:10: Approval pushed again / allucent_notes: Jason Johnston on 2025-08-26 10:08: Received update from QTS that they submitted round 4 of comments and is now expected to approve 9/5. / allucent_notes_20251230_164549: Jason Johnston on 2025-08-26 10:08: Received update from QTS that they submitted round 4 of comments and is now expected to approve 9/5. / Jason Johnston on 2025-10-07 14:10: Approval pushed again / Jason Johnston on 2025-10-21 08:10: Pushed another week. / Jason Johnston on 2025-10-27 11:10: Update per Chris Perales text on 10/24/25 / Jason Johnston on 2025-12-02 08:13: No EPCOR Approval / allucent_notes: 2025-08-26 10:08 - User: Jason Johnston - Date Added: 2025-08-26 10:08 - Note: Received update from QTS that they submitted round 4 of comments and is now expected to approve 9/5. / 2025-10-07 14:10 - User: Jason Johnston - Date Added: 2025-10-07 14:10 -
- QTS-47071: Schedule Note: 6/17 - Deleted as activiy should be tracking in campus schedule
- QTS-47081: Schedule Note: 6/17 - Deleted as activiy should be tracking in campus schedule
- QTS-47091: Schedule Note: 6/17 - Deleted as activiy should be tracking in campus schedule
- QTS-47101: Schedule Note: 6/17 - Deleted as activiy should be tracking in campus schedule
- QTS-47111: Schedule Note: 6/17 - Deleted as activiy should be tracking in campus schedule
- QTS-47121: Schedule Note: 6/17 - Deleted as activiy should be tracking in campus schedule
- QTS-47131: Schedule Note: 6/17 - Deleted as activiy should be tracking in campus schedule
- QTS-47141: Schedule Note: 6/17 - Deleted as activiy should be tracking in campus schedule
- QTS-47151: Schedule Note: 6/17 - Deleted as activiy should be tracking in campus schedule
- QTS-47161: Schedule Note: 6/17 - Deleted as activiy should be tracking in campus schedule
- QTS-47171: Schedule Note: 6/17 - Deleted as activiy should be tracking in campus schedule
- QTS-47181: Schedule Note: 6/17 - Deleted as activiy should be tracking in campus schedule
- QTS-47191: Schedule Note: 6/17 - Deleted as activiy should be tracking in campus schedule
- QTS-47201: Schedule Note: 6/17 - Deleted as activiy should be tracking in campus schedule
- QTS-47211: Schedule Note: 6/17 - Deleted as activiy should be tracking in campus schedule
- QTS-47221: Schedule Note: 6/17 - Deleted as activiy should be tracking in campus schedule
- QTS-47231: Schedule Note: 6/17 - Deleted as activiy should be tracking in campus schedule
- QTS-47241: Schedule Note: 6/17 - Deleted as activiy should be tracking in campus schedule
- QTS-47251: Schedule Note: 6/17 - Deleted as activiy should be tracking in campus schedule
- QTS-47261: Schedule Note: 6/17 - Deleted as activiy should be tracking in campus schedule
- QTS-47271: Schedule Note: 6/17 - Deleted as activiy should be tracking in campus schedule
- QTS-47281: Schedule Note: 6/17 - Deleted as activiy should be tracking in campus schedule
- QTS-47291: Schedule Note: 6/17 - Deleted as activiy should be tracking in campus schedule
- QTS-47301: Schedule Note: 6/17 - Deleted as activiy should be tracking in campus schedule
- QTS-47311: Schedule Note: 6/17 - Deleted as activiy should be tracking in campus schedule
- QTS-47321: Schedule Note: 6/17 - Deleted as activiy should be tracking in campus schedule
- QTS-47331: Schedule Note: 6/17 - Deleted as activiy should be tracking in campus schedule
- QTS-48871: Schedule Note: 6/17 - Deleted as activiy should be tracking in campus schedule
- QTS-48881: Schedule Note: 6/17 - Deleted as activiy should be tracking in campus schedule
- QTS-49671: Schedule Note: 6/17 - Deleted as activiy should be tracking in campus schedule
- QTS-49681: Schedule Note: 6/17 - Deleted as activiy should be tracking in campus schedule

| ID | WBS | Activity | Type | Duration | Start | Finish | Predecessors | Complete | Planned start | Planned finish | Allucent CSI Group | Project Section | Layton Discipline | Baseline | Project Section-1 | Location | Level | DELETED | D | Layton Super | Phase-1-1 | Update Notes |
| --- | --- | --- | --- | --- | --- | --- | --- | --- | --- | --- | --- | --- | --- | --- | --- | --- | --- | --- | --- | --- | --- | --- |
|  | 6 | **Site Improvements / Zone 1 South - West** |  |  | 2025-07-16 | 2026-06-16 |  |  |  |  |  |  |  |  |  |  |  |  |  |  |  |  |
| QTS-47351 |  | **DELETED** Zone 1 South - West // Excavate, Install, & Backfill Storm B Line |  | 3d | 2025-07-16 A | 2025-08-06 A | QTS-1371 SS | 100% | 2025-07-16 | 2025-07-18 | 01ADMIN | Construction | Site Improvements | IGMP | Construction | Site Work | Level 1 | DELETED | DH1100 |  |  |  |
| QTS-49741 |  | **DELETED** Zone 1 South - West // Inspection for Storm B Line |  | 1d | 2025-08-07 A | 2025-08-07 A | QTS-47351 | 100% |  |  | 01ADMIN | Construction | Site Improvements | IGMP | Construction | Site Work | Level 1 | DELETED | DH1100 |  |  |  |
| QTS-50841 |  | **DELETED** Zone 1 South - West // Camelback West Entrance Closure | milestone | 0d | 2025-10-10 A | 2025-10-10 A | QTS-1371 SS | 100% | 2025-10-24 | 2025-10-24 | 01ADMIN | Construction | Site Improvements | IGMP | Construction | Site Work | Level 1 | DELETED | DH1100 |  |  |  |
| QTS-50821 |  | **DELETED** Zone 1 South - West // Excavate, Install, & Backfill Storm A Line |  | 3d | 2025-10-29 A | 2025-10-31 A | QTS-50841 SS | 100% |  |  | 01ADMIN | Construction | Site Improvements | IGMP | Construction | Site Work | Level 1 | DELETED | DH1100 |  |  |  |
| QTS-50831 |  | **DELETED** Zone 1 South - West // Inspection for Storm A Line |  | 1d | 2025-11-03 A | 2025-11-03 A | QTS-50821 | 100% |  |  | 01ADMIN | Construction | Site Improvements | IGMP | Construction | Site Work | Level 1 | DELETED | DH1100 |  |  |  |
| QTS-47361 |  | **DELETED** Zone 1 South - West // Excavate, Install, & Backfill Sanitary Line |  | 3d | 2026-06-16 A | 2026-06-16 A | QTS-99010, QTS-20761, QTS-18031 SS, QTS-47351 | 100% | 2026-07-29 | 2026-07-31 |  | Construction | Site Improvements | IGMP | Construction | Site Work | Level 1 | DELETED | DH1100 | Freddy Arrizon |  |  |
| QTS-47371 |  | **DELETED** Zone 1 South - West // Excavate, Install, & Backfill Fire Water Line |  | 3d | 2026-06-16 A | 2026-06-16 A | QTS-49751, QTS-49761, QTS-47361, QTS-47351 | 100% | 2026-08-04 | 2026-08-06 |  | Construction | Site Improvements | IGMP | Construction | Site Work | Level 1 | DELETED | DH1100 | Freddy Arrizon |  |  |
| QTS-47381 |  | **DELETED** Zone 1 South - West // Excavate, Install, & Backfill Domestic Water Line |  | 3d | 2026-06-16 A | 2026-06-16 A | QTS-49771, QTS-47371 | 100% | 2026-08-10 | 2026-08-12 |  | Construction | Site Improvements | IGMP | Construction | Site Work | Level 1 | DELETED | DH1100 | Freddy Arrizon |  |  |
| QTS-47391 |  | **DELETED** Zone 1 South - West // Rough Grade |  | 3d | 2026-06-16 A | 2026-06-16 A | QTS-50831, QTS-49781, QTS-25181, QTS-20761, QTS-47381, QTS-47351 | 100% | 2026-08-14 | 2026-08-18 |  | Construction | Site Improvements | IGMP | Construction | Site Work | Level 1 | DELETED | DH1100 | Freddy Arrizon |  |  |
| QTS-47401 |  | **DELETED** Zone 1 South - West // Stake Curbs |  | 1d | 2026-06-16 A | 2026-06-16 A | QTS-47391 | 100% | 2026-08-19 | 2026-08-19 |  | Construction | Site Improvements | IGMP | Construction | Site Work | Level 1 | DELETED | DH1100 | Freddy Arrizon |  |  |
| QTS-47411 |  | **DELETED** Zone 1 South - West // Install Underground Grounding Ring |  | 3d | 2026-06-16 A | 2026-06-16 A | QTS-47391 | 100% | 2026-08-19 | 2026-08-21 |  | Construction | Site Improvements | IGMP | Construction | Site Work | Underground | DELETED | DH1100 | Freddy Arrizon | Phase 1 |  |
| QTS-47421 |  | **DELETED** Zone 1 South - West // Install Irrigation Sleeves |  | 5d | 2026-06-16 A | 2026-06-16 A | QTS-47411, QTS-47401 | 100% | 2026-08-24 | 2026-08-28 |  | Construction | Site Improvements | IGMP | Construction | Site Work | Level 1 | DELETED | DH1100 | Freddy Arrizon |  |  |
| QTS-47431 |  | **DELETED** Zone 1 South - West // Excavate, Install, & Backfill Electrical for Site Lighting |  | 3d | 2026-06-16 A | 2026-06-16 A | QTS-47421, QTS-47411, QTS-47391 | 100% | 2026-08-31 | 2026-09-02 |  | Construction | Site Improvements | IGMP | Construction | Site Work | Level 1 | DELETED | DH1100 | Freddy Arrizon |  |  |
| QTS-47441 |  | **DELETED** Zone 1 South - West // Grade for Curb |  | 2d | 2026-06-16 A | 2026-06-16 A | QTS-47431, QTS-47401 | 100% | 2026-09-03 | 2026-09-04 |  | Construction | Site Improvements | IGMP | Construction | Site Work | Level 1 | DELETED | DH1100 | Freddy Arrizon |  |  |
| QTS-47451 |  | **DELETED** Zone 1 South - West // Drill & Reinforce Light Pole Bases |  | 8d | 2026-06-16 A | 2026-06-16 A | QTS-47481, QTS-47431 | 100% | 2026-09-14 | 2026-09-23 |  | Construction | Site Improvements | IGMP | Construction | Site Work | Level 1 | DELETED | DH1100 | Freddy Arrizon |  |  |
| QTS-47461 |  | **DELETED** Zone 1 South - West // Stringline for Curb |  | 2d | 2026-06-16 A | 2026-06-16 A | QTS-47441 | 100% | 2026-09-08 | 2026-09-09 |  | Construction | Site Improvements | IGMP | Construction | Site Work | Level 1 | DELETED | DH1100 | Freddy Arrizon |  |  |
| QTS-47471 |  | **DELETED** Zone 1 South - West // Machine Curb |  | 1d | 2026-06-16 A | 2026-06-16 A | QTS-47421, QTS-47461 | 100% | 2026-09-10 | 2026-09-10 |  | Construction | Site Improvements | IGMP | Construction | Site Work | Level 1 | DELETED | DH1100 | Freddy Arrizon |  |  |
| QTS-47481 |  | **DELETED** Zone 1 South - West // Form & Place Curb Tie Ins |  | 1d | 2026-06-16 A | 2026-06-16 A | QTS-47471 | 100% | 2026-09-11 | 2026-09-11 |  | Construction | Site Improvements | IGMP | Construction | Site Work | Level 1 | DELETED | DH1100 | Freddy Arrizon |  |  |
| QTS-47491 |  | **DELETED** Zone 1 South - West // Install Irrigation Main Lines |  | 4d | 2026-06-16 A | 2026-06-16 A | QTS-47481 | 100% | 2026-09-14 | 2026-09-17 |  | Construction | Site Improvements | IGMP | Construction | Site Work | Level 1 | DELETED | DH1100 | Freddy Arrizon |  |  |
| QTS-47511 |  | **DELETED** Zone 1 South - West // Stub Up Electrical to Light Poles |  | 4d | 2026-06-16 A | 2026-06-16 A | QTS-47451 | 100% | 2026-09-24 | 2026-09-29 |  | Construction | Site Improvements | IGMP | Construction | Site Work | Level 1 | DELETED | DH1100 | Freddy Arrizon |  |  |
| QTS-47521 |  | **DELETED** Zone 1 South - West // Install Irrigation Laterals |  | 4d | 2026-06-16 A | 2026-06-16 A | QTS-47491 | 100% | 2026-09-18 | 2026-09-23 |  | Construction | Site Improvements | IGMP | Construction | Site Work | Level 1 | DELETED | DH1100 | Freddy Arrizon |  |  |
| QTS-47531 |  | **DELETED** Zone 1 South - West // Prep & Place Medium Duty Asphalt Pavement |  | 3d | 2026-06-16 A | 2026-06-16 A | QTS-47641, QTS-47481, QTS-47471 | 100% | 2026-09-17 | 2026-09-21 |  | Construction | Site Improvements | IGMP | Construction | Site Work | Level 1 | DELETED | DH1100 | Freddy Arrizon |  |  |
| QTS-47541 |  | **DELETED** Zone 1 South - West // Prep & Place Sidewalks |  | 5d | 2026-06-16 A | 2026-06-16 A | QTS-47551, QTS-47411, QTS-47471, QTS-47481 | 100% | 2026-10-01 | 2026-10-07 |  | Construction | Site Improvements | IGMP | Construction | Site Work | Level 1 | DELETED | DH1100 | Freddy Arrizon |  |  |
| QTS-47551 |  | **DELETED** Zone 1 South - West // Pour Light Pole Bases |  | 1d | 2026-06-16 A | 2026-06-16 A | QTS-47511 | 100% | 2026-09-30 | 2026-09-30 |  | Construction | Site Improvements | IGMP | Construction | Site Work | Level 1 | DELETED | DH1100 | Freddy Arrizon |  |  |
| QTS-47561 |  | **DELETED** Zone 1 South - West // Set Light Poles |  | 2d | 2026-06-16 A | 2026-06-16 A | QTS-47541, QTS-47551 | 100% | 2026-10-08 | 2026-10-09 |  | Construction | Site Improvements | IGMP | Construction | Site Work | Level 1 | DELETED | DH1100 | Freddy Arrizon |  |  |
| QTS-47571 |  | **DELETED** Zone 1 South - West // Utility Adjustments (Raise Cans & Collars) |  | 2d | 2026-06-16 A | 2026-06-16 A | QTS-47531 | 100% | 2026-09-22 | 2026-09-23 |  | Construction | Site Improvements | IGMP | Construction | Site Work | Level 1 | DELETED | DH1100 | Freddy Arrizon |  |  |
| QTS-47581 |  | **DELETED** Zone 1 South - West // Pull Electrical Wire & Make Up to Light Poles |  | 3d | 2026-06-16 A | 2026-06-16 A | QTS-47561 | 100% | 2026-10-12 | 2026-10-14 |  | Construction | Site Improvements | IGMP | Construction | Site Work | Level 1 | DELETED | DH1100 | Freddy Arrizon |  |  |
| QTS-47591 |  | **DELETED** Zone 1 South - West // Install Landscaping & Planting |  | 4d | 2026-06-16 A | 2026-06-16 A | QTS-47541, QTS-47521 | 100% | 2026-10-08 | 2026-10-13 |  | Construction | Site Improvements | IGMP | Construction | Site Work | Level 1 | DELETED | DH1100 | Freddy Arrizon |  |  |
| QTS-47601 |  | **DELETED** Zone 1 South - West // Site Striping |  | 1d | 2026-06-16 A | 2026-06-16 A | QTS-47571 | 100% | 2026-09-24 | 2026-09-24 |  | Construction | Site Improvements | IGMP | Construction | Site Work | Level 1 | DELETED | DH1100 | Freddy Arrizon |  |  |
| QTS-47611 |  | **DELETED** Zone 1 South - West // Install Signage |  | 1d | 2026-06-16 A | 2026-06-16 A | QTS-47541, QTS-47601 | 100% | 2026-10-08 | 2026-10-08 |  | Construction | Site Improvements | IGMP | Construction | Site Work | Level 1 | DELETED | DH1100 | Freddy Arrizon |  |  |
| QTS-47621 |  | **DELETED** Zone 1 South - West // Sack & Patch Light Pole Bases |  | 2d | 2026-06-16 A | 2026-06-16 A | QTS-47581 | 100% | 2026-10-15 | 2026-10-16 |  | Construction | Site Improvements | IGMP | Construction | Site Work | Level 1 | DELETED | DH1100 | Freddy Arrizon |  |  |
| QTS-47631 |  | **DELETED** Zone 1 South - West // Place DG |  | 3d | 2026-06-16 A | 2026-06-16 A | QTS-47591 | 100% | 2026-10-14 | 2026-10-16 |  | Construction | Site Improvements | IGMP | Construction | Site Work | Level 1 | DELETED | DH1100 | Freddy Arrizon |  |  |
| QTS-47641 |  | **DELETED** Zone 1 South - West // Prep & Place Medium Duty Concrete |  | 3d | 2026-06-16 A | 2026-06-16 A | QTS-47481 | 100% | 2026-09-14 | 2026-09-16 |  | Construction | Site Improvements | IGMP | Construction | Site Work | Level 1 | DELETED | DH1100 | Freddy Arrizon |  |  |
| QTS-49561 |  | **DELETED** Zone 1 South - West // Excavate, Install, & Backfill Storm Trench Drain to Storm Line B |  | 3d | 2026-06-16 A | 2026-06-16 A | QTS-100720, QTS-49741, QTS-47351 | 100% | 2026-06-17 | 2026-06-19 | 01ADMIN | Construction | Site Improvements | IGMP | Construction | Site Work | Level 1 | DELETED | DH1100 | Freddy Arrizon |  | 5/19 - Move to Campus Schedule |
| QTS-49751 |  | **DELETED** Zone 1 South - West // Inspection for Storm Trench Drain to Storm Line B |  | 1d | 2026-06-16 A | 2026-06-16 A | QTS-49561, QTS-49741 | 100% | 2026-06-22 | 2026-06-22 | 01ADMIN | Construction | Site Improvements | IGMP | Construction | Site Work | Level 1 | DELETED | DH1100 | Freddy Arrizon |  | 5/19 - Move to Campus Schedule |
| QTS-49761 |  | **DELETED** Zone 1 South - West // Inspection for Sanitary Line |  | 1d | 2026-06-16 A | 2026-06-16 A | QTS-47361, QTS-49741 | 100% | 2026-08-03 | 2026-08-03 |  | Construction | Site Improvements | IGMP | Construction | Site Work | Level 1 | DELETED | DH1100 | Freddy Arrizon |  |  |
| QTS-49771 |  | **DELETED** Zone 1 South - West // Inspection for Fire Water Line |  | 1d | 2026-06-16 A | 2026-06-16 A | QTS-47371, QTS-49761, QTS-49741 | 100% | 2026-08-07 | 2026-08-07 |  | Construction | Site Improvements | IGMP | Construction | Site Work | Level 1 | DELETED | DH1100 | Freddy Arrizon |  |  |
| QTS-49781 |  | **DELETED** Zone 1 South - West // Inspection for Domestic Water Line |  | 1d | 2026-06-16 A | 2026-06-16 A | QTS-47381, QTS-49771 | 100% | 2026-08-13 | 2026-08-13 |  | Construction | Site Improvements | IGMP | Construction | Site Work | Level 1 | DELETED | DH1100 | Freddy Arrizon |  |  |

Notes:
- QTS-50841: allucent_notes_20251027_224008: Jason Johnston on 2025-10-27 11:10: Closed early due to rain / allucent_notes: 2025-10-27 11:10 - User: Jason Johnston - Date Added: 2025-10-27 11:10 - Note: Closed early due to rain
- QTS-50821: allucent_notes_20251104_160200: Jason Johnston on 2025-10-27 14:10: Waiting for OEG to complete work in area. held up by TMH-01 additional holes / allucent_notes_20251028_163138: Jason Johnston on 2025-10-27 14:10: Waiting for OEG to complete work in area. held up by TMH-01 additional holes / allucent_notes_20251027_224008: Jason Johnston on 2025-10-27 14:10: Waiting for OEG to complete work in area. held up by TMH-01 additional holes / allucent_notes: 2025-10-27 14:10 - User: Jason Johnston - Date Added: 2025-10-27 14:10 - Note: Waiting for OEG to complete work in area. held up by TMH-01 additional holes
- QTS-47361: Schedule Note: 6/17 - Deleted as activiy should be tracking in campus schedule
- QTS-47371: Schedule Note: 6/17 - Deleted as activiy should be tracking in campus schedule
- QTS-47381: Schedule Note: 6/17 - Deleted as activiy should be tracking in campus schedule
- QTS-47391: Schedule Note: 6/17 - Deleted as activiy should be tracking in campus schedule
- QTS-47401: Schedule Note: 6/17 - Deleted as activiy should be tracking in campus schedule
- QTS-47411: Schedule Note: 6/17 - Deleted as activiy should be tracking in campus schedule
- QTS-47421: Schedule Note: 6/17 - Deleted as activiy should be tracking in campus schedule
- QTS-47431: Schedule Note: 6/17 - Deleted as activiy should be tracking in campus schedule
- QTS-47441: Schedule Note: 6/17 - Deleted as activiy should be tracking in campus schedule
- QTS-47451: Schedule Note: 6/17 - Deleted as activiy should be tracking in campus schedule
- QTS-47461: Schedule Note: 6/17 - Deleted as activiy should be tracking in campus schedule
- QTS-47471: Schedule Note: 6/17 - Deleted as activiy should be tracking in campus schedule
- QTS-47481: Schedule Note: 6/17 - Deleted as activiy should be tracking in campus schedule
- QTS-47491: Schedule Note: 6/17 - Deleted as activiy should be tracking in campus schedule
- QTS-47511: Schedule Note: 6/17 - Deleted as activiy should be tracking in campus schedule
- QTS-47521: Schedule Note: 6/17 - Deleted as activiy should be tracking in campus schedule
- QTS-47531: Schedule Note: 6/17 - Deleted as activiy should be tracking in campus schedule
- QTS-47541: Schedule Note: 6/17 - Deleted as activiy should be tracking in campus schedule
- QTS-47551: Schedule Note: 6/17 - Deleted as activiy should be tracking in campus schedule
- QTS-47561: Schedule Note: 6/17 - Deleted as activiy should be tracking in campus schedule
- QTS-47571: Schedule Note: 6/17 - Deleted as activiy should be tracking in campus schedule
- QTS-47581: Schedule Note: 6/17 - Deleted as activiy should be tracking in campus schedule
- QTS-47591: Schedule Note: 6/17 - Deleted as activiy should be tracking in campus schedule
- QTS-47601: Schedule Note: 6/17 - Deleted as activiy should be tracking in campus schedule
- QTS-47611: Schedule Note: 6/17 - Deleted as activiy should be tracking in campus schedule
- QTS-47621: Schedule Note: 6/17 - Deleted as activiy should be tracking in campus schedule
- QTS-47631: Schedule Note: 6/17 - Deleted as activiy should be tracking in campus schedule
- QTS-47641: Schedule Note: 6/17 - Deleted as activiy should be tracking in campus schedule
- QTS-49561: allucent_notes_20251118_192630: Jason Johnston on 2025-10-21 14:10: Moving this until after loading dock drains are complete. / Jason Johnston on 2025-11-12T00:48:42.883Z: tes tanks / allucent_notes_20251111_182405: Jason Johnston on 2025-10-21 14:10: Moving this until after loading dock drains are complete. / Jason Johnston on 2025-11-12T00:48:42.883Z: tes tanks / allucent_notes_20251104_160200: Jason Johnston on 2025-10-21 14:10: Moving this until after loading dock drains are complete. / allucent_notes_20251028_163138: Jason Johnston on 2025-10-21 14:10: Moving this until after loading dock drains are complete. / allucent_notes_20251027_224008: Jason Johnston on 2025-10-21 14:10: Moving this until after loading dock drains are complete. / allucent_notes_20251021_145627: Jason Johnston on 2025-10-21 14:10: Moving this until after loading dock drains are complete. / allucent_notes_20251230_164549: Jason Johnston on 2025-10-21 14:10: Moving this until after loading dock drains are complete. / Jason Johnston on 2025-11-12T00:48:42.883Z: tes tanks / allucent_notes: 2025-10-21 14:10 - User: Jason Johnston - Date Added: 2025-10-21 14:10 - Note: Moving this until after loading dock drains are complete. / 2025-11-12T00:48:42.883Z - User: Jason Johnston - Date Added: 2025-11-12T00:48:42.883Z - Note: tes tanks / Schedule Note: 6/17 - Deleted as activiy should be tracking in campus schedule
- QTS-49751: allucent_notes_20251118_192630: Jason Johnston on 2025-11-12T00:48:48.643Z: tes tanks / allucent_notes_20251111_182405: Jason Johnston on 2025-11-12T00:48:48.643Z: tes tanks / allucent_notes_20251230_164549: Jason Johnston on 2025-11-12T00:48:48.643Z: tes tanks / allucent_notes: 2025-11-12T00:48:48.643Z - User: Jason Johnston - Date Added: 2025-11-12T00:48:48.643Z - Note: tes tanks / Schedule Note: 6/17 - Deleted as activiy should be tracking in campus schedule
- QTS-49761: Schedule Note: 6/17 - Deleted as activiy should be tracking in campus schedule
- QTS-49771: Schedule Note: 6/17 - Deleted as activiy should be tracking in campus schedule
- QTS-49781: Schedule Note: 6/17 - Deleted as activiy should be tracking in campus schedule

| ID | WBS | Activity | Duration | Start | Finish | Predecessors | Complete | Planned start | Planned finish | Allucent CSI Group | Project Section | Layton Discipline | Baseline | Project Section-1 | Location | Level | DELETED | D | Layton Super | Phase-1-1 |
| --- | --- | --- | --- | --- | --- | --- | --- | --- | --- | --- | --- | --- | --- | --- | --- | --- | --- | --- | --- | --- |
|  | 8 | **Site Improvements / Zone 2 North** |  | 2025-07-10 | 2026-06-16 |  |  |  |  |  |  |  |  |  |  |  |  |  |  |  |
| QTS-48551 |  | **DELETED** Zone 2 North // Excavate, Install, & Backfill Storm Line F Main & Branch Lines Below Duct Bank | 6d | 2025-07-10 A | 2025-07-30 A | QTS-48241 SS, QTS-1431 | 100% | 2025-07-10 | 2025-07-17 | 01ADMIN | Construction | Site Improvements | IGMP | Construction | Site Work | Level 1 | DELETED | DH1100 |  |  |
| QTS-49541 |  | **DELETED** Zone 2 North // Excavate, Install, & Backfill Storm Line F Main & Branch Lines Above | 7d | 2025-07-31 A | 2025-09-16 A | QTS-48551 | 100% | 2025-07-31 | 2025-08-08 | 01ADMIN | Construction | Site Improvements | IGMP | Construction | Site Work | Level 1 | DELETED | DH1100 |  |  |
| QTS-49551 |  | **DELETED** Zone 2 North // Duct Bank Installation | 3d | 2025-07-31 A | 2025-08-04 A | QTS-48551 | 100% |  |  | 01ADMIN | Construction | Site Improvements | IGMP | Construction | Site Work | Level 1 | DELETED | DH1100 |  |  |
| QTS-49791 |  | **DELETED** Zone 2 North // Inspection for Storm Line F Main & Branch Lines | 1d | 2025-09-17 A | 2025-09-17 A | QTS-49541 | 100% |  |  | 01ADMIN | Construction | Site Improvements | IGMP | Construction | Site Work | Level 1 | DELETED | DH1100 |  |  |
| QTS-48571 |  | **DELETED** Zone 2 North // Excavate, Install, & Backfill Fire Water Line | 3d | 2026-06-16 A | 2026-06-16 A | QTS-99010, QTS-49791, QTS-49541, QTS-48551 FF, QTS-48551 | 100% | 2026-07-29 | 2026-07-31 | 01ADMIN | Construction | Site Improvements | IGMP | Construction | Site Work | Level 1 | DELETED | DH1100 | Freddy Arrizon |  |
| QTS-48581 |  | **DELETED** Zone 2 North // Excavate, Install, & Backfill Domestic Water Line | 3d | 2026-06-16 A | 2026-06-16 A | QTS-99010, QTS-49801, QTS-48571 | 100% | 2026-08-04 | 2026-08-06 | 01ADMIN | Construction | Site Improvements | IGMP | Construction | Site Work | Level 1 | DELETED | DH1100 | Freddy Arrizon |  |
| QTS-48591 |  | **DELETED** Zone 2 North // Rough Grade | 3d | 2026-06-16 A | 2026-06-16 A | QTS-49811, QTS-48581, QTS-48551 | 100% | 2026-08-10 | 2026-08-12 |  | Construction | Site Improvements | IGMP | Construction | Site Work | Level 1 | DELETED | DH1100 | Freddy Arrizon |  |
| QTS-48601 |  | **DELETED** Zone 2 North // Stake Curbs | 1d | 2026-06-16 A | 2026-06-16 A | QTS-48591 | 100% | 2026-08-13 | 2026-08-13 |  | Construction | Site Improvements | IGMP | Construction | Site Work | Level 1 | DELETED | DH1100 | Freddy Arrizon |  |
| QTS-48611 |  | **DELETED** Zone 2 North // Install Underground Grounding Ring | 3d | 2026-06-16 A | 2026-06-16 A | QTS-48591 | 100% | 2026-08-13 | 2026-08-17 |  | Construction | Site Improvements | IGMP | Construction | Site Work | Underground | DELETED | DH1100 | Freddy Arrizon | Phase 1 |
| QTS-48621 |  | **DELETED** Zone 2 North // Install Irrigation Sleeves | 5d | 2026-06-16 A | 2026-06-16 A | QTS-48611, QTS-48601 | 100% | 2026-08-18 | 2026-08-24 |  | Construction | Site Improvements | IGMP | Construction | Site Work | Level 1 | DELETED | DH1100 | Freddy Arrizon |  |
| QTS-48631 |  | **DELETED** Zone 2 North // Excavate, Install, & Backfill Electrical for Site Lighting | 3d | 2026-06-16 A | 2026-06-16 A | QTS-48621, QTS-48611, QTS-48591 | 100% | 2026-08-25 | 2026-08-27 |  | Construction | Site Improvements | IGMP | Construction | Site Work | Level 1 | DELETED | DH1100 | Freddy Arrizon |  |
| QTS-48641 |  | **DELETED** Zone 2 North // Grade for Curb | 2d | 2026-06-16 A | 2026-06-16 A | QTS-48631, QTS-48601 | 100% | 2026-08-28 | 2026-08-31 |  | Construction | Site Improvements | IGMP | Construction | Site Work | Level 1 | DELETED | DH1100 | Freddy Arrizon |  |
| QTS-48651 |  | **DELETED** Zone 2 North // Drill & Reinforce Light Pole Bases | 8d | 2026-06-16 A | 2026-06-16 A | QTS-48681, QTS-48631 | 100% | 2026-09-08 | 2026-09-17 |  | Construction | Site Improvements | IGMP | Construction | Site Work | Level 1 | DELETED | DH1100 | Freddy Arrizon |  |
| QTS-48661 |  | **DELETED** Zone 2 North // Stringline for Curb | 2d | 2026-06-16 A | 2026-06-16 A | QTS-48641 | 100% | 2026-09-01 | 2026-09-02 |  | Construction | Site Improvements | IGMP | Construction | Site Work | Level 1 | DELETED | DH1100 | Freddy Arrizon |  |
| QTS-48671 |  | **DELETED** Zone 2 North // Machine Curb | 1d | 2026-06-16 A | 2026-06-16 A | QTS-48621, QTS-48661 | 100% | 2026-09-03 | 2026-09-03 |  | Construction | Site Improvements | IGMP | Construction | Site Work | Level 1 | DELETED | DH1100 | Freddy Arrizon |  |
| QTS-48681 |  | **DELETED** Zone 2 North // Form & Place Curb Tie Ins | 1d | 2026-06-16 A | 2026-06-16 A | QTS-48671 | 100% | 2026-09-04 | 2026-09-04 |  | Construction | Site Improvements | IGMP | Construction | Site Work | Level 1 | DELETED | DH1100 | Freddy Arrizon |  |
| QTS-48691 |  | **DELETED** Zone 2 North // Install Irrigation Main Lines | 4d | 2026-06-16 A | 2026-06-16 A | QTS-48681 | 100% | 2026-09-08 | 2026-09-11 |  | Construction | Site Improvements | IGMP | Construction | Site Work | Level 1 | DELETED | DH1100 | Freddy Arrizon |  |
| QTS-48701 |  | **DELETED** Zone 2 North // Stub Up Electrical to Light Poles | 4d | 2026-06-16 A | 2026-06-16 A | QTS-48651 | 100% | 2026-09-18 | 2026-09-23 |  | Construction | Site Improvements | IGMP | Construction | Site Work | Level 1 | DELETED | DH1100 | Freddy Arrizon |  |
| QTS-48711 |  | **DELETED** Zone 2 North // Prep & Place Medium Duty Asphalt Pavement | 3d | 2026-06-16 A | 2026-06-16 A | QTS-48721, QTS-48681, QTS-48671 | 100% | 2026-09-16 | 2026-09-18 |  | Construction | Site Improvements | IGMP | Construction | Site Work | Level 1 | DELETED | DH1100 | Freddy Arrizon |  |
| QTS-48721 |  | **DELETED** Zone 2 North // Prep & Place Medium Duty Concrete | 3d | 2026-06-16 A | 2026-06-16 A | QTS-48741, QTS-48681 | 100% | 2026-09-11 | 2026-09-15 |  | Construction | Site Improvements | IGMP | Construction | Site Work | Level 1 | DELETED | DH1100 | Freddy Arrizon |  |
| QTS-48731 |  | **DELETED** Zone 2 North // Prep & Place Light Duty Asphalt Pavement | 3d | 2026-06-16 A | 2026-06-16 A | QTS-48711 | 100% | 2026-09-21 | 2026-09-23 |  | Construction | Site Improvements | IGMP | Construction | Site Work | Level 1 | DELETED | DH1100 | Freddy Arrizon |  |
| QTS-48741 |  | **DELETED** Zone 2 North // Prep & Place Heavy Duty Concrete - Loading Dock | 3d | 2026-06-16 A | 2026-06-16 A | QTS-48681 | 100% | 2026-09-08 | 2026-09-10 |  | Construction | Site Improvements | IGMP | Construction | Site Work | Level 1 | DELETED | DH1100 | Freddy Arrizon |  |
| QTS-48751 |  | **DELETED** Zone 2 North // Install Irrigation Laterals | 4d | 2026-06-16 A | 2026-06-16 A | QTS-48691 | 100% | 2026-09-14 | 2026-09-17 |  | Construction | Site Improvements | IGMP | Construction | Site Work | Level 1 | DELETED | DH1100 | Freddy Arrizon |  |
| QTS-48761 |  | **DELETED** Zone 2 North // Pour Light Pole Bases | 1d | 2026-06-16 A | 2026-06-16 A | QTS-48701 | 100% | 2026-09-24 | 2026-09-24 |  | Construction | Site Improvements | IGMP | Construction | Site Work | Level 1 | DELETED | DH1100 | Freddy Arrizon |  |
| QTS-48771 |  | **DELETED** Zone 2 North // Utility Adjustments (Raise Cans & Collars) | 2d | 2026-06-16 A | 2026-06-16 A | QTS-48731, QTS-48711 | 100% | 2026-09-24 | 2026-09-25 |  | Construction | Site Improvements | IGMP | Construction | Site Work | Level 1 | DELETED | DH1100 | Freddy Arrizon |  |
| QTS-48781 |  | **DELETED** Zone 2 North // Prep & Place Sidewalks | 5d | 2026-06-16 A | 2026-06-16 A | QTS-48761, QTS-48611, QTS-48671, QTS-48681 | 100% | 2026-09-25 | 2026-10-01 |  | Construction | Site Improvements | IGMP | Construction | Site Work | Level 1 | DELETED | DH1100 | Freddy Arrizon |  |
| QTS-48791 |  | **DELETED** Zone 2 North // Site Striping | 1d | 2026-06-16 A | 2026-06-16 A | QTS-48771 | 100% | 2026-09-28 | 2026-09-28 |  | Construction | Site Improvements | IGMP | Construction | Site Work | Level 1 | DELETED | DH1100 | Freddy Arrizon |  |
| QTS-48801 |  | **DELETED** Zone 2 North // Set Light Poles | 2d | 2026-06-16 A | 2026-06-16 A | QTS-48781, QTS-48761 | 100% | 2026-10-02 | 2026-10-05 |  | Construction | Site Improvements | IGMP | Construction | Site Work | Level 1 | DELETED | DH1100 | Freddy Arrizon |  |
| QTS-48811 |  | **DELETED** Zone 2 North // Install Landscaping & Planting | 4d | 2026-06-16 A | 2026-06-16 A | QTS-48781, QTS-48751 | 100% | 2026-10-02 | 2026-10-07 |  | Construction | Site Improvements | IGMP | Construction | Site Work | Level 1 | DELETED | DH1100 | Freddy Arrizon |  |
| QTS-48821 |  | **DELETED** Zone 2 North // Install Signage | 1d | 2026-06-16 A | 2026-06-16 A | QTS-48781, QTS-48791 | 100% | 2026-10-02 | 2026-10-02 |  | Construction | Site Improvements | IGMP | Construction | Site Work | Level 1 | DELETED | DH1100 | Freddy Arrizon |  |
| QTS-48831 |  | **DELETED** Zone 2 North // Pull Electrical Wire & Make Up to Light Poles | 3d | 2026-06-16 A | 2026-06-16 A | QTS-48801 | 100% | 2026-10-06 | 2026-10-08 |  | Construction | Site Improvements | IGMP | Construction | Site Work | Level 1 | DELETED | DH1100 | Freddy Arrizon |  |
| QTS-48841 |  | **DELETED** Zone 2 North // Place DG | 3d | 2026-06-16 A | 2026-06-16 A | QTS-48811 | 100% | 2026-10-08 | 2026-10-12 |  | Construction | Site Improvements | IGMP | Construction | Site Work | Level 1 | DELETED | DH1100 | Freddy Arrizon |  |
| QTS-48851 |  | **DELETED** Zone 2 North // Sack & Patch Light Pole Bases | 2d | 2026-06-16 A | 2026-06-16 A | QTS-48831 | 100% | 2026-10-09 | 2026-10-12 |  | Construction | Site Improvements | IGMP | Construction | Site Work | Level 1 | DELETED | DH1100 | Freddy Arrizon |  |
| QTS-49801 |  | **DELETED** Zone 2 North // Inspection for Fire Water Line | 1d | 2026-06-16 A | 2026-06-16 A | QTS-48571, QTS-49791 | 100% | 2026-08-03 | 2026-08-03 | 01ADMIN | Construction | Site Improvements | IGMP | Construction | Site Work | Level 1 | DELETED | DH1100 | Freddy Arrizon |  |
| QTS-49811 |  | **DELETED** Zone 2 North // Inspection for Domestic Water Line | 1d | 2026-06-16 A | 2026-06-16 A | QTS-48581, QTS-49801 | 100% | 2026-08-07 | 2026-08-07 |  | Construction | Site Improvements | IGMP | Construction | Site Work | Level 1 | DELETED | DH1100 | Freddy Arrizon |  |

Notes:
- QTS-49541: allucent_notes: Jason Johnston on 2025-08-12 15:08: Material procurement delaying activity start / allucent_notes: 2025-08-12 15:08 - User: Jason Johnston - Date Added: 2025-08-12 15:08 - Note: Material procurement delaying activity start / 2025-08-26 10:08 - User: Jason Johnston - Date Added: 2025-08-26 10:08 - Note: Resources reallocated delaying finish of scope.
- QTS-48571: Schedule Note: 6/17 - Deleted as activiy should be tracking in campus schedule
- QTS-48581: Schedule Note: 6/17 - Deleted as activiy should be tracking in campus schedule
- QTS-48591: Schedule Note: 6/17 - Deleted as activiy should be tracking in campus schedule
- QTS-48601: Schedule Note: 6/17 - Deleted as activiy should be tracking in campus schedule
- QTS-48611: Schedule Note: 6/17 - Deleted as activiy should be tracking in campus schedule
- QTS-48621: Schedule Note: 6/17 - Deleted as activiy should be tracking in campus schedule
- QTS-48631: Schedule Note: 6/17 - Deleted as activiy should be tracking in campus schedule
- QTS-48641: Schedule Note: 6/17 - Deleted as activiy should be tracking in campus schedule
- QTS-48651: Schedule Note: 6/17 - Deleted as activiy should be tracking in campus schedule
- QTS-48661: Schedule Note: 6/17 - Deleted as activiy should be tracking in campus schedule
- QTS-48671: Schedule Note: 6/17 - Deleted as activiy should be tracking in campus schedule
- QTS-48681: Schedule Note: 6/17 - Deleted as activiy should be tracking in campus schedule
- QTS-48691: Schedule Note: 6/17 - Deleted as activiy should be tracking in campus schedule
- QTS-48701: Schedule Note: 6/17 - Deleted as activiy should be tracking in campus schedule
- QTS-48711: Schedule Note: 6/17 - Deleted as activiy should be tracking in campus schedule
- QTS-48721: Schedule Note: 6/17 - Deleted as activiy should be tracking in campus schedule
- QTS-48731: Schedule Note: 6/17 - Deleted as activiy should be tracking in campus schedule
- QTS-48741: Schedule Note: 6/17 - Deleted as activiy should be tracking in campus schedule
- QTS-48751: Schedule Note: 6/17 - Deleted as activiy should be tracking in campus schedule
- QTS-48761: Schedule Note: 6/17 - Deleted as activiy should be tracking in campus schedule
- QTS-48771: Schedule Note: 6/17 - Deleted as activiy should be tracking in campus schedule
- QTS-48781: Schedule Note: 6/17 - Deleted as activiy should be tracking in campus schedule
- QTS-48791: Schedule Note: 6/17 - Deleted as activiy should be tracking in campus schedule
- QTS-48801: Schedule Note: 6/17 - Deleted as activiy should be tracking in campus schedule
- QTS-48811: Schedule Note: 6/17 - Deleted as activiy should be tracking in campus schedule
- QTS-48821: Schedule Note: 6/17 - Deleted as activiy should be tracking in campus schedule
- QTS-48831: Schedule Note: 6/17 - Deleted as activiy should be tracking in campus schedule
- QTS-48841: Schedule Note: 6/17 - Deleted as activiy should be tracking in campus schedule
- QTS-48851: Schedule Note: 6/17 - Deleted as activiy should be tracking in campus schedule
- QTS-49801: Schedule Note: 6/17 - Deleted as activiy should be tracking in campus schedule
- QTS-49811: Schedule Note: 6/17 - Deleted as activiy should be tracking in campus schedule

| ID | WBS | Activity | Duration | Start | Finish | Predecessors | Complete | Planned start | Planned finish | Update Notes | Allucent CSI Group | Project Section | Layton Discipline | Baseline | Project Section-1 | Location | Level | Layton Super | DELETED | D | Phase-1-1 |
| --- | --- | --- | --- | --- | --- | --- | --- | --- | --- | --- | --- | --- | --- | --- | --- | --- | --- | --- | --- | --- | --- |
|  | 9 | **Site Improvements / Zone 2 South** |  | 2026-06-16 | 2026-06-16 |  |  |  |  |  |  |  |  |  |  |  |  |  |  |  |  |
| QTS-47651 |  | **DELETED** Zone 2 South // Excavate, Install, & Backfill Storm Trench Drain to Storm Line B | 3d | 2026-06-16 A | 2026-06-16 A | QTS-100720, QTS-18781, QTS-49561, QTS-1891, QTS-21521 | 100% | 2026-06-22 | 2026-06-24 | 5/19 - Move to Campus Schedule | 01ADMIN | Construction | Site Improvements | IGMP | Construction | Site Work | Level 1 | Freddy Arrizon | DELETED | DH1100 |  |
| QTS-47661 |  | **DELETED** Zone 2 South // Excavate, Install, & Backfill Sanitary Line | 3d | 2026-06-16 A | 2026-06-16 A | QTS-99010, QTS-49821, QTS-47651 | 100% | 2026-07-29 | 2026-07-31 |  |  | Construction | Site Improvements | IGMP | Construction | Site Work | Level 1 | Freddy Arrizon | DELETED | DH1100 |  |
| QTS-47671 |  | **DELETED** Zone 2 South // Excavate, Install, & Backfill Fire Water Line | 3d | 2026-06-16 A | 2026-06-16 A | QTS-99010, QTS-49831, QTS-47661, QTS-47651 | 100% | 2026-08-04 | 2026-08-06 |  |  | Construction | Site Improvements | IGMP | Construction | Site Work | Level 1 | Freddy Arrizon | DELETED | DH1100 |  |
| QTS-47681 |  | **DELETED** Zone 2 South // Excavate, Install, & Backfill Domestic Water Line | 3d | 2026-06-16 A | 2026-06-16 A | QTS-99010, QTS-49841, QTS-47671 | 100% | 2026-08-10 | 2026-08-12 |  |  | Construction | Site Improvements | IGMP | Construction | Site Work | Level 1 | Freddy Arrizon | DELETED | DH1100 |  |
| QTS-47691 |  | **DELETED** Zone 2 South // Rough Grade | 3d | 2026-06-16 A | 2026-06-16 A | QTS-49851, QTS-49861, QTS-49571, QTS-47391, QTS-47681, QTS-47651 | 100% | 2026-08-19 | 2026-08-21 |  |  | Construction | Site Improvements | IGMP | Construction | Site Work | Level 1 | Freddy Arrizon | DELETED | DH1100 |  |
| QTS-47701 |  | **DELETED** Zone 2 South // Stake Curbs | 1d | 2026-06-16 A | 2026-06-16 A | QTS-47691 | 100% | 2026-08-24 | 2026-08-24 |  |  | Construction | Site Improvements | IGMP | Construction | Site Work | Level 1 | Freddy Arrizon | DELETED | DH1100 |  |
| QTS-47711 |  | **DELETED** Zone 2 South // Install Underground Grounding Ring | 3d | 2026-06-16 A | 2026-06-16 A | QTS-47691 | 100% | 2026-08-24 | 2026-08-26 |  |  | Construction | Site Improvements | IGMP | Construction | Site Work | Underground | Freddy Arrizon | DELETED | DH1100 | Phase 1 |
| QTS-47721 |  | **DELETED** Zone 2 South // Install Irrigation Sleeves | 5d | 2026-06-16 A | 2026-06-16 A | QTS-47711, QTS-47701 | 100% | 2026-08-27 | 2026-09-02 |  |  | Construction | Site Improvements | IGMP | Construction | Site Work | Level 1 | Freddy Arrizon | DELETED | DH1100 |  |
| QTS-47731 |  | **DELETED** Zone 2 South // Excavate, Install, & Backfill Electrical for Site Lighting | 3d | 2026-06-16 A | 2026-06-16 A | QTS-47721, QTS-47711, QTS-47691 | 100% | 2026-09-03 | 2026-09-08 |  |  | Construction | Site Improvements | IGMP | Construction | Site Work | Level 1 | Freddy Arrizon | DELETED | DH1100 |  |
| QTS-47741 |  | **DELETED** Zone 2 South // Grade for Curb | 2d | 2026-06-16 A | 2026-06-16 A | QTS-47731, QTS-47701 | 100% | 2026-09-09 | 2026-09-10 |  |  | Construction | Site Improvements | IGMP | Construction | Site Work | Level 1 | Freddy Arrizon | DELETED | DH1100 |  |
| QTS-47751 |  | **DELETED** Zone 2 South // Drill & Reinforce Light Pole Bases | 5d | 2026-06-16 A | 2026-06-16 A | QTS-47781, QTS-47731 | 100% | 2026-09-17 | 2026-09-23 |  |  | Construction | Site Improvements | IGMP | Construction | Site Work | Level 1 | Freddy Arrizon | DELETED | DH1100 |  |
| QTS-47761 |  | **DELETED** Zone 2 South // Stringline for Curb | 2d | 2026-06-16 A | 2026-06-16 A | QTS-47741 | 100% | 2026-09-11 | 2026-09-14 |  |  | Construction | Site Improvements | IGMP | Construction | Site Work | Level 1 | Freddy Arrizon | DELETED | DH1100 |  |
| QTS-47771 |  | **DELETED** Zone 2 South // Machine Curb | 1d | 2026-06-16 A | 2026-06-16 A | QTS-47721, QTS-47761 | 100% | 2026-09-15 | 2026-09-15 |  |  | Construction | Site Improvements | IGMP | Construction | Site Work | Level 1 | Freddy Arrizon | DELETED | DH1100 |  |
| QTS-47781 |  | **DELETED** Zone 2 South // Form & Place Curb Tie Ins | 1d | 2026-06-16 A | 2026-06-16 A | QTS-47771 | 100% | 2026-09-16 | 2026-09-16 |  |  | Construction | Site Improvements | IGMP | Construction | Site Work | Level 1 | Freddy Arrizon | DELETED | DH1100 |  |
| QTS-47791 |  | **DELETED** Zone 2 South // Install Irrigation Main Lines | 4d | 2026-06-16 A | 2026-06-16 A | QTS-47781 | 100% | 2026-09-17 | 2026-09-22 |  |  | Construction | Site Improvements | IGMP | Construction | Site Work | Level 1 | Freddy Arrizon | DELETED | DH1100 |  |
| QTS-47811 |  | **DELETED** Zone 2 South // Stub Up Electrical to Light Poles | 4d | 2026-06-16 A | 2026-06-16 A | QTS-47751 | 100% | 2026-09-24 | 2026-09-29 |  |  | Construction | Site Improvements | IGMP | Construction | Site Work | Level 1 | Freddy Arrizon | DELETED | DH1100 |  |
| QTS-47821 |  | **DELETED** Zone 2 South // Prep & Place Medium Duty Asphalt Pavement | 3d | 2026-06-16 A | 2026-06-16 A | QTS-47781, QTS-47771 | 100% | 2026-09-17 | 2026-09-21 |  |  | Construction | Site Improvements | IGMP | Construction | Site Work | Level 1 | Freddy Arrizon | DELETED | DH1100 |  |
| QTS-47831 |  | **DELETED** Zone 2 South // Install Irrigation Laterals | 4d | 2026-06-16 A | 2026-06-16 A | QTS-47791 | 100% | 2026-09-23 | 2026-09-28 |  |  | Construction | Site Improvements | IGMP | Construction | Site Work | Level 1 | Freddy Arrizon | DELETED | DH1100 |  |
| QTS-47841 |  | **DELETED** Zone 2 South // Pour Light Pole Bases | 1d | 2026-06-16 A | 2026-06-16 A | QTS-47811 | 100% | 2026-09-30 | 2026-09-30 |  |  | Construction | Site Improvements | IGMP | Construction | Site Work | Level 1 | Freddy Arrizon | DELETED | DH1100 |  |
| QTS-47851 |  | **DELETED** Zone 2 South // Utility Adjustments (Raise Cans & Collars) | 2d | 2026-06-16 A | 2026-06-16 A | QTS-47821 | 100% | 2026-09-22 | 2026-09-23 |  |  | Construction | Site Improvements | IGMP | Construction | Site Work | Level 1 | Freddy Arrizon | DELETED | DH1100 |  |
| QTS-47861 |  | **DELETED** Zone 2 South // Prep & Place Sidewalks | 5d | 2026-06-16 A | 2026-06-16 A | QTS-47841, QTS-47711, QTS-47771, QTS-47781 | 100% | 2026-10-01 | 2026-10-07 |  |  | Construction | Site Improvements | IGMP | Construction | Site Work | Level 1 | Freddy Arrizon | DELETED | DH1100 |  |
| QTS-47871 |  | **DELETED** Zone 2 South // Site Striping | 1d | 2026-06-16 A | 2026-06-16 A | QTS-47851 | 100% | 2026-09-24 | 2026-09-24 |  |  | Construction | Site Improvements | IGMP | Construction | Site Work | Level 1 | Freddy Arrizon | DELETED | DH1100 |  |
| QTS-47881 |  | **DELETED** Zone 2 South // Set Light Poles | 2d | 2026-06-16 A | 2026-06-16 A | QTS-47861, QTS-47841 | 100% | 2026-10-08 | 2026-10-09 |  |  | Construction | Site Improvements | IGMP | Construction | Site Work | Level 1 | Freddy Arrizon | DELETED | DH1100 |  |
| QTS-47891 |  | **DELETED** Zone 2 South // Install Landscaping & Planting | 4d | 2026-06-16 A | 2026-06-16 A | QTS-47861, QTS-47831 | 100% | 2026-10-08 | 2026-10-13 |  |  | Construction | Site Improvements | IGMP | Construction | Site Work | Level 1 | Freddy Arrizon | DELETED | DH1100 |  |
| QTS-47901 |  | **DELETED** Zone 2 South // Install Signage | 1d | 2026-06-16 A | 2026-06-16 A | QTS-47861, QTS-47871 | 100% | 2026-10-08 | 2026-10-08 |  |  | Construction | Site Improvements | IGMP | Construction | Site Work | Level 1 | Freddy Arrizon | DELETED | DH1100 |  |
| QTS-47911 |  | **DELETED** Zone 2 South // Pull Electrical Wire & Make Up to Light Poles | 3d | 2026-06-16 A | 2026-06-16 A | QTS-47881 | 100% | 2026-10-12 | 2026-10-14 |  |  | Construction | Site Improvements | IGMP | Construction | Site Work | Level 1 | Freddy Arrizon | DELETED | DH1100 |  |
| QTS-47921 |  | **DELETED** Zone 2 South // Place DG | 3d | 2026-06-16 A | 2026-06-16 A | QTS-47891, QTS-47931 | 100% | 2026-10-19 | 2026-10-21 |  |  | Construction | Site Improvements | IGMP | Construction | Site Work | Level 1 | Freddy Arrizon | DELETED | DH1100 |  |
| QTS-47931 |  | **DELETED** Zone 2 South // Sack & Patch Light Pole Bases | 2d | 2026-06-16 A | 2026-06-16 A | QTS-47911 | 100% | 2026-10-15 | 2026-10-16 |  |  | Construction | Site Improvements | IGMP | Construction | Site Work | Level 1 | Freddy Arrizon | DELETED | DH1100 |  |
| QTS-49571 |  | **DELETED** Zone 2 South // Excavate, Install, & Backfill Storm Trench Drain to Strom Line E | 3d | 2026-06-16 A | 2026-06-16 A | QTS-47941, QTS-47651 | 100% | 2026-06-25 | 2026-06-29 | 5/19 - Move to Campus Schedule | 01ADMIN | Construction | Site Improvements | IGMP | Construction | Site Work | Level 1 | Freddy Arrizon | DELETED | DH1100 |  |
| QTS-49821 |  | **DELETED** Zone 2 South // Inspection for Storm Trench Drain to Storm Line B | 1d | 2026-06-16 A | 2026-06-16 A | QTS-47651 | 100% | 2026-06-25 | 2026-06-25 | 5/19 - Move to Campus Schedule | 01ADMIN | Construction | Site Improvements | IGMP | Construction | Site Work | Level 1 | Freddy Arrizon | DELETED | DH1100 |  |
| QTS-49831 |  | **DELETED** Zone 2 South // Inspection for Sanitary Line | 1d | 2026-06-16 A | 2026-06-16 A | QTS-47661, QTS-49821 | 100% | 2026-08-03 | 2026-08-03 |  |  | Construction | Site Improvements | IGMP | Construction | Site Work | Level 1 | Freddy Arrizon | DELETED | DH1100 |  |
| QTS-49841 |  | **DELETED** Zone 2 South // Inspection for Fire Water Line | 1d | 2026-06-16 A | 2026-06-16 A | QTS-47671, QTS-49831, QTS-49821 | 100% | 2026-08-07 | 2026-08-07 |  |  | Construction | Site Improvements | IGMP | Construction | Site Work | Level 1 | Freddy Arrizon | DELETED | DH1100 |  |
| QTS-49851 |  | **DELETED** Zone 2 South // Inspection for Domestic Water Line | 1d | 2026-06-16 A | 2026-06-16 A | QTS-47681, QTS-49841 | 100% | 2026-08-13 | 2026-08-13 |  |  | Construction | Site Improvements | IGMP | Construction | Site Work | Level 1 | Freddy Arrizon | DELETED | DH1100 |  |
| QTS-49861 |  | **DELETED** Zone 2 South // Inspection for Storm Trench Drain to Strom Line E | 1d | 2026-06-16 A | 2026-06-16 A | QTS-49571, QTS-49821 | 100% | 2026-06-30 | 2026-06-30 | 5/19 - Move to Campus Schedule | 01ADMIN | Construction | Site Improvements | IGMP | Construction | Site Work | Level 1 | Freddy Arrizon | DELETED | DH1100 |  |

Notes:
- QTS-47651: Schedule Note: 6/17 - Deleted as activiy should be tracking in campus schedule
- QTS-47661: Schedule Note: 6/17 - Deleted as activiy should be tracking in campus schedule
- QTS-47671: Schedule Note: 6/17 - Deleted as activiy should be tracking in campus schedule
- QTS-47681: Schedule Note: 6/17 - Deleted as activiy should be tracking in campus schedule
- QTS-47691: Schedule Note: 6/17 - Deleted as activiy should be tracking in campus schedule
- QTS-47701: Schedule Note: 6/17 - Deleted as activiy should be tracking in campus schedule
- QTS-47711: Schedule Note: 6/17 - Deleted as activiy should be tracking in campus schedule
- QTS-47721: Schedule Note: 6/17 - Deleted as activiy should be tracking in campus schedule
- QTS-47731: Schedule Note: 6/17 - Deleted as activiy should be tracking in campus schedule
- QTS-47741: Schedule Note: 6/17 - Deleted as activiy should be tracking in campus schedule
- QTS-47751: Schedule Note: 6/17 - Deleted as activiy should be tracking in campus schedule
- QTS-47761: Schedule Note: 6/17 - Deleted as activiy should be tracking in campus schedule
- QTS-47771: Schedule Note: 6/17 - Deleted as activiy should be tracking in campus schedule
- QTS-47781: Schedule Note: 6/17 - Deleted as activiy should be tracking in campus schedule
- QTS-47791: Schedule Note: 6/17 - Deleted as activiy should be tracking in campus schedule
- QTS-47811: Schedule Note: 6/17 - Deleted as activiy should be tracking in campus schedule
- QTS-47821: Schedule Note: 6/17 - Deleted as activiy should be tracking in campus schedule
- QTS-47831: Schedule Note: 6/17 - Deleted as activiy should be tracking in campus schedule
- QTS-47841: Schedule Note: 6/17 - Deleted as activiy should be tracking in campus schedule
- QTS-47851: Schedule Note: 6/17 - Deleted as activiy should be tracking in campus schedule
- QTS-47861: Schedule Note: 6/17 - Deleted as activiy should be tracking in campus schedule
- QTS-47871: Schedule Note: 6/17 - Deleted as activiy should be tracking in campus schedule
- QTS-47881: Schedule Note: 6/17 - Deleted as activiy should be tracking in campus schedule
- QTS-47891: Schedule Note: 6/17 - Deleted as activiy should be tracking in campus schedule
- QTS-47901: Schedule Note: 6/17 - Deleted as activiy should be tracking in campus schedule
- QTS-47911: Schedule Note: 6/17 - Deleted as activiy should be tracking in campus schedule
- QTS-47921: Schedule Note: 6/17 - Deleted as activiy should be tracking in campus schedule
- QTS-47931: Schedule Note: 6/17 - Deleted as activiy should be tracking in campus schedule
- QTS-49571: Schedule Note: 6/17 - Deleted as activiy should be tracking in campus schedule
- QTS-49821: Schedule Note: 6/17 - Deleted as activiy should be tracking in campus schedule
- QTS-49831: Schedule Note: 6/17 - Deleted as activiy should be tracking in campus schedule
- QTS-49841: Schedule Note: 6/17 - Deleted as activiy should be tracking in campus schedule
- QTS-49851: Schedule Note: 6/17 - Deleted as activiy should be tracking in campus schedule
- QTS-49861: Schedule Note: 6/17 - Deleted as activiy should be tracking in campus schedule

| ID | WBS | Activity | Duration | Start | Finish | Predecessors | Complete | Planned start | Planned finish | Update Notes | Project Section | Layton Discipline | Baseline | Project Section-1 | Location | Level | Layton Super | DELETED | D | Phase-1-1 | Allucent CSI Group |
| --- | --- | --- | --- | --- | --- | --- | --- | --- | --- | --- | --- | --- | --- | --- | --- | --- | --- | --- | --- | --- | --- |
|  | 7 | **Site Improvements / Zone 3 South - East** |  | 2026-06-16 | 2026-06-16 |  |  |  |  |  |  |  |  |  |  |  |  |  |  |  |  |
| QTS-47941 |  | **DELETED** Zone 3 South - East // Excavate, Install, & Backfill Storm Trench Drain to Storm Line E | 3d | 2026-06-16 A | 2026-06-16 A | QTS-101180, QTS-99210, QTS-23261, QTS-2151 | 100% | 2026-06-17 | 2026-06-19 | 5/19 - Move to Campus Schedule | Construction | Site Improvements | IGMP | Construction | Site Work | Level 1 | Freddy Arrizon | DELETED | DH1100 |  |  |
| QTS-47951 |  | **DELETED** Zone 3 South - East // Excavate, Install, & Backfill Sanitary Line | 3d | 2026-06-16 A | 2026-06-16 A | QTS-99010, QTS-49871, QTS-47941 | 100% | 2026-07-29 | 2026-07-31 |  | Construction | Site Improvements | IGMP | Construction | Site Work | Level 1 | Freddy Arrizon | DELETED | DH1100 |  |  |
| QTS-47961 |  | **DELETED** Zone 3 South - East // Excavate, Install, & Backfill Fire Water Line | 3d | 2026-06-16 A | 2026-06-16 A | QTS-99010, QTS-49881, QTS-47941 FF, QTS-47951, QTS-47941 | 100% | 2026-08-04 | 2026-08-06 |  | Construction | Site Improvements | IGMP | Construction | Site Work | Level 1 | Freddy Arrizon | DELETED | DH1100 |  |  |
| QTS-47971 |  | **DELETED** Zone 3 South - East // Excavate, Install, & Backfill Domestic Water Line | 3d | 2026-06-16 A | 2026-06-16 A | QTS-99010, QTS-49891, QTS-47961 | 100% | 2026-08-10 | 2026-08-12 |  | Construction | Site Improvements | IGMP | Construction | Site Work | Level 1 | Freddy Arrizon | DELETED | DH1100 |  |  |
| QTS-47981 |  | **DELETED** Zone 3 South - East // Rough Grade | 3d | 2026-06-16 A | 2026-06-16 A | QTS-49901, QTS-47691, QTS-47971, QTS-47941 | 100% | 2026-08-24 | 2026-08-26 |  | Construction | Site Improvements | IGMP | Construction | Site Work | Level 1 | Freddy Arrizon | DELETED | DH1100 |  |  |
| QTS-47991 |  | **DELETED** Zone 3 South - East // Stake Curbs | 1d | 2026-06-16 A | 2026-06-16 A | QTS-47981 | 100% | 2026-08-27 | 2026-08-27 |  | Construction | Site Improvements | IGMP | Construction | Site Work | Level 1 | Freddy Arrizon | DELETED | DH1100 |  |  |
| QTS-48001 |  | **DELETED** Zone 3 South - East // Install Underground Grounding Ring | 3d | 2026-06-16 A | 2026-06-16 A | QTS-47981 | 100% | 2026-08-27 | 2026-08-31 |  | Construction | Site Improvements | IGMP | Construction | Site Work | Underground | Freddy Arrizon | DELETED | DH1100 | Phase 1 |  |
| QTS-48011 |  | **DELETED** Zone 3 South - East // Install Irrigation Sleeves | 2d | 2026-06-16 A | 2026-06-16 A | QTS-47991 | 100% | 2026-08-28 | 2026-08-31 |  | Construction | Site Improvements | IGMP | Construction | Site Work | Level 1 | Freddy Arrizon | DELETED | DH1100 |  |  |
| QTS-48021 |  | **DELETED** Zone 3 South - East // Excavate, Install, & Backfill Electrical for Site Lighting | 3d | 2026-06-16 A | 2026-06-16 A | QTS-48001, QTS-47981 | 100% | 2026-09-01 | 2026-09-03 |  | Construction | Site Improvements | IGMP | Construction | Site Work | Level 1 | Freddy Arrizon | DELETED | DH1100 |  |  |
| QTS-48031 |  | **DELETED** Zone 3 South - East // Grade for Curb | 2d | 2026-06-16 A | 2026-06-16 A | QTS-48021, QTS-47991 | 100% | 2026-09-04 | 2026-09-08 |  | Construction | Site Improvements | IGMP | Construction | Site Work | Level 1 | Freddy Arrizon | DELETED | DH1100 |  |  |
| QTS-48041 |  | **DELETED** Zone 3 South - East // Drill & Reinforce Light Pole Bases | 8d | 2026-06-16 A | 2026-06-16 A | QTS-48021 | 100% | 2026-09-04 | 2026-09-16 |  | Construction | Site Improvements | IGMP | Construction | Site Work | Level 1 | Freddy Arrizon | DELETED | DH1100 |  |  |
| QTS-48051 |  | **DELETED** Zone 3 South - East // Stringline for Curb | 2d | 2026-06-16 A | 2026-06-16 A | QTS-48031 | 100% | 2026-09-09 | 2026-09-10 |  | Construction | Site Improvements | IGMP | Construction | Site Work | Level 1 | Freddy Arrizon | DELETED | DH1100 |  |  |
| QTS-48061 |  | **DELETED** Zone 3 South - East // Machine Curb | 1d | 2026-06-16 A | 2026-06-16 A | QTS-48011, QTS-48051 | 100% | 2026-09-11 | 2026-09-11 |  | Construction | Site Improvements | IGMP | Construction | Site Work | Level 1 | Freddy Arrizon | DELETED | DH1100 |  |  |
| QTS-48071 |  | **DELETED** Zone 3 South - East // Form & Place Curb Tie Ins | 1d | 2026-06-16 A | 2026-06-16 A | QTS-48061 | 100% | 2026-09-14 | 2026-09-14 |  | Construction | Site Improvements | IGMP | Construction | Site Work | Level 1 | Freddy Arrizon | DELETED | DH1100 |  |  |
| QTS-48081 |  | **DELETED** Zone 3 South - East // Install Irrigation Main Lines | 4d | 2026-06-16 A | 2026-06-16 A | QTS-48071 | 100% | 2026-09-15 | 2026-09-18 |  | Construction | Site Improvements | IGMP | Construction | Site Work | Level 1 | Freddy Arrizon | DELETED | DH1100 |  |  |
| QTS-48091 |  | **DELETED** Zone 3 South - East // Stub Up Electrical to Light Poles | 4d | 2026-06-16 A | 2026-06-16 A | QTS-48041 | 100% | 2026-09-17 | 2026-09-22 |  | Construction | Site Improvements | IGMP | Construction | Site Work | Level 1 | Freddy Arrizon | DELETED | DH1100 |  |  |
| QTS-48101 |  | **DELETED** Zone 3 South - East // Prep & Place Medium Duty Asphalt Pavement | 3d | 2026-06-16 A | 2026-06-16 A | QTS-48221, QTS-48071, QTS-48061 | 100% | 2026-09-18 | 2026-09-22 |  | Construction | Site Improvements | IGMP | Construction | Site Work | Level 1 | Freddy Arrizon | DELETED | DH1100 |  |  |
| QTS-48111 |  | **DELETED** Zone 3 South - East // Install Irrigation Laterals | 4d | 2026-06-16 A | 2026-06-16 A | QTS-48081 | 100% | 2026-09-21 | 2026-09-24 |  | Construction | Site Improvements | IGMP | Construction | Site Work | Level 1 | Freddy Arrizon | DELETED | DH1100 |  |  |
| QTS-48121 |  | **DELETED** Zone 3 South - East // Pour Light Pole Bases | 1d | 2026-06-16 A | 2026-06-16 A | QTS-48091 | 100% | 2026-09-23 | 2026-09-23 |  | Construction | Site Improvements | IGMP | Construction | Site Work | Level 1 | Freddy Arrizon | DELETED | DH1100 |  |  |
| QTS-48131 |  | **DELETED** Zone 3 South - East // Utility Adjustments (Raise Cans & Collars) | 2d | 2026-06-16 A | 2026-06-16 A | QTS-48231, QTS-48101 | 100% | 2026-09-28 | 2026-09-29 |  | Construction | Site Improvements | IGMP | Construction | Site Work | Level 1 | Freddy Arrizon | DELETED | DH1100 |  |  |
| QTS-48141 |  | **DELETED** Zone 3 South - East // Prep & Place Sidewalks | 5d | 2026-06-16 A | 2026-06-16 A | QTS-48121, QTS-48001, QTS-48061, QTS-48071 | 100% | 2026-09-24 | 2026-09-30 |  | Construction | Site Improvements | IGMP | Construction | Site Work | Level 1 | Freddy Arrizon | DELETED | DH1100 |  |  |
| QTS-48151 |  | **DELETED** Zone 3 South - East // Site Striping | 1d | 2026-06-16 A | 2026-06-16 A | QTS-48131 | 100% | 2026-09-30 | 2026-09-30 |  | Construction | Site Improvements | IGMP | Construction | Site Work | Level 1 | Freddy Arrizon | DELETED | DH1100 |  |  |
| QTS-48161 |  | **DELETED** Zone 3 South - East // Set Light Poles | 2d | 2026-06-16 A | 2026-06-16 A | QTS-48141, QTS-48121 | 100% | 2026-10-01 | 2026-10-02 |  | Construction | Site Improvements | IGMP | Construction | Site Work | Level 1 | Freddy Arrizon | DELETED | DH1100 |  |  |
| QTS-48171 |  | **DELETED** Zone 3 South - East // Install Landscaping & Planting | 4d | 2026-06-16 A | 2026-06-16 A | QTS-48141, QTS-48111 | 100% | 2026-10-01 | 2026-10-06 |  | Construction | Site Improvements | IGMP | Construction | Site Work | Level 1 | Freddy Arrizon | DELETED | DH1100 |  |  |
| QTS-48181 |  | **DELETED** Zone 3 South - East // Install Signage | 1d | 2026-06-16 A | 2026-06-16 A | QTS-48141, QTS-48151 | 100% | 2026-10-01 | 2026-10-01 |  | Construction | Site Improvements | IGMP | Construction | Site Work | Level 1 | Freddy Arrizon | DELETED | DH1100 |  |  |
| QTS-48191 |  | **DELETED** Zone 3 South - East // Pull Electrical Wire & Make Up to Light Poles | 3d | 2026-06-16 A | 2026-06-16 A | QTS-48161 | 100% | 2026-10-05 | 2026-10-07 |  | Construction | Site Improvements | IGMP | Construction | Site Work | Level 1 | Freddy Arrizon | DELETED | DH1100 |  |  |
| QTS-48201 |  | **DELETED** Zone 3 South - East // Place DG | 3d | 2026-06-16 A | 2026-06-16 A | QTS-48171 | 100% | 2026-10-07 | 2026-10-09 |  | Construction | Site Improvements | IGMP | Construction | Site Work | Level 1 | Freddy Arrizon | DELETED | DH1100 |  |  |
| QTS-48211 |  | **DELETED** Zone 3 South - East // Sack & Patch Light Pole Bases | 2d | 2026-06-16 A | 2026-06-16 A | QTS-48191 | 100% | 2026-10-08 | 2026-10-09 |  | Construction | Site Improvements | IGMP | Construction | Site Work | Level 1 | Freddy Arrizon | DELETED | DH1100 |  |  |
| QTS-48221 |  | **DELETED** Zone 3 South - East // Prep & Place Medium Duty Concrete | 3d | 2026-06-16 A | 2026-06-16 A | QTS-48071 | 100% | 2026-09-15 | 2026-09-17 |  | Construction | Site Improvements | IGMP | Construction | Site Work | Level 1 | Freddy Arrizon | DELETED | DH1100 |  |  |
| QTS-48231 |  | **DELETED** Zone 3 South - East // Prep & Place Light Duty Asphalt Pavement | 3d | 2026-06-16 A | 2026-06-16 A | QTS-48101 | 100% | 2026-09-23 | 2026-09-25 |  | Construction | Site Improvements | IGMP | Construction | Site Work | Level 1 | Freddy Arrizon | DELETED | DH1100 |  |  |
| QTS-49871 |  | **DELETED** Zone 3 South - East // Inspection for Storm Trench Drain to Storm Line E | 1d | 2026-06-16 A | 2026-06-16 A | QTS-100720, QTS-47941 | 100% | 2026-06-22 | 2026-06-22 | 5/19 - Move to Campus Schedule | Construction | Site Improvements | IGMP | Construction | Site Work | Level 1 | Freddy Arrizon | DELETED | DH1100 |  | 01ADMIN |
| QTS-49881 |  | **DELETED** Zone 3 South - East // Inspection for Sanitary Line | 1d | 2026-06-16 A | 2026-06-16 A | QTS-47951, QTS-49871 | 100% | 2026-08-03 | 2026-08-03 |  | Construction | Site Improvements | IGMP | Construction | Site Work | Level 1 | Freddy Arrizon | DELETED | DH1100 |  |  |
| QTS-49891 |  | **DELETED** Zone 3 South - East // Inspection for Fire Water Line | 1d | 2026-06-16 A | 2026-06-16 A | QTS-47961, QTS-49871 FF, QTS-49881, QTS-49871 | 100% | 2026-08-07 | 2026-08-07 |  | Construction | Site Improvements | IGMP | Construction | Site Work | Level 1 | Freddy Arrizon | DELETED | DH1100 |  |  |
| QTS-49901 |  | **DELETED** Zone 3 South - East // Inspection for Domestic Water Line | 1d | 2026-06-16 A | 2026-06-16 A | QTS-47971, QTS-49891 | 100% | 2026-08-13 | 2026-08-13 |  | Construction | Site Improvements | IGMP | Construction | Site Work | Level 1 | Freddy Arrizon | DELETED | DH1100 |  |  |

Notes:
- QTS-47941: Schedule Note: 6/17 - Deleted as activiy should be tracking in campus schedule
- QTS-47951: Schedule Note: 6/17 - Deleted as activiy should be tracking in campus schedule
- QTS-47961: Schedule Note: 6/17 - Deleted as activiy should be tracking in campus schedule
- QTS-47971: Schedule Note: 6/17 - Deleted as activiy should be tracking in campus schedule
- QTS-47981: Schedule Note: 6/17 - Deleted as activiy should be tracking in campus schedule
- QTS-47991: Schedule Note: 6/17 - Deleted as activiy should be tracking in campus schedule
- QTS-48001: Schedule Note: 6/17 - Deleted as activiy should be tracking in campus schedule
- QTS-48011: Schedule Note: 6/17 - Deleted as activiy should be tracking in campus schedule
- QTS-48021: Schedule Note: 6/17 - Deleted as activiy should be tracking in campus schedule
- QTS-48031: Schedule Note: 6/17 - Deleted as activiy should be tracking in campus schedule
- QTS-48041: Schedule Note: 6/17 - Deleted as activiy should be tracking in campus schedule
- QTS-48051: Schedule Note: 6/17 - Deleted as activiy should be tracking in campus schedule
- QTS-48061: Schedule Note: 6/17 - Deleted as activiy should be tracking in campus schedule
- QTS-48071: Schedule Note: 6/17 - Deleted as activiy should be tracking in campus schedule
- QTS-48081: Schedule Note: 6/17 - Deleted as activiy should be tracking in campus schedule
- QTS-48091: Schedule Note: 6/17 - Deleted as activiy should be tracking in campus schedule
- QTS-48101: Schedule Note: 6/17 - Deleted as activiy should be tracking in campus schedule
- QTS-48111: Schedule Note: 6/17 - Deleted as activiy should be tracking in campus schedule
- QTS-48121: Schedule Note: 6/17 - Deleted as activiy should be tracking in campus schedule
- QTS-48131: Schedule Note: 6/17 - Deleted as activiy should be tracking in campus schedule
- QTS-48141: Schedule Note: 6/17 - Deleted as activiy should be tracking in campus schedule
- QTS-48151: Schedule Note: 6/17 - Deleted as activiy should be tracking in campus schedule
- QTS-48161: Schedule Note: 6/17 - Deleted as activiy should be tracking in campus schedule
- QTS-48171: Schedule Note: 6/17 - Deleted as activiy should be tracking in campus schedule
- QTS-48181: Schedule Note: 6/17 - Deleted as activiy should be tracking in campus schedule
- QTS-48191: Schedule Note: 6/17 - Deleted as activiy should be tracking in campus schedule
- QTS-48201: Schedule Note: 6/17 - Deleted as activiy should be tracking in campus schedule
- QTS-48211: Schedule Note: 6/17 - Deleted as activiy should be tracking in campus schedule
- QTS-48221: Schedule Note: 6/17 - Deleted as activiy should be tracking in campus schedule
- QTS-48231: Schedule Note: 6/17 - Deleted as activiy should be tracking in campus schedule
- QTS-49871: allucent_notes_20251118_192630: Jason Johnston on 2025-10-07 14:10: moving out until access is available. / Jason Johnston on 2025-11-12T00:48:59.333Z: tes tanks / allucent_notes_20251111_182405: Jason Johnston on 2025-10-07 14:10: moving out until access is available. / Jason Johnston on 2025-11-12T00:48:59.333Z: tes tanks / allucent_notes_20251104_160200: Jason Johnston on 2025-10-07 14:10: moving out until access is available. / allucent_notes_20251028_163138: Jason Johnston on 2025-10-07 14:10: moving out until access is available. / allucent_notes_20251027_224008: Jason Johnston on 2025-10-07 14:10: moving out until access is available. / allucent_notes: 2025-10-07 14:10 - User: Jason Johnston - Date Added: 2025-10-07 14:10 - Note: moving out until access is available. / 2025-11-12T00:48:59.333Z - User: Jason Johnston - Date Added: 2025-11-12T00:48:59.333Z - Note: tes tanks / Schedule Note: 6/17 - Deleted as activiy should be tracking in campus schedule
- QTS-49881: Schedule Note: 6/17 - Deleted as activiy should be tracking in campus schedule
- QTS-49891: Schedule Note: 6/17 - Deleted as activiy should be tracking in campus schedule
- QTS-49901: Schedule Note: 6/17 - Deleted as activiy should be tracking in campus schedule
