# QTS - PHX3 DC1 (54MW) Construction Schedule

Schedule from Primavera P6, 2024-11-13 to 2026-11-19, data date 2026-08-19, A marks actual dates.

| ID | WBS | Activity | Duration | Start | Finish | Predecessors | Complete | Planned start | Planned finish | Allucent CSI Group | Project Section | Layton Discipline | Baseline | Project Section-1 | Location | Level | DELETED | D | Layton Super | Phase-1-1 |
| --- | --- | --- | --- | --- | --- | --- | --- | --- | --- | --- | --- | --- | --- | --- | --- | --- | --- | --- | --- | --- |
|  | 10 | **Site Improvements / Zone 3 North - East** |  | 2025-06-25 | 2026-06-16 |  |  |  |  |  |  |  |  |  |  |  |  |  |  |  |
| QTS-48241 |  | **DELETED** Zone 3 North - East // Excavate, Install, & Backfill Storm Line E | 3d | 2025-06-25 A | 2025-08-11 A | QTS-1431 | 100% | 2025-06-25 | 2025-06-27 | 01ADMIN | Construction | Site Improvements | IGMP | Construction | Site Work | Level 1 | DELETED | DH1100 |  |  |
| QTS-48861 |  | **DELETED** Zone 3 North - East // Excavate, Install, & Backfill Storm Line G | 3d | 2025-08-05 A | 2025-08-07 A | QTS-49551 | 100% |  |  | 01ADMIN | Construction | Site Improvements | IGMP | Construction | Site Work | Level 1 | DELETED | DH1100 |  |  |
| QTS-49911 |  | **DELETED** Zone 3 North - East // Inspection for Storm Line E | 1d | 2025-08-12 A | 2025-08-12 A | QTS-48241 | 100% |  |  | 01ADMIN | Construction | Site Improvements | IGMP | Construction | Site Work | Level 1 | DELETED | DH1100 |  |  |
| QTS-49921 |  | **DELETED** Zone 3 North - East // Inspection for Storm Line G | 1d | 2025-08-13 A | 2025-08-13 A | QTS-48861, QTS-49911 | 100% |  |  | 01ADMIN | Construction | Site Improvements | IGMP | Construction | Site Work | Level 1 | DELETED | DH1100 |  |  |
| QTS-48251 |  | **DELETED** Zone 3 North - East // Excavate, Install, & Backfill Sanitary Line | 3d | 2026-06-16 A | 2026-06-16 A | QTS-99010, QTS-49921, QTS-48861, QTS-48241 | 100% | 2026-07-29 | 2026-07-31 |  | Construction | Site Improvements | IGMP | Construction | Site Work | Level 1 | DELETED | DH1100 | Freddy Arrizon |  |
| QTS-48261 |  | **DELETED** Zone 3 North - East // Excavate, Install, & Backfill Fire Water Line | 3d | 2026-06-16 A | 2026-06-16 A | QTS-99010, QTS-49931, QTS-48241 FF, QTS-48251, QTS-48241 | 100% | 2026-08-04 | 2026-08-06 |  | Construction | Site Improvements | IGMP | Construction | Site Work | Level 1 | DELETED | DH1100 | Freddy Arrizon |  |
| QTS-48271 |  | **DELETED** Zone 3 North - East // Excavate, Install, & Backfill Domestic Water Line | 3d | 2026-06-16 A | 2026-06-16 A | QTS-99010, QTS-49941, QTS-48261 | 100% | 2026-08-10 | 2026-08-12 |  | Construction | Site Improvements | IGMP | Construction | Site Work | Level 1 | DELETED | DH1100 | Freddy Arrizon |  |
| QTS-48281 |  | **DELETED** Zone 3 North - East // Rough Grade | 3d | 2026-06-16 A | 2026-06-16 A | QTS-48591, QTS-48901, QTS-48271, QTS-48241 | 100% | 2026-08-26 | 2026-08-28 |  | Construction | Site Improvements | IGMP | Construction | Site Work | Level 1 | DELETED | DH1100 | Freddy Arrizon |  |
| QTS-48291 |  | **DELETED** Zone 3 North - East // Stake Curbs | 1d | 2026-06-16 A | 2026-06-16 A | QTS-48281 | 100% | 2026-08-31 | 2026-08-31 |  | Construction | Site Improvements | IGMP | Construction | Site Work | Level 1 | DELETED | DH1100 | Freddy Arrizon |  |
| QTS-48301 |  | **DELETED** Zone 3 North - East // Install Underground Grounding Ring | 3d | 2026-06-16 A | 2026-06-16 A | QTS-48281 | 100% | 2026-08-31 | 2026-09-02 |  | Construction | Site Improvements | IGMP | Construction | Site Work | Underground | DELETED | DH1100 | Freddy Arrizon | Phase 1 |
| QTS-48311 |  | **DELETED** Zone 3 North - East // Install Irrigation Sleeves | 2d | 2026-06-16 A | 2026-06-16 A | QTS-48291 | 100% | 2026-09-01 | 2026-09-02 |  | Construction | Site Improvements | IGMP | Construction | Site Work | Level 1 | DELETED | DH1100 | Freddy Arrizon |  |
| QTS-48321 |  | **DELETED** Zone 3 North - East // Excavate, Install, & Backfill Electrical for Site Lighting | 3d | 2026-06-16 A | 2026-06-16 A | QTS-48301, QTS-48281 | 100% | 2026-09-03 | 2026-09-08 |  | Construction | Site Improvements | IGMP | Construction | Site Work | Level 1 | DELETED | DH1100 | Freddy Arrizon |  |
| QTS-48331 |  | **DELETED** Zone 3 North - East // Grade for Curb | 2d | 2026-06-16 A | 2026-06-16 A | QTS-48321, QTS-48291 | 100% | 2026-09-09 | 2026-09-10 |  | Construction | Site Improvements | IGMP | Construction | Site Work | Level 1 | DELETED | DH1100 | Freddy Arrizon |  |
| QTS-48341 |  | **DELETED** Zone 3 North - East // Drill & Reinforce Light Pole Bases | 8d | 2026-06-16 A | 2026-06-16 A | QTS-48321 | 100% | 2026-09-09 | 2026-09-18 |  | Construction | Site Improvements | IGMP | Construction | Site Work | Level 1 | DELETED | DH1100 | Freddy Arrizon |  |
| QTS-48351 |  | **DELETED** Zone 3 North - East // Stringline for Curb | 2d | 2026-06-16 A | 2026-06-16 A | QTS-48331 | 100% | 2026-09-11 | 2026-09-14 |  | Construction | Site Improvements | IGMP | Construction | Site Work | Level 1 | DELETED | DH1100 | Freddy Arrizon |  |
| QTS-48361 |  | **DELETED** Zone 3 North - East // Machine Curb | 1d | 2026-06-16 A | 2026-06-16 A | QTS-48311, QTS-48351 | 100% | 2026-09-15 | 2026-09-15 |  | Construction | Site Improvements | IGMP | Construction | Site Work | Level 1 | DELETED | DH1100 | Freddy Arrizon |  |
| QTS-48371 |  | **DELETED** Zone 3 North - East // Form & Place Curb Tie Ins | 1d | 2026-06-16 A | 2026-06-16 A | QTS-48361 | 100% | 2026-09-16 | 2026-09-16 |  | Construction | Site Improvements | IGMP | Construction | Site Work | Level 1 | DELETED | DH1100 | Freddy Arrizon |  |
| QTS-48381 |  | **DELETED** Zone 3 North - East // Install Irrigation Main Lines | 4d | 2026-06-16 A | 2026-06-16 A | QTS-48371 | 100% | 2026-09-17 | 2026-09-22 |  | Construction | Site Improvements | IGMP | Construction | Site Work | Level 1 | DELETED | DH1100 | Freddy Arrizon |  |
| QTS-48391 |  | **DELETED** Zone 3 North - East // Stub Up Electrical to Light Poles | 4d | 2026-06-16 A | 2026-06-16 A | QTS-48341 | 100% | 2026-09-21 | 2026-09-24 |  | Construction | Site Improvements | IGMP | Construction | Site Work | Level 1 | DELETED | DH1100 | Freddy Arrizon |  |
| QTS-48401 |  | **DELETED** Zone 3 North - East // Prep & Place Medium Duty Asphalt Pavement | 3d | 2026-06-16 A | 2026-06-16 A | QTS-48411, QTS-48371, QTS-48361 | 100% | 2026-09-25 | 2026-09-29 |  | Construction | Site Improvements | IGMP | Construction | Site Work | Level 1 | DELETED | DH1100 | Freddy Arrizon |  |
| QTS-48411 |  | **DELETED** Zone 3 North - East // Prep & Place Medium Duty Concrete | 3d | 2026-06-16 A | 2026-06-16 A | QTS-48541, QTS-48371 | 100% | 2026-09-22 | 2026-09-24 |  | Construction | Site Improvements | IGMP | Construction | Site Work | Level 1 | DELETED | DH1100 | Freddy Arrizon |  |
| QTS-48421 |  | **DELETED** Zone 3 North - East // Prep & Place Light Duty Asphalt Pavement | 3d | 2026-06-16 A | 2026-06-16 A | QTS-48401 | 100% | 2026-09-30 | 2026-10-02 |  | Construction | Site Improvements | IGMP | Construction | Site Work | Level 1 | DELETED | DH1100 | Freddy Arrizon |  |
| QTS-48431 |  | **DELETED** Zone 3 North - East // Install Irrigation Laterals | 4d | 2026-06-16 A | 2026-06-16 A | QTS-48381 | 100% | 2026-09-23 | 2026-09-28 |  | Construction | Site Improvements | IGMP | Construction | Site Work | Level 1 | DELETED | DH1100 | Freddy Arrizon |  |
| QTS-48441 |  | **DELETED** Zone 3 North - East // Pour Light Pole Bases | 1d | 2026-06-16 A | 2026-06-16 A | QTS-48391 | 100% | 2026-09-25 | 2026-09-25 |  | Construction | Site Improvements | IGMP | Construction | Site Work | Level 1 | DELETED | DH1100 | Freddy Arrizon |  |
| QTS-48451 |  | **DELETED** Zone 3 North - East // Utility Adjustments (Raise Cans & Collars) | 2d | 2026-06-16 A | 2026-06-16 A | QTS-48421, QTS-48401 | 100% | 2026-10-05 | 2026-10-06 |  | Construction | Site Improvements | IGMP | Construction | Site Work | Level 1 | DELETED | DH1100 | Freddy Arrizon |  |
| QTS-48461 |  | **DELETED** Zone 3 North - East // Prep & Place Sidewalks | 5d | 2026-06-16 A | 2026-06-16 A | QTS-48441, QTS-48301, QTS-48361, QTS-48371 | 100% | 2026-09-28 | 2026-10-02 |  | Construction | Site Improvements | IGMP | Construction | Site Work | Level 1 | DELETED | DH1100 | Freddy Arrizon |  |
| QTS-48471 |  | **DELETED** Zone 3 North - East // Site Striping | 1d | 2026-06-16 A | 2026-06-16 A | QTS-48451 | 100% | 2026-10-07 | 2026-10-07 |  | Construction | Site Improvements | IGMP | Construction | Site Work | Level 1 | DELETED | DH1100 | Freddy Arrizon |  |
| QTS-48481 |  | **DELETED** Zone 3 North - East // Set Light Poles | 2d | 2026-06-16 A | 2026-06-16 A | QTS-48461, QTS-48441 | 100% | 2026-10-05 | 2026-10-06 |  | Construction | Site Improvements | IGMP | Construction | Site Work | Level 1 | DELETED | DH1100 | Freddy Arrizon |  |
| QTS-48491 |  | **DELETED** Zone 3 North - East // Install Landscaping & Planting | 4d | 2026-06-16 A | 2026-06-16 A | QTS-48461, QTS-48431 | 100% | 2026-10-05 | 2026-10-08 |  | Construction | Site Improvements | IGMP | Construction | Site Work | Level 1 | DELETED | DH1100 | Freddy Arrizon |  |
| QTS-48501 |  | **DELETED** Zone 3 North - East // Install Signage | 1d | 2026-06-16 A | 2026-06-16 A | QTS-48461, QTS-48471 | 100% | 2026-10-08 | 2026-10-08 |  | Construction | Site Improvements | IGMP | Construction | Site Work | Level 1 | DELETED | DH1100 | Freddy Arrizon |  |
| QTS-48511 |  | **DELETED** Zone 3 North - East // Pull Electrical Wire & Make Up to Light Poles | 3d | 2026-06-16 A | 2026-06-16 A | QTS-48481 | 100% | 2026-10-07 | 2026-10-09 |  | Construction | Site Improvements | IGMP | Construction | Site Work | Level 1 | DELETED | DH1100 | Freddy Arrizon |  |
| QTS-48521 |  | **DELETED** Zone 3 North - East // Place DG | 3d | 2026-06-16 A | 2026-06-16 A | QTS-48491 | 100% | 2026-10-09 | 2026-10-13 |  | Construction | Site Improvements | IGMP | Construction | Site Work | Level 1 | DELETED | DH1100 | Freddy Arrizon |  |
| QTS-48531 |  | **DELETED** Zone 3 North - East // Sack & Patch Light Pole Bases | 2d | 2026-06-16 A | 2026-06-16 A | QTS-48511 | 100% | 2026-10-12 | 2026-10-13 |  | Construction | Site Improvements | IGMP | Construction | Site Work | Level 1 | DELETED | DH1100 | Freddy Arrizon |  |
| QTS-48541 |  | **DELETED** Zone 3 North - East // Prep & Place Heavy Duty Concrete - Loading Dock | 3d | 2026-06-16 A | 2026-06-16 A | QTS-48371 | 100% | 2026-09-17 | 2026-09-21 |  | Construction | Site Improvements | IGMP | Construction | Site Work | Level 1 | DELETED | DH1100 | Freddy Arrizon |  |
| QTS-48891 |  | **DELETED** Zone 3 North - East // Excavate & Pour CMU Footings | 3d | 2026-06-16 A | 2026-06-16 A | QTS-49951, QTS-48881, QTS-48271 | 100% | 2026-08-18 | 2026-08-20 |  | Construction | Site Improvements | IGMP | Construction | Site Work | Level 1 | DELETED | DH1100 | Freddy Arrizon |  |
| QTS-48901 |  | **DELETED** Zone 3 North - East // Place CMU Block Wall | 3d | 2026-06-16 A | 2026-06-16 A | QTS-48891 FF, QTS-48891 | 100% | 2026-08-21 | 2026-08-25 |  | Construction | Site Improvements | IGMP | Construction | Site Work | Level 1 | DELETED | DH1100 | Freddy Arrizon |  |
| QTS-49931 |  | **DELETED** Zone 3 North - East // Inspection for Sanitary Line | 1d | 2026-06-16 A | 2026-06-16 A | QTS-48251, QTS-49921, QTS-49911 | 100% | 2026-08-03 | 2026-08-03 |  | Construction | Site Improvements | IGMP | Construction | Site Work | Level 1 | DELETED | DH1100 | Freddy Arrizon |  |
| QTS-49941 |  | **DELETED** Zone 3 North - East // Inspection for Fire Water Line | 1d | 2026-06-16 A | 2026-06-16 A | QTS-48261, QTS-49911 FF, QTS-49931, QTS-49911 | 100% | 2026-08-07 | 2026-08-07 |  | Construction | Site Improvements | IGMP | Construction | Site Work | Level 1 | DELETED | DH1100 | Freddy Arrizon |  |
| QTS-49951 |  | **DELETED** Zone 3 North - East // Inspection for Domestic Water Line | 1d | 2026-06-16 A | 2026-06-16 A | QTS-48271, QTS-49941 | 100% | 2026-08-13 | 2026-08-13 |  | Construction | Site Improvements | IGMP | Construction | Site Work | Level 1 | DELETED | DH1100 | Freddy Arrizon |  |

Notes:
- QTS-48251: Schedule Note: 6/17 - Deleted as activiy should be tracking in campus schedule
- QTS-48261: Schedule Note: 6/17 - Deleted as activiy should be tracking in campus schedule
- QTS-48271: Schedule Note: 6/17 - Deleted as activiy should be tracking in campus schedule
- QTS-48281: Schedule Note: 6/17 - Deleted as activiy should be tracking in campus schedule
- QTS-48291: Schedule Note: 6/17 - Deleted as activiy should be tracking in campus schedule
- QTS-48301: Schedule Note: 6/17 - Deleted as activiy should be tracking in campus schedule
- QTS-48311: Schedule Note: 6/17 - Deleted as activiy should be tracking in campus schedule
- QTS-48321: Schedule Note: 6/17 - Deleted as activiy should be tracking in campus schedule
- QTS-48331: Schedule Note: 6/17 - Deleted as activiy should be tracking in campus schedule
- QTS-48341: Schedule Note: 6/17 - Deleted as activiy should be tracking in campus schedule
- QTS-48351: Schedule Note: 6/17 - Deleted as activiy should be tracking in campus schedule
- QTS-48361: Schedule Note: 6/17 - Deleted as activiy should be tracking in campus schedule
- QTS-48371: Schedule Note: 6/17 - Deleted as activiy should be tracking in campus schedule
- QTS-48381: Schedule Note: 6/17 - Deleted as activiy should be tracking in campus schedule
- QTS-48391: Schedule Note: 6/17 - Deleted as activiy should be tracking in campus schedule
- QTS-48401: Schedule Note: 6/17 - Deleted as activiy should be tracking in campus schedule
- QTS-48411: Schedule Note: 6/17 - Deleted as activiy should be tracking in campus schedule
- QTS-48421: Schedule Note: 6/17 - Deleted as activiy should be tracking in campus schedule
- QTS-48431: Schedule Note: 6/17 - Deleted as activiy should be tracking in campus schedule
- QTS-48441: Schedule Note: 6/17 - Deleted as activiy should be tracking in campus schedule
- QTS-48451: Schedule Note: 6/17 - Deleted as activiy should be tracking in campus schedule
- QTS-48461: Schedule Note: 6/17 - Deleted as activiy should be tracking in campus schedule
- QTS-48471: Schedule Note: 6/17 - Deleted as activiy should be tracking in campus schedule
- QTS-48481: Schedule Note: 6/17 - Deleted as activiy should be tracking in campus schedule
- QTS-48491: Schedule Note: 6/17 - Deleted as activiy should be tracking in campus schedule
- QTS-48501: Schedule Note: 6/17 - Deleted as activiy should be tracking in campus schedule
- QTS-48511: Schedule Note: 6/17 - Deleted as activiy should be tracking in campus schedule
- QTS-48521: Schedule Note: 6/17 - Deleted as activiy should be tracking in campus schedule
- QTS-48531: Schedule Note: 6/17 - Deleted as activiy should be tracking in campus schedule
- QTS-48541: Schedule Note: 6/17 - Deleted as activiy should be tracking in campus schedule
- QTS-48891: Schedule Note: 6/17 - Deleted as activiy should be tracking in campus schedule
- QTS-48901: Schedule Note: 6/17 - Deleted as activiy should be tracking in campus schedule
- QTS-49931: Schedule Note: 6/17 - Deleted as activiy should be tracking in campus schedule
- QTS-49941: Schedule Note: 6/17 - Deleted as activiy should be tracking in campus schedule
- QTS-49951: Schedule Note: 6/17 - Deleted as activiy should be tracking in campus schedule

## Activity codes

| Code | Value | Meaning |
| --- | --- | --- |
| Allucent CSI Group | 01ADMIN | Admin |
| Allucent CSI Group | ROSEN | Rosendin |
| Baseline | DC | DC13 |
| Contract | BAB | BASE BUILD |
| Fragnet Responsible Party | Alpha Insulation & Waterproofing, Inc | Alpha |
| Fragnet Responsible Party | Bel-Aire Mechanical. LLC | Bel-Aire |
| Fragnet Responsible Party | D.H. Pace Company, Inc. | DH Pace |
| Fragnet Responsible Party | DLB Associates | DLB |
| Fragnet Responsible Party | E2 Optics, LLC | E2 |
| Fragnet Responsible Party | Giroux Glass, Inc | Giroux Glass |
| Fragnet Responsible Party | ISEC Inc. | ISEC |
| Fragnet Responsible Party | Olympic West Fire Protection | Olympic |
| Fragnet Responsible Party | Otis Elevator Company | Otis |
| Fragnet Responsible Party | Parrish-Hare Electrical Supply | Parrish Hare |
| Fragnet Responsible Party | Pennington Painting Company, LLC | Pennington |
| Fragnet Responsible Party | Performance Contracting Inc. | PCI |
| Fragnet Responsible Party | Progressive Roofing | Progressive |
| Fragnet Responsible Party | Quality Technology Services | QTS |
| Fragnet Responsible Party | Rosendin Electric Inc. | REI |
| Fragnet Responsible Party | SteelFab Texas Inc. | Steel Fab |
| Fragnet Responsible Party | Sunset Concrete Inc. | Suntec |
| Fragnet Responsible Party | True Metal Solutions, LLC | True Metal |
| Fragnet Responsible Party | Virginia Transformer Corporation | VTC |
| Layton Discipline | Duration | Duration (LOE) |
| Layton Discipline | Earth + Found | Earthwork and Foundations |
| Layton Discipline | LV | Low Voltage |
| Layton Discipline | Precon | Preconstruction |
| Layton PM | CPeral | Chris Perales |
| Layton PM | TTodaro | Travis Todaro |
| Layton Super | Electrical | James Smith & Electrical Super |
| Layton Super | Low Voltage | Keith Taylor & Leonardi di Michele |
| Layton Super | Mechanical | David Wiltberger, Cory Wiley & Mechanical Super |
| Location | BOH | Back of House |
| Location | DH1100 | Data Hall 1100 |
| Location | DH1200 | Data Hall 1200 |
| Location | DH1300 | Data Hall 1300 |
| Location | DH2100 | Data Hall 2100 |
| Location | DH2200 | Data Hall 2200 |
| Location | DH2300 | Data Hall 2300 |
| Location | EXT | Exterior Finishes |
| Location | FOH | Front of House |
| Location | Gen Yard | Generator Yard |
| MC Delay | Y | Delay/Impacts |
| Owner Impact Analysis | Y | Yes Owner Impact |
| Project Section | Exec Summary | Executive Summary |
| Project Section-1 | Exec Summary | Executive Summary |
| Sort | x | select |
| TFO-CONST ONLY | TFO CONST | TFO CONST ONLY |
| Trade Partner | IES | IES Communications |
| Vendor Responsible Party | BAM | Bel-Aire Mechanical |
| Vendor Responsible Party | CAP | Caps |
| Vendor Responsible Party | ERS | Electrical Reliability Services |
| Vendor Responsible Party | FBB | Fiberbond |
| Vendor Responsible Party | HLT | Holt/CAT |
| Vendor Responsible Party | LAY | Layton (CFCI) |
| Vendor Responsible Party | MAV | Maverick Power |
| Vendor Responsible Party | PHE | Parrish-Hare |
| Vendor Responsible Party | PRM | Prime |
| Vendor Responsible Party | ROS | Rosendin |
| Vendor Responsible Party | SIE | Siemens |
| Vendor Responsible Party | SQD | Square D |
| Vendor Responsible Party | TAS | Texas Air System |
| Vendor Responsible Party | VER | Vertiv |
| Vendor Responsible Party | VTC | Virginia Transformer Corporation |
| Vendor Responsible Party | YCY | YCY/CAT |
| Weekly Path | Y | Yes - Weekly Path Report |
