# PHX3 Campus Roll Up Schedule

Schedule from Primavera P6, 2026-02-27 to 2026-11-12, data date 2026-08-12, A marks actual dates.

## Calendars

- **GLOBAL - 5 Day Workweek w/ Basic Holidays: Mon-Fri 08:00-12:00, 13:00-17:00; Sat-Sun off. Exceptions (off unless hours are given): 2026-05-25, 2026-07-03, 2026-09-07.

## Schedule

| ID | WBS | Activity | Type | Duration | Start | Finish | Predecessors | Complete | Planned start | Planned finish | Total float |
| --- | --- | --- | --- | --- | --- | --- | --- | --- | --- | --- | --- |
|  | 1 | **PHX3 Campus Roll Up - Executive Summary** |  |  | 2026-02-27 | 2026-11-12 |  |  |  |  |  |
|  | 1 | **Construction Durations (Calendar Days)** |  |  |  |  |  |  |  |  |  |
|  | 2 | **Milestones** |  |  | 2026-02-27 | 2026-11-12 |  |  |  |  |  |
|  | 1 | **PHX3-DC14 (48MW)** |  |  |  |  |  |  |  |  |  |
|  | 1 | **Phase One** |  |  |  |  |  |  |  |  |  |
|  | 2 | **Phase Two** |  |  |  |  |  |  |  |  |  |
|  | 3 | **Phase Three** |  |  |  |  |  |  |  |  |  |
|  | 4 | **Phase Four** |  |  |  |  |  |  |  |  |  |
|  | 2 | **PHX3-DC13 (48MW)** |  |  |  |  |  |  |  |  |  |
|  | 1 | **Phase One** |  |  |  |  |  |  |  |  |  |
|  | 2 | **Phase Two** |  |  |  |  |  |  |  |  |  |
|  | 3 | **Phase Three** |  |  |  |  |  |  |  |  |  |
|  | 4 | **Phase Four** |  |  |  |  |  |  |  |  |  |
|  | 3 | **PHX3-DC1 (54MW)** |  |  | 2026-02-27 | 2026-11-12 |  |  |  |  |  |
| CAMP-ROLL UP-A1910 |  | Permanent Power Available | milestone | 0d | 2026-02-27 A | 2026-02-27 A | QTS-M1000 (other project) FF | 100% | 2026-03-04 | 2026-03-04 |  |
| CAMP-ROLL UP-A1940 |  | Roofing Complete | milestone | 0d | 2026-04-21 A | 2026-04-21 A | QTS-1045 (other project) FF | 100% |  |  |  |
| CAMP-ROLL UP-A1920 |  | Start Of Commissining | milestone | 0d | 2026-06-25 A | 2026-06-25 A | QTS-102740 (other project) SS | 100% | 2026-07-08 | 2026-07-08 |  |
| CAMP-ROLL UP-A1620 |  | Final Completion & Closeout | milestone | 0d | 2026-11-12 | 2026-11-12 | QTS-1140 (other project) FF, QTS-1160 (other project) FF |  |  |  | 17d |
|  | 1 | **Phase One** |  |  | 2026-09-04 | 2026-10-20 |  |  |  |  |  |
| CAMP-ROLL UP-A1570 |  | Phase One Inegrated System Test (1st & 2nd Data Hall) | milestone | 0d | 2026-09-04 | 2026-09-04 | QTS-1120.1 (other project) FF, QTS-1120.2 (other project) FF |  |  |  | 65d |
| CAMP-ROLL UP-A1560 |  | Phase One Temporary Certificate of Occupancy (1st & 2nd Data Hall, FOH, BOH) | milestone | 0d | 2026-10-20 | 2026-10-20 | QTS-1130.A (other project) FF, QTS-1130.B (other project) FF |  |  |  | 34d |
|  | 2 | **Phase Two** |  |  | 2026-09-28 | 2026-10-09 |  |  |  |  |  |
| CAMP-ROLL UP-A1590 |  | Phase Two Integrated System Test (3rd & 4th Data Hall) | milestone | 0d | 2026-09-28 | 2026-09-28 | QTS-1120.3 (other project) FF |  |  |  | 51d |
| CAMP-ROLL UP-A1580 |  | Phase Two Temporary Certificate of Occupancy (3rd & 4th Data Hall) | milestone | 0d | 2026-10-09 | 2026-10-09 | QTS-1130.C (other project) FF, QTS-1130.D (other project) FF |  |  |  | 41d |

| ID | WBS | Activity | Type | Duration | Start | Finish | Predecessors | Total float |
| --- | --- | --- | --- | --- | --- | --- | --- | --- |
|  | 3 | **Phase Three** |  |  | 2026-10-26 | 2026-11-05 |  |  |
| CAMP-ROLL UP-A1610 |  | Phase Three Integrated System Test (5th & 6th Data Hall) | milestone | 0d | 2026-10-26 | 2026-10-26 | QTS-1120.5 (other project) FF, QTS-1120.6 (other project) FF | 30d |
| CAMP-ROLL UP-A1600 |  | Phase Three Temporary Certificate of Occupancy (5th & 6th Data Hall) | milestone | 0d | 2026-11-05 | 2026-11-05 | QTS-1130.E (other project) FF, QTS-1130.F (other project) FF | 22d |
|  | 4 | **PHX3-DC2 (54MW)** |  |  |  |  |  |  |
|  | 1 | **Phase One** |  |  |  |  |  |  |
|  | 2 | **Phase Two** |  |  |  |  |  |  |
|  | 3 | **Phase Three** |  |  |  |  |  |  |
|  | 5 | **PHX3-DC9 (54MW)** |  |  |  |  |  |  |
|  | 1 | **Phase One** |  |  |  |  |  |  |
|  | 2 | **Phase Two** |  |  |  |  |  |  |
|  | 3 | **Phase Three** |  |  |  |  |  |  |
