# PHX3 DC1 (54MW) Construction Schedule-Remaining - DO NOT DELETE-WIR- NOT FOR DISTRIBUTION

Schedule from Primavera P6, 2026-07-08 to 2026-08-04, data date 2026-07-15, A marks actual dates.

## Calendars

- **GLOBAL - 6 Day Workweek w/ Basic Holidays: Mon-Sat 08:00-12:00, 13:00-17:00; Sun off.

## Schedule

| ID | WBS | Activity | Duration | Start | Finish | Remaining | Planned start | Planned finish | Total float | Free float |
| --- | --- | --- | --- | --- | --- | --- | --- | --- | --- | --- |
|  | 9 | **Executive Summary** |  |  |  |  |  |  |  |  |
|  | 1 | **DH 1100 Milestones** |  |  |  |  |  |  |  |  |
|  | 2 | **DH 2100 Milestones** |  |  |  |  |  |  |  |  |
|  | 3 | **DH 1200 Milestones** |  |  |  |  |  |  |  |  |
|  | 4 | **DH 2200 Milestones** |  |  |  |  |  |  |  |  |
|  | 5 | **DH 1300 Milestones** |  |  |  |  |  |  |  |  |
|  | 6 | **DH 2300 Milestones** |  |  |  |  |  |  |  |  |
|  | 1 | **FOH Remaining** |  |  |  |  |  |  |  |  |
|  | 1 | **Freedom Cafe 103** |  |  |  |  |  |  |  |  |
|  | 2 | **Lobby 101** |  |  |  |  |  |  |  |  |
|  | 3 | **Vestibule 101** |  |  |  |  |  |  |  |  |
|  | 4 | **Fitness 111** |  |  |  |  |  |  |  |  |
|  | 5 | **Security 150** |  |  |  |  |  |  |  |  |
|  | 6 | **Restroom 207/208** |  |  |  |  |  |  |  |  |
|  | 7 | **FOH TFO Flex** |  |  |  |  |  |  |  |  |
|  | 2 | **BOH Remaining** |  |  |  |  |  |  |  |  |
|  | 1 | **IDF 1064** |  |  |  |  |  |  |  |  |
|  | 2 | **Restroom 2071** |  |  |  |  |  |  |  |  |
|  | 3 | **Data Hall 1100 Remaining** |  |  |  |  |  |  |  |  |
|  | 1 | **Corridor 1011** |  |  |  |  |  |  |  |  |
|  | 2 | **Electrical Gallery 1102** |  |  |  |  |  |  |  |  |
|  | 3 | **CRAH Gallery 1101** |  |  |  |  |  |  |  |  |
|  | 4 | **Data Hall 1100** |  |  |  |  |  |  |  |  |
|  | 5 | **CRAH Gallery 1103** |  |  |  |  |  |  |  |  |
|  | 6 | **Data Hall 1100 TFO / Line Up A-B** |  |  |  |  |  |  |  |  |
|  | 7 | **Data Hall 1100 TFO / Line Up C-D** |  |  |  |  |  |  |  |  |
|  | 4 | **Data Hall 2100 Remaining** |  | 2026-07-08 | 2026-07-18 |  |  |  |  |  |
|  | 1 | **Corridor 2010** |  |  |  |  |  |  |  |  |
|  | 2 | **Electrical Gallery 2102** |  |  |  |  |  |  |  |  |
|  | 3 | **CRAH Gallery 2101** |  |  |  |  |  |  |  |  |
|  | 4 | **Data Hall 2100** |  | 2026-07-08 | 2026-07-18 |  |  |  |  |  |
| QTS-0890 |  | DH 2100 / Data Hall 2100 / Install Scaffolding | 4d | 2026-07-08 A | 2026-07-18 | 4d | 2026-07-07 | 2026-07-10 | -75d | 0d |
| QTS-0910 |  | DH 2100 / Data Hall 2100 / Overhead Fire Protection Insapection | 1d | 2026-07-08 A | 2026-07-15 | 1d | 2026-07-07 | 2026-07-07 | -75d | 0d |

| ID | WBS | Activity | Duration | Start | Finish | Predecessors | Total float | Free float |
| --- | --- | --- | --- | --- | --- | --- | --- | --- |
|  | 5 | **CRAH Gallery 2103** |  |  |  |  |  |  |
|  | 6 | **Gallery 2101 Mechanical** |  |  |  |  |  |  |
|  | 7 | **Gallery 2103 Mechanical** |  |  |  |  |  |  |
|  | 5 | **Data Hall 1200 Remaining** |  |  |  |  |  |  |
|  | 1 | **Corridor 1013** |  |  |  |  |  |  |
|  | 2 | **Electrical Gallery 1202** |  |  |  |  |  |  |
|  | 3 | **CRAH Gallery 1201** |  |  |  |  |  |  |
|  | 4 | **Data Hall 1200** |  |  |  |  |  |  |
|  | 5 | **CRAH Gallery 1203** |  |  |  |  |  |  |
|  | 6 | **Data Hall 2200 Remaining** |  |  |  |  |  |  |
|  | 2 | **Data Hall 2200 TFO / Line Up A-B** |  |  |  |  |  |  |
|  | 1 | **Corridor 2010** |  |  |  |  |  |  |
|  | 3 | **Electrical Gallery 2202** |  |  |  |  |  |  |
|  | 6 | **CRAH Gallery 2201** |  |  |  |  |  |  |
|  | 4 | **Data Hall 2200** |  |  |  |  |  |  |
|  | 5 | **CRAH Gallery 2203** |  |  |  |  |  |  |
|  | 7 | **Data Hall 1300 Remaining** |  | 2026-08-03 | 2026-08-04 |  |  |  |
|  | 1 | **Corridor 1012** |  | 2026-08-03 | 2026-08-04 |  |  |  |
| QTS-2940 |  | DH 1300 / Corridor 1012 / Install Alarm Devices | 2d | 2026-08-03 | 2026-08-04 | QTS-4240 (other project) | 63d | 0d |
|  | 2 | **Electrical Gallery 1302** |  |  |  |  |  |  |
|  | 3 | **CRAH Gallery 1301** |  |  |  |  |  |  |
|  | 4 | **Data Hall 1300** |  |  |  |  |  |  |
|  | 5 | **CRAH Gallery 1303** |  |  |  |  |  |  |
|  | 8 | **Data Hall 2300 Remaining** |  |  |  |  |  |  |
|  | 1 | **Corridor 2307** |  |  |  |  |  |  |
|  | 2 | **Electrical Gallery 2302** |  |  |  |  |  |  |
|  | 3 | **CRAH Gallery 2301** |  |  |  |  |  |  |
|  | 4 | **Data Hall 2300** |  |  |  |  |  |  |
|  | 5 | **CRAH Gallery 2303** |  |  |  |  |  |  |
