# QTS - PHX3 Campus - Baseline Schedule DC1, DC2, DC9

Schedule from Primavera P6, 2025-05-05 to 2026-07-31, data date 2026-08-19, A marks actual dates.

## Calendars

- QTS-PHX3 South Campus - 5 day w/ Holidays: Mon-Fri 08:00-12:00, 13:00-17:00; Sat-Sun off. Exceptions (off unless hours are given): 2025-05-26, 2025-07-04, 2025-09-01, 2025-11-27 to 2025-11-28, 2025-12-24 to 2025-12-26, 2025-12-31 to 2026-01-01, 2026-01-19, 2026-05-25, 2026-07-03.

## Schedule

| ID | WBS | Activity | Type | Duration | Start | Finish | Predecessors | Complete | Planned start | Planned finish | Constraint |
| --- | --- | --- | --- | --- | --- | --- | --- | --- | --- | --- | --- |
|  | 1 | **Executive Summary** |  |  | 2025-05-05 | 2026-07-31 |  |  |  |  |  |
|  | 1 | **Milestones** |  |  | 2025-05-05 | 2026-07-31 |  |  |  |  |  |
|  | 3 | **DC1** |  |  | 2025-05-05 | 2026-07-31 |  |  |  |  |  |
| QTS-3890 |  | Start Construction | milestone | 0d | 2025-05-05 A | 2025-05-05 A |  | 100% |  |  |  |
| QTS-101600 |  | DC1 Substantial Completion / 1st TCO | milestone | 0d | 2026-07-31 A | 2026-07-31 A | A1070 (other project) | 100% | 2026-08-13 | 2026-08-13 | finish on or before 2026-05-01 |
|  | 4 | **DC2** |  |  |  |  |  |  |  |  |  |
|  | 5 | **DC9** |  |  |  |  |  |  |  |  |  |
|  | 2 | **Durations** |  |  |  |  |  |  |  |  |  |
|  | 2 | **Preconstruction** |  |  |  |  |  |  |  |  |  |
|  | 3 | **Owner Contracting** |  |  |  |  |  |  |  |  |  |
|  | 4 | **DC1 / Submittals & Procurement** |  |  |  |  |  |  |  |  |  |
|  | 6 | **DC2 / Submittals & Procurement** |  |  |  |  |  |  |  |  |  |
|  | 5 | **DC9 / Submittals & Procurement** |  |  |  |  |  |  |  |  |  |
|  | 3 | **Construction** |  |  |  |  |  |  |  |  |  |
|  | 1 | **Medium Voltage** |  |  |  |  |  |  |  |  |  |
|  | 2 | **RFI #110 DC1 - Elevation Change for IMVG Vaults** |  |  |  |  |  |  |  |  |  |
|  | 3 | **SMVG to IMVG** |  |  |  |  |  |  |  |  |  |
|  | 1 | **Fragnet QTS IMVG Cx** |  |  |  |  |  |  |  |  |  |
|  | 3 | **Fragnet QTS Study for Arc Flash Label** |  |  |  |  |  |  |  |  |  |
|  | 4 | **Fragnet Delay In Ordering of Arrestors** |  |  |  |  |  |  |  |  |  |
|  | 5 | **Fragnet Temp Network Option** |  |  |  |  |  |  |  |  |  |
|  | 6 | **Hood Patterson Delay Arriving On Site** |  |  |  |  |  |  |  |  |  |
|  | 2 | **Remaining Scope** |  |  |  |  |  |  |  |  |  |
|  | 7 | **IMVG Area** |  |  |  |  |  |  |  |  |  |
|  | 13 | **IMVG Area / Section 1** |  |  |  |  |  |  |  |  |  |
|  | 1 | **IMVG Area / Section 2** |  |  |  |  |  |  |  |  |  |
|  | 1 | **RFI #** |  |  |  |  |  |  |  |  |  |
|  | 2 | **Remaining Work** |  |  |  |  |  |  |  |  |  |
|  | 6 | **IMVG Area / Section 3** |  |  |  |  |  |  |  |  |  |
|  | 5 | **MVV to PV2s (Section 3)** |  |  |  |  |  |  |  |  |  |
|  | 3 | **IMVG to MVV (Section 3)** |  |  |  |  |  |  |  |  |  |
|  | 4 | **Future Substation (Section 4)** |  |  |  |  |  |  |  |  |  |
|  | 2 | **SMVG to MVV** |  |  |  |  |  |  |  |  |  |
|  | 9 | **DC1 / Medium Voltage Routing (MV)** |  |  |  |  |  |  |  |  |  |
|  | 7 | **Fragnet - Faulty CT, Modification & Re-Test Per RFI 777 & 682** |  |  |  |  |  |  |  |  |  |
|  | 8 | **Remaining Scope** |  |  |  |  |  |  |  |  |  |
|  | 1 | **DC1 / MV Routing Data Hall 2100** |  |  |  |  |  |  |  |  |  |
|  | 1 | **DC1-MVG-A1 - Faulty CT & Re-Test** |  |  |  |  |  |  |  |  |  |
|  | 2 | **Remaining Scope** |  |  |  |  |  |  |  |  |  |
|  | 6 | **DC1 / MV Routing Data Hall 1300** |  |  |  |  |  |  |  |  |  |
|  | 3 | **DC1 / MV Routing Data Hall 2200** |  |  |  |  |  |  |  |  |  |
|  | 2 | **DC1 / MV Routing Data Hall 1100** |  |  |  |  |  |  |  |  |  |
|  | 1 | **Replacing Faulty MVG-B1 Due To Bushing** |  |  |  |  |  |  |  |  |  |
|  | 2 | **Remaining Scope** |  |  |  |  |  |  |  |  |  |
|  | 4 | **DC1 / MV Routing Data Hall 1200** |  |  |  |  |  |  |  |  |  |
|  | 5 | **DC1 / MV Routing Data Hall 2300** |  |  |  |  |  |  |  |  |  |
|  | 20 | **DC2 / Medium Voltage Routing (MV)** |  |  |  |  |  |  |  |  |  |
|  | 1 | **DC2 / MV Routing Data Hall 2100** |  |  |  |  |  |  |  |  |  |
|  | 2 | **DC2 / MV Routing Data Hall 1100** |  |  |  |  |  |  |  |  |  |
|  | 3 | **DC2 / MV Routing Data Hall 2200** |  |  |  |  |  |  |  |  |  |
|  | 4 | **DC2 / MV Routing Data Hall 1200** |  |  |  |  |  |  |  |  |  |
|  | 5 | **DC2 / MV Routing Data Hall 2300** |  |  |  |  |  |  |  |  |  |
|  | 6 | **DC2 / MV Routing Data Hall 1300** |  |  |  |  |  |  |  |  |  |
|  | 11 | **DC9 / Medium Voltage Routing (MV) (Section 11)** |  |  |  |  |  |  |  |  |  |
|  | 7 | **Fragnet / RFI 562 - MVGs Alternative CT** |  |  |  |  |  |  |  |  |  |
|  | 6 | **DC9 / MV Routing Data Hall 2100** |  |  |  |  |  |  |  |  |  |
|  | 5 | **DC9 / MV Routing Data Hall 1100** |  |  |  |  |  |  |  |  |  |
|  | 4 | **DC9 / MV Routing Data Hall 2200** |  |  |  |  |  |  |  |  |  |
|  | 3 | **DC9 / MV Routing Data Hall 1200** |  |  |  |  |  |  |  |  |  |
|  | 2 | **DC9 / MV Routing Data Hall 2300** |  |  |  |  |  |  |  |  |  |
|  | 1 | **DC9 / MV Routing Data Hall 1300** |  |  |  |  |  |  |  |  |  |
|  | 10 | **DC1 / MV Routing DC09/10 (Section 9)** |  |  |  |  |  |  |  |  |  |
|  | 12 | **DC1 / MV Routing DC09/10 (Section 10)** |  |  |  |  |  |  |  |  |  |
|  | 1 | **DC3 & DC4 (Future)** |  |  |  |  |  |  |  |  |  |
|  | 1 | **Impact - RFI #442: PHX3 DC1 Site I Future Feeders** |  |  |  |  |  |  |  |  |  |
|  | 2 | **Remaining Scope** |  |  |  |  |  |  |  |  |  |
|  | 18 | **DC1 / MV Routing DC3 & DC4 (Section 7)** |  |  |  |  |  |  |  |  |  |
|  | 19 | **DC1 / MV Routing DC3 & DC4 (Section 8)** |  |  |  |  |  |  |  |  |  |
|  | 17 | **DC1 / MV Routing DC3 & DC4 (Section 6)** |  |  |  |  |  |  |  |  |  |
|  | 16 | **DC1 / MV Routing DC3 & DC4 (Section 5)** |  |  |  |  |  |  |  |  |  |

| WBS | Activity |
| --- | --- |
| 14 | **DC1 / MV Routing DC3 & DC4 (Section 4)** |
| 3 | **DC1** |
| 14 | **EPCOR Approval Impact** |
| 2 | **FOH/GS - DC1 TCO Scope** |
| 3 | **Public Utilities - Zone 1** |
| 4 | **STA 9+00 To 1+00 - Public Water - Zone 1** |
| 10 | **Jack & Bore - Public Water - Zone 1** |
| 1 | **Procurement - Public Water - Zone 1** |
| 5 | **Private Utilities - Zone 1** |
| 6 | **Zone 1 - Sitework** |
| 3 | **Impact - Loading Dock Stem Walls - Mitigate Landscape Future Failure** |
| 4 | **Impact - Re-Design of DC1 FOH Grade** |
| 1 | **Zone 1 A - Sitework** |
| 1 | **Fragnet / Waiting for Building to Complete Scope** |
| 2 | **Remaining Scope** |
| 2 | **Guardshack Area** |
| 1 | **Fragnet - Guard Shack Fire Protection** |
| 3 | **DC1 - Private Utilities** |
| 7 | **Fragnet - Redpoint Remobilization** |
| 4 | **DC1 Loading Dock** |
| 1 | **Fragnet - Gen Yard RFI** |
| 8 | **Fragnet - Redpoint RFI** |
| 5 | **DC1 Gen Yard - Private Utilities** |
| 1 | **DC1 - Private CX** |
| 7 | **Fragnet - DC1 Roof Scaffold** |
| 8 | **Fragnet - DC1 Crane Delay** |
| 2 | **DC1 South** |
| 3 | **Guardshack Road Connections** |
| 6 | **Zone 2 - Sitework "DEL"** |
| 4 | **Zone 5 - East - DC1** |
| 3 | **Public Utilities - Zone 5 - Sitework - East - DC1 "DEL"** |
| 1 | **Public Sewer MH1 To MH 8 (STA 0+00 To 11+07.09) - Zone 5 - Sitework - East - DC1** |
| 5 | **Private Utilities - East - DC1 "DEL"** |
| 6 | **Zone 5 - Sitework - East - DC1** |
| 1 | **Seq 1 - Zone 5 - Sitework - South East - DC1** |
| 1 | **Fragnet / RFI #946 For Depth of CAV-02** |
| 3 | **Remaining Scope "DEL"** |
| 2 | **Seq 2 - Zone 5 - Sitework - North East - DC1 "DEL"** |
| 6 | **Gen Yard** |
| 1 | **Private Utilities - Gen Yard** |
| 1 | **Site Improvements / Zone 1 // South - West** |
| 5 | **Site Improvements / Zone 1 // North - West** |
| 11 | **Site Improvements / Zone 2 // North - Genyard - DC1 "DEL"** |
| 9 | **Site Improvements / Zone 2 // South** |
| 12 | **Site Improvements / Zone 3 // South - East** |
| 10 | **Site Improvements / Zone 3 // North - East** |
| 7 | **Fragnet - Tent Removal** |
| 4 | **DC2** |
| 2 | **Zone 3 - FOH & Loading Dock Area - DC2** |
| 3 | **Public Utilities - Zone 3 - FOH & Loading Dock Area - DC2"DEL"** |
| 4 | **STA 9+00 To 17+00 - Public Water -Zone 3 - FOH & Loading Dock Area - DC2** |
| 5 | **Private Utilities - Zone 3 - FOH & Loading Dock Area - DC2** |
| 6 | **Zone 3 - Sitework - FOH & Loading Dock Area - DC2 "DEL"** |
| 1 | **North - DC2** |
| 3 | **Public Utilities - Zone 4 - North - DC2"DEL"** |
| 4 | **STA 17+00 To 27+00 - Public Water - Zone 4 - North - DC2** |
| 1 | **Public Sewer MH10 - MH12 - Zone 4 - North - DC2** |
| 2 | **STA 27+00 To 32+00 - Public Water - Zone 4 - North - DC2** |
| 5 | **Private Utilities - Zone 4 - North - DC2 "DEL"** |
| 4 | **DC2 Private Sewer** |
| 2 | **DC2 Private Water** |
| 7 | **Fragnet - Fire Line Mitigations (Clear-Flush Line)** |
| 1 | **DC2 - Private CX** |
| 6 | **Zone 4 - Sitework - North - DC2 "DELETE"** |
| 5 | **Zone 6 - East - DC2** |
| 3 | **Public Utilities - Zone 6 - East - DC2** |
| 1 | **Public Sewer - Zone 6 - East - DC2 "DEL"** |
| 5 | **Private Utilities - Zone 6 - East - DC2 "DEL"** |
| 6 | **Sitework - Zone 6 - East - DC2 "DEL"** |
| 3 | **Site Improvements / Zone 1 // North - West** |

| WBS | Activity |
| --- | --- |
| 1 | **Fragnet / DC1 Telecom Route Change** |
| 3 | **Fragnet / Telecom Redesign** |
| 2 | **Remaining Scope** |
| 6 | **Site Improvements DC2 North** |
| 1 | **Fragnet / RFI #873 TMH-18 Lower Vault Entry** |
| 3 | **Fragnet - Signage Manpower** |
| 2 | **Building Zone 2 / North - Storm/Telecom Infrastructure** |
| 7 | **Site Improvements / Zone 1 & 3 // South "DEL"** |
| 4 | **Site Improvements / Zone 3 // North - East** |
| 8 | **DC9** |
| 2 | **DC9 TCO Scope** |
| 1 | **Fragnet - RFI** |
| 5 | **DC9 - East FOH** |
| 1 | **Fragnet - Trademark Manpower** |
| 2 | **Fragnet - J&B Funding Delay** |
| 6 | **DC9 BOH West - Sitework** |
| 1 | **DC9 BOH - West** |
| 3 | **Public Utilities - Zone 11 - West - DC9** |
| 1 | **Public Sewer MH12- MH19 - Zone 11 - West - DC9 "DEL"** |
| 4 | **STA 32+00 To 36+00 - Public Water - Zone 11 - West - DC9** |
| 2 | **STA 36+00 To 42+70 - Public Water - Zone 11 - West - DC9** |
| 3 | **EPCOR Final Approvals"DEL"** |
| 5 | **Private Utilities - Zone 11 - West - DC9 "Delete"** |
| 7 | **Fragnet -** |
| 2 | **DC9 Private Water** |
| 4 | **DC9 Private South** |
| 1 | **DC9 - Private CX** |
| 6 | **Sitework - Zone 11 - West - DC9 "DEL"** |
| 5 | **Site Improvements / Zone 1 // North - East"DEL"** |
| 6 | **Site Improvements / Zone 2 // North "DEL"** |
| 7 | **Site Improvements / Zone 1, 2 & 3 // South "DEL"** |
| 4 | **DC9 West Telecom** |
| 1 | **DC9 Building Access** |
| 2 | **Remaining Scope** |
| 9 | **DC9 Sitework - North** |
| 3 | **DC9 Sitework- South "Delete"** |
| 9 | **DC9 Gen Yard** |
| 8 | **DC1 & 2 Gen Yard** |
| 6 | **Public Water & Sewer** |
| 5 | **Fragnet - Epcor Tie-In to Existing Water** |
| 1 | **Public Water** |
| 1 | **Water CX** |
| 2 | **Public Sewer** |
| 4 | **Sewer CX** |
| 6 | **Fragnet - Material Availability** |
| 3 | **Roadway Above Public Water & Sewer** |
| 4 | **Closeout** |
| 4 | **DC1 / TCO** |
| 3 | **DC2 / TCO** |
| 2 | **DC9 / TCO** |
| 5 | **DELETED** |
